# 01. Programa de Obra - 6 Casas - Altozano

How a schedule from MS Project XML changed from version to version. A marks actual dates.

## Version 1 (data date 2026-05-15, saved 2026-05-15)

Note of the change: Versión preliminar del tablero — Altozano Casa Zorro 6 viviendas

| ID | WBS | Task | Duration | Start | Finish | Predecessors | Complete | Total float |
| --- | --- | --- | --- | --- | --- | --- | --- | --- |
| 1 | 1 | **ALTOZANO - METTA - 6 CASAS** | 199d | 2026-05-11 A | 2027-01-20 |  |  | 0d |
| 2 | 1.1 | **HITOS IMPORTANTES** | 14d | 2026-05-11 A | 2026-05-27 |  |  | 7d |
| 3 |  | INICIO DEL PROYECTO | 0d | 2026-05-11 A | 2026-05-11 A |  | 100% |  |
| 4 |  | INICIO LOTE-20 M-668 ARTICO-A | 0d | 2026-05-11 A | 2026-05-11 A | 3 | 100% |  |
| 5 |  | INICIO LOTE-21 M-668 CORSAC-A | 0d | 2026-05-20 | 2026-05-20 | 3FS+8d |  | 13d |
| 6 |  | INICIO LOTE-22 M-668 CORSAC-B | 0d | 2026-05-15 A | 2026-05-15 A | 3FS+5d | 100% |  |
| 7 |  | INICIO LOTE-02 M-661 CORSAC-B | 0d | 2026-05-20 | 2026-05-20 | 3FS+8d |  | 13d |
| 8 |  | INICIO LOTE-03 M-661 CORSAC-A | 0d | 2026-05-15 A | 2026-05-15 A | 3FS+5d | 100% |  |
| 9 |  | INICIO LOTE-04 M-661 ARTICO-A | 0d | 2026-05-27 | 2026-05-27 | 3FS+14d |  | 0d |
| 10 | 1.2 | **LOTE 20 M-663 ARTICO-A** | 175d | 2026-05-11 A | 2026-12-16 |  | 1% | 24d |
| 11 | 1.2.1 | **HITOS IMPORTANTES DEL LOTE** | 175d | 2026-05-11 A | 2026-12-16 |  |  | 24d |
| 12 |  | Inicio del Lote-20 M-663 Artico-A | 0d | 2026-05-11 A | 2026-05-11 A | 4 | 100% |  |
| 13 |  | Colado de Losa de Cimentación | 0d | 2026-06-01 | 2026-06-01 | 43 |  | 182d |
| 14 |  | Colado de Losa de Entrepiso | 0d | 2026-07-08 | 2026-07-08 | 80 |  | 151d |
| 15 |  | Colado de Losa de Azotea | 0d | 2026-08-14 | 2026-08-14 | 115 |  | 121d |
| 16 |  | Entrega de vivienda | 0d | 2026-12-16 | 2026-12-16 | 264, 265, 266 |  | 24d |
| 17 | 1.2.2 | **TRABAJOS PRELIMINARES** | 2d | 2026-05-11 A | 2026-05-12 A |  | 100% |  |
| 18 |  | Trazo y nivelación | 2d | 2026-05-11 A | 2026-05-12 A | 12 | 100% |  |
| 19 | 1.2.3 | **EXCAVACIONES** | 3d | 2026-05-13 A | 2026-05-15 A |  | 100% |  |
| 20 |  | Excavación a mano material tipo B | 3d | 2026-05-13 A | 2026-05-15 A | 18 | 100% |  |
| 21 |  | Acarreo en carretilla 20 m | 2d | 2026-05-14 A | 2026-05-15 A | 20SS+1d | 100% |  |
| 22 | 1.2.4 | **CIMENTACION** | 13d | 2026-05-16 | 2026-06-02 |  |  | 24d |
| 23 |  | Cimbra perimetral losa de cimentación | 3d | 2026-05-16 | 2026-05-20 | 20, 21 |  | 24d |
| 24 |  | Sistema antitermitas PVC | 3d | 2026-05-16 | 2026-05-20 | 20, 21 |  | 25d |
| 25 |  | Hule negro en cimentación | 1d | 2026-05-20 | 2026-05-21 | 24 |  | 25d |
| 26 |  | Ramaleo poliducto eléctrico cimentación | 2d | 2026-05-21 | 2026-05-23 | 25 |  | 28d |
| 27 |  | Ramaleo eléctrico base-medición a centro de carga | 1d | 2026-05-21 | 2026-05-22 | 25 |  | 29d |
| 28 |  | Ramaleo eléctrico exterior | 1d | 2026-05-23 | 2026-05-25 | 26, 27 |  | 28d |
| 29 |  | Ramaleo para cable poliducto 3/4 | 1d | 2026-05-23 | 2026-05-25 | 26, 27 |  | 28d |
| 30 |  | Ramaleo para TV poliducto 3/4 | 1d | 2026-05-23 | 2026-05-25 | 26, 27 |  | 28d |
| 31 |  | Ramaleo hidráulico CPVC 1 cimentación | 1d | 2026-05-21 | 2026-05-22 | 25 |  | 25d |
| 32 |  | Ramaleo hidráulico CPVC 3/4 cimentación | 2d | 2026-05-22 | 2026-05-25 | 31 |  | 25d |
| 33 |  | Ramaleo hidráulico CPVC 1/2 cimentación | 2d | 2026-05-25 | 2026-05-27 | 32 |  | 25d |
| 34 |  | Prueba hidráulica | 1d | 2026-05-27 | 2026-05-28 | 31, 32, 33 |  | 25d |
| 35 |  | Ramaleo sanitario PVC 4 cimentación | 2d | 2026-05-22 | 2026-05-25 | 25FS+1d |  | 26d |
| 36 |  | Ramaleo sanitario PVC 2 cimentación | 1d | 2026-05-25 | 2026-05-26 | 35 |  | 26d |
| 37 |  | Prueba sanitaria | 1d | 2026-05-26 | 2026-05-27 | 35, 36 |  | 26d |
| 38 |  | Acero contratrabe CT-1 | 4d | 2026-05-20 | 2026-05-25 | 23 |  | 24d |
| 39 |  | Acero contratrabe CT-2 | 4d | 2026-05-20 | 2026-05-25 | 23 |  | 24d |
| 40 |  | Malla electrosoldada 6-6/8-8 | 2d | 2026-05-27 | 2026-05-29 | 38, 39, 41, 42 |  | 24d |
| 41 |  | Bastón de refuerzo LS | 2d | 2026-05-25 | 2026-05-27 | 38, 39 |  | 24d |
| 42 |  | Bastón de refuerzo LI | 2d | 2026-05-25 | 2026-05-27 | 38, 39 |  | 24d |
| 43 |  | Colado losa de cimentación f’c=200 | 1d | 2026-05-29 | 2026-06-01 | 23, 25, 38, 39, 40, 41, 42, 37, 34, 28, 29, 30 |  | 24d |
| 44 |  | Curado de concreto | 1d | 2026-06-01 | 2026-06-02 | 43 |  | 24d |
| 45 |  | Acero zapata ZT-1 | 4d | 2026-05-25 | 2026-05-29 | 38, 39 |  | 181d |
| 46 |  | Acero zapata ZT-2 | 4d | 2026-05-25 | 2026-05-29 | 38, 39 |  | 181d |
| 47 |  | Colado zapatas aisladas f’c=200 | 1d | 2026-06-01 | 2026-06-02 | 48 |  | 181d |
| 48 |  | Cimbra frontera zapatas | 3d | 2026-05-27 | 2026-06-01 | 45FS-2d, 46FS-2d |  | 181d |
| 49 | 1.2.5 | **MUROS, PLANTA BAJA. CASTILLOS Y CERRAMIENTOS** | 20d | 2026-05-26 | 2026-06-19 |  |  | 29d |
| 50 |  | Anclaje de castillos y Columnas PB | 5d | 2026-05-26 | 2026-06-02 | 38FS+1d, 39FS+1d |  | 169d |
| 51 |  | Castillo K1 | 4d | 2026-06-02 | 2026-06-06 | 50, 44 |  | 169d |
| 52 |  | Castillo K2 | 4d | 2026-06-02 | 2026-06-06 | 50, 44 |  | 173d |
| 53 |  | Castillo K3 | 3d | 2026-06-04 | 2026-06-08 | 51FS-2d |  | 169d |
| 54 |  | Castillo K4 | 3d | 2026-06-04 | 2026-06-08 | 51FS-2d |  | 169d |
| 55 |  | Castillo K5 | 3d | 2026-06-06 | 2026-06-10 | 53FS-1d, 54FS-1d |  | 169d |
| 56 |  | Refuerzo de muro K6 | 3d | 2026-06-08 | 2026-06-11 | 55FS-2d |  | 169d |
| 57 |  | Columna C1 | 4d | 2026-06-02 | 2026-06-06 | 50, 44 |  | 173d |
| 58 |  | Columna C2 | 4d | 2026-06-06 | 2026-06-11 | 57 |  | 173d |
| 59 |  | Dala de cerramiento CR-1 | 4d | 2026-06-08 | 2026-06-12 | 51, 52, 53 |  | 172d |
| 60 |  | Dala de cerramiento CR-2 | 3d | 2026-06-08 | 2026-06-11 | 51, 52, 53 |  | 173d |
| 61 |  | Cadena block dala | 4d | 2026-06-11 | 2026-06-16 | 56 |  | 169d |
| 62 |  | Muro de ladrillo aparente | 15d | 2026-06-02 | 2026-06-19 | 44 |  | 24d |
| 63 |  | Muro de block planta baja | 13d | 2026-06-04 | 2026-06-19 | 44FS+2d |  | 24d |
| 64 | 1.2.6 | **ESCALERA** | 14d | 2026-07-09 | 2026-07-27 |  |  | 137d |
| 65 |  | Escalera de concreto armado | 14d | 2026-07-09 | 2026-07-27 | 80 |  | 137d |
| 66 | 1.2.7 | **LOSA DE ENTREPISO (viegueta y caseton)** | 18d | 2026-06-17 | 2026-07-09 |  |  | 27d |
| 67 |  | Vigueta pretensada 1.40 m | 3d | 2026-06-17 | 2026-06-22 | 62FS-2d, 63FS-2d |  | 29d |
| 68 |  | Vigueta pretensada 1.95 m | 4d | 2026-06-18 | 2026-06-24 | 62FS-1d, 63FS-1d |  | 27d |
| 69 |  | Vigueta pretensada 3.35 m | 4d | 2026-06-19 | 2026-06-25 | 62, 63 |  | 26d |
| 70 |  | Vigueta pretensada 3.50 m | 4d | 2026-06-22 | 2026-06-26 | 62FS+1d, 63FS+1d |  | 25d |

| ID | WBS | Task | Duration | Start | Finish | Predecessors | Total float |
| --- | --- | --- | --- | --- | --- | --- | --- |
| 71 |  | Vigueta pretensada 3.75 m | 4d | 2026-06-22 | 2026-06-26 | 62FS+1d, 63FS+1d | 25d |
| 72 |  | Vigueta pretensada 3.90 m | 4d | 2026-06-22 | 2026-06-26 | 62FS+1d, 63FS+1d | 25d |
| 73 |  | Bovedilla poliestireno entrepiso | 2d | 2026-06-26 | 2026-06-29 | 67, 68, 69, 70, 71, 72 | 25d |
| 74 |  | Dala de coronamiento | 3d | 2026-06-26 | 2026-06-30 | 79FS-1d, 67, 68, 69, 70, 71, 72 | 28d |
| 75 |  | Nervadura NR-1 | 3d | 2026-06-27 | 2026-07-01 | 79, 67, 68, 69, 70, 71, 72 | 24d |
| 76 |  | Nervadura NR-2 | 3d | 2026-06-27 | 2026-07-01 | 75SS | 26d |
| 77 |  | Trabe TR-1 | 5d | 2026-06-27 | 2026-07-03 | 75SS | 24d |
| 78 |  | Malla 66-10/10 losa de compresión | 2d | 2026-07-03 | 2026-07-06 | 73, 74, 88, 91 | 25d |
| 79 |  | Cimbra losa de azotea | 5d | 2026-06-22 | 2026-06-27 | 62FS+1d, 63FS+1d | 24d |
| 80 |  | Concreto losa de entrepiso f’c=200 | 1d | 2026-07-08 | 2026-07-08 | 75, 76, 77, 78, 85, 88, 91, 82, 93 | 24d |
| 81 |  | Curado de concreto | 1d | 2026-07-09 | 2026-07-09 | 80 | 24d |
| 82 |  | Cimbra exterior corta losa | 3d | 2026-06-30 | 2026-07-03 | 75FS-1d, 76FS-1d | 27d |
| 83 |  | Ramaleo poliducto eléctrico entrepiso | 2d | 2026-06-29 | 2026-07-01 | 73 | 28d |
| 84 |  | Ramaleo para cable poliducto 3/4 | 1d | 2026-06-29 | 2026-06-30 | 73 | 158d |
| 85 |  | Ramaleo para TV poliducto 3/4 | 1d | 2026-07-01 | 2026-07-02 | 83 | 28d |
| 86 |  | Ramaleo hidráulico CPVC 3/4 | 2d | 2026-06-30 | 2026-07-02 | 73FS+1d | 25d |
| 87 |  | Ramaleo hidráulico CPVC 1/2 | 1d | 2026-07-02 | 2026-07-03 | 86 | 25d |
| 88 |  | Prueba hidráulica | 1d | 2026-07-02 | 2026-07-03 | 86, 87FS-1d | 25d |
| 89 |  | Ramaleo sanitario PVC 4 | 2d | 2026-06-30 | 2026-07-02 | 73FS+1d | 25d |
| 90 |  | Ramaleo sanitario PVC 2 | 1d | 2026-07-02 | 2026-07-03 | 89 | 25d |
| 91 |  | Prueba sanitaria | 1d | 2026-07-02 | 2026-07-03 | 89, 90FS-1d | 25d |
| 92 | 1.2.8 | **MUROS EN PLANTA ALTA, CASTILLOS Y CERRM.** | 21d | 2026-07-02 | 2026-07-29 |  | 24d |
| 93 |  | Anclaje de castillos y Columnas PA | 4d | 2026-07-02 | 2026-07-07 | 75FS-1d, 76FS-1d, 77FS-1d | 24d |
| 94 |  | Castillo K1 | 4d | 2026-07-10 | 2026-07-15 | 81 | 28d |
| 95 |  | Castillo K2 | 4d | 2026-07-11 | 2026-07-16 | 81FS+1d | 27d |
| 96 |  | Castillo K3 | 3d | 2026-07-13 | 2026-07-16 | 81FS+2d | 27d |
| 97 |  | Castillo K4 | 3d | 2026-07-15 | 2026-07-18 | 94 | 28d |
| 98 |  | Castillo K5 | 3d | 2026-07-15 | 2026-07-18 | 94 | 28d |
| 99 |  | Refuerzo de muro K6 | 3d | 2026-07-16 | 2026-07-20 | 94, 95, 96 | 27d |
| 100 |  | Dala de cerramiento CR-1 | 4d | 2026-07-20 | 2026-07-24 | 97, 98, 99 | 27d |
| 101 |  | Cadena block dala | 3d | 2026-07-24 | 2026-07-29 | 99, 100 | 27d |
| 102 |  | Muro de ladrillo aparente | 15d | 2026-07-10 | 2026-07-29 | 81 | 24d |
| 103 |  | Muro de block planta alta | 14d | 2026-07-11 | 2026-07-29 | 81FS+1d | 24d |
| 104 | 1.2.9 | **LOSA AZOTEA** | 15d | 2026-07-29 | 2026-08-17 |  | 24d |
| 105 |  | Cortalosa CL-1 | 2d | 2026-08-11 | 2026-08-13 | 113 | 24d |
| 106 |  | Vigueta pretensada V11-40 390 | 5d | 2026-07-29 | 2026-08-04 | 102, 103, 101 | 27d |
| 107 |  | Vigueta pretensada V11-30 280 | 5d | 2026-07-29 | 2026-08-04 | 102, 103 | 27d |
| 108 |  | Vigueta pretensada V11-30 285 | 5d | 2026-07-29 | 2026-08-04 | 102, 103 | 27d |
| 109 |  | Vigueta pretensada V11-30 220 | 5d | 2026-07-31 | 2026-08-06 | 102FS+2d, 103FS+2d | 25d |
| 110 |  | Vigueta pretensada V11-40 75 | 5d | 2026-07-31 | 2026-08-06 | 102FS+2d, 103FS+2d | 25d |
| 111 |  | Vigueta pretensada V11-40 195 | 5d | 2026-08-01 | 2026-08-07 | 102FS+3d, 103FS+3d | 24d |
| 112 |  | Vigueta pretensada V11-50 450 | 5d | 2026-08-01 | 2026-08-07 | 102FS+3d, 103FS+3d | 24d |
| 113 |  | Bovedilla poliestireno azotea | 3d | 2026-08-07 | 2026-08-11 | 106, 107, 108, 109, 110, 111, 112 | 24d |
| 114 |  | Malla 66-10/10 losa de compresión | 2d | 2026-08-11 | 2026-08-13 | 113 | 24d |
| 115 |  | Concreto losa de azotea f’c=200 | 1d | 2026-08-13 | 2026-08-14 | 105, 113, 114, 118, 117 | 24d |
| 116 |  | Curado de concreto | 1d | 2026-08-14 | 2026-08-17 | 115 | 24d |
| 117 |  | Cimbra losa de azotea | 5d | 2026-07-29 | 2026-08-04 | 102, 103 | 32d |
| 118 |  | Ramaleo de poliducto para inst. electrica en azotea | 2d | 2026-08-11 | 2026-08-13 | 113 | 24d |
| 119 | 1.2.10 | **PRETIL Y ACABADOS DE AZOTEA** | 19d | 2026-08-17 | 2026-09-09 |  | 24d |
| 120 |  | Castillo K1 | 5d | 2026-08-19 | 2026-08-25 | 122SS+2d | 24d |
| 121 |  | Dala de cerramiento en pretil | 4d | 2026-08-22 | 2026-08-27 | 120FS-2d, 122FS-2d | 24d |
| 122 |  | Muro de block 12x15x40 | 5d | 2026-08-17 | 2026-08-22 | 116 | 24d |
| 123 |  | Chaflán en azotea | 4d | 2026-08-25 | 2026-08-29 | 122, 120 | 24d |
| 124 |  | Aplanado exterior Mortermax fino | 5d | 2026-08-27 | 2026-09-02 | 123FS-2d, 121 | 24d |
| 125 |  | Acabado de azotea para impermeabilizar | 4d | 2026-09-04 | 2026-09-09 | 126 | 24d |
| 126 |  | Curado de concreto | 1d | 2026-09-03 | 2026-09-03 | 123, 124 | 24d |
| 127 | 1.2.11 | **PRIMERA LIMPIEZA DE OBRA** | 4d | 2026-08-17 | 2026-08-21 |  | 77d |
| 128 |  | Primera limpieza de obra | 2d | 2026-08-17 | 2026-08-19 | 116 | 77d |
| 129 |  | Primera carga y acarreo de escombro | 2d | 2026-08-19 | 2026-08-21 | 128 | 77d |
| 130 | 1.2.12 | **IMPERMEABILIZACION** | 5d | 2026-09-09 | 2026-09-15 |  | 24d |
| 131 |  | Impermeabilización de pretil Kover 5 años | 4d | 2026-09-09 | 2026-09-14 | 125 | 25d |
| 132 |  | Impermeabilización de losa Kover 5 años | 5d | 2026-09-09 | 2026-09-15 | 125 | 24d |
| 133 | 1.2.13 | **ALBAÑILERIA** | 62d | 2026-08-22 | 2026-11-09 |  | 43d |
| 134 |  | Lavadero de granito | 4d | 2026-10-06 | 2026-10-12 | 158SS+8d | 76d |
| 135 |  | Ramaleo hidráulico exterior CPVC 1 1/4 | 3d | 2026-09-15 | 2026-09-21 | 131, 132 | 24d |
| 136 |  | Ramaleo hidráulico exterior CPVC 1 | 2d | 2026-09-15 | 2026-09-18 | 135SS | 24d |
| 137 |  | Ramaleo hidráulico exterior CPVC 3/4 | 2d | 2026-09-18 | 2026-09-22 | 136 | 24d |
| 138 |  | Ramaleo hidráulico exterior CPVC 1/2 | 2d | 2026-09-18 | 2026-09-22 | 136 | 24d |
| 139 |  | Prueba hidráulica | 1d | 2026-09-22 | 2026-09-23 | 135, 136, 137, 138 | 24d |
| 140 |  | Ramaleo sanitario exterior PVC 4 | 4d | 2026-09-15 | 2026-09-22 | 131, 132 | 24d |

| ID | WBS | Task | Duration | Start | Finish | Predecessors | Total float |
| --- | --- | --- | --- | --- | --- | --- | --- |
| 141 |  | Ramaleo sanitario exterior PVC 2 | 3d | 2026-09-17 | 2026-09-22 | 140SS+1d | 24d |
| 142 |  | Prueba sanitaria | 1d | 2026-09-22 | 2026-09-23 | 140, 141 | 24d |
| 143 |  | Centro de carga muros PB | 4d | 2026-09-21 | 2026-09-25 | 131FS+3d, 132FS+3d | 26d |
| 144 |  | Firme de concreto 8 cm | 4d | 2026-09-23 | 2026-09-28 | 139, 142, 146 | 70d |
| 145 |  | Curado de concreto | 1d | 2026-09-28 | 2026-09-29 | 144 | 70d |
| 146 |  | Cisterna 2800 L con instalación | 18d | 2026-08-22 | 2026-09-14 | 122, 128, 129 | 76d |
| 147 |  | Banqueta y huellas de concreto | 8d | 2026-09-30 | 2026-10-09 | 139, 142, 180, 235FS-2d, 241 | 53d |
| 148 |  | Curado de concreto | 1d | 2026-10-09 | 2026-10-12 | 147 | 53d |
| 149 |  | Número oficial | 1d | 2026-11-07 | 2026-11-09 | 155, 156 | 53d |
| 150 |  | Detallado de rodapié exterior | 4d | 2026-09-25 | 2026-09-30 | 153 | 85d |
| 151 |  | Detallado de muros interiores | 4d | 2026-09-15 | 2026-09-22 | 131, 132 | 28d |
| 152 | 1.2.14 | **ACABADOS EN FACHADA A** | 47d | 2026-09-09 | 2026-11-07 |  | 54d |
| 153 |  | Aplanado grueso fachada | 12d | 2026-09-09 | 2026-09-25 | 125 | 84d |
| 154 |  | Aplanado fino estuco fachada | 10d | 2026-09-18 | 2026-10-01 | 153SS+7d | 84d |
| 155 |  | Pintura acrílica 1-0102P | 8d | 2026-10-27 | 2026-11-05 | 145FS+5d, 148FS+12d | 55d |
| 156 |  | Pintura acrílica 1-1404D | 10d | 2026-10-27 | 2026-11-07 | 145FS+5d, 148FS+12d | 53d |
| 157 | 1.2.15 | **APLANADOS Y PINTURA** | 63d | 2026-09-15 | 2026-12-04 |  | 26d |
| 158 |  | Yeso pulido en muros | 14d | 2026-09-26 | 2026-10-14 | 161FS-4d, 151, 143FS-1d, 215FS-2d, 216, 217, 218, 219, 220FS-1d, 221FS-1d, 222FS-1d, 223FS-1d, 224FS-2d, 225FS-2d, 226FS-3d, 229FS-1d, 230FS-5d, 231FS-5d, 232FS-6d, 233FS-2d, 234FS-7d | 24d |
| 159 |  | Pintura vinílica 699 Cottage White | 13d | 2026-11-19 | 2026-12-04 | 166FS-2d, 167FS-2d, 178FS-2d, 185, 186, 187, 188, 189, 190, 192, 193, 194, 195, 244, 245, 246, 247 | 24d |
| 160 |  | Pintura vinílica 691 Pacific Bungalow | 10d | 2026-11-06 | 2026-11-20 | 166, 167, 178 | 45d |
| 161 |  | Yeso pulido en plafones | 10d | 2026-09-15 | 2026-09-29 | 131, 132 | 26d |
| 162 |  | Pintura vinílica Nano White | 7d | 2026-11-10 | 2026-11-20 | 166FS+3d, 167FS+3d, 178FS+3d | 45d |
| 163 |  | Perfilado de puertas y ventanas | 4d | 2026-10-01 | 2026-10-06 | 158SS+4d | 80d |
| 164 | 1.2.16 | **PISOS Y AZULEJOS** | 23d | 2026-10-08 | 2026-11-06 |  | 26d |
| 165 | 1.2.16.1 | **AREA SOCIAL** | 15d | 2026-10-12 | 2026-10-29 |  | 24d |
| 166 |  | Piso Moonside Crema 60x60 | 14d | 2026-10-12 | 2026-10-28 | 158FS-2d, 237, 236 | 24d |
| 167 |  | Zoclo piso 60x60 Moonside Crema | 5d | 2026-10-23 | 2026-10-29 | 166FS-4d | 41d |
| 168 | 1.2.16.2 | **BAÑOS** | 17d | 2026-10-08 | 2026-10-29 |  | 35d |
| 169 |  | Piso Moonside Crema 60x60 | 4d | 2026-10-23 | 2026-10-28 | 173 | 35d |
| 170 |  | Zoclo piso 60x60 Moonside Crema | 2d | 2026-10-28 | 2026-10-29 | 169FS-1d | 61d |
| 171 |  | Piso porcelánico Acali 20x20 beige | 3d | 2026-10-23 | 2026-10-27 | 173 | 63d |
| 172 |  | Impermeabilización en regadera | 2d | 2026-10-16 | 2026-10-19 | 158, 174 | 35d |
| 173 |  | Azulejo Moonside Crema 60x60 | 5d | 2026-10-17 | 2026-10-23 | 172FS-1d, 227, 228, 237 | 35d |
| 174 |  | Fabricacion de nicho decorativo en baños | 6d | 2026-10-08 | 2026-10-16 | 158FS-4d | 35d |
| 175 |  | Sardinel en regadera | 4d | 2026-10-23 | 2026-10-28 | 173 | 62d |
| 176 | 1.2.16.3 | **ESCALERA** | 9d | 2026-10-27 | 2026-11-06 |  | 24d |
| 177 |  | Piso Moonside Crema 60x60 | 7d | 2026-10-27 | 2026-11-04 | 158, 166FS-2d | 24d |
| 178 |  | Zoclo piso 60x60 Moonside Crema | 4d | 2026-11-02 | 2026-11-06 | 177FS-2d | 24d |
| 179 | 1.2.17 | **EXTERIOR** | 3d | 2026-09-23 | 2026-09-26 |  | 30d |
| 180 |  | Rastrilleo, afine y nivelado de tierra | 3d | 2026-09-23 | 2026-09-26 | 139, 142 | 30d |
| 181 | 1.2.18 | **SEGUNDA LIMPIEZA DE OBRA** | 4d | 2026-11-06 | 2026-11-11 |  | 42d |
| 182 |  | Segunda limpieza de obra | 2d | 2026-11-06 | 2026-11-09 | 177, 178 | 42d |
| 183 |  | Segunda carga y acarreo de escombro | 2d | 2026-11-09 | 2026-11-11 | 182 | 42d |
| 184 | 1.2.19 | **CANCELERIA PUERTAS Y VENTANAS DE ALUMINIO** | 13d | 2026-10-27 | 2026-11-11 |  | 29d |
| 185 |  | Puerta ventana P-05 corrediza | 7d | 2026-10-29 | 2026-11-06 | 158, 166 | 33d |
| 186 |  | Ventana corrediza V-01 | 4d | 2026-10-27 | 2026-10-30 | 158FS+10d | 38d |
| 187 |  | Ventana corrediza V-03 | 4d | 2026-10-29 | 2026-11-03 | 158FS+12d | 36d |
| 188 |  | Ventana corrediza V-05 | 4d | 2026-10-29 | 2026-11-03 | 158FS+12d | 36d |
| 189 |  | Ventana corrediza tipo XO | 4d | 2026-11-02 | 2026-11-06 | 158FS+10d, 166FS+3d | 33d |
| 190 |  | Ventana fija escalera | 6d | 2026-11-04 | 2026-11-11 | 158FS+7d, 166FS+2d, 177 | 29d |
| 191 | 1.2.20 | **CARPINTERIA, PUERTAS EXTERIORES E INTERIORES** | 9d | 2026-11-06 | 2026-11-19 |  | 24d |
| 192 |  | Puerta P-01 de seguridad | 5d | 2026-11-06 | 2026-11-12 | 178 | 28d |
| 193 |  | Puerta P-03 interior | 8d | 2026-11-06 | 2026-11-18 | 178 | 25d |
| 194 |  | Puerta P-02 interior | 8d | 2026-11-06 | 2026-11-18 | 178 | 25d |
| 195 |  | Puerta exterior lavandería | 4d | 2026-11-12 | 2026-11-19 | 178FS+5d | 24d |
| 196 | 1.2.21 | **INSTALACION ELECTRICA** | 19d | 2026-10-05 | 2026-10-28 |  | 53d |
| 197 |  | Alimentación eléctrica base a centro de carga | 5d | 2026-10-14 | 2026-10-20 | 143, 158 | 57d |
| 198 |  | Interruptor termomagnético 1x15 A | 1d | 2026-10-20 | 2026-10-21 | 197 | 57d |
| 199 |  | Interruptor termomagnético 1x20 A | 1d | 2026-10-20 | 2026-10-21 | 197 | 57d |
| 200 |  | Interruptor termomagnético 2x20 A | 1d | 2026-10-20 | 2026-10-21 | 197 | 57d |
| 201 |  | Salida para apagador 3 vías | 4d | 2026-10-08 | 2026-10-14 | 131, 158FS-4d | 53d |
| 202 |  | Salida para apagador triple | 3d | 2026-10-14 | 2026-10-17 | 131, 132, 158 | 57d |
| 203 |  | Salida para apagador doble | 3d | 2026-10-17 | 2026-10-21 | 201, 202 | 57d |
| 204 |  | Salida para apagador sencillo | 3d | 2026-10-14 | 2026-10-17 | 201 | 60d |
| 205 |  | Salida de alumbrado en losa | 5d | 2026-10-14 | 2026-10-20 | 201 | 55d |
| 206 |  | Salida de alumbrado en muro | 4d | 2026-10-14 | 2026-10-19 | 201 | 59d |
| 207 |  | Salida para contacto 220 V | 3d | 2026-10-16 | 2026-10-20 | 201FS+2d | 53d |
| 208 |  | Salida para contacto doble | 5d | 2026-10-16 | 2026-10-22 | 201FS+2d | 56d |
| 209 |  | Salida para contacto doble área húmeda | 2d | 2026-10-20 | 2026-10-22 | 207 | 56d |
| 210 |  | Salida TV / telefonía / intercom | 4d | 2026-10-20 | 2026-10-24 | 207 | 54d |

| ID | WBS | Task | Duration | Start | Finish | Predecessors | Total float |
| --- | --- | --- | --- | --- | --- | --- | --- |
| 211 |  | Extractor 4 baño | 5d | 2026-10-20 | 2026-10-26 | 207 | 53d |
| 212 |  | Prueba eléctrica | 2d | 2026-10-27 | 2026-10-28 | 197, 198, 199, 200, 201, 202, 203, 204, 205, 206, 207, 208, 209, 210, 211, 213, 260, 261, 262 | 53d |
| 213 |  | Murete convencional | 4d | 2026-10-05 | 2026-10-09 | 147FS-4d | 66d |
| 214 | 1.2.22 | **INSTALACIÓN HIDRO-SANITARIA** | 11d | 2026-09-23 | 2026-10-06 |  | 24d |
| 215 |  | Tubo PVC 3/4 red de condensados | 5d | 2026-09-23 | 2026-09-29 | 139 | 24d |
| 216 |  | Caja PVC para lavadora | 3d | 2026-09-23 | 2026-09-26 | 139 | 24d |
| 217 |  | Salida para secadora PVC 4 | 3d | 2026-09-23 | 2026-09-26 | 142 | 24d |
| 218 |  | Salida hidráulica para boiler | 2d | 2026-09-23 | 2026-09-25 | 139 | 25d |
| 219 |  | Salida hidráulica para llave de jardín | 3d | 2026-09-23 | 2026-09-26 | 139 | 24d |
| 220 |  | Salida hidráulica para lavabo | 4d | 2026-09-23 | 2026-09-28 | 139 | 24d |
| 221 |  | Salida hidráulica para purificación | 4d | 2026-09-23 | 2026-09-28 | 139 | 24d |
| 222 |  | Salida sanitaria para lavabo | 2d | 2026-09-25 | 2026-09-28 | 139FS+2d | 24d |
| 223 |  | Salida hidráulica para lavadero | 2d | 2026-09-25 | 2026-09-28 | 139FS+2d | 24d |
| 224 |  | Salida sanitaria para lavadero | 2d | 2026-09-26 | 2026-09-29 | 139FS+3d | 24d |
| 225 |  | Salida hidráulica para lavadora | 2d | 2026-09-26 | 2026-09-29 | 139FS+3d | 24d |
| 226 |  | Salida sanitaria para lavadora | 2d | 2026-09-28 | 2026-09-30 | 142FS+4d | 24d |
| 227 |  | Salida hidráulica para regadera | 5d | 2026-09-28 | 2026-10-03 | 139FS+4d | 29d |
| 228 |  | Salida sanitaria para regadera | 4d | 2026-09-28 | 2026-10-02 | 142FS+4d | 30d |
| 229 |  | Salida hidráulica para WC | 2d | 2026-09-25 | 2026-09-28 | 142FS+2d | 24d |
| 230 |  | Salida sanitaria para WC | 4d | 2026-09-28 | 2026-10-02 | 142FS+4d | 24d |
| 231 |  | Salida hidráulica para zinc | 4d | 2026-09-28 | 2026-10-02 | 142FS+4d | 24d |
| 232 |  | Salida sanitaria para zinc | 3d | 2026-09-30 | 2026-10-03 | 142FS+6d | 24d |
| 233 |  | Tubo para ventila de baño 2 | 5d | 2026-09-23 | 2026-09-29 | 215SS | 24d |
| 234 |  | Tubo para minisplit PVC 3 | 5d | 2026-09-29 | 2026-10-05 | 233 | 24d |
| 235 |  | Cuadro de medición | 5d | 2026-09-26 | 2026-10-02 | 180 | 30d |
| 236 |  | Prueba sanitaria | 1d | 2026-10-05 | 2026-10-06 | 217, 222, 224, 226, 228, 230, 233, 234 | 28d |
| 237 |  | Prueba hidráulica | 1d | 2026-10-03 | 2026-10-05 | 215, 218, 219, 220, 221, 223, 225, 227, 229, 231, 235, 238, 239 | 29d |
| 238 |  | Salida hidráulica para tanque hidroneumático | 3d | 2026-09-26 | 2026-09-30 | 180 | 32d |
| 239 |  | Salida hidráulica para Active Driver | 3d | 2026-09-26 | 2026-09-30 | 180 | 32d |
| 240 | 1.2.23 | **INSTALACION DE GAS** | 8d | 2026-09-21 | 2026-09-30 |  | 53d |
| 241 |  | Ramaleo para gas 1/2 | 5d | 2026-09-24 | 2026-09-30 | 180FS-2d, 242 | 53d |
| 242 |  | Excavación a mano material tipo B | 3d | 2026-09-21 | 2026-09-24 | 180FF-2d | 53d |
| 243 | 1.2.24 | **MUEBLES SANITARIOS** | 29d | 2026-10-29 | 2026-12-04 |  | 24d |
| 244 |  | WC one piece Smart Corona | 2d | 2026-10-29 | 2026-10-30 | 236, 237, 166, 169 | 38d |
| 245 |  | Lavabo Tarento Vanity | 4d | 2026-10-29 | 2026-11-03 | 236, 237, 166, 169, 173 | 36d |
| 246 |  | Regadera y monomando Thames | 3d | 2026-10-31 | 2026-11-04 | 236, 237, 173FS+2d, 166, 169FS+2d | 35d |
| 247 |  | Coladera cuadrada para inserto cerámico | 2d | 2026-11-02 | 2026-11-04 | 237, 173, 169FS+3d | 35d |
| 248 |  | Toallero argolla Thames | 1d | 2026-12-03 | 2026-12-04 | 159FS-1d | 24d |
| 249 |  | Toallero barra Thames | 1d | 2026-12-03 | 2026-12-04 | 159FS-1d | 24d |
| 250 |  | Portapapel Thames | 1d | 2026-12-03 | 2026-12-04 | 159FS-1d | 24d |
| 251 |  | Gancho percha Thames | 1d | 2026-12-03 | 2026-12-04 | 159FS-1d | 24d |
| 252 | 1.2.25 | **EQUIPAMIENTO** | 6d | 2026-09-12 | 2026-09-22 |  | 83d |
| 253 |  | Electronivel Rotoplas 5 m | 2d | 2026-09-14 | 2026-09-17 | 258 | 86d |
| 254 |  | Manómetro | 1d | 2026-09-14 | 2026-09-15 | 258 | 87d |
| 255 |  | Interruptor de presión 30-50 PSI | 1d | 2026-09-14 | 2026-09-15 | 258 | 87d |
| 256 |  | Tanque hidroneumático FPS-24LX | 3d | 2026-09-14 | 2026-09-18 | 258 | 83d |
| 257 |  | Bomba sumergible Dominator 1.2 HP | 2d | 2026-09-18 | 2026-09-22 | 256 | 83d |
| 258 |  | Cisterna prefabricada 2800 L | 1d | 2026-09-12 | 2026-09-14 | 146FF | 83d |
| 259 | 1.2.26 | **LUMINARIAS** | 3d | 2026-10-20 | 2026-10-23 |  | 55d |
| 260 |  | Roseta de cerámica para luminaria | 3d | 2026-10-20 | 2026-10-23 | 205 | 55d |
| 261 |  | Spot Brighton | 3d | 2026-10-20 | 2026-10-23 | 205 | 55d |
| 262 |  | Arbotante bidireccional 12W | 2d | 2026-10-20 | 2026-10-22 | 205 | 56d |
| 263 | 1.2.27 | **TERCER LIMPIEZA DE OBRA** | 9d | 2026-12-04 | 2026-12-16 |  | 24d |
| 264 |  | Limpieza fina para entrega | 5d | 2026-12-04 | 2026-12-11 | 212, 195, 190, 159, 237, 236, 248, 249, 250, 251, 268, 253, 254, 255, 256, 257, 183 | 24d |
| 265 |  | Tercera limpieza de obra | 4d | 2026-12-08 | 2026-12-12 | 264FS-3d | 24d |
| 266 |  | Tercera carga y acarreo de escombro | 3d | 2026-12-12 | 2026-12-16 | 265 | 24d |
| 267 | 1.2.28 | **OBRA EXTERIOR - BARDA** | 18d | 2026-09-26 | 2026-10-19 |  | 61d |
| 268 |  | Barda de block aparente | 18d | 2026-09-26 | 2026-10-19 | 180 | 61d |
| 269 | 1.3 | **LOTE 21 M-663 CORSAC-A** | 178d | 2026-05-20 | 2027-01-04 |  | 13d |
| 270 | 1.3.1 | **HITOS IMPORTANTES DEL LOTE** | 178d | 2026-05-20 | 2027-01-04 |  | 13d |
| 271 |  | Inicio del Lote-21 M-663 Corsac-A | 0d | 2026-05-20 | 2026-05-20 | 5 | 13d |
| 272 |  | Colado de Losa de Cimentación | 0d | 2026-06-10 | 2026-06-10 | 303 | 174d |
| 273 |  | Colado de Losa de Entrepiso | 0d | 2026-07-17 | 2026-07-17 | 339 | 144d |
| 274 |  | Colado de Losa de Azotea | 0d | 2026-08-24 | 2026-08-24 | 379 | 114d |
| 275 |  | Entrega de vivienda | 0d | 2027-01-04 | 2027-01-04 | 571, 572, 573 | 13d |
| 276 | 1.3.2 | **TRABAJOS PRELIMINARES** | 2d | 2026-05-20 | 2026-05-22 |  | 13d |
| 277 |  | Trazo y nivelación | 2d | 2026-05-20 | 2026-05-22 | 271 | 13d |
| 278 | 1.3.3 | **EXCAVACIONES** | 3d | 2026-05-22 | 2026-05-26 |  | 13d |
| 279 |  | Excavación a mano material tipo B | 3d | 2026-05-22 | 2026-05-26 | 277 | 13d |
| 280 |  | Acarreo en carretilla 20 m | 2d | 2026-05-23 | 2026-05-26 | 279SS+1d | 13d |

| ID | WBS | Task | Duration | Start | Finish | Predecessors | Total float |
| --- | --- | --- | --- | --- | --- | --- | --- |
| 281 | 1.3.4 | **CIMENTACION** | 13d | 2026-05-26 | 2026-06-11 |  | 13d |
| 282 |  | Cimbra perimetral losa de cimentación | 3d | 2026-05-26 | 2026-05-29 | 279, 280 | 13d |
| 283 |  | Sistema antitermitas PVC | 3d | 2026-05-26 | 2026-05-29 | 279, 280 | 14d |
| 284 |  | Hule negro en cimentación | 1d | 2026-05-29 | 2026-06-01 | 283 | 14d |
| 285 |  | Ramaleo poliducto eléctrico cimentación | 2d | 2026-06-01 | 2026-06-03 | 284 | 17d |
| 286 |  | Ramaleo eléctrico base-medición a centro de carga | 1d | 2026-06-01 | 2026-06-02 | 284 | 18d |
| 287 |  | Ramaleo eléctrico exterior | 1d | 2026-06-03 | 2026-06-04 | 285, 286 | 17d |
| 288 |  | Ramaleo para cable poliducto 3/4 | 1d | 2026-06-03 | 2026-06-04 | 285, 286 | 17d |
| 289 |  | Ramaleo para TV poliducto 3/4 | 1d | 2026-06-03 | 2026-06-04 | 285, 286 | 17d |
| 290 |  | Ramaleo hidráulico CPVC 1-1/4" cimentación | 1d | 2026-06-01 | 2026-06-02 | 284 | 14d |
| 291 |  | Ramaleo hidráulico CPVC 1 cimentación | 1d | 2026-06-01 | 2026-06-02 | 284, 290SS | 14d |
| 292 |  | Ramaleo hidráulico CPVC 3/4 cimentación | 2d | 2026-06-02 | 2026-06-04 | 291 | 14d |
| 293 |  | Ramaleo hidráulico CPVC 1/2 cimentación | 2d | 2026-06-04 | 2026-06-06 | 292 | 14d |
| 294 |  | Prueba hidráulica | 1d | 2026-06-06 | 2026-06-08 | 290, 291, 292, 293 | 14d |
| 295 |  | Ramaleo sanitario PVC 4 cimentación | 2d | 2026-06-02 | 2026-06-04 | 284FS+1d | 15d |
| 296 |  | Ramaleo sanitario PVC 2 cimentación | 1d | 2026-06-04 | 2026-06-05 | 295 | 15d |
| 297 |  | Prueba sanitaria | 1d | 2026-06-05 | 2026-06-06 | 295, 296 | 15d |
| 298 |  | Acero contratrabe CT-1 | 4d | 2026-05-29 | 2026-06-04 | 282 | 13d |
| 299 |  | Acero contratrabe CT-2 | 4d | 2026-05-29 | 2026-06-04 | 282 | 13d |
| 300 |  | Malla electrosoldada 6-6/8-8 | 2d | 2026-06-06 | 2026-06-09 | 298, 299, 301, 302 | 13d |
| 301 |  | Bastón de refuerzo LS | 2d | 2026-06-04 | 2026-06-06 | 298, 299 | 13d |
| 302 |  | Bastón de refuerzo LI | 2d | 2026-06-04 | 2026-06-06 | 298, 299 | 13d |
| 303 |  | Colado losa de cimentación f’c=200 | 1d | 2026-06-09 | 2026-06-10 | 282, 284, 287, 288, 289, 294, 297, 298, 299, 300, 301, 302, 305, 306 | 13d |
| 304 |  | Curado de concreto | 1d | 2026-06-10 | 2026-06-11 | 303 | 13d |
| 305 |  | Acero zapata ZT-1 | 4d | 2026-06-04 | 2026-06-09 | 298, 299 | 13d |
| 306 |  | Acero zapata ZT-2 | 4d | 2026-06-04 | 2026-06-09 | 298, 299 | 13d |
| 307 | 1.3.5 | **MUROS, PLANTA BAJA. CASTILLOS Y CERRAMIENTOS** | 20d | 2026-06-05 | 2026-06-30 |  | 18d |
| 308 |  | Anclaje de castillos y Columnas PB | 5d | 2026-06-05 | 2026-06-11 | 298FS+1d, 299FS+1d | 161d |
| 309 |  | Castillo K1 | 4d | 2026-06-11 | 2026-06-16 | 304, 308 | 161d |
| 310 |  | Castillo K3 | 3d | 2026-06-13 | 2026-06-17 | 309FS-2d | 161d |
| 311 |  | Castillo K4 | 3d | 2026-06-13 | 2026-06-17 | 309FS-2d | 161d |
| 312 |  | Castillo K5 | 3d | 2026-06-16 | 2026-06-19 | 310FS-1d, 311FS-1d | 161d |
| 313 |  | Refuerzo de muro K6 | 3d | 2026-06-17 | 2026-06-22 | 312FS-2d | 161d |
| 314 |  | Dala de cerramiento CR-1 | 4d | 2026-06-17 | 2026-06-23 | 309, 310 | 164d |
| 315 |  | Dala de cerramiento CR-2 | 3d | 2026-06-17 | 2026-06-22 | 309, 310 | 165d |
| 316 |  | Cadena block dala | 4d | 2026-06-22 | 2026-06-26 | 313 | 161d |
| 317 |  | Muro de ladrillo aparente | 15d | 2026-06-11 | 2026-06-30 | 304 | 13d |
| 318 |  | Muro de block planta baja | 13d | 2026-06-13 | 2026-06-30 | 304FS+2d | 13d |
| 319 |  | Ramaleo electrico en Muros Planta Baja | 4d | 2026-06-17 | 2026-06-23 | 317SS+5d | 16d |
| 320 |  | Ramaleo para cable poliducto 3/4 | 2d | 2026-06-23 | 2026-06-25 | 319 | 16d |
| 321 |  | Ramaleo para TV poliducto 3/4 | 3d | 2026-06-25 | 2026-06-29 | 320 | 16d |
| 322 | 1.3.6 | **ESCALERA** | 10d | 2026-07-17 | 2026-07-30 |  | 90d |
| 323 |  | Escalera de concreto armado | 10d | 2026-07-17 | 2026-07-30 | 339 | 90d |
| 324 | 1.3.7 | **LOSA DE ENTREPISO (viegueta y caseton)** | 17d | 2026-06-27 | 2026-07-18 |  | 16d |
| 325 |  | Dala de coronamiento 10cm | 3d | 2026-07-07 | 2026-07-09 | 341FS-1d, 327, 328, 329, 330, 331, 332 | 16d |
| 326 |  | Dala de coronamiento 12cm | 3d | 2026-07-08 | 2026-07-10 | 341, 327, 328, 329, 330, 331, 332 | 15d |
| 327 |  | Trabe TR-1 | 3d | 2026-06-27 | 2026-07-01 | 317FS-2d, 318FS-2d | 17d |
| 328 |  | Trabe TR-2 | 4d | 2026-06-29 | 2026-07-03 | 317FS-1d, 318FS-1d | 15d |
| 329 |  | Nervadura NR-1 | 4d | 2026-06-30 | 2026-07-04 | 317, 318 | 14d |
| 330 |  | Nervadura NR-2 | 4d | 2026-07-01 | 2026-07-06 | 317FS+1d, 318FS+1d | 13d |
| 331 |  | Nervadura NR-3 | 4d | 2026-07-01 | 2026-07-06 | 317FS+1d, 318FS+1d | 13d |
| 332 |  | Nervadura NR-4 | 4d | 2026-07-01 | 2026-07-06 | 317FS+1d, 318FS+1d | 13d |
| 333 |  | Hacero de refuerzo en nervios #3 | 2d | 2026-07-07 | 2026-07-08 | 327, 328, 329, 330, 331, 332 | 13d |
| 334 |  | Acero de refuerzo long. #3 | 3d | 2026-07-08 | 2026-07-10 | 327, 328, 329, 330, 331, 332, 341 | 14d |
| 335 |  | Acero de refuerzo long. #4 | 3d | 2026-07-08 | 2026-07-10 | 334SS | 14d |
| 336 |  | Malla 66-10/10 losa de compresión | 2d | 2026-07-14 | 2026-07-16 | 325, 326, 333, 346, 349, 338 | 13d |
| 337 |  | Acero de Losa Maciza | 3d | 2026-07-07 | 2026-07-09 | 329, 330, 331, 332 | 18d |
| 338 |  | Caseton de 60x60x20cm | 2d | 2026-07-07 | 2026-07-08 | 329, 330, 331, 332 | 17d |
| 339 |  | Concreto losa de entrepiso f’c=200 | 1d | 2026-07-16 | 2026-07-17 | 334, 335, 336, 337, 346, 349, 342, 351 | 13d |
| 340 |  | Curado de concreto | 1d | 2026-07-17 | 2026-07-18 | 339 | 13d |
| 341 |  | Cimbra losa de azotea | 5d | 2026-07-01 | 2026-07-07 | 317FS+1d, 318FS+1d, 321 | 14d |
| 342 |  | Cimbra exterior corta losa | 3d | 2026-07-10 | 2026-07-14 | 334FS-1d, 335FS-1d | 15d |
| 343 |  | Ramaleo poliducto eléctrico entrepiso | 2d | 2026-07-09 | 2026-07-10 | 333 | 149d |
| 344 |  | Ramaleo hidráulico CPVC 3/4" | 2d | 2026-07-10 | 2026-07-13 | 333FS+1d | 13d |
| 345 |  | Ramaleo hidráulico CPVC 1/2" | 1d | 2026-07-13 | 2026-07-14 | 344 | 13d |
| 346 |  | Prueba hidráulica | 1d | 2026-07-13 | 2026-07-14 | 344, 345FS-1d | 13d |
| 347 |  | Ramaleo sanitario PVC 4" | 2d | 2026-07-10 | 2026-07-13 | 333FS+1d | 13d |
| 348 |  | Ramaleo sanitario PVC 2" | 1d | 2026-07-13 | 2026-07-14 | 347 | 13d |
| 349 |  | Prueba sanitaria | 1d | 2026-07-13 | 2026-07-14 | 347, 348FS-1d | 13d |
| 350 | 1.3.8 | **MUROS EN PLANTA ALTA, CASTILLOS Y CERRM.** | 22d | 2026-07-10 | 2026-08-06 |  | 14d |

| ID | WBS | Task | Duration | Start | Finish | Predecessors | Total float |
| --- | --- | --- | --- | --- | --- | --- | --- |
| 351 |  | Anclaje de castillos y Columnas PA | 4d | 2026-07-10 | 2026-07-15 | 334FS-1d, 335FS-1d | 14d |
| 352 |  | Castillo K1 | 4d | 2026-07-18 | 2026-07-23 | 340 | 17d |
| 353 |  | Castillo K2 | 4d | 2026-07-20 | 2026-07-24 | 340FS+1d | 16d |
| 354 |  | Castillo K4 | 3d | 2026-07-23 | 2026-07-28 | 352 | 17d |
| 355 |  | Castillo K5 | 3d | 2026-07-23 | 2026-07-28 | 352 | 17d |
| 356 |  | Castillo K6 | 3d | 2026-07-23 | 2026-07-28 | 352 | 17d |
| 357 |  | Refuerzo de muro | 3d | 2026-07-24 | 2026-07-29 | 352, 353 | 16d |
| 358 |  | Dala de cerramiento CR-1 | 4d | 2026-07-29 | 2026-08-03 | 354, 355, 356, 357 | 16d |
| 359 |  | Dala de cerramiento CR-2 | 4d | 2026-07-29 | 2026-08-03 | 354, 355, 356, 357 | 16d |
| 360 |  | Cadena block dala | 3d | 2026-08-03 | 2026-08-06 | 357, 358, 359 | 16d |
| 361 |  | Muro de ladrillo aparente | 15d | 2026-07-18 | 2026-08-06 | 340 | 13d |
| 362 |  | Muro de block planta alta | 14d | 2026-07-20 | 2026-08-06 | 340FS+1d | 13d |
| 363 |  | Ramaleo electrico en Muros Planta Alta | 4d | 2026-07-29 | 2026-08-03 | 361SS+8d | 24d |
| 364 | 1.3.9 | **LOSA AZOTEA** | 15d | 2026-08-06 | 2026-08-25 |  | 13d |
| 365 |  | Cortalosa CL-1 | 2d | 2026-08-20 | 2026-08-22 | 377 | 13d |
| 366 |  | Cortalosa CL-2 | 2d | 2026-08-20 | 2026-08-22 | 377 | 13d |
| 367 |  | Vigueta pretensada V11-30 125 | 5d | 2026-08-06 | 2026-08-12 | 360, 361, 362 | 16d |
| 368 |  | Vigueta pretensada V11-30 185 | 5d | 2026-08-06 | 2026-08-12 | 361, 362 | 16d |
| 369 |  | Vigueta pretensada V11-30 190 | 5d | 2026-08-06 | 2026-08-12 | 361, 362 | 16d |
| 370 |  | Vigueta pretensada V11-30 205 | 5d | 2026-08-08 | 2026-08-14 | 361FS+2d, 362FS+2d | 14d |
| 371 |  | Vigueta pretensada V11-30 215 | 5d | 2026-08-08 | 2026-08-14 | 361FS+2d, 362FS+2d | 14d |
| 372 |  | Vigueta pretensada V11-30 260 | 5d | 2026-08-10 | 2026-08-17 | 361FS+3d, 362FS+3d | 13d |
| 373 |  | Vigueta pretensada V11-30 285 | 5d | 2026-08-10 | 2026-08-17 | 361FS+3d, 362FS+3d | 13d |
| 374 |  | Vigueta pretensada V11-40 330 | 5d | 2026-08-10 | 2026-08-17 | 361FS+3d, 362 | 13d |
| 375 |  | Vigueta pretensada V11-40 335 | 5d | 2026-08-10 | 2026-08-17 | 361FS+3d, 362 | 13d |
| 376 |  | Vigueta pretensada V11-40 505 | 5d | 2026-08-10 | 2026-08-17 | 361FS+3d, 362 | 13d |
| 377 |  | Bovedilla poliestireno azotea | 3d | 2026-08-17 | 2026-08-20 | 367, 368, 369, 370, 371, 372, 373, 374, 375, 376 | 13d |
| 378 |  | Malla 66-10/10 losa de compresión | 2d | 2026-08-20 | 2026-08-22 | 377 | 13d |
| 379 |  | Concreto losa de azotea f’c=200 | 1d | 2026-08-22 | 2026-08-24 | 365, 366, 377, 378, 382, 381 | 13d |
| 380 |  | Curado de concreto | 1d | 2026-08-24 | 2026-08-25 | 379 | 13d |
| 381 |  | Cimbra losa de azotea | 5d | 2026-08-06 | 2026-08-12 | 361, 362, 363 | 21d |
| 382 |  | Ramaleo de poliducto para inst. electrica en azotea | 2d | 2026-08-20 | 2026-08-22 | 377 | 13d |
| 383 | 1.3.10 | **PRETIL Y ACABADOS DE AZOTEA** | 19d | 2026-08-25 | 2026-09-18 |  | 13d |
| 384 |  | Castillo K1 | 5d | 2026-08-27 | 2026-09-02 | 386SS+2d | 13d |
| 385 |  | Dala de cerramiento en pretil | 4d | 2026-09-01 | 2026-09-04 | 384FS-2d, 386FS-2d | 13d |
| 386 |  | Muro de ladrillo 7x14x28 | 5d | 2026-08-25 | 2026-08-31 | 380 | 13d |
| 387 |  | Chaflán en azotea | 4d | 2026-09-03 | 2026-09-08 | 384, 386 | 13d |
| 388 |  | Diamante de entortado | 4d | 2026-09-03 | 2026-09-08 | 384, 386 | 13d |
| 389 |  | Aplanado exterior Mortermax fino | 5d | 2026-09-05 | 2026-09-11 | 385, 387FS-2d, 388FS-2d | 13d |
| 390 |  | Entortado de Losa | 4d | 2026-09-12 | 2026-09-18 | 391 | 13d |
| 391 |  | Curado de concreto | 1d | 2026-09-11 | 2026-09-12 | 387, 389 | 13d |
| 392 | 1.3.11 | **PRIMERA LIMPIEZA DE OBRA** | 4d | 2026-08-25 | 2026-08-29 |  | 70d |
| 393 |  | Primera limpieza de obra | 2d | 2026-08-25 | 2026-08-27 | 380 | 70d |
| 394 |  | Primera carga y acarreo de escombro | 2d | 2026-08-27 | 2026-08-29 | 393 | 70d |
| 395 | 1.3.12 | **IMPERMEABILIZACION** | 5d | 2026-09-18 | 2026-09-25 |  | 13d |
| 396 |  | Impermeabilización de pretil Kover 5 años | 4d | 2026-09-18 | 2026-09-24 | 390 | 14d |
| 397 |  | Impermeabilización de losa Kover 5 años | 5d | 2026-09-18 | 2026-09-25 | 390 | 13d |
| 398 | 1.3.13 | **ALBAÑILERIA** | 62d | 2026-09-01 | 2026-11-19 |  | 32d |
| 399 |  | Lavadero de granito | 4d | 2026-10-15 | 2026-10-20 | 435SS+8d | 69d |
| 400 |  | Ranurado y resane general inst. en muros | 3d | 2026-09-23 | 2026-09-26 | 397FS-2d | 15d |
| 401 |  | Ranurado y resane eléctrico 1/2 a 3/4 | 3d | 2026-09-23 | 2026-09-26 | 397FS-2d | 15d |
| 402 |  | Ranurado y resane hidráulico 1/2 a 1 | 2d | 2026-09-25 | 2026-09-28 | 397 | 14d |
| 403 |  | Resane sanitario tubería 2 | 2d | 2026-09-25 | 2026-09-28 | 397 | 14d |
| 404 |  | Resane sanitario tubería 4 | 2d | 2026-09-25 | 2026-09-28 | 397 | 14d |
| 405 |  | Resane minisplit tubería 3 | 2d | 2026-09-25 | 2026-09-28 | 397 | 14d |
| 406 |  | Ramaleo hidráulico exterior CPVC 1 1/4 | 3d | 2026-09-25 | 2026-09-29 | 396, 397 | 13d |
| 407 |  | Ramaleo hidráulico exterior CPVC 1 | 2d | 2026-09-25 | 2026-09-28 | 406SS | 13d |
| 408 |  | Ramaleo hidráulico exterior CPVC 3/4 | 2d | 2026-09-28 | 2026-09-30 | 407 | 13d |
| 409 |  | Ramaleo hidráulico exterior CPVC 1/2 | 2d | 2026-09-28 | 2026-09-30 | 407 | 13d |
| 410 |  | Prueba hidráulica | 1d | 2026-09-30 | 2026-10-01 | 402, 406, 407, 408, 409 | 13d |
| 411 |  | Ramaleo sanitario exterior PVC 4 | 4d | 2026-09-25 | 2026-09-30 | 396, 397 | 13d |
| 412 |  | Ramaleo sanitario exterior PVC 2 | 3d | 2026-09-26 | 2026-09-30 | 411SS+1d | 13d |
| 413 |  | Prueba sanitaria | 1d | 2026-09-30 | 2026-10-01 | 403, 404, 405, 411, 412 | 13d |
| 414 |  | Centro de carga muros PB | 4d | 2026-09-29 | 2026-10-03 | 396FS+3d, 397FS+3d | 15d |
| 415 |  | Firme de concreto 8 cm | 4d | 2026-10-01 | 2026-10-06 | 410, 413, 417 | 63d |
| 416 |  | Curado de concreto | 1d | 2026-10-06 | 2026-10-07 | 415 | 63d |
| 417 |  | Cisterna 2800 L con instalación | 18d | 2026-09-01 | 2026-09-24 | 386, 393, 394 | 69d |
| 418 |  | Banqueta y huellas de concreto | 8d | 2026-10-08 | 2026-10-19 | 410, 413, 460, 528FS-2d, 537, 529 | 46d |
| 419 |  | Curado de concreto | 1d | 2026-10-19 | 2026-10-20 | 418 | 46d |
| 420 |  | Número oficial | 1d | 2026-11-18 | 2026-11-19 | 428, 429 | 46d |

| ID | WBS | Task | Duration | Start | Finish | Predecessors | Total float |
| --- | --- | --- | --- | --- | --- | --- | --- |
| 421 |  | Detallado de rodapié exterior | 4d | 2026-10-03 | 2026-10-08 | 426 | 78d |
| 422 |  | Detalle de losas y volados acabado fino | 4d | 2026-09-25 | 2026-09-30 | 396, 397 | 17d |
| 423 |  | Detalle fino en muros interiores | 5d | 2026-09-28 | 2026-10-03 | 400, 401, 402, 403, 404, 405 | 14d |
| 424 |  | Jardín interior bajo escalera con pozo de absorción | 12d | 2026-09-25 | 2026-10-09 | 403FS-2d, 404FS-2d, 405FS-2d | 17d |
| 425 | 1.3.14 | **ACABADOS EN FACHADA A** | 47d | 2026-09-18 | 2026-11-18 |  | 46d |
| 426 |  | Aplanado grueso fachada | 12d | 2026-09-18 | 2026-10-03 | 390 | 52d |
| 427 |  | Aplanado fino estuco fachada | 10d | 2026-09-28 | 2026-10-09 | 426SS+7d | 52d |
| 428 |  | Pintura acrílica 1-0102P | 8d | 2026-11-04 | 2026-11-13 | 416FS+5d, 419FS+12d, 430, 433 | 48d |
| 429 |  | Pintura acrílica 1-1404D | 10d | 2026-11-04 | 2026-11-18 | 416FS+5d, 419FS+12d, 430, 433 | 46d |
| 430 |  | Cantera 40x60cm | 14d | 2026-10-09 | 2026-10-27 | 426, 427 | 52d |
| 431 |  | Lambrin de permabase 1 cara | 3d | 2026-10-03 | 2026-10-07 | 426 | 59d |
| 432 |  | Enchapado de Permabase | 4d | 2026-10-07 | 2026-10-13 | 431 | 59d |
| 433 |  | Cubierta de Permabase | 5d | 2026-10-13 | 2026-10-19 | 432 | 59d |
| 434 | 1.3.15 | **APLANADOS Y PINTURA** | 63d | 2026-09-25 | 2026-12-14 |  | 15d |
| 435 |  | Yeso pulido en muros | 14d | 2026-10-05 | 2026-10-22 | 400, 401, 414FS-1d, 422, 423, 424FS-8d, 440FS-4d, 506FS-2d, 509, 510, 511, 512, 513FS-1d, 514FS-1d, 515FS-1d, 516FS-1d, 517FS-2d, 518FS-2d, 519FS-3d, 522FS-1d, 523FS-5d, 524FS-5d, 525FS-6d, 526FS-2d, 527FS-7d, 436 | 13d |
| 436 |  | Aplanado en muros enjarre grueso | 5d | 2026-09-25 | 2026-10-01 | 396, 397 | 16d |
| 437 |  | Pintura vinílica OR-W13 SHOELACE | 13d | 2026-11-27 | 2026-12-14 | 444FS-2d, 445FS-2d, 458FS-2d, 465, 466, 467, 468, 469, 470, 476, 477, 478, 479, 540, 541, 543, 544, 473, 474, 471, 472, 480 | 13d |
| 438 |  | Pintura vinílica PPUI5-13 Creamy M. | 10d | 2026-11-21 | 2026-12-03 | 444, 445, 458, 488, 489, 484, 482 | 21d |
| 439 |  | Pintura vinílica MD-06 Nano White | 8d | 2026-11-21 | 2026-12-01 | 444, 445, 458, 488, 489, 484, 482 | 23d |
| 440 |  | Yeso pulido en plafones | 10d | 2026-09-25 | 2026-10-07 | 396, 397 | 15d |
| 441 |  | Perfilado de puertas y ventanas | 4d | 2026-10-09 | 2026-10-15 | 435SS+4d | 73d |
| 442 | 1.3.16 | **PISOS Y AZULEJOS** | 24d | 2026-10-16 | 2026-11-17 |  | 13d |
| 443 | 1.3.16.1 | **AREA SOCIAL** | 15d | 2026-10-20 | 2026-11-07 |  | 13d |
| 444 |  | Piso Adhara 44X89 | 14d | 2026-10-20 | 2026-11-06 | 435FS-2d, 531, 530, 447FS-5d | 13d |
| 445 |  | Zoclo Adhara 44X89 | 5d | 2026-11-02 | 2026-11-07 | 444FS-4d | 30d |
| 446 | 1.3.16.2 | **RECAMARAS** | 8d | 2026-10-16 | 2026-10-26 |  | 13d |
| 447 |  | Acabado aparente de pisos - pulido | 8d | 2026-10-16 | 2026-10-26 | 435FS-5d | 13d |
| 448 | 1.3.16.3 | **BAÑOS** | 17d | 2026-10-17 | 2026-11-07 |  | 24d |
| 449 |  | Azulejo Mod. Ornamenta 60x30 | 5d | 2026-10-27 | 2026-11-02 | 450FS-1d, 520, 521, 531 | 24d |
| 450 |  | Impermeabilización en regadera | 2d | 2026-10-26 | 2026-10-27 | 435, 454 | 24d |
| 451 |  | Piso Mod. Valparaiso 20x20 | 4d | 2026-11-02 | 2026-11-06 | 449 | 24d |
| 452 |  | Zoclo Adhara 44X89 | 2d | 2026-11-05 | 2026-11-07 | 451FS-1d | 54d |
| 453 |  | Piso Adhara 44X89 | 3d | 2026-11-02 | 2026-11-05 | 449 | 56d |
| 454 |  | Fabricacion de nicho decorativo en baños | 6d | 2026-10-17 | 2026-10-24 | 435FS-4d | 24d |
| 455 |  | Sardinel en regadera | 4d | 2026-11-02 | 2026-11-06 | 449 | 55d |
| 456 | 1.3.16.4 | **ESCALERA** | 9d | 2026-11-04 | 2026-11-17 |  | 13d |
| 457 |  | Piso Adhara 44X89 | 7d | 2026-11-04 | 2026-11-12 | 323, 435, 444FS-2d | 13d |
| 458 |  | Zoclo Adhara 44X89 | 4d | 2026-11-10 | 2026-11-17 | 457FS-2d | 13d |
| 459 | 1.3.17 | **EXTERIOR** | 3d | 2026-10-01 | 2026-10-05 |  | 18d |
| 460 |  | Rastrilleo, afine y nivelado de tierra | 3d | 2026-10-01 | 2026-10-05 | 410, 413 | 18d |
| 461 | 1.3.18 | **SEGUNDA LIMPIEZA DE OBRA** | 4d | 2026-11-17 | 2026-11-21 |  | 37d |
| 462 |  | Segunda limpieza de obra | 2d | 2026-11-17 | 2026-11-19 | 457, 458 | 37d |
| 463 |  | Segunda carga y acarreo de escombro | 2d | 2026-11-19 | 2026-11-21 | 462 | 37d |
| 464 | 1.3.19 | **CANCELERIA PUERTAS Y VENTANAS DE ALUMINIO** | 17d | 2026-11-04 | 2026-11-26 |  | 14d |
| 465 |  | Fijo medidas 0.30x4.90m | 7d | 2026-11-06 | 2026-11-17 | 435, 444 | 22d |
| 466 |  | Ventana Corrediza 1.80x1.60m | 4d | 2026-11-04 | 2026-11-09 | 435FS+10d | 27d |
| 467 |  | Ventana Corrediza 0.60x0.40m | 4d | 2026-11-06 | 2026-11-11 | 435FS+12d | 25d |
| 468 |  | Ventana Corrediza 1.54x0.50m | 4d | 2026-11-06 | 2026-11-11 | 435FS+12d | 25d |
| 469 |  | Fijo medidas 1.40x2.50m | 4d | 2026-11-10 | 2026-11-17 | 435FS+10d, 444FS+3d | 16d |
| 470 |  | Ventana Corrediza 1.80x1.50m | 4d | 2026-11-12 | 2026-11-19 | 435FS+7d, 444FS+2d, 457 | 14d |
| 471 |  | Ventana Corrediza 1.40x1.60m | 4d | 2026-11-12 | 2026-11-19 | 435, 444, 457 | 14d |
| 472 |  | Ventana Corrediza 0.95x0.40m | 4d | 2026-11-12 | 2026-11-19 | 435, 444, 457 | 14d |
| 473 |  | Puerta corrediza 3.85x2.10m | 6d | 2026-11-17 | 2026-11-24 | 469 | 16d |
| 474 |  | Barandal de Cristal Templado | 6d | 2026-11-19 | 2026-11-26 | 470, 471, 472 | 14d |
| 475 | 1.3.20 | **CARPINTERIA, PUERTAS EXTERIORES E INTERIORES** | 9d | 2026-11-17 | 2026-11-27 |  | 13d |
| 476 |  | Puerta P-01 de seguridad | 5d | 2026-11-17 | 2026-11-23 | 458 | 17d |
| 477 |  | Puerta P-01 interior | 8d | 2026-11-17 | 2026-11-26 | 458 | 14d |
| 478 |  | Puerta P-02 interior | 8d | 2026-11-17 | 2026-11-26 | 458 | 14d |
| 479 |  | Puerta P-03 interior | 4d | 2026-11-23 | 2026-11-27 | 458FS+5d | 13d |
| 480 |  | Puerta P-04 interior | 4d | 2026-11-23 | 2026-11-27 | 458FS+5d | 13d |
| 481 | 1.3.21 | **VOLADOS, BARANDAL Y ESCALERA** | 33d | 2026-10-09 | 2026-11-21 |  | 21d |
| 482 |  | Barandal de Herreria en escalera | 4d | 2026-10-28 | 2026-11-02 | 483FS-4d | 36d |
| 483 |  | Escalera de herreria | 18d | 2026-10-09 | 2026-11-02 | 424 | 21d |
| 484 |  | Techumbre en acceso Principal | 14d | 2026-10-27 | 2026-11-12 | 483FS-5d | 27d |
| 485 |  | Techumbre en 1.80x0.50m | 7d | 2026-10-27 | 2026-11-04 | 483FS-5d | 21d |
| 486 |  | Techumbre en 1.40x0.50m | 7d | 2026-11-04 | 2026-11-12 | 485 | 21d |
| 487 |  | Imper con manto prefabricado | 5d | 2026-11-07 | 2026-11-13 | 485, 486FS-4d | 21d |
| 488 |  | Plafon hoja tablaroca std | 5d | 2026-11-13 | 2026-11-21 | 487 | 21d |
| 489 |  | Acabado Woodstock en parte inf. Cubierta | 5d | 2026-11-13 | 2026-11-21 | 487 | 21d |
| 490 | 1.3.22 | **INSTALACION ELECTRICA** | 16d | 2026-10-17 | 2026-11-06 |  | 42d |

| ID | WBS | Task | Duration | Start | Finish | Predecessors | Total float |
| --- | --- | --- | --- | --- | --- | --- | --- |
| 491 |  | Alimentación eléctrica base a centro de carga | 5d | 2026-10-22 | 2026-10-28 | 414, 435 | 46d |
| 492 |  | Interruptor termomagnético 1x20 A | 1d | 2026-10-29 | 2026-10-29 | 491 | 46d |
| 493 |  | Interruptor termomagnético 2x20 A | 1d | 2026-10-29 | 2026-10-29 | 491 | 46d |
| 494 |  | Salida para apagador 3 vías | 4d | 2026-10-17 | 2026-10-22 | 396, 435FS-4d | 42d |
| 495 |  | Salida para apagador doble | 3d | 2026-10-22 | 2026-10-26 | 494 | 44d |
| 496 |  | Salida para apagador sencillo | 3d | 2026-10-22 | 2026-10-26 | 494 | 44d |
| 497 |  | Salida de alumbrado en losa | 5d | 2026-10-22 | 2026-10-28 | 494 | 42d |
| 498 |  | Salida para contacto exterior doble | 2d | 2026-10-22 | 2026-10-24 | 494 | 45d |
| 499 |  | Salida para contacto 220 V | 3d | 2026-10-26 | 2026-10-28 | 494FS+2d | 42d |
| 500 |  | Salida para contacto doble | 5d | 2026-10-26 | 2026-10-30 | 494FS+2d | 45d |
| 501 |  | Salida para contacto doble área húmeda | 2d | 2026-10-29 | 2026-10-30 | 498, 499 | 45d |
| 502 |  | Salida TV / telefonía / intercom | 4d | 2026-10-29 | 2026-11-03 | 498, 499 | 43d |
| 503 |  | Extractor 4 baño | 5d | 2026-10-29 | 2026-11-04 | 498, 499 | 42d |
| 504 |  | Prueba eléctrica | 2d | 2026-11-04 | 2026-11-06 | 491, 492, 493, 494, 495, 496, 497, 498, 499, 500, 501, 502, 503, 557, 558, 564, 559, 560, 562, 563, 566, 568 | 42d |
| 505 | 1.3.23 | **INSTALACIÓN HIDRO-SANITARIA** | 11d | 2026-10-01 | 2026-10-15 |  | 13d |
| 506 |  | Tubería condensados PVC 1 | 5d | 2026-10-01 | 2026-10-07 | 410 | 13d |
| 507 |  | Tubería sanitaria PVC 4 | 5d | 2026-10-01 | 2026-10-07 | 413 | 21d |
| 508 |  | Coladera H-444 | 1d | 2026-10-07 | 2026-10-08 | 507 | 21d |
| 509 |  | Caja PVC para lavadora | 3d | 2026-10-01 | 2026-10-05 | 410 | 13d |
| 510 |  | Salida para secadora PVC 4 | 3d | 2026-10-01 | 2026-10-05 | 413 | 13d |
| 511 |  | Salida hidráulica para boiler | 2d | 2026-10-01 | 2026-10-03 | 410 | 14d |
| 512 |  | Salida hidráulica para llave de jardín | 3d | 2026-10-01 | 2026-10-05 | 410 | 13d |
| 513 |  | Salida hidráulica para lavabo | 4d | 2026-10-01 | 2026-10-06 | 410 | 13d |
| 514 |  | Salida hidráulica para purificación | 4d | 2026-10-01 | 2026-10-06 | 410 | 13d |
| 515 |  | Salida sanitaria para lavabo | 2d | 2026-10-03 | 2026-10-06 | 410FS+2d | 13d |
| 516 |  | Salida hidráulica para lavadero | 2d | 2026-10-03 | 2026-10-06 | 410FS+2d | 13d |
| 517 |  | Salida sanitaria para lavadero | 2d | 2026-10-05 | 2026-10-07 | 410FS+3d | 13d |
| 518 |  | Salida hidráulica para lavadora | 2d | 2026-10-05 | 2026-10-07 | 410FS+3d | 13d |
| 519 |  | Salida sanitaria para lavadora | 2d | 2026-10-06 | 2026-10-08 | 413FS+4d | 13d |
| 520 |  | Salida hidráulica para regadera | 5d | 2026-10-06 | 2026-10-13 | 410FS+4d | 18d |
| 521 |  | Salida sanitaria para regadera | 4d | 2026-10-06 | 2026-10-12 | 413FS+4d | 19d |
| 522 |  | Salida hidráulica para WC | 2d | 2026-10-03 | 2026-10-06 | 413FS+2d | 13d |
| 523 |  | Salida sanitaria para WC | 4d | 2026-10-06 | 2026-10-12 | 413FS+4d | 13d |
| 524 |  | Salida hidráulica para zinc | 4d | 2026-10-06 | 2026-10-12 | 413FS+4d | 13d |
| 525 |  | Salida sanitaria para zinc | 3d | 2026-10-08 | 2026-10-13 | 413FS+6d | 13d |
| 526 |  | Tubo para ventila de baño 2 | 5d | 2026-10-01 | 2026-10-07 | 506SS | 13d |
| 527 |  | Tubo para minisplit PVC 3 | 5d | 2026-10-07 | 2026-10-14 | 526 | 13d |
| 528 |  | Cuadro de medición | 5d | 2026-10-05 | 2026-10-12 | 460 | 18d |
| 529 |  | Pozo de absorción 0.50x0.50x0.50 | 3d | 2026-10-05 | 2026-10-08 | 460 | 21d |
| 530 |  | Prueba sanitaria final | 1d | 2026-10-14 | 2026-10-15 | 506, 507, 508, 510, 515, 517, 519, 521, 523, 526, 527 | 17d |
| 531 |  | Prueba hidrostática final | 1d | 2026-10-13 | 2026-10-14 | 511, 512, 513, 514, 516, 518, 520, 522, 524, 528, 529, 534, 535, 533, 532 | 18d |
| 532 |  | Salida válvula control 19 mm | 1d | 2026-10-12 | 2026-10-13 | 528 | 18d |
| 533 |  | Salida válvula control 13 mm | 1d | 2026-10-12 | 2026-10-13 | 528 | 18d |
| 534 |  | Salida hidráulica para tanque hidroneumático | 3d | 2026-10-05 | 2026-10-08 | 460 | 21d |
| 535 |  | Salida hidráulica para Active Driver | 3d | 2026-10-05 | 2026-10-08 | 460 | 21d |
| 536 | 1.3.24 | **INSTALACION DE GAS** | 8d | 2026-09-29 | 2026-10-08 |  | 46d |
| 537 |  | Ramaleo para gas 1/2 | 5d | 2026-10-02 | 2026-10-08 | 460FS-2d, 538 | 46d |
| 538 |  | Excavación a mano material tipo B | 3d | 2026-09-29 | 2026-10-02 | 460FF-2d | 46d |
| 539 | 1.3.25 | **MUEBLES SANITARIOS** | 29d | 2026-11-06 | 2026-12-14 |  | 25d |
| 540 |  | WC completo Austral | 2d | 2026-11-06 | 2026-11-09 | 444, 451, 530, 531 | 27d |
| 541 |  | Lavabo Senna con pedestal | 4d | 2026-11-06 | 2026-11-11 | 444, 449, 451, 530, 531 | 25d |
| 542 |  | Tarja / lavabo combo Guinea 80x45 | 2d | 2026-11-06 | 2026-11-09 | 288, 444, 449, 451, 531 | 53d |
| 543 |  | Regadera con monomando | 3d | 2026-11-09 | 2026-11-12 | 444, 449FS+2d, 451FS+2d, 530, 531 | 24d |
| 544 |  | Coladera inserto cerámico | 2d | 2026-11-10 | 2026-11-12 | 449, 451FS+3d, 531 | 24d |
| 545 |  | Toallero sencillo | 1d | 2026-12-12 | 2026-12-14 | 437FS-1d | 13d |
| 546 |  | Toallero barra | 1d | 2026-12-12 | 2026-12-14 | 437FS-1d | 13d |
| 547 |  | Portapapel | 1d | 2026-12-12 | 2026-12-14 | 437FS-1d | 13d |
| 548 |  | Gancho baño | 1d | 2026-12-12 | 2026-12-14 | 437FS-1d | 13d |
| 549 | 1.3.26 | **EQUIPAMIENTO** | 6d | 2026-09-23 | 2026-09-30 |  | 72d |
| 550 |  | Electronivel Rotoplas 5 m | 2d | 2026-09-24 | 2026-09-26 | 555 | 75d |
| 551 |  | Manómetro | 1d | 2026-09-24 | 2026-09-25 | 555 | 76d |
| 552 |  | Interruptor de presión 30-50 PSI | 1d | 2026-09-24 | 2026-09-25 | 555 | 76d |
| 553 |  | Tanque hidroneumático FPS-24LX | 3d | 2026-09-24 | 2026-09-28 | 555 | 72d |
| 554 |  | Bomba sumergible Dominator 1.2 HP | 2d | 2026-09-28 | 2026-09-30 | 553 | 72d |
| 555 |  | Cisterna prefabricada 2800 L | 1d | 2026-09-23 | 2026-09-24 | 417FF | 72d |
| 556 | 1.3.27 | **LUMINARIAS** | 5d | 2026-10-29 | 2026-11-04 |  | 42d |
| 557 |  | Roseta cerámica | 3d | 2026-10-29 | 2026-11-02 | 497 | 44d |
| 558 |  | Luminaria lagartijera LED | 3d | 2026-10-29 | 2026-11-02 | 497 | 44d |
| 559 |  | Spot 6W Tecnolite | 3d | 2026-10-29 | 2026-11-02 | 497 | 44d |
| 560 |  | Spot 7W Tecnolite | 3d | 2026-10-29 | 2026-11-02 | 497 | 44d |

| ID | WBS | Task | Duration | Start | Finish | Predecessors | Total float |
| --- | --- | --- | --- | --- | --- | --- | --- |
| 561 |  | Arbotante exterior | 2d | 2026-10-29 | 2026-10-30 | 497 | 42d |
| 562 |  | Estaca LED exterior | 3d | 2026-10-31 | 2026-11-04 | 561 | 42d |
| 563 |  | Tira LED | 3d | 2026-10-31 | 2026-11-04 | 561 | 42d |
| 564 |  | Spot exterior 50W | 2d | 2026-10-29 | 2026-10-30 | 497 | 45d |
| 565 | 1.3.28 | **TIMBRE** | 2d | 2026-10-30 | 2026-11-02 |  | 44d |
| 566 |  | Timbre inalámbrico con bocina | 2d | 2026-10-30 | 2026-11-02 | 495FS+3d, 496FS+3d | 44d |
| 567 | 1.3.29 | **OBRA EXTERIOR - BARDA** | 18d | 2026-10-05 | 2026-10-27 |  | 50d |
| 568 |  | Murete convencional | 5d | 2026-10-12 | 2026-10-17 | 460FS+5d | 56d |
| 569 |  | Barda de block aparente | 18d | 2026-10-05 | 2026-10-27 | 460 | 50d |
| 570 | 1.3.30 | **TERCER LIMPIEZA DE OBRA** | 13d | 2026-12-14 | 2027-01-04 |  | 13d |
| 571 |  | Limpieza fina para entrega | 6d | 2026-12-14 | 2026-12-21 | 437, 438, 439, 470, 479, 480, 504, 530, 531, 545, 546, 547, 548, 550, 551, 552, 553, 554, 569 | 13d |
| 572 |  | Tercera limpieza de obra | 4d | 2026-12-22 | 2026-12-29 | 571, 463 | 13d |
| 573 |  | Tercera carga y acarreo de escombro | 3d | 2026-12-29 | 2027-01-04 | 572 | 13d |
| 574 | 1.4 | **LOTE 22 M-663 CORSAC-B** | 181d | 2026-05-29 | 2027-01-18 |  | 2d |
| 575 | 1.4.1 | **HITOS IMPORTANTES DEL LOTE** | 181d | 2026-05-29 | 2027-01-18 |  | 2d |
| 576 |  | Inicio del Lote-22 M-663 Corsac-B | 0d | 2026-05-29 | 2026-05-29 | 6FS+11d | 2d |
| 577 |  | Colado de Losa de Cimentación | 0d | 2026-06-19 | 2026-06-19 | 608 | 166d |
| 578 |  | Colado de Losa de Entrepiso | 0d | 2026-07-28 | 2026-07-28 | 644 | 136d |
| 579 |  | Colado de Losa de Azotea | 0d | 2026-09-02 | 2026-09-02 | 684 | 106d |
| 580 |  | Entrega de vivienda | 0d | 2027-01-18 | 2027-01-18 | 876, 877, 878 | 2d |
| 581 | 1.4.2 | **TRABAJOS PRELIMINARES** | 2d | 2026-05-29 | 2026-06-02 |  | 2d |
| 582 |  | Trazo y nivelación | 2d | 2026-05-29 | 2026-06-02 | 576 | 2d |
| 583 | 1.4.3 | **EXCAVACIONES** | 3d | 2026-06-02 | 2026-06-05 |  | 2d |
| 584 |  | Excavación a mano material tipo B | 3d | 2026-06-02 | 2026-06-05 | 582 | 2d |
| 585 |  | Acarreo en carretilla 20 m | 2d | 2026-06-03 | 2026-06-05 | 584SS+1d | 2d |
| 586 | 1.4.4 | **CIMENTACION** | 13d | 2026-06-05 | 2026-06-22 |  | 2d |
| 587 |  | Cimbra perimetral losa de cimentación | 3d | 2026-06-05 | 2026-06-09 | 584, 585 | 2d |
| 588 |  | Sistema antitermitas PVC | 3d | 2026-06-05 | 2026-06-09 | 584, 585 | 3d |
| 589 |  | Hule negro en cimentación | 1d | 2026-06-09 | 2026-06-10 | 588 | 3d |
| 590 |  | Ramaleo poliducto eléctrico cimentación | 2d | 2026-06-10 | 2026-06-12 | 589 | 6d |
| 591 |  | Ramaleo eléctrico base-medición a centro de carga | 1d | 2026-06-10 | 2026-06-11 | 589 | 7d |
| 592 |  | Ramaleo eléctrico exterior | 1d | 2026-06-12 | 2026-06-13 | 590, 591 | 6d |
| 593 |  | Ramaleo para cable poliducto 3/4 | 1d | 2026-06-12 | 2026-06-13 | 590, 591 | 6d |
| 594 |  | Ramaleo para TV poliducto 3/4 | 1d | 2026-06-12 | 2026-06-13 | 590, 591 | 6d |
| 595 |  | Ramaleo hidráulico CPVC 1-1/4" cimentación | 1d | 2026-06-10 | 2026-06-11 | 589 | 3d |
| 596 |  | Ramaleo hidráulico CPVC 1 cimentación | 1d | 2026-06-10 | 2026-06-11 | 589, 595SS | 3d |
| 597 |  | Ramaleo hidráulico CPVC 3/4 cimentación | 2d | 2026-06-11 | 2026-06-13 | 596 | 3d |
| 598 |  | Ramaleo hidráulico CPVC 1/2 cimentación | 2d | 2026-06-13 | 2026-06-16 | 597 | 3d |
| 599 |  | Prueba hidráulica | 1d | 2026-06-16 | 2026-06-17 | 595, 596, 597, 598 | 3d |
| 600 |  | Ramaleo sanitario PVC 4 cimentación | 2d | 2026-06-11 | 2026-06-13 | 589FS+1d | 4d |
| 601 |  | Ramaleo sanitario PVC 2 cimentación | 1d | 2026-06-13 | 2026-06-15 | 600 | 4d |
| 602 |  | Prueba sanitaria | 1d | 2026-06-15 | 2026-06-16 | 600, 601 | 4d |
| 603 |  | Acero contratrabe CT-1 | 4d | 2026-06-09 | 2026-06-13 | 587 | 2d |
| 604 |  | Acero contratrabe CT-2 | 4d | 2026-06-09 | 2026-06-13 | 587 | 2d |
| 605 |  | Malla electrosoldada 6-6/8-8 | 2d | 2026-06-16 | 2026-06-18 | 603, 604, 606, 607 | 2d |
| 606 |  | Bastón de refuerzo LS | 2d | 2026-06-13 | 2026-06-16 | 603, 604 | 2d |
| 607 |  | Bastón de refuerzo LI | 2d | 2026-06-13 | 2026-06-16 | 603, 604 | 2d |
| 608 |  | Colado losa de cimentación f’c=200 | 1d | 2026-06-18 | 2026-06-19 | 587, 589, 592, 593, 594, 599, 602, 603, 604, 605, 606, 607, 610, 611 | 2d |
| 609 |  | Curado de concreto | 1d | 2026-06-19 | 2026-06-22 | 608 | 2d |
| 610 |  | Acero zapata ZT-1 | 4d | 2026-06-13 | 2026-06-18 | 603, 604 | 2d |
| 611 |  | Acero zapata ZT-2 | 4d | 2026-06-13 | 2026-06-18 | 603, 604 | 2d |
| 612 | 1.4.5 | **MUROS, PLANTA BAJA. CASTILLOS Y CERRAMIENTOS** | 20d | 2026-06-15 | 2026-07-09 |  | 7d |
| 613 |  | Anclaje de castillos y Columnas PB | 5d | 2026-06-15 | 2026-06-22 | 603FS+1d, 604FS+1d | 153d |
| 614 |  | Castillo K1 | 4d | 2026-06-22 | 2026-06-26 | 609, 613 | 153d |
| 615 |  | Castillo K3 | 3d | 2026-06-24 | 2026-06-27 | 614FS-2d | 153d |
| 616 |  | Castillo K4 | 3d | 2026-06-24 | 2026-06-27 | 614FS-2d | 153d |
| 617 |  | Castillo K5 | 3d | 2026-06-26 | 2026-06-30 | 615FS-1d, 616FS-1d | 153d |
| 618 |  | Refuerzo de muro K6 | 3d | 2026-06-27 | 2026-07-01 | 617FS-2d | 153d |
| 619 |  | Dala de cerramiento CR-1 | 4d | 2026-06-27 | 2026-07-02 | 614, 615 | 156d |
| 620 |  | Dala de cerramiento CR-2 | 3d | 2026-06-27 | 2026-07-01 | 614, 615 | 157d |
| 621 |  | Cadena block dala | 4d | 2026-07-01 | 2026-07-06 | 618 | 153d |
| 622 |  | Muro de ladrillo aparente | 15d | 2026-06-22 | 2026-07-09 | 609 | 2d |
| 623 |  | Muro de block planta baja | 13d | 2026-06-24 | 2026-07-09 | 609FS+2d | 2d |
| 624 |  | Ramaleo electrico en Muros Planta Baja | 4d | 2026-06-27 | 2026-07-02 | 622SS+5d | 5d |
| 625 |  | Ramaleo para cable poliducto 3/4 | 2d | 2026-07-02 | 2026-07-04 | 624 | 5d |
| 626 |  | Ramaleo para TV poliducto 3/4 | 3d | 2026-07-06 | 2026-07-08 | 625 | 5d |
| 627 | 1.4.6 | **ESCALERA** | 10d | 2026-07-28 | 2026-08-08 |  | 79d |
| 628 |  | Escalera de concreto armado | 10d | 2026-07-28 | 2026-08-08 | 644 | 79d |
| 629 | 1.4.7 | **LOSA DE ENTREPISO (viegueta y caseton)** | 17d | 2026-07-08 | 2026-07-29 |  | 5d |
| 630 |  | Dala de coronamiento 10cm | 3d | 2026-07-16 | 2026-07-20 | 646FS-1d, 632, 633, 634, 635, 636, 637 | 5d |

| ID | WBS | Task | Duration | Start | Finish | Predecessors | Total float |
| --- | --- | --- | --- | --- | --- | --- | --- |
| 631 |  | Dala de coronamiento 12cm | 3d | 2026-07-17 | 2026-07-21 | 646, 632, 633, 634, 635, 636, 637 | 4d |
| 632 |  | Trabe TR-1 | 3d | 2026-07-08 | 2026-07-10 | 622FS-2d, 623FS-2d | 6d |
| 633 |  | Trabe TR-2 | 4d | 2026-07-09 | 2026-07-14 | 622FS-1d, 623FS-1d | 4d |
| 634 |  | Nervadura NR-1 | 4d | 2026-07-10 | 2026-07-15 | 622, 623 | 3d |
| 635 |  | Nervadura NR-2 | 4d | 2026-07-11 | 2026-07-16 | 622FS+1d, 623FS+1d | 2d |
| 636 |  | Nervadura NR-3 | 4d | 2026-07-11 | 2026-07-16 | 622FS+1d, 623FS+1d | 2d |
| 637 |  | Nervadura NR-4 | 4d | 2026-07-11 | 2026-07-16 | 622FS+1d, 623FS+1d | 2d |
| 638 |  | Acero de refuerzo en nervios #3 | 2d | 2026-07-16 | 2026-07-18 | 632, 633, 634, 635, 636, 637 | 2d |
| 639 |  | Acero de refuerzo long. #3 | 3d | 2026-07-17 | 2026-07-21 | 632, 633, 634, 635, 636, 637, 646 | 3d |
| 640 |  | Acero de refuerzo long. #4 | 3d | 2026-07-17 | 2026-07-21 | 639SS | 3d |
| 641 |  | Malla 66-10/10 losa de compresión | 2d | 2026-07-23 | 2026-07-27 | 630, 631, 638, 651, 654, 643 | 2d |
| 642 |  | Acero de Losa Maciza | 3d | 2026-07-16 | 2026-07-20 | 634, 635, 636, 637 | 7d |
| 643 |  | Caseton de 60x60x20cm | 2d | 2026-07-16 | 2026-07-18 | 634, 635, 636, 637 | 6d |
| 644 |  | Concreto losa de entrepiso f’c=200 | 1d | 2026-07-27 | 2026-07-28 | 639, 640, 641, 642, 651, 654, 647, 656 | 2d |
| 645 |  | Curado de concreto | 1d | 2026-07-28 | 2026-07-29 | 644 | 2d |
| 646 |  | Cimbra losa de azotea | 5d | 2026-07-11 | 2026-07-17 | 622FS+1d, 623FS+1d, 626 | 3d |
| 647 |  | Cimbra exterior corta losa | 3d | 2026-07-20 | 2026-07-23 | 639FS-1d, 640FS-1d | 4d |
| 648 |  | Ramaleo poliducto eléctrico entrepiso | 2d | 2026-07-18 | 2026-07-21 | 638 | 141d |
| 649 |  | Ramaleo hidráulico CPVC 3/4" | 2d | 2026-07-20 | 2026-07-22 | 638FS+1d | 2d |
| 650 |  | Ramaleo hidráulico CPVC 1/2" | 1d | 2026-07-22 | 2026-07-23 | 649 | 2d |
| 651 |  | Prueba hidráulica | 1d | 2026-07-22 | 2026-07-23 | 649, 650FS-1d | 2d |
| 652 |  | Ramaleo sanitario PVC 4" | 2d | 2026-07-20 | 2026-07-22 | 638FS+1d | 2d |
| 653 |  | Ramaleo sanitario PVC 2" | 1d | 2026-07-22 | 2026-07-23 | 652 | 2d |
| 654 |  | Prueba sanitaria | 1d | 2026-07-22 | 2026-07-23 | 652, 653FS-1d | 2d |
| 655 | 1.4.8 | **MUROS EN PLANTA ALTA, CASTILLOS Y CERRM.** | 22d | 2026-07-20 | 2026-08-17 |  | 3d |
| 656 |  | Anclaje de castillos y Columnas PA | 4d | 2026-07-20 | 2026-07-24 | 639FS-1d, 640FS-1d | 3d |
| 657 |  | Castillo K1 | 4d | 2026-07-29 | 2026-08-03 | 645 | 6d |
| 658 |  | Castillo K2 | 4d | 2026-07-30 | 2026-08-04 | 645FS+1d | 5d |
| 659 |  | Castillo K4 | 3d | 2026-08-03 | 2026-08-06 | 657 | 6d |
| 660 |  | Castillo K5 | 3d | 2026-08-03 | 2026-08-06 | 657 | 6d |
| 661 |  | Castillo K6 | 3d | 2026-08-03 | 2026-08-06 | 657 | 6d |
| 662 |  | Refuerzo de muro | 3d | 2026-08-04 | 2026-08-07 | 657, 658 | 5d |
| 663 |  | Dala de cerramiento CR-1 | 4d | 2026-08-07 | 2026-08-12 | 659, 660, 661, 662 | 5d |
| 664 |  | Dala de cerramiento CR-2 | 4d | 2026-08-07 | 2026-08-12 | 659, 660, 661, 662 | 5d |
| 665 |  | Cadena block dala | 3d | 2026-08-12 | 2026-08-17 | 662, 663, 664 | 5d |
| 666 |  | Muro de ladrillo aparente | 15d | 2026-07-29 | 2026-08-17 | 645 | 2d |
| 667 |  | Muro de block planta alta | 14d | 2026-07-30 | 2026-08-17 | 645FS+1d | 2d |
| 668 |  | Ramaleo electrico en Muros Planta Alta | 4d | 2026-08-07 | 2026-08-12 | 666SS+8d | 13d |
| 669 | 1.4.9 | **LOSA AZOTEA** | 15d | 2026-08-17 | 2026-09-03 |  | 2d |
| 670 |  | Cortalosa CL-1 | 2d | 2026-08-31 | 2026-09-01 | 682 | 2d |
| 671 |  | Cortalosa CL-2 | 2d | 2026-08-31 | 2026-09-01 | 682 | 2d |
| 672 |  | Vigueta pretensada V11-30 125 | 5d | 2026-08-17 | 2026-08-22 | 665, 666, 667 | 5d |
| 673 |  | Vigueta pretensada V11-30 185 | 5d | 2026-08-17 | 2026-08-22 | 666, 667 | 5d |
| 674 |  | Vigueta pretensada V11-30 190 | 5d | 2026-08-17 | 2026-08-22 | 666, 667 | 5d |
| 675 |  | Vigueta pretensada V11-30 205 | 5d | 2026-08-19 | 2026-08-25 | 666FS+2d, 667FS+2d | 3d |
| 676 |  | Vigueta pretensada V11-30 215 | 5d | 2026-08-19 | 2026-08-25 | 666FS+2d, 667FS+2d | 3d |
| 677 |  | Vigueta pretensada V11-30 260 | 5d | 2026-08-20 | 2026-08-26 | 666FS+3d, 667FS+3d | 2d |
| 678 |  | Vigueta pretensada V11-30 285 | 5d | 2026-08-20 | 2026-08-26 | 666FS+3d, 667FS+3d | 2d |
| 679 |  | Vigueta pretensada V11-40 330 | 5d | 2026-08-20 | 2026-08-26 | 666FS+3d, 667 | 2d |
| 680 |  | Vigueta pretensada V11-40 335 | 5d | 2026-08-20 | 2026-08-26 | 666FS+3d, 667 | 2d |
| 681 |  | Vigueta pretensada V11-40 505 | 5d | 2026-08-20 | 2026-08-26 | 666FS+3d, 667 | 2d |
| 682 |  | Bovedilla poliestireno azotea | 3d | 2026-08-26 | 2026-08-29 | 672, 673, 674, 675, 676, 677, 678, 679, 680, 681 | 2d |
| 683 |  | Malla 66-10/10 losa de compresión | 2d | 2026-08-31 | 2026-09-01 | 682 | 2d |
| 684 |  | Concreto losa de azotea f’c=200 | 1d | 2026-09-02 | 2026-09-02 | 670, 671, 682, 683, 687, 686 | 2d |
| 685 |  | Curado de concreto | 1d | 2026-09-03 | 2026-09-03 | 684 | 2d |
| 686 |  | Cimbra losa de azotea | 5d | 2026-08-17 | 2026-08-22 | 666, 667, 668 | 10d |
| 687 |  | Ramaleo de poliducto para inst. electrica en azotea | 2d | 2026-08-31 | 2026-09-01 | 682 | 2d |
| 688 | 1.4.10 | **PRETIL Y ACABADOS DE AZOTEA** | 19d | 2026-09-04 | 2026-09-29 |  | 2d |
| 689 |  | Castillo K1 | 5d | 2026-09-07 | 2026-09-12 | 691SS+2d | 2d |
| 690 |  | Dala de cerramiento en pretil | 4d | 2026-09-10 | 2026-09-15 | 689FS-2d, 691FS-2d | 2d |
| 691 |  | Muro de block 12x15x40 | 5d | 2026-09-04 | 2026-09-10 | 685 | 2d |
| 692 |  | Chaflán en azotea | 4d | 2026-09-12 | 2026-09-18 | 689, 691 | 2d |
| 693 |  | Diamante de entortado | 4d | 2026-09-12 | 2026-09-18 | 689, 691 | 2d |
| 694 |  | Aplanado exterior Mortermax fino | 5d | 2026-09-15 | 2026-09-23 | 690, 692FS-2d, 693FS-2d | 2d |
| 695 |  | Entortado de Losa | 4d | 2026-09-24 | 2026-09-29 | 696 | 2d |
| 696 |  | Curado de concreto | 1d | 2026-09-23 | 2026-09-24 | 692, 694 | 2d |
| 697 | 1.4.11 | **PRIMERA LIMPIEZA DE OBRA** | 4d | 2026-09-04 | 2026-09-09 |  | 62d |
| 698 |  | Primera limpieza de obra | 2d | 2026-09-04 | 2026-09-07 | 685 | 62d |
| 699 |  | Primera carga y acarreo de escombro | 2d | 2026-09-07 | 2026-09-09 | 698 | 62d |
| 700 | 1.4.12 | **IMPERMEABILIZACION** | 5d | 2026-09-29 | 2026-10-05 |  | 2d |

| ID | WBS | Task | Duration | Start | Finish | Predecessors | Total float |
| --- | --- | --- | --- | --- | --- | --- | --- |
| 701 |  | Impermeabilización de pretil Kover 5 años | 4d | 2026-09-29 | 2026-10-03 | 695 | 3d |
| 702 |  | Impermeabilización de losa Kover 5 años | 5d | 2026-09-29 | 2026-10-05 | 695 | 2d |
| 703 | 1.4.13 | **ALBAÑILERIA** | 62d | 2026-09-10 | 2026-11-28 |  | 21d |
| 704 |  | Lavadero de granito | 4d | 2026-10-26 | 2026-10-29 | 740SS+8d | 61d |
| 705 |  | Ranurado y resane general inst. en muros | 3d | 2026-10-02 | 2026-10-06 | 702FS-2d | 4d |
| 706 |  | Ranurado y resane eléctrico 1/2 a 3/4 | 3d | 2026-10-02 | 2026-10-06 | 702FS-2d | 4d |
| 707 |  | Ranurado y resane hidráulico 1/2 a 1 | 2d | 2026-10-05 | 2026-10-07 | 702 | 3d |
| 708 |  | Resane sanitario tubería 2 | 2d | 2026-10-05 | 2026-10-07 | 702 | 3d |
| 709 |  | Resane sanitario tubería 4 | 2d | 2026-10-05 | 2026-10-07 | 702 | 3d |
| 710 |  | Resane minisplit tubería 3 | 2d | 2026-10-05 | 2026-10-07 | 702 | 3d |
| 711 |  | Ramaleo hidráulico exterior CPVC 1 1/4 | 3d | 2026-10-05 | 2026-10-08 | 701, 702 | 2d |
| 712 |  | Ramaleo hidráulico exterior CPVC 1 | 2d | 2026-10-05 | 2026-10-07 | 711SS | 2d |
| 713 |  | Ramaleo hidráulico exterior CPVC 3/4 | 2d | 2026-10-07 | 2026-10-09 | 712 | 2d |
| 714 |  | Ramaleo hidráulico exterior CPVC 1/2 | 2d | 2026-10-07 | 2026-10-09 | 712 | 2d |
| 715 |  | Prueba hidráulica | 1d | 2026-10-09 | 2026-10-12 | 707, 711, 712, 713, 714 | 2d |
| 716 |  | Ramaleo sanitario exterior PVC 4 | 4d | 2026-10-05 | 2026-10-09 | 701, 702 | 2d |
| 717 |  | Ramaleo sanitario exterior PVC 2 | 3d | 2026-10-06 | 2026-10-09 | 716SS+1d | 2d |
| 718 |  | Prueba sanitaria | 1d | 2026-10-09 | 2026-10-12 | 708, 709, 710, 716, 717 | 2d |
| 719 |  | Centro de carga muros PB | 4d | 2026-10-08 | 2026-10-14 | 701FS+3d, 702FS+3d | 4d |
| 720 |  | Firme de concreto 8 cm | 4d | 2026-10-12 | 2026-10-16 | 715, 718, 722 | 55d |
| 721 |  | Curado de concreto | 1d | 2026-10-16 | 2026-10-17 | 720 | 55d |
| 722 |  | Cisterna 2800 L con instalación | 18d | 2026-09-10 | 2026-10-03 | 691, 698, 699 | 61d |
| 723 |  | Banqueta y huellas de concreto | 8d | 2026-10-19 | 2026-10-28 | 715, 718, 765, 833FS-2d, 842, 834 | 38d |
| 724 |  | Curado de concreto | 1d | 2026-10-29 | 2026-10-29 | 723 | 38d |
| 725 |  | Número oficial | 1d | 2026-11-27 | 2026-11-28 | 733, 734 | 38d |
| 726 |  | Detallado de rodapié exterior | 4d | 2026-10-14 | 2026-10-19 | 731 | 70d |
| 727 |  | Detalle de losas y volados acabado fino | 4d | 2026-10-05 | 2026-10-09 | 701, 702 | 6d |
| 728 |  | Detalle fino en muros interiores | 5d | 2026-10-07 | 2026-10-14 | 705, 706, 707, 708, 709, 710 | 3d |
| 729 |  | Jardín interior bajo escalera con pozo de absorción | 12d | 2026-10-05 | 2026-10-20 | 708FS-2d, 709FS-2d, 710FS-2d | 6d |
| 730 | 1.4.14 | **ACABADOS EN FACHADA A** | 47d | 2026-09-29 | 2026-11-27 |  | 38d |
| 731 |  | Aplanado grueso fachada | 12d | 2026-09-29 | 2026-10-14 | 695 | 44d |
| 732 |  | Aplanado fino estuco fachada | 10d | 2026-10-07 | 2026-10-20 | 731SS+7d | 44d |
| 733 |  | Pintura acrílica 1-0102P | 8d | 2026-11-13 | 2026-11-25 | 721FS+5d, 724FS+12d, 735, 738 | 40d |
| 734 |  | Pintura acrílica 1-1404D | 10d | 2026-11-13 | 2026-11-27 | 721FS+5d, 724FS+12d, 735, 738 | 38d |
| 735 |  | Cantera 40x60cm | 14d | 2026-10-20 | 2026-11-06 | 731, 732 | 44d |
| 736 |  | Lambrin de permabase 1 cara | 3d | 2026-10-14 | 2026-10-17 | 731 | 51d |
| 737 |  | Enchapado de Permabase | 4d | 2026-10-17 | 2026-10-22 | 736 | 51d |
| 738 |  | Cubierta de Permabase | 5d | 2026-10-22 | 2026-10-28 | 737 | 51d |
| 739 | 1.4.15 | **APLANADOS Y PINTURA** | 63d | 2026-10-05 | 2026-12-23 |  | 4d |
| 740 |  | Yeso pulido en muros | 14d | 2026-10-15 | 2026-11-02 | 705, 706, 719FS-1d, 727, 728, 729FS-8d, 745FS-4d, 811FS-2d, 814, 815, 816, 817, 818FS-1d, 819FS-1d, 820FS-1d, 821FS-1d, 822FS-2d, 823FS-2d, 824FS-3d, 827FS-1d, 828FS-5d, 829FS-5d, 830FS-6d, 831FS-2d, 832FS-7d, 741 | 2d |
| 741 |  | Aplanado en muros enjarre grueso | 5d | 2026-10-05 | 2026-10-12 | 701, 702 | 5d |
| 742 |  | Pintura vinílica OR-W13 SHOELACE | 13d | 2026-12-08 | 2026-12-23 | 749FS-2d, 750FS-2d, 763FS-2d, 770, 771, 772, 773, 774, 775, 781, 782, 783, 784, 845, 846, 848, 849, 778, 779, 776, 777, 785 | 2d |
| 743 |  | Pintura vinílica PPUI5-13 Creamy M. | 10d | 2026-12-01 | 2026-12-14 | 749, 750, 763, 793, 794, 789, 787 | 10d |
| 744 |  | Pintura vinílica MD-06 Nano White | 8d | 2026-12-01 | 2026-12-11 | 749, 750, 763, 793, 794, 789, 787 | 12d |
| 745 |  | Yeso pulido en plafones | 10d | 2026-10-05 | 2026-10-17 | 701, 702 | 4d |
| 746 |  | Perfilado de puertas y ventanas | 4d | 2026-10-20 | 2026-10-24 | 740SS+4d | 65d |
| 747 | 1.4.16 | **PISOS Y AZULEJOS** | 24d | 2026-10-27 | 2026-11-26 |  | 2d |
| 748 | 1.4.16.1 | **AREA SOCIAL** | 15d | 2026-10-30 | 2026-11-19 |  | 2d |
| 749 |  | Piso Adhara 44X89 | 14d | 2026-10-30 | 2026-11-18 | 740FS-2d, 836, 835, 752FS-5d | 2d |
| 750 |  | Zoclo Adhara 44X89 | 5d | 2026-11-11 | 2026-11-19 | 749FS-4d | 19d |
| 751 | 1.4.16.2 | **RECAMARAS** | 8d | 2026-10-27 | 2026-11-05 |  | 2d |
| 752 |  | Acabado aparente de pisos - pulido | 8d | 2026-10-27 | 2026-11-05 | 740FS-5d | 2d |
| 753 | 1.4.16.3 | **BAÑOS** | 17d | 2026-10-28 | 2026-11-19 |  | 13d |
| 754 |  | Azulejo Mod. Ornamenta 60x30 | 5d | 2026-11-05 | 2026-11-11 | 755FS-1d, 825, 826, 836 | 13d |
| 755 |  | Impermeabilización en regadera | 2d | 2026-11-04 | 2026-11-06 | 740, 759 | 13d |
| 756 |  | Piso Mod. Valparaiso 20x20 | 4d | 2026-11-11 | 2026-11-18 | 754 | 13d |
| 757 |  | Zoclo Adhara 44X89 | 2d | 2026-11-17 | 2026-11-19 | 756FS-1d | 46d |
| 758 |  | Piso Adhara 44X89 | 3d | 2026-11-11 | 2026-11-17 | 754 | 48d |
| 759 |  | Fabricacion de nicho decorativo en baños | 6d | 2026-10-28 | 2026-11-04 | 740FS-4d | 13d |
| 760 |  | Sardinel en regadera | 4d | 2026-11-11 | 2026-11-18 | 754 | 47d |
| 761 | 1.4.16.4 | **ESCALERA** | 9d | 2026-11-13 | 2026-11-26 |  | 2d |
| 762 |  | Piso Adhara 44X89 | 7d | 2026-11-13 | 2026-11-24 | 628, 740, 749FS-2d | 2d |
| 763 |  | Zoclo Adhara 44X89 | 4d | 2026-11-21 | 2026-11-26 | 762FS-2d | 2d |
| 764 | 1.4.17 | **EXTERIOR** | 3d | 2026-10-12 | 2026-10-15 |  | 7d |
| 765 |  | Rastrilleo, afine y nivelado de tierra | 3d | 2026-10-12 | 2026-10-15 | 715, 718 | 7d |
| 766 | 1.4.18 | **SEGUNDA LIMPIEZA DE OBRA** | 4d | 2026-11-26 | 2026-12-01 |  | 25d |
| 767 |  | Segunda limpieza de obra | 2d | 2026-11-26 | 2026-11-28 | 762, 763 | 25d |
| 768 |  | Segunda carga y acarreo de escombro | 2d | 2026-11-28 | 2026-12-01 | 767 | 25d |
| 769 | 1.4.19 | **CANCELERIA PUERTAS Y VENTANAS DE ALUMINIO** | 17d | 2026-11-13 | 2026-12-07 |  | 3d |
| 770 |  | Fijo medidas 0.30x4.90m | 7d | 2026-11-18 | 2026-11-26 | 740, 749 | 11d |

| ID | WBS | Task | Duration | Start | Finish | Predecessors | Total float |
| --- | --- | --- | --- | --- | --- | --- | --- |
| 771 |  | Ventana Corrediza 1.80x1.60m | 4d | 2026-11-13 | 2026-11-20 | 740FS+10d | 16d |
| 772 |  | Ventana Corrediza 0.60x0.40m | 4d | 2026-11-18 | 2026-11-23 | 740FS+12d | 14d |
| 773 |  | Ventana Corrediza 1.54x0.50m | 4d | 2026-11-18 | 2026-11-23 | 740FS+12d | 14d |
| 774 |  | Fijo medidas 1.40x2.50m | 4d | 2026-11-21 | 2026-11-26 | 740FS+10d, 749FS+3d | 5d |
| 775 |  | Ventana Corrediza 1.80x1.50m | 4d | 2026-11-24 | 2026-11-28 | 740FS+7d, 749FS+2d, 762 | 3d |
| 776 |  | Ventana Corrediza 1.40x1.60m | 4d | 2026-11-24 | 2026-11-28 | 740, 749, 762 | 3d |
| 777 |  | Ventana Corrediza 0.95x0.40m | 4d | 2026-11-24 | 2026-11-28 | 740, 749, 762 | 3d |
| 778 |  | Puerta corrediza 3.85x2.10m | 6d | 2026-11-26 | 2026-12-03 | 774 | 5d |
| 779 |  | Barandal de Cristal Templado | 6d | 2026-11-28 | 2026-12-07 | 775, 776, 777 | 3d |
| 780 | 1.4.20 | **CARPINTERIA, PUERTAS EXTERIORES E INTERIORES** | 9d | 2026-11-26 | 2026-12-08 |  | 2d |
| 781 |  | Puerta P-01 de seguridad | 5d | 2026-11-26 | 2026-12-02 | 763 | 6d |
| 782 |  | Puerta P-01 interior | 8d | 2026-11-26 | 2026-12-07 | 763 | 3d |
| 783 |  | Puerta P-02 interior | 8d | 2026-11-26 | 2026-12-07 | 763 | 3d |
| 784 |  | Puerta P-03 interior | 4d | 2026-12-02 | 2026-12-08 | 763FS+5d | 2d |
| 785 |  | Puerta P-04 interior | 4d | 2026-12-02 | 2026-12-08 | 763FS+5d | 2d |
| 786 | 1.4.21 | **VOLADOS, BARANDAL Y ESCALERA** | 33d | 2026-10-20 | 2026-12-01 |  | 10d |
| 787 |  | Barandal de Herreria en escalera | 4d | 2026-11-06 | 2026-11-11 | 788FS-4d | 25d |
| 788 |  | Escalera de herreria | 18d | 2026-10-20 | 2026-11-11 | 729 | 10d |
| 789 |  | Techumbre en acceso Principal | 14d | 2026-11-05 | 2026-11-24 | 788FS-5d | 16d |
| 790 |  | Techumbre en 1.80x0.50m | 7d | 2026-11-05 | 2026-11-13 | 788FS-5d | 10d |
| 791 |  | Techumbre en 1.40x0.50m | 7d | 2026-11-13 | 2026-11-24 | 790 | 10d |
| 792 |  | Imper con manto prefabricado | 5d | 2026-11-19 | 2026-11-25 | 790, 791FS-4d | 10d |
| 793 |  | Plafon hoja tablaroca std | 5d | 2026-11-25 | 2026-12-01 | 792 | 10d |
| 794 |  | Acabado Woodstock en parte inf. Cubierta | 5d | 2026-11-25 | 2026-12-01 | 792 | 10d |
| 795 | 1.4.22 | **INSTALACION ELECTRICA** | 16d | 2026-10-28 | 2026-11-18 |  | 31d |
| 796 |  | Alimentación eléctrica base a centro de carga | 5d | 2026-11-02 | 2026-11-07 | 719, 740 | 35d |
| 797 |  | Interruptor termomagnético 1x20 A | 1d | 2026-11-07 | 2026-11-09 | 796 | 35d |
| 798 |  | Interruptor termomagnético 2x20 A | 1d | 2026-11-07 | 2026-11-09 | 796 | 35d |
| 799 |  | Salida para apagador 3 vías | 4d | 2026-10-28 | 2026-11-02 | 701, 740FS-4d | 31d |
| 800 |  | Salida para apagador doble | 3d | 2026-11-02 | 2026-11-05 | 799 | 33d |
| 801 |  | Salida para apagador sencillo | 3d | 2026-11-02 | 2026-11-05 | 799 | 33d |
| 802 |  | Salida de alumbrado en losa | 5d | 2026-11-02 | 2026-11-07 | 799 | 31d |
| 803 |  | Salida para contacto exterior doble | 2d | 2026-11-02 | 2026-11-04 | 799 | 34d |
| 804 |  | Salida para contacto 220 V | 3d | 2026-11-04 | 2026-11-07 | 799FS+2d | 31d |
| 805 |  | Salida para contacto doble | 5d | 2026-11-04 | 2026-11-10 | 799FS+2d | 34d |
| 806 |  | Salida para contacto doble área húmeda | 2d | 2026-11-07 | 2026-11-10 | 803, 804 | 34d |
| 807 |  | Salida TV / telefonía / intercom | 4d | 2026-11-07 | 2026-11-12 | 803, 804 | 32d |
| 808 |  | Extractor 4 baño | 5d | 2026-11-07 | 2026-11-13 | 803, 804 | 31d |
| 809 |  | Prueba eléctrica | 2d | 2026-11-13 | 2026-11-18 | 796, 797, 798, 799, 800, 801, 802, 803, 804, 805, 806, 807, 808, 862, 863, 869, 864, 865, 867, 868, 871, 873 | 31d |
| 810 | 1.4.23 | **INSTALACIÓN HIDRO-SANITARIA** | 11d | 2026-10-12 | 2026-10-24 |  | 2d |
| 811 |  | Tubería condensados PVC 1 | 5d | 2026-10-12 | 2026-10-17 | 715 | 2d |
| 812 |  | Tubería sanitaria PVC 4 | 5d | 2026-10-12 | 2026-10-17 | 718 | 10d |
| 813 |  | Coladera H-444 | 1d | 2026-10-17 | 2026-10-19 | 812 | 10d |
| 814 |  | Caja PVC para lavadora | 3d | 2026-10-12 | 2026-10-15 | 715 | 2d |
| 815 |  | Salida para secadora PVC 4 | 3d | 2026-10-12 | 2026-10-15 | 718 | 2d |
| 816 |  | Salida hidráulica para boiler | 2d | 2026-10-12 | 2026-10-14 | 715 | 3d |
| 817 |  | Salida hidráulica para llave de jardín | 3d | 2026-10-12 | 2026-10-15 | 715 | 2d |
| 818 |  | Salida hidráulica para lavabo | 4d | 2026-10-12 | 2026-10-16 | 715 | 2d |
| 819 |  | Salida hidráulica para purificación | 4d | 2026-10-12 | 2026-10-16 | 715 | 2d |
| 820 |  | Salida sanitaria para lavabo | 2d | 2026-10-14 | 2026-10-16 | 715FS+2d | 2d |
| 821 |  | Salida hidráulica para lavadero | 2d | 2026-10-14 | 2026-10-16 | 715FS+2d | 2d |
| 822 |  | Salida sanitaria para lavadero | 2d | 2026-10-15 | 2026-10-17 | 715FS+3d | 2d |
| 823 |  | Salida hidráulica para lavadora | 2d | 2026-10-15 | 2026-10-17 | 715FS+3d | 2d |
| 824 |  | Salida sanitaria para lavadora | 2d | 2026-10-16 | 2026-10-19 | 718FS+4d | 2d |
| 825 |  | Salida hidráulica para regadera | 5d | 2026-10-16 | 2026-10-22 | 715FS+4d | 7d |
| 826 |  | Salida sanitaria para regadera | 4d | 2026-10-16 | 2026-10-21 | 718FS+4d | 8d |
| 827 |  | Salida hidráulica para WC | 2d | 2026-10-14 | 2026-10-16 | 718FS+2d | 2d |
| 828 |  | Salida sanitaria para WC | 4d | 2026-10-16 | 2026-10-21 | 718FS+4d | 2d |
| 829 |  | Salida hidráulica para zinc | 4d | 2026-10-16 | 2026-10-21 | 718FS+4d | 2d |
| 830 |  | Salida sanitaria para zinc | 3d | 2026-10-19 | 2026-10-22 | 718FS+6d | 2d |
| 831 |  | Tubo para ventila de baño 2 | 5d | 2026-10-12 | 2026-10-17 | 811SS | 2d |
| 832 |  | Tubo para minisplit PVC 3 | 5d | 2026-10-17 | 2026-10-23 | 831 | 2d |
| 833 |  | Cuadro de medición | 5d | 2026-10-15 | 2026-10-21 | 765 | 7d |
| 834 |  | Pozo de absorción 0.50x0.50x0.50 | 3d | 2026-10-15 | 2026-10-19 | 765 | 10d |
| 835 |  | Prueba sanitaria final | 1d | 2026-10-23 | 2026-10-24 | 811, 812, 813, 815, 820, 822, 824, 826, 828, 831, 832 | 6d |
| 836 |  | Prueba hidrostática final | 1d | 2026-10-22 | 2026-10-23 | 816, 817, 818, 819, 821, 823, 825, 827, 829, 833, 834, 839, 840, 838, 837 | 7d |
| 837 |  | Salida válvula control 19 mm | 1d | 2026-10-21 | 2026-10-22 | 833 | 7d |
| 838 |  | Salida válvula control 13 mm | 1d | 2026-10-21 | 2026-10-22 | 833 | 7d |
| 839 |  | Salida hidráulica para tanque hidroneumático | 3d | 2026-10-15 | 2026-10-19 | 765 | 10d |
| 840 |  | Salida hidráulica para Active Driver | 3d | 2026-10-15 | 2026-10-19 | 765 | 10d |

| ID | WBS | Task | Duration | Start | Finish | Predecessors | Total float |
| --- | --- | --- | --- | --- | --- | --- | --- |
| 841 | 1.4.24 | **INSTALACION DE GAS** | 8d | 2026-10-08 | 2026-10-19 |  | 38d |
| 842 |  | Ramaleo para gas 1/2 | 5d | 2026-10-13 | 2026-10-19 | 765FS-2d, 843 | 38d |
| 843 |  | Excavación a mano material tipo B | 3d | 2026-10-08 | 2026-10-13 | 765FF-2d | 38d |
| 844 | 1.4.25 | **MUEBLES SANITARIOS** | 29d | 2026-11-18 | 2026-12-23 |  | 14d |
| 845 |  | WC completo Austral | 2d | 2026-11-18 | 2026-11-20 | 749, 756, 835, 836 | 16d |
| 846 |  | Lavabo Senna con pedestal | 4d | 2026-11-18 | 2026-11-23 | 749, 754, 756, 835, 836 | 14d |
| 847 |  | Tarja / lavabo combo Guinea 80x45 | 2d | 2026-11-18 | 2026-11-20 | 593, 749, 754, 756, 836 | 45d |
| 848 |  | Regadera con monomando | 3d | 2026-11-20 | 2026-11-24 | 749, 754FS+2d, 756FS+2d, 835, 836 | 13d |
| 849 |  | Coladera inserto cerámico | 2d | 2026-11-21 | 2026-11-24 | 754, 756FS+3d, 836 | 13d |
| 850 |  | Toallero sencillo | 1d | 2026-12-23 | 2026-12-23 | 742FS-1d | 2d |
| 851 |  | Toallero barra | 1d | 2026-12-23 | 2026-12-23 | 742FS-1d | 2d |
| 852 |  | Portapapel | 1d | 2026-12-23 | 2026-12-23 | 742FS-1d | 2d |
| 853 |  | Gancho baño | 1d | 2026-12-23 | 2026-12-23 | 742FS-1d | 2d |
| 854 | 1.4.26 | **EQUIPAMIENTO** | 6d | 2026-10-02 | 2026-10-09 |  | 61d |
| 855 |  | Electronivel Rotoplas 5 m | 2d | 2026-10-03 | 2026-10-06 | 860 | 64d |
| 856 |  | Manómetro | 1d | 2026-10-03 | 2026-10-05 | 860 | 65d |
| 857 |  | Interruptor de presión 30-50 PSI | 1d | 2026-10-03 | 2026-10-05 | 860 | 65d |
| 858 |  | Tanque hidroneumático FPS-24LX | 3d | 2026-10-03 | 2026-10-07 | 860 | 61d |
| 859 |  | Bomba sumergible Dominator 1.2 HP | 2d | 2026-10-07 | 2026-10-09 | 858 | 61d |
| 860 |  | Cisterna prefabricada 2800 L | 1d | 2026-10-02 | 2026-10-03 | 722FF | 61d |
| 861 | 1.4.27 | **LUMINARIAS** | 5d | 2026-11-07 | 2026-11-13 |  | 31d |
| 862 |  | Roseta cerámica | 3d | 2026-11-07 | 2026-11-11 | 802 | 33d |
| 863 |  | Luminaria lagartijera LED | 3d | 2026-11-07 | 2026-11-11 | 802 | 33d |
| 864 |  | Spot 6W Tecnolite | 3d | 2026-11-07 | 2026-11-11 | 802 | 33d |
| 865 |  | Spot 7W Tecnolite | 3d | 2026-11-07 | 2026-11-11 | 802 | 33d |
| 866 |  | Arbotante exterior | 2d | 2026-11-07 | 2026-11-10 | 802 | 31d |
| 867 |  | Estaca LED exterior | 3d | 2026-11-10 | 2026-11-13 | 866 | 31d |
| 868 |  | Tira LED | 3d | 2026-11-10 | 2026-11-13 | 866 | 31d |
| 869 |  | Spot exterior 50W | 2d | 2026-11-07 | 2026-11-10 | 802 | 34d |
| 870 | 1.4.28 | **TIMBRE** | 2d | 2026-11-09 | 2026-11-11 |  | 33d |
| 871 |  | Timbre inalámbrico con bocina | 2d | 2026-11-09 | 2026-11-11 | 800FS+3d, 801FS+3d | 33d |
| 872 | 1.4.29 | **OBRA EXTERIOR - BARDA** | 18d | 2026-10-15 | 2026-11-06 |  | 39d |
| 873 |  | Murete convencional | 5d | 2026-10-21 | 2026-10-27 | 765FS+5d | 45d |
| 874 |  | Barda de block aparente | 18d | 2026-10-15 | 2026-11-06 | 765 | 39d |
| 875 | 1.4.30 | **TERCER LIMPIEZA DE OBRA** | 16d | 2026-12-26 | 2027-01-18 |  | 2d |
| 876 |  | Limpieza fina para entrega | 5d | 2026-12-26 | 2027-01-04 | 742, 743, 744, 775, 784, 785, 809, 835, 836, 850, 851, 852, 853, 855, 856, 857, 858, 859, 874 | 2d |
| 877 |  | Tercera limpieza de obra | 5d | 2027-01-04 | 2027-01-11 | 876, 768 | 2d |
| 878 |  | Tercera carga y acarreo de escombro | 6d | 2027-01-11 | 2027-01-18 | 877 | 2d |
| 879 | 1.5 | **LOTE 02 M-661 CORSAC-B** | 178d | 2026-05-20 | 2027-01-04 |  | 13d |
| 880 | 1.5.1 | **HITOS IMPORTANTES DEL LOTE** | 178d | 2026-05-20 | 2027-01-04 |  | 13d |
| 881 |  | Inicio del Lote-02 M-661 Corsac-B | 0d | 2026-05-20 | 2026-05-20 | 7 | 13d |
| 882 |  | Colado de Losa de Cimentación | 0d | 2026-06-10 | 2026-06-10 | 913 | 174d |
| 883 |  | Colado de Losa de Entrepiso | 0d | 2026-07-17 | 2026-07-17 | 949 | 144d |
| 884 |  | Colado de Losa de Azotea | 0d | 2026-08-24 | 2026-08-24 | 989 | 114d |
| 885 |  | Entrega de vivienda | 0d | 2027-01-04 | 2027-01-04 | 1181, 1182, 1183 | 13d |
| 886 | 1.5.2 | **TRABAJOS PRELIMINARES** | 2d | 2026-05-20 | 2026-05-22 |  | 13d |
| 887 |  | Trazo y nivelación | 2d | 2026-05-20 | 2026-05-22 | 881 | 13d |
| 888 | 1.5.3 | **EXCAVACIONES** | 3d | 2026-05-22 | 2026-05-26 |  | 13d |
| 889 |  | Excavación a mano material tipo B | 3d | 2026-05-22 | 2026-05-26 | 887 | 13d |
| 890 |  | Acarreo en carretilla 20 m | 2d | 2026-05-23 | 2026-05-26 | 889SS+1d | 13d |
| 891 | 1.5.4 | **CIMENTACION** | 13d | 2026-05-26 | 2026-06-11 |  | 13d |
| 892 |  | Cimbra perimetral losa de cimentación | 3d | 2026-05-26 | 2026-05-29 | 889, 890 | 13d |
| 893 |  | Sistema antitermitas PVC | 3d | 2026-05-26 | 2026-05-29 | 889, 890 | 14d |
| 894 |  | Hule negro en cimentación | 1d | 2026-05-29 | 2026-06-01 | 893 | 14d |
| 895 |  | Ramaleo poliducto eléctrico cimentación | 2d | 2026-06-01 | 2026-06-03 | 894 | 17d |
| 896 |  | Ramaleo eléctrico base-medición a centro de carga | 1d | 2026-06-01 | 2026-06-02 | 894 | 18d |
| 897 |  | Ramaleo eléctrico exterior | 1d | 2026-06-03 | 2026-06-04 | 895, 896 | 17d |
| 898 |  | Ramaleo para cable poliducto 3/4 | 1d | 2026-06-03 | 2026-06-04 | 895, 896 | 17d |
| 899 |  | Ramaleo para TV poliducto 3/4 | 1d | 2026-06-03 | 2026-06-04 | 895, 896 | 17d |
| 900 |  | Ramaleo hidráulico CPVC 1-1/4" cimentación | 1d | 2026-06-01 | 2026-06-02 | 894 | 14d |
| 901 |  | Ramaleo hidráulico CPVC 1 cimentación | 1d | 2026-06-01 | 2026-06-02 | 894, 900SS | 14d |
| 902 |  | Ramaleo hidráulico CPVC 3/4 cimentación | 2d | 2026-06-02 | 2026-06-04 | 901 | 14d |
| 903 |  | Ramaleo hidráulico CPVC 1/2 cimentación | 2d | 2026-06-04 | 2026-06-06 | 902 | 14d |
| 904 |  | Prueba hidráulica | 1d | 2026-06-06 | 2026-06-08 | 900, 901, 902, 903 | 14d |
| 905 |  | Ramaleo sanitario PVC 4 cimentación | 2d | 2026-06-02 | 2026-06-04 | 894FS+1d | 15d |
| 906 |  | Ramaleo sanitario PVC 2 cimentación | 1d | 2026-06-04 | 2026-06-05 | 905 | 15d |
| 907 |  | Prueba sanitaria | 1d | 2026-06-05 | 2026-06-06 | 905, 906 | 15d |
| 908 |  | Acero contratrabe CT-1 | 4d | 2026-05-29 | 2026-06-04 | 892 | 13d |
| 909 |  | Acero contratrabe CT-2 | 4d | 2026-05-29 | 2026-06-04 | 892 | 13d |
| 910 |  | Malla electrosoldada 6-6/8-8 | 2d | 2026-06-06 | 2026-06-09 | 908, 909, 911, 912 | 13d |

| ID | WBS | Task | Duration | Start | Finish | Predecessors | Total float |
| --- | --- | --- | --- | --- | --- | --- | --- |
| 911 |  | Bastón de refuerzo LS | 2d | 2026-06-04 | 2026-06-06 | 908, 909 | 13d |
| 912 |  | Bastón de refuerzo LI | 2d | 2026-06-04 | 2026-06-06 | 908, 909 | 13d |
| 913 |  | Colado losa de cimentación f’c=200 | 1d | 2026-06-09 | 2026-06-10 | 892, 894, 897, 898, 899, 904, 907, 908, 909, 910, 911, 912, 915, 916 | 13d |
| 914 |  | Curado de concreto | 1d | 2026-06-10 | 2026-06-11 | 913 | 13d |
| 915 |  | Acero zapata ZT-1 | 4d | 2026-06-04 | 2026-06-09 | 908, 909 | 13d |
| 916 |  | Acero zapata ZT-2 | 4d | 2026-06-04 | 2026-06-09 | 908, 909 | 13d |
| 917 | 1.5.5 | **MUROS, PLANTA BAJA. CASTILLOS Y CERRAMIENTOS** | 20d | 2026-06-05 | 2026-06-30 |  | 18d |
| 918 |  | Anclaje de castillos y Columnas PB | 5d | 2026-06-05 | 2026-06-11 | 908FS+1d, 909FS+1d | 161d |
| 919 |  | Castillo K1 | 4d | 2026-06-11 | 2026-06-16 | 914, 918 | 161d |
| 920 |  | Castillo K3 | 3d | 2026-06-13 | 2026-06-17 | 919FS-2d | 161d |
| 921 |  | Castillo K4 | 3d | 2026-06-13 | 2026-06-17 | 919FS-2d | 161d |
| 922 |  | Castillo K5 | 3d | 2026-06-16 | 2026-06-19 | 920FS-1d, 921FS-1d | 161d |
| 923 |  | Refuerzo de muro K6 | 3d | 2026-06-17 | 2026-06-22 | 922FS-2d | 161d |
| 924 |  | Dala de cerramiento CR-1 | 4d | 2026-06-17 | 2026-06-23 | 919, 920 | 164d |
| 925 |  | Dala de cerramiento CR-2 | 3d | 2026-06-17 | 2026-06-22 | 919, 920 | 165d |
| 926 |  | Cadena block dala | 4d | 2026-06-22 | 2026-06-26 | 923 | 161d |
| 927 |  | Muro de ladrillo aparente | 15d | 2026-06-11 | 2026-06-30 | 914 | 13d |
| 928 |  | Muro de block planta baja | 13d | 2026-06-13 | 2026-06-30 | 914FS+2d | 13d |
| 929 |  | Ramaleo electrico en Muros Planta Baja | 4d | 2026-06-17 | 2026-06-23 | 927SS+5d | 16d |
| 930 |  | Ramaleo para cable poliducto 3/4 | 2d | 2026-06-23 | 2026-06-25 | 929 | 16d |
| 931 |  | Ramaleo para TV poliducto 3/4 | 3d | 2026-06-25 | 2026-06-29 | 930 | 16d |
| 932 | 1.5.6 | **ESCALERA** | 10d | 2026-07-17 | 2026-07-30 |  | 90d |
| 933 |  | Escalera de concreto armado | 10d | 2026-07-17 | 2026-07-30 | 949 | 90d |
| 934 | 1.5.7 | **LOSA DE ENTREPISO (viegueta y caseton)** | 17d | 2026-06-27 | 2026-07-18 |  | 16d |
| 935 |  | Dala de coronamiento 10cm | 3d | 2026-07-07 | 2026-07-09 | 951FS-1d, 937, 938, 939, 940, 941, 942 | 16d |
| 936 |  | Dala de coronamiento 12cm | 3d | 2026-07-08 | 2026-07-10 | 951, 937, 938, 939, 940, 941, 942 | 15d |
| 937 |  | Trabe TR-1 | 3d | 2026-06-27 | 2026-07-01 | 927FS-2d, 928FS-2d | 17d |
| 938 |  | Trabe TR-2 | 4d | 2026-06-29 | 2026-07-03 | 927FS-1d, 928FS-1d | 15d |
| 939 |  | Nervadura NR-1 | 4d | 2026-06-30 | 2026-07-04 | 927, 928 | 14d |
| 940 |  | Nervadura NR-2 | 4d | 2026-07-01 | 2026-07-06 | 927FS+1d, 928FS+1d | 13d |
| 941 |  | Nervadura NR-3 | 4d | 2026-07-01 | 2026-07-06 | 927FS+1d, 928FS+1d | 13d |
| 942 |  | Nervadura NR-4 | 4d | 2026-07-01 | 2026-07-06 | 927FS+1d, 928FS+1d | 13d |
| 943 |  | Acero de refuerzo en nervios #3 | 2d | 2026-07-07 | 2026-07-08 | 937, 938, 939, 940, 941, 942 | 13d |
| 944 |  | Acero de refuerzo long. #3 | 3d | 2026-07-08 | 2026-07-10 | 937, 938, 939, 940, 941, 942, 951 | 14d |
| 945 |  | Acero de refuerzo long. #4 | 3d | 2026-07-08 | 2026-07-10 | 944SS | 14d |
| 946 |  | Malla 66-10/10 losa de compresión | 2d | 2026-07-14 | 2026-07-16 | 935, 936, 943, 956, 959, 948 | 13d |
| 947 |  | Acero de Losa Maciza | 3d | 2026-07-07 | 2026-07-09 | 939, 940, 941, 942 | 18d |
| 948 |  | Caseton de 60x60x20cm | 2d | 2026-07-07 | 2026-07-08 | 939, 940, 941, 942 | 17d |
| 949 |  | Concreto losa de entrepiso f’c=200 | 1d | 2026-07-16 | 2026-07-17 | 944, 945, 946, 947, 956, 959, 952, 961 | 13d |
| 950 |  | Curado de concreto | 1d | 2026-07-17 | 2026-07-18 | 949 | 13d |
| 951 |  | Cimbra losa de azotea | 5d | 2026-07-01 | 2026-07-07 | 927FS+1d, 928FS+1d, 931 | 14d |
| 952 |  | Cimbra exterior corta losa | 3d | 2026-07-10 | 2026-07-14 | 944FS-1d, 945FS-1d | 15d |
| 953 |  | Ramaleo poliducto eléctrico entrepiso | 2d | 2026-07-09 | 2026-07-10 | 943 | 149d |
| 954 |  | Ramaleo hidráulico CPVC 3/4" | 2d | 2026-07-10 | 2026-07-13 | 943FS+1d | 13d |
| 955 |  | Ramaleo hidráulico CPVC 1/2" | 1d | 2026-07-13 | 2026-07-14 | 954 | 13d |
| 956 |  | Prueba hidráulica | 1d | 2026-07-13 | 2026-07-14 | 954, 955FS-1d | 13d |
| 957 |  | Ramaleo sanitario PVC 4" | 2d | 2026-07-10 | 2026-07-13 | 943FS+1d | 13d |
| 958 |  | Ramaleo sanitario PVC 2" | 1d | 2026-07-13 | 2026-07-14 | 957 | 13d |
| 959 |  | Prueba sanitaria | 1d | 2026-07-13 | 2026-07-14 | 957, 958FS-1d | 13d |
| 960 | 1.5.8 | **MUROS EN PLANTA ALTA, CASTILLOS Y CERRM.** | 22d | 2026-07-10 | 2026-08-06 |  | 14d |
| 961 |  | Anclaje de castillos y Columnas PA | 4d | 2026-07-10 | 2026-07-15 | 944FS-1d, 945FS-1d | 14d |
| 962 |  | Castillo K1 | 4d | 2026-07-18 | 2026-07-23 | 950 | 17d |
| 963 |  | Castillo K2 | 4d | 2026-07-20 | 2026-07-24 | 950FS+1d | 16d |
| 964 |  | Castillo K4 | 3d | 2026-07-23 | 2026-07-28 | 962 | 17d |
| 965 |  | Castillo K5 | 3d | 2026-07-23 | 2026-07-28 | 962 | 17d |
| 966 |  | Castillo K6 | 3d | 2026-07-23 | 2026-07-28 | 962 | 17d |
| 967 |  | Refuerzo de muro | 3d | 2026-07-24 | 2026-07-29 | 962, 963 | 16d |
| 968 |  | Dala de cerramiento CR-1 | 4d | 2026-07-29 | 2026-08-03 | 964, 965, 966, 967 | 16d |
| 969 |  | Dala de cerramiento CR-2 | 4d | 2026-07-29 | 2026-08-03 | 964, 965, 966, 967 | 16d |
| 970 |  | Cadena block dala | 3d | 2026-08-03 | 2026-08-06 | 967, 968, 969 | 16d |
| 971 |  | Muro de ladrillo aparente | 15d | 2026-07-18 | 2026-08-06 | 950 | 13d |
| 972 |  | Muro de block planta alta | 14d | 2026-07-20 | 2026-08-06 | 950FS+1d | 13d |
| 973 |  | Ramaleo electrico en Muros Planta Alta | 4d | 2026-07-29 | 2026-08-03 | 971SS+8d | 24d |
| 974 | 1.5.9 | **LOSA AZOTEA** | 15d | 2026-08-06 | 2026-08-25 |  | 13d |
| 975 |  | Cortalosa CL-1 | 2d | 2026-08-20 | 2026-08-22 | 987 | 13d |
| 976 |  | Cortalosa CL-2 | 2d | 2026-08-20 | 2026-08-22 | 987 | 13d |
| 977 |  | Vigueta pretensada V11-30 125 | 5d | 2026-08-06 | 2026-08-12 | 970, 971, 972 | 16d |
| 978 |  | Vigueta pretensada V11-30 185 | 5d | 2026-08-06 | 2026-08-12 | 971, 972 | 16d |
| 979 |  | Vigueta pretensada V11-30 190 | 5d | 2026-08-06 | 2026-08-12 | 971, 972 | 16d |
| 980 |  | Vigueta pretensada V11-30 205 | 5d | 2026-08-08 | 2026-08-14 | 971FS+2d, 972FS+2d | 14d |

| ID | WBS | Task | Duration | Start | Finish | Predecessors | Total float |
| --- | --- | --- | --- | --- | --- | --- | --- |
| 981 |  | Vigueta pretensada V11-30 215 | 5d | 2026-08-08 | 2026-08-14 | 971FS+2d, 972FS+2d | 14d |
| 982 |  | Vigueta pretensada V11-30 260 | 5d | 2026-08-10 | 2026-08-17 | 971FS+3d, 972FS+3d | 13d |
| 983 |  | Vigueta pretensada V11-30 285 | 5d | 2026-08-10 | 2026-08-17 | 971FS+3d, 972FS+3d | 13d |
| 984 |  | Vigueta pretensada V11-40 330 | 5d | 2026-08-10 | 2026-08-17 | 971FS+3d, 972 | 13d |
| 985 |  | Vigueta pretensada V11-40 335 | 5d | 2026-08-10 | 2026-08-17 | 971FS+3d, 972 | 13d |
| 986 |  | Vigueta pretensada V11-40 505 | 5d | 2026-08-10 | 2026-08-17 | 971FS+3d, 972 | 13d |
| 987 |  | Bovedilla poliestireno azotea | 3d | 2026-08-17 | 2026-08-20 | 977, 978, 979, 980, 981, 982, 983, 984, 985, 986 | 13d |
| 988 |  | Malla 66-10/10 losa de compresión | 2d | 2026-08-20 | 2026-08-22 | 987 | 13d |
| 989 |  | Concreto losa de azotea f’c=200 | 1d | 2026-08-22 | 2026-08-24 | 975, 976, 987, 988, 992, 991 | 13d |
| 990 |  | Curado de concreto | 1d | 2026-08-24 | 2026-08-25 | 989 | 13d |
| 991 |  | Cimbra losa de azotea | 5d | 2026-08-06 | 2026-08-12 | 971, 972, 973 | 21d |
| 992 |  | Ramaleo de poliducto para inst. electrica en azotea | 2d | 2026-08-20 | 2026-08-22 | 987 | 13d |
| 993 | 1.5.10 | **PRETIL Y ACABADOS DE AZOTEA** | 19d | 2026-08-25 | 2026-09-18 |  | 13d |
| 994 |  | Castillo K1 | 5d | 2026-08-27 | 2026-09-02 | 996SS+2d | 13d |
| 995 |  | Dala de cerramiento en pretil | 4d | 2026-09-01 | 2026-09-04 | 994FS-2d, 996FS-2d | 13d |
| 996 |  | Muro de block 12x15x40 | 5d | 2026-08-25 | 2026-08-31 | 990 | 13d |
| 997 |  | Chaflán en azotea | 4d | 2026-09-03 | 2026-09-08 | 994, 996 | 13d |
| 998 |  | Diamante de entortado | 4d | 2026-09-03 | 2026-09-08 | 994, 996 | 13d |
| 999 |  | Aplanado exterior Mortermax fino | 5d | 2026-09-05 | 2026-09-11 | 995, 997FS-2d, 998FS-2d | 13d |
| 1000 |  | Entortado de Losa | 4d | 2026-09-12 | 2026-09-18 | 1001 | 13d |
| 1001 |  | Curado de concreto | 1d | 2026-09-11 | 2026-09-12 | 997, 999 | 13d |
| 1002 | 1.5.11 | **PRIMERA LIMPIEZA DE OBRA** | 4d | 2026-08-25 | 2026-08-29 |  | 70d |
| 1003 |  | Primera limpieza de obra | 2d | 2026-08-25 | 2026-08-27 | 990 | 70d |
| 1004 |  | Primera carga y acarreo de escombro | 2d | 2026-08-27 | 2026-08-29 | 1003 | 70d |
| 1005 | 1.5.12 | **IMPERMEABILIZACION** | 5d | 2026-09-18 | 2026-09-25 |  | 13d |
| 1006 |  | Impermeabilización de pretil Kover 5 años | 4d | 2026-09-18 | 2026-09-24 | 1000 | 14d |
| 1007 |  | Impermeabilización de losa Kover 5 años | 5d | 2026-09-18 | 2026-09-25 | 1000 | 13d |
| 1008 | 1.5.13 | **ALBAÑILERIA** | 62d | 2026-09-01 | 2026-11-19 |  | 32d |
| 1009 |  | Lavadero de granito | 4d | 2026-10-15 | 2026-10-20 | 1045SS+8d | 69d |
| 1010 |  | Ranurado y resane general inst. en muros | 3d | 2026-09-23 | 2026-09-26 | 1007FS-2d | 15d |
| 1011 |  | Ranurado y resane eléctrico 1/2 a 3/4 | 3d | 2026-09-23 | 2026-09-26 | 1007FS-2d | 15d |
| 1012 |  | Ranurado y resane hidráulico 1/2 a 1 | 2d | 2026-09-25 | 2026-09-28 | 1007 | 14d |
| 1013 |  | Resane sanitario tubería 2 | 2d | 2026-09-25 | 2026-09-28 | 1007 | 14d |
| 1014 |  | Resane sanitario tubería 4 | 2d | 2026-09-25 | 2026-09-28 | 1007 | 14d |
| 1015 |  | Resane minisplit tubería 3 | 2d | 2026-09-25 | 2026-09-28 | 1007 | 14d |
| 1016 |  | Ramaleo hidráulico exterior CPVC 1 1/4 | 3d | 2026-09-25 | 2026-09-29 | 1006, 1007 | 13d |
| 1017 |  | Ramaleo hidráulico exterior CPVC 1 | 2d | 2026-09-25 | 2026-09-28 | 1016SS | 13d |
| 1018 |  | Ramaleo hidráulico exterior CPVC 3/4 | 2d | 2026-09-28 | 2026-09-30 | 1017 | 13d |
| 1019 |  | Ramaleo hidráulico exterior CPVC 1/2 | 2d | 2026-09-28 | 2026-09-30 | 1017 | 13d |
| 1020 |  | Prueba hidráulica | 1d | 2026-09-30 | 2026-10-01 | 1012, 1016, 1017, 1018, 1019 | 13d |
| 1021 |  | Ramaleo sanitario exterior PVC 4 | 4d | 2026-09-25 | 2026-09-30 | 1006, 1007 | 13d |
| 1022 |  | Ramaleo sanitario exterior PVC 2 | 3d | 2026-09-26 | 2026-09-30 | 1021SS+1d | 13d |
| 1023 |  | Prueba sanitaria | 1d | 2026-09-30 | 2026-10-01 | 1013, 1014, 1015, 1021, 1022 | 13d |
| 1024 |  | Centro de carga muros PB | 4d | 2026-09-29 | 2026-10-03 | 1006FS+3d, 1007FS+3d | 15d |
| 1025 |  | Firme de concreto 8 cm | 4d | 2026-10-01 | 2026-10-06 | 1020, 1023, 1027 | 63d |
| 1026 |  | Curado de concreto | 1d | 2026-10-06 | 2026-10-07 | 1025 | 63d |
| 1027 |  | Cisterna 2800 L con instalación | 18d | 2026-09-01 | 2026-09-24 | 996, 1003, 1004 | 69d |
| 1028 |  | Banqueta y huellas de concreto | 8d | 2026-10-08 | 2026-10-19 | 1020, 1023, 1070, 1138FS-2d, 1147, 1139 | 46d |
| 1029 |  | Curado de concreto | 1d | 2026-10-19 | 2026-10-20 | 1028 | 46d |
| 1030 |  | Número oficial | 1d | 2026-11-18 | 2026-11-19 | 1038, 1039 | 46d |
| 1031 |  | Detallado de rodapié exterior | 4d | 2026-10-03 | 2026-10-08 | 1036 | 78d |
| 1032 |  | Detalle de losas y volados acabado fino | 4d | 2026-09-25 | 2026-09-30 | 1006, 1007 | 17d |
| 1033 |  | Detalle fino en muros interiores | 5d | 2026-09-28 | 2026-10-03 | 1010, 1011, 1012, 1013, 1014, 1015 | 14d |
| 1034 |  | Jardín interior bajo escalera con pozo de absorción | 12d | 2026-09-25 | 2026-10-09 | 1013FS-2d, 1014FS-2d, 1015FS-2d | 17d |
| 1035 | 1.5.14 | **ACABADOS EN FACHADA A** | 47d | 2026-09-18 | 2026-11-18 |  | 46d |
| 1036 |  | Aplanado grueso fachada | 12d | 2026-09-18 | 2026-10-03 | 1000 | 52d |
| 1037 |  | Aplanado fino estuco fachada | 10d | 2026-09-28 | 2026-10-09 | 1036SS+7d | 52d |
| 1038 |  | Pintura acrílica 1-0102P | 8d | 2026-11-04 | 2026-11-13 | 1026FS+5d, 1029FS+12d, 1040, 1043 | 48d |
| 1039 |  | Pintura acrílica 1-1404D | 10d | 2026-11-04 | 2026-11-18 | 1026FS+5d, 1029FS+12d, 1040, 1043 | 46d |
| 1040 |  | Cantera 40x60cm | 14d | 2026-10-09 | 2026-10-27 | 1036, 1037 | 52d |
| 1041 |  | Lambrin de permabase 1 cara | 3d | 2026-10-03 | 2026-10-07 | 1036 | 59d |
| 1042 |  | Enchapado de Permabase | 4d | 2026-10-07 | 2026-10-13 | 1041 | 59d |
| 1043 |  | Cubierta de Permabase | 5d | 2026-10-13 | 2026-10-19 | 1042 | 59d |
| 1044 | 1.5.15 | **APLANADOS Y PINTURA** | 63d | 2026-09-25 | 2026-12-14 |  | 15d |
| 1045 |  | Yeso pulido en muros | 14d | 2026-10-05 | 2026-10-22 | 1010, 1011, 1024FS-1d, 1032, 1033, 1034FS-8d, 1050FS-4d, 1116FS-2d, 1119, 1120, 1121, 1122, 1123FS-1d, 1124FS-1d, 1125FS-1d, 1126FS-1d, 1127FS-2d, 1128FS-2d, 1129FS-3d, 1132FS-1d, 1133FS-5d, 1134FS-5d, 1135FS-6d, 1136FS-2d, 1137FS-7d, 1046 | 13d |
| 1046 |  | Aplanado en muros enjarre grueso | 5d | 2026-09-25 | 2026-10-01 | 1006, 1007 | 16d |
| 1047 |  | Pintura vinílica OR-W13 SHOELACE | 13d | 2026-11-27 | 2026-12-14 | 1054FS-2d, 1055FS-2d, 1068FS-2d, 1075, 1076, 1077, 1078, 1079, 1080, 1086, 1087, 1088, 1089, 1150, 1151, 1153, 1154, 1083, 1084, 1081, 1082, 1090 | 13d |
| 1048 |  | Pintura vinílica PPUI5-13 Creamy M. | 10d | 2026-11-21 | 2026-12-03 | 1054, 1055, 1068, 1098, 1099, 1094, 1092 | 21d |
| 1049 |  | Pintura vinílica MD-06 Nano White | 8d | 2026-11-21 | 2026-12-01 | 1054, 1055, 1068, 1098, 1099, 1094, 1092 | 23d |
| 1050 |  | Yeso pulido en plafones | 10d | 2026-09-25 | 2026-10-07 | 1006, 1007 | 15d |

| ID | WBS | Task | Duration | Start | Finish | Predecessors | Total float |
| --- | --- | --- | --- | --- | --- | --- | --- |
| 1051 |  | Perfilado de puertas y ventanas | 4d | 2026-10-09 | 2026-10-15 | 1045SS+4d | 73d |
| 1052 | 1.5.16 | **PISOS Y AZULEJOS** | 24d | 2026-10-16 | 2026-11-17 |  | 13d |
| 1053 | 1.5.16.1 | **AREA SOCIAL** | 15d | 2026-10-20 | 2026-11-07 |  | 13d |
| 1054 |  | Piso Adhara 44X89 | 14d | 2026-10-20 | 2026-11-06 | 1045FS-2d, 1141, 1140, 1057FS-5d | 13d |
| 1055 |  | Zoclo Adhara 44X89 | 5d | 2026-11-02 | 2026-11-07 | 1054FS-4d | 30d |
| 1056 | 1.5.16.2 | **RECAMARAS** | 8d | 2026-10-16 | 2026-10-26 |  | 13d |
| 1057 |  | Acabado aparente de pisos - pulido | 8d | 2026-10-16 | 2026-10-26 | 1045FS-5d | 13d |
| 1058 | 1.5.16.3 | **BAÑOS** | 17d | 2026-10-17 | 2026-11-07 |  | 24d |
| 1059 |  | Azulejo Mod. Ornamenta 60x30 | 5d | 2026-10-27 | 2026-11-02 | 1060FS-1d, 1130, 1131, 1141 | 24d |
| 1060 |  | Impermeabilización en regadera | 2d | 2026-10-26 | 2026-10-27 | 1045, 1064 | 24d |
| 1061 |  | Piso Mod. Valparaiso 20x20 | 4d | 2026-11-02 | 2026-11-06 | 1059 | 24d |
| 1062 |  | Zoclo Adhara 44X89 | 2d | 2026-11-05 | 2026-11-07 | 1061FS-1d | 54d |
| 1063 |  | Piso Adhara 44X89 | 3d | 2026-11-02 | 2026-11-05 | 1059 | 56d |
| 1064 |  | Fabricacion de nicho decorativo en baños | 6d | 2026-10-17 | 2026-10-24 | 1045FS-4d | 24d |
| 1065 |  | Sardinel en regadera | 4d | 2026-11-02 | 2026-11-06 | 1059 | 55d |
| 1066 | 1.5.16.4 | **ESCALERA** | 9d | 2026-11-04 | 2026-11-17 |  | 13d |
| 1067 |  | Piso Adhara 44X89 | 7d | 2026-11-04 | 2026-11-12 | 933, 1045, 1054FS-2d | 13d |
| 1068 |  | Zoclo Adhara 44X89 | 4d | 2026-11-10 | 2026-11-17 | 1067FS-2d | 13d |
| 1069 | 1.5.17 | **EXTERIOR** | 3d | 2026-10-01 | 2026-10-05 |  | 18d |
| 1070 |  | Rastrilleo, afine y nivelado de tierra | 3d | 2026-10-01 | 2026-10-05 | 1020, 1023 | 18d |
| 1071 | 1.5.18 | **SEGUNDA LIMPIEZA DE OBRA** | 4d | 2026-11-17 | 2026-11-21 |  | 37d |
| 1072 |  | Segunda limpieza de obra | 2d | 2026-11-17 | 2026-11-19 | 1067, 1068 | 37d |
| 1073 |  | Segunda carga y acarreo de escombro | 2d | 2026-11-19 | 2026-11-21 | 1072 | 37d |
| 1074 | 1.5.19 | **CANCELERIA PUERTAS Y VENTANAS DE ALUMINIO** | 17d | 2026-11-04 | 2026-11-26 |  | 14d |
| 1075 |  | Fijo medidas 0.30x4.90m | 7d | 2026-11-06 | 2026-11-17 | 1045, 1054 | 22d |
| 1076 |  | Ventana Corrediza 1.80x1.60m | 4d | 2026-11-04 | 2026-11-09 | 1045FS+10d | 27d |
| 1077 |  | Ventana Corrediza 0.60x0.40m | 4d | 2026-11-06 | 2026-11-11 | 1045FS+12d | 25d |
| 1078 |  | Ventana Corrediza 1.54x0.50m | 4d | 2026-11-06 | 2026-11-11 | 1045FS+12d | 25d |
| 1079 |  | Fijo medidas 1.40x2.50m | 4d | 2026-11-10 | 2026-11-17 | 1045FS+10d, 1054FS+3d | 16d |
| 1080 |  | Ventana Corrediza 1.80x1.50m | 4d | 2026-11-12 | 2026-11-19 | 1045FS+7d, 1054FS+2d, 1067 | 14d |
| 1081 |  | Ventana Corrediza 1.40x1.60m | 4d | 2026-11-12 | 2026-11-19 | 1045, 1054, 1067 | 14d |
| 1082 |  | Ventana Corrediza 0.95x0.40m | 4d | 2026-11-12 | 2026-11-19 | 1045, 1054, 1067 | 14d |
| 1083 |  | Puerta corrediza 3.85x2.10m | 6d | 2026-11-17 | 2026-11-24 | 1079 | 16d |
| 1084 |  | Barandal de Cristal Templado | 6d | 2026-11-19 | 2026-11-26 | 1080, 1081, 1082 | 14d |
| 1085 | 1.5.20 | **CARPINTERIA, PUERTAS EXTERIORES E INTERIORES** | 9d | 2026-11-17 | 2026-11-27 |  | 13d |
| 1086 |  | Puerta P-01 de seguridad | 5d | 2026-11-17 | 2026-11-23 | 1068 | 17d |
| 1087 |  | Puerta P-01 interior | 8d | 2026-11-17 | 2026-11-26 | 1068 | 14d |
| 1088 |  | Puerta P-02 interior | 8d | 2026-11-17 | 2026-11-26 | 1068 | 14d |
| 1089 |  | Puerta P-03 interior | 4d | 2026-11-23 | 2026-11-27 | 1068FS+5d | 13d |
| 1090 |  | Puerta P-04 interior | 4d | 2026-11-23 | 2026-11-27 | 1068FS+5d | 13d |
| 1091 | 1.5.21 | **VOLADOS, BARANDAL Y ESCALERA** | 33d | 2026-10-09 | 2026-11-21 |  | 21d |
| 1092 |  | Barandal de Herreria en escalera | 4d | 2026-10-28 | 2026-11-02 | 1093FS-4d | 36d |
| 1093 |  | Escalera de herreria | 18d | 2026-10-09 | 2026-11-02 | 1034 | 21d |
| 1094 |  | Techumbre en acceso Principal | 14d | 2026-10-27 | 2026-11-12 | 1093FS-5d | 27d |
| 1095 |  | Techumbre en 1.80x0.50m | 7d | 2026-10-27 | 2026-11-04 | 1093FS-5d | 21d |
| 1096 |  | Techumbre en 1.40x0.50m | 7d | 2026-11-04 | 2026-11-12 | 1095 | 21d |
| 1097 |  | Imper con manto prefabricado | 5d | 2026-11-07 | 2026-11-13 | 1095, 1096FS-4d | 21d |
| 1098 |  | Plafon hoja tablaroca std | 5d | 2026-11-13 | 2026-11-21 | 1097 | 21d |
| 1099 |  | Acabado Woodstock en parte inf. Cubierta | 5d | 2026-11-13 | 2026-11-21 | 1097 | 21d |
| 1100 | 1.5.22 | **INSTALACION ELECTRICA** | 16d | 2026-10-17 | 2026-11-06 |  | 42d |
| 1101 |  | Alimentación eléctrica base a centro de carga | 5d | 2026-10-22 | 2026-10-28 | 1024, 1045 | 46d |
| 1102 |  | Interruptor termomagnético 1x20 A | 1d | 2026-10-29 | 2026-10-29 | 1101 | 46d |
| 1103 |  | Interruptor termomagnético 2x20 A | 1d | 2026-10-29 | 2026-10-29 | 1101 | 46d |
| 1104 |  | Salida para apagador 3 vías | 4d | 2026-10-17 | 2026-10-22 | 1006, 1045FS-4d | 42d |
| 1105 |  | Salida para apagador doble | 3d | 2026-10-22 | 2026-10-26 | 1104 | 44d |
| 1106 |  | Salida para apagador sencillo | 3d | 2026-10-22 | 2026-10-26 | 1104 | 44d |
| 1107 |  | Salida de alumbrado en losa | 5d | 2026-10-22 | 2026-10-28 | 1104 | 42d |
| 1108 |  | Salida para contacto exterior doble | 2d | 2026-10-22 | 2026-10-24 | 1104 | 45d |
| 1109 |  | Salida para contacto 220 V | 3d | 2026-10-26 | 2026-10-28 | 1104FS+2d | 42d |
| 1110 |  | Salida para contacto doble | 5d | 2026-10-26 | 2026-10-30 | 1104FS+2d | 45d |
| 1111 |  | Salida para contacto doble área húmeda | 2d | 2026-10-29 | 2026-10-30 | 1108, 1109 | 45d |
| 1112 |  | Salida TV / telefonía / intercom | 4d | 2026-10-29 | 2026-11-03 | 1108, 1109 | 43d |
| 1113 |  | Extractor 4 baño | 5d | 2026-10-29 | 2026-11-04 | 1108, 1109 | 42d |
| 1114 |  | Prueba eléctrica | 2d | 2026-11-04 | 2026-11-06 | 1101, 1102, 1103, 1104, 1105, 1106, 1107, 1108, 1109, 1110, 1111, 1112, 1113, 1167, 1168, 1174, 1169, 1170, 1172, 1173, 1176, 1178 | 42d |
| 1115 | 1.5.23 | **INSTALACIÓN HIDRO-SANITARIA** | 11d | 2026-10-01 | 2026-10-15 |  | 13d |
| 1116 |  | Tubería condensados PVC 1 | 5d | 2026-10-01 | 2026-10-07 | 1020 | 13d |
| 1117 |  | Tubería sanitaria PVC 4 | 5d | 2026-10-01 | 2026-10-07 | 1023 | 21d |
| 1118 |  | Coladera H-444 | 1d | 2026-10-07 | 2026-10-08 | 1117 | 21d |
| 1119 |  | Caja PVC para lavadora | 3d | 2026-10-01 | 2026-10-05 | 1020 | 13d |
| 1120 |  | Salida para secadora PVC 4 | 3d | 2026-10-01 | 2026-10-05 | 1023 | 13d |

| ID | WBS | Task | Duration | Start | Finish | Predecessors | Total float |
| --- | --- | --- | --- | --- | --- | --- | --- |
| 1121 |  | Salida hidráulica para boiler | 2d | 2026-10-01 | 2026-10-03 | 1020 | 14d |
| 1122 |  | Salida hidráulica para llave de jardín | 3d | 2026-10-01 | 2026-10-05 | 1020 | 13d |
| 1123 |  | Salida hidráulica para lavabo | 4d | 2026-10-01 | 2026-10-06 | 1020 | 13d |
| 1124 |  | Salida hidráulica para purificación | 4d | 2026-10-01 | 2026-10-06 | 1020 | 13d |
| 1125 |  | Salida sanitaria para lavabo | 2d | 2026-10-03 | 2026-10-06 | 1020FS+2d | 13d |
| 1126 |  | Salida hidráulica para lavadero | 2d | 2026-10-03 | 2026-10-06 | 1020FS+2d | 13d |
| 1127 |  | Salida sanitaria para lavadero | 2d | 2026-10-05 | 2026-10-07 | 1020FS+3d | 13d |
| 1128 |  | Salida hidráulica para lavadora | 2d | 2026-10-05 | 2026-10-07 | 1020FS+3d | 13d |
| 1129 |  | Salida sanitaria para lavadora | 2d | 2026-10-06 | 2026-10-08 | 1023FS+4d | 13d |
| 1130 |  | Salida hidráulica para regadera | 5d | 2026-10-06 | 2026-10-13 | 1020FS+4d | 18d |
| 1131 |  | Salida sanitaria para regadera | 4d | 2026-10-06 | 2026-10-12 | 1023FS+4d | 19d |
| 1132 |  | Salida hidráulica para WC | 2d | 2026-10-03 | 2026-10-06 | 1023FS+2d | 13d |
| 1133 |  | Salida sanitaria para WC | 4d | 2026-10-06 | 2026-10-12 | 1023FS+4d | 13d |
| 1134 |  | Salida hidráulica para zinc | 4d | 2026-10-06 | 2026-10-12 | 1023FS+4d | 13d |
| 1135 |  | Salida sanitaria para zinc | 3d | 2026-10-08 | 2026-10-13 | 1023FS+6d | 13d |
| 1136 |  | Tubo para ventila de baño 2 | 5d | 2026-10-01 | 2026-10-07 | 1116SS | 13d |
| 1137 |  | Tubo para minisplit PVC 3 | 5d | 2026-10-07 | 2026-10-14 | 1136 | 13d |
| 1138 |  | Cuadro de medición | 5d | 2026-10-05 | 2026-10-12 | 1070 | 18d |
| 1139 |  | Pozo de absorción 0.50x0.50x0.50 | 3d | 2026-10-05 | 2026-10-08 | 1070 | 21d |
| 1140 |  | Prueba sanitaria final | 1d | 2026-10-14 | 2026-10-15 | 1116, 1117, 1118, 1120, 1125, 1127, 1129, 1131, 1133, 1136, 1137 | 17d |
| 1141 |  | Prueba hidrostática final | 1d | 2026-10-13 | 2026-10-14 | 1121, 1122, 1123, 1124, 1126, 1128, 1130, 1132, 1134, 1138, 1139, 1144, 1145, 1143, 1142 | 18d |
| 1142 |  | Salida válvula control 19 mm | 1d | 2026-10-12 | 2026-10-13 | 1138 | 18d |
| 1143 |  | Salida válvula control 13 mm | 1d | 2026-10-12 | 2026-10-13 | 1138 | 18d |
| 1144 |  | Salida hidráulica para tanque hidroneumático | 3d | 2026-10-05 | 2026-10-08 | 1070 | 21d |
| 1145 |  | Salida hidráulica para Active Driver | 3d | 2026-10-05 | 2026-10-08 | 1070 | 21d |
| 1146 | 1.5.24 | **INSTALACION DE GAS** | 8d | 2026-09-29 | 2026-10-08 |  | 46d |
| 1147 |  | Ramaleo para gas 1/2 | 5d | 2026-10-02 | 2026-10-08 | 1070FS-2d, 1148 | 46d |
| 1148 |  | Excavación a mano material tipo B | 3d | 2026-09-29 | 2026-10-02 | 1070FF-2d | 46d |
| 1149 | 1.5.25 | **MUEBLES SANITARIOS** | 29d | 2026-11-06 | 2026-12-14 |  | 25d |
| 1150 |  | WC completo Austral | 2d | 2026-11-06 | 2026-11-09 | 1054, 1061, 1140, 1141 | 27d |
| 1151 |  | Lavabo Senna con pedestal | 4d | 2026-11-06 | 2026-11-11 | 1054, 1059, 1061, 1140, 1141 | 25d |
| 1152 |  | Tarja / lavabo combo Guinea 80x45 | 2d | 2026-11-06 | 2026-11-09 | 898, 1054, 1059, 1061, 1141 | 53d |
| 1153 |  | Regadera con monomando | 3d | 2026-11-09 | 2026-11-12 | 1054, 1059FS+2d, 1061FS+2d, 1140, 1141 | 24d |
| 1154 |  | Coladera inserto cerámico | 2d | 2026-11-10 | 2026-11-12 | 1059, 1061FS+3d, 1141 | 24d |
| 1155 |  | Toallero sencillo | 1d | 2026-12-12 | 2026-12-14 | 1047FS-1d | 13d |
| 1156 |  | Toallero barra | 1d | 2026-12-12 | 2026-12-14 | 1047FS-1d | 13d |
| 1157 |  | Portapapel | 1d | 2026-12-12 | 2026-12-14 | 1047FS-1d | 13d |
| 1158 |  | Gancho baño | 1d | 2026-12-12 | 2026-12-14 | 1047FS-1d | 13d |
| 1159 | 1.5.26 | **EQUIPAMIENTO** | 6d | 2026-09-23 | 2026-09-30 |  | 72d |
| 1160 |  | Electronivel Rotoplas 5 m | 2d | 2026-09-24 | 2026-09-26 | 1165 | 75d |
| 1161 |  | Manómetro | 1d | 2026-09-24 | 2026-09-25 | 1165 | 76d |
| 1162 |  | Interruptor de presión 30-50 PSI | 1d | 2026-09-24 | 2026-09-25 | 1165 | 76d |
| 1163 |  | Tanque hidroneumático FPS-24LX | 3d | 2026-09-24 | 2026-09-28 | 1165 | 72d |
| 1164 |  | Bomba sumergible Dominator 1.2 HP | 2d | 2026-09-28 | 2026-09-30 | 1163 | 72d |
| 1165 |  | Cisterna prefabricada 2800 L | 1d | 2026-09-23 | 2026-09-24 | 1027FF | 72d |
| 1166 | 1.5.27 | **LUMINARIAS** | 5d | 2026-10-29 | 2026-11-04 |  | 42d |
| 1167 |  | Roseta cerámica | 3d | 2026-10-29 | 2026-11-02 | 1107 | 44d |
| 1168 |  | Luminaria lagartijera LED | 3d | 2026-10-29 | 2026-11-02 | 1107 | 44d |
| 1169 |  | Spot 6W Tecnolite | 3d | 2026-10-29 | 2026-11-02 | 1107 | 44d |
| 1170 |  | Spot 7W Tecnolite | 3d | 2026-10-29 | 2026-11-02 | 1107 | 44d |
| 1171 |  | Arbotante exterior | 2d | 2026-10-29 | 2026-10-30 | 1107 | 42d |
| 1172 |  | Estaca LED exterior | 3d | 2026-10-31 | 2026-11-04 | 1171 | 42d |
| 1173 |  | Tira LED | 3d | 2026-10-31 | 2026-11-04 | 1171 | 42d |
| 1174 |  | Spot exterior 50W | 2d | 2026-10-29 | 2026-10-30 | 1107 | 45d |
| 1175 | 1.5.28 | **TIMBRE** | 2d | 2026-10-30 | 2026-11-02 |  | 44d |
| 1176 |  | Timbre inalámbrico con bocina | 2d | 2026-10-30 | 2026-11-02 | 1105FS+3d, 1106FS+3d | 44d |
| 1177 | 1.5.29 | **OBRA EXTERIOR - BARDA** | 18d | 2026-10-05 | 2026-10-27 |  | 50d |
| 1178 |  | Murete convencional | 5d | 2026-10-12 | 2026-10-17 | 1070FS+5d | 56d |
| 1179 |  | Barda de block aparente | 18d | 2026-10-05 | 2026-10-27 | 1070 | 50d |
| 1180 | 1.5.30 | **TERCER LIMPIEZA DE OBRA** | 13d | 2026-12-14 | 2027-01-04 |  | 13d |
| 1181 |  | Limpieza fina para entrega | 6d | 2026-12-14 | 2026-12-21 | 1047, 1048, 1049, 1080, 1089, 1090, 1114, 1140, 1141, 1155, 1156, 1157, 1158, 1160, 1161, 1162, 1163, 1164, 1179 | 13d |
| 1182 |  | Tercera limpieza de obra | 4d | 2026-12-22 | 2026-12-29 | 1073, 1181 | 13d |
| 1183 |  | Tercera carga y acarreo de escombro | 3d | 2026-12-29 | 2027-01-04 | 1182 | 13d |
| 1184 | 1.6 | **LOTE 03 M-661 CORSAC-A** | 181d | 2026-05-29 | 2027-01-18 |  | 2d |
| 1185 | 1.6.1 | **HITOS IMPORTANTES DEL LOTE** | 181d | 2026-05-29 | 2027-01-18 |  | 2d |
| 1186 |  | Inicio del Lote-03 M-661 Corsac-A | 0d | 2026-05-29 | 2026-05-29 | 8FS+11d | 2d |
| 1187 |  | Colado de Losa de Cimentación | 0d | 2026-06-19 | 2026-06-19 | 1218 | 166d |
| 1188 |  | Colado de Losa de Entrepiso | 0d | 2026-07-28 | 2026-07-28 | 1254 | 136d |
| 1189 |  | Colado de Losa de Azotea | 0d | 2026-09-02 | 2026-09-02 | 1294 | 106d |
| 1190 |  | Entrega de vivienda | 0d | 2027-01-18 | 2027-01-18 | 1486, 1487, 1488 | 2d |

| ID | WBS | Task | Duration | Start | Finish | Predecessors | Total float |
| --- | --- | --- | --- | --- | --- | --- | --- |
| 1191 | 1.6.2 | **TRABAJOS PRELIMINARES** | 2d | 2026-05-29 | 2026-06-02 |  | 2d |
| 1192 |  | Trazo y nivelación | 2d | 2026-05-29 | 2026-06-02 | 1186 | 2d |
| 1193 | 1.6.3 | **EXCAVACIONES** | 3d | 2026-06-02 | 2026-06-05 |  | 2d |
| 1194 |  | Excavación a mano material tipo B | 3d | 2026-06-02 | 2026-06-05 | 1192 | 2d |
| 1195 |  | Acarreo en carretilla 20 m | 2d | 2026-06-03 | 2026-06-05 | 1194SS+1d | 2d |
| 1196 | 1.6.4 | **CIMENTACION** | 13d | 2026-06-05 | 2026-06-22 |  | 2d |
| 1197 |  | Cimbra perimetral losa de cimentación | 3d | 2026-06-05 | 2026-06-09 | 1194, 1195 | 2d |
| 1198 |  | Sistema antitermitas PVC | 3d | 2026-06-05 | 2026-06-09 | 1194, 1195 | 3d |
| 1199 |  | Hule negro en cimentación | 1d | 2026-06-09 | 2026-06-10 | 1198 | 3d |
| 1200 |  | Ramaleo poliducto eléctrico cimentación | 2d | 2026-06-10 | 2026-06-12 | 1199 | 6d |
| 1201 |  | Ramaleo eléctrico base-medición a centro de carga | 1d | 2026-06-10 | 2026-06-11 | 1199 | 7d |
| 1202 |  | Ramaleo eléctrico exterior | 1d | 2026-06-12 | 2026-06-13 | 1200, 1201 | 6d |
| 1203 |  | Ramaleo para cable poliducto 3/4 | 1d | 2026-06-12 | 2026-06-13 | 1200, 1201 | 6d |
| 1204 |  | Ramaleo para TV poliducto 3/4 | 1d | 2026-06-12 | 2026-06-13 | 1200, 1201 | 6d |
| 1205 |  | Ramaleo hidráulico CPVC 1-1/4" cimentación | 1d | 2026-06-10 | 2026-06-11 | 1199 | 3d |
| 1206 |  | Ramaleo hidráulico CPVC 1 cimentación | 1d | 2026-06-10 | 2026-06-11 | 1199, 1205SS | 3d |
| 1207 |  | Ramaleo hidráulico CPVC 3/4 cimentación | 2d | 2026-06-11 | 2026-06-13 | 1206 | 3d |
| 1208 |  | Ramaleo hidráulico CPVC 1/2 cimentación | 2d | 2026-06-13 | 2026-06-16 | 1207 | 3d |
| 1209 |  | Prueba hidráulica | 1d | 2026-06-16 | 2026-06-17 | 1205, 1206, 1207, 1208 | 3d |
| 1210 |  | Ramaleo sanitario PVC 4 cimentación | 2d | 2026-06-11 | 2026-06-13 | 1199FS+1d | 4d |
| 1211 |  | Ramaleo sanitario PVC 2 cimentación | 1d | 2026-06-13 | 2026-06-15 | 1210 | 4d |
| 1212 |  | Prueba sanitaria | 1d | 2026-06-15 | 2026-06-16 | 1210, 1211 | 4d |
| 1213 |  | Acero contratrabe CT-1 | 4d | 2026-06-09 | 2026-06-13 | 1197 | 2d |
| 1214 |  | Acero contratrabe CT-2 | 4d | 2026-06-09 | 2026-06-13 | 1197 | 2d |
| 1215 |  | Malla electrosoldada 6-6/8-8 | 2d | 2026-06-16 | 2026-06-18 | 1213, 1214, 1216, 1217 | 2d |
| 1216 |  | Bastón de refuerzo LS | 2d | 2026-06-13 | 2026-06-16 | 1213, 1214 | 2d |
| 1217 |  | Bastón de refuerzo LI | 2d | 2026-06-13 | 2026-06-16 | 1213, 1214 | 2d |
| 1218 |  | Colado losa de cimentación f’c=200 | 1d | 2026-06-18 | 2026-06-19 | 1197, 1199, 1202, 1203, 1204, 1209, 1212, 1213, 1214, 1215, 1216, 1217, 1220, 1221 | 2d |
| 1219 |  | Curado de concreto | 1d | 2026-06-19 | 2026-06-22 | 1218 | 2d |
| 1220 |  | Acero zapata ZT-1 | 4d | 2026-06-13 | 2026-06-18 | 1213, 1214 | 2d |
| 1221 |  | Acero zapata ZT-2 | 4d | 2026-06-13 | 2026-06-18 | 1213, 1214 | 2d |
| 1222 | 1.6.5 | **MUROS, PLANTA BAJA. CASTILLOS Y CERRAMIENTOS** | 20d | 2026-06-15 | 2026-07-09 |  | 7d |
| 1223 |  | Anclaje de castillos y Columnas PB | 5d | 2026-06-15 | 2026-06-22 | 1213FS+1d, 1214FS+1d | 153d |
| 1224 |  | Castillo K1 | 4d | 2026-06-22 | 2026-06-26 | 1219, 1223 | 153d |
| 1225 |  | Castillo K3 | 3d | 2026-06-24 | 2026-06-27 | 1224FS-2d | 153d |
| 1226 |  | Castillo K4 | 3d | 2026-06-24 | 2026-06-27 | 1224FS-2d | 153d |
| 1227 |  | Castillo K5 | 3d | 2026-06-26 | 2026-06-30 | 1225FS-1d, 1226FS-1d | 153d |
| 1228 |  | Refuerzo de muro K6 | 3d | 2026-06-27 | 2026-07-01 | 1227FS-2d | 153d |
| 1229 |  | Dala de cerramiento CR-1 | 4d | 2026-06-27 | 2026-07-02 | 1224, 1225 | 156d |
| 1230 |  | Dala de cerramiento CR-2 | 3d | 2026-06-27 | 2026-07-01 | 1224, 1225 | 157d |
| 1231 |  | Cadena block dala | 4d | 2026-07-01 | 2026-07-06 | 1228 | 153d |
| 1232 |  | Muro de ladrillo aparente | 15d | 2026-06-22 | 2026-07-09 | 1219 | 2d |
| 1233 |  | Muro de block planta baja | 13d | 2026-06-24 | 2026-07-09 | 1219FS+2d | 2d |
| 1234 |  | Ramaleo electrico en Muros Planta Baja | 4d | 2026-06-27 | 2026-07-02 | 1232SS+5d | 5d |
| 1235 |  | Ramaleo para cable poliducto 3/4 | 2d | 2026-07-02 | 2026-07-04 | 1234 | 5d |
| 1236 |  | Ramaleo para TV poliducto 3/4 | 3d | 2026-07-06 | 2026-07-08 | 1235 | 5d |
| 1237 | 1.6.6 | **ESCALERA** | 10d | 2026-07-28 | 2026-08-08 |  | 79d |
| 1238 |  | Escalera de concreto armado | 10d | 2026-07-28 | 2026-08-08 | 1254 | 79d |
| 1239 | 1.6.7 | **LOSA DE ENTREPISO (viegueta y caseton)** | 17d | 2026-07-08 | 2026-07-29 |  | 5d |
| 1240 |  | Dala de coronamiento 10cm | 3d | 2026-07-16 | 2026-07-20 | 1256FS-1d, 1242, 1243, 1244, 1245, 1246, 1247 | 5d |
| 1241 |  | Dala de coronamiento 12cm | 3d | 2026-07-17 | 2026-07-21 | 1256, 1242, 1243, 1244, 1245, 1246, 1247 | 4d |
| 1242 |  | Trabe TR-1 | 3d | 2026-07-08 | 2026-07-10 | 1232FS-2d, 1233FS-2d | 6d |
| 1243 |  | Trabe TR-2 | 4d | 2026-07-09 | 2026-07-14 | 1232FS-1d, 1233FS-1d | 4d |
| 1244 |  | Nervadura NR-1 | 4d | 2026-07-10 | 2026-07-15 | 1232, 1233 | 3d |
| 1245 |  | Nervadura NR-2 | 4d | 2026-07-11 | 2026-07-16 | 1232FS+1d, 1233FS+1d | 2d |
| 1246 |  | Nervadura NR-3 | 4d | 2026-07-11 | 2026-07-16 | 1232FS+1d, 1233FS+1d | 2d |
| 1247 |  | Nervadura NR-4 | 4d | 2026-07-11 | 2026-07-16 | 1232FS+1d, 1233FS+1d | 2d |
| 1248 |  | Acero de refuerzo en nervios #3 | 2d | 2026-07-16 | 2026-07-18 | 1242, 1243, 1244, 1245, 1246, 1247 | 2d |
| 1249 |  | Acero de refuerzo long. #3 | 3d | 2026-07-17 | 2026-07-21 | 1242, 1243, 1244, 1245, 1246, 1247, 1256 | 3d |
| 1250 |  | Acero de refuerzo long. #4 | 3d | 2026-07-17 | 2026-07-21 | 1249SS | 3d |
| 1251 |  | Malla 66-10/10 losa de compresión | 2d | 2026-07-23 | 2026-07-27 | 1240, 1241, 1248, 1261, 1264, 1253 | 2d |
| 1252 |  | Acero de Losa Maciza | 3d | 2026-07-16 | 2026-07-20 | 1244, 1245, 1246, 1247 | 7d |
| 1253 |  | Caseton de 60x60x20cm | 2d | 2026-07-16 | 2026-07-18 | 1244, 1245, 1246, 1247 | 6d |
| 1254 |  | Concreto losa de entrepiso f’c=200 | 1d | 2026-07-27 | 2026-07-28 | 1249, 1250, 1251, 1252, 1261, 1264, 1257, 1266 | 2d |
| 1255 |  | Curado de concreto | 1d | 2026-07-28 | 2026-07-29 | 1254 | 2d |
| 1256 |  | Cimbra losa de azotea | 5d | 2026-07-11 | 2026-07-17 | 1232FS+1d, 1233FS+1d, 1236 | 3d |
| 1257 |  | Cimbra exterior corta losa | 3d | 2026-07-20 | 2026-07-23 | 1249FS-1d, 1250FS-1d | 4d |
| 1258 |  | Ramaleo poliducto eléctrico entrepiso | 2d | 2026-07-18 | 2026-07-21 | 1248 | 141d |
| 1259 |  | Ramaleo hidráulico CPVC 3/4" | 2d | 2026-07-20 | 2026-07-22 | 1248FS+1d | 2d |
| 1260 |  | Ramaleo hidráulico CPVC 1/2" | 1d | 2026-07-22 | 2026-07-23 | 1259 | 2d |

| ID | WBS | Task | Duration | Start | Finish | Predecessors | Total float |
| --- | --- | --- | --- | --- | --- | --- | --- |
| 1261 |  | Prueba hidráulica | 1d | 2026-07-22 | 2026-07-23 | 1259, 1260FS-1d | 2d |
| 1262 |  | Ramaleo sanitario PVC 4" | 2d | 2026-07-20 | 2026-07-22 | 1248FS+1d | 2d |
| 1263 |  | Ramaleo sanitario PVC 2" | 1d | 2026-07-22 | 2026-07-23 | 1262 | 2d |
| 1264 |  | Prueba sanitaria | 1d | 2026-07-22 | 2026-07-23 | 1262, 1263FS-1d | 2d |
| 1265 | 1.6.8 | **MUROS EN PLANTA ALTA, CASTILLOS Y CERRM.** | 22d | 2026-07-20 | 2026-08-17 |  | 3d |
| 1266 |  | Anclaje de castillos y Columnas PA | 4d | 2026-07-20 | 2026-07-24 | 1249FS-1d, 1250FS-1d | 3d |
| 1267 |  | Castillo K1 | 4d | 2026-07-29 | 2026-08-03 | 1255 | 6d |
| 1268 |  | Castillo K2 | 4d | 2026-07-30 | 2026-08-04 | 1255FS+1d | 5d |
| 1269 |  | Castillo K4 | 3d | 2026-08-03 | 2026-08-06 | 1267 | 6d |
| 1270 |  | Castillo K5 | 3d | 2026-08-03 | 2026-08-06 | 1267 | 6d |
| 1271 |  | Castillo K6 | 3d | 2026-08-03 | 2026-08-06 | 1267 | 6d |
| 1272 |  | Refuerzo de muro | 3d | 2026-08-04 | 2026-08-07 | 1267, 1268 | 5d |
| 1273 |  | Dala de cerramiento CR-1 | 4d | 2026-08-07 | 2026-08-12 | 1269, 1270, 1271, 1272 | 5d |
| 1274 |  | Dala de cerramiento CR-2 | 4d | 2026-08-07 | 2026-08-12 | 1269, 1270, 1271, 1272 | 5d |
| 1275 |  | Cadena block dala | 3d | 2026-08-12 | 2026-08-17 | 1272, 1273, 1274 | 5d |
| 1276 |  | Muro de ladrillo aparente | 15d | 2026-07-29 | 2026-08-17 | 1255 | 2d |
| 1277 |  | Muro de block planta alta | 14d | 2026-07-30 | 2026-08-17 | 1255FS+1d | 2d |
| 1278 |  | Ramaleo electrico en Muros Planta Alta | 4d | 2026-08-07 | 2026-08-12 | 1276SS+8d | 13d |
| 1279 | 1.6.9 | **LOSA AZOTEA** | 15d | 2026-08-17 | 2026-09-03 |  | 2d |
| 1280 |  | Cortalosa CL-1 | 2d | 2026-08-31 | 2026-09-01 | 1292 | 2d |
| 1281 |  | Cortalosa CL-2 | 2d | 2026-08-31 | 2026-09-01 | 1292 | 2d |
| 1282 |  | Vigueta pretensada V11-30 125 | 5d | 2026-08-17 | 2026-08-22 | 1275, 1276, 1277 | 5d |
| 1283 |  | Vigueta pretensada V11-30 185 | 5d | 2026-08-17 | 2026-08-22 | 1276, 1277 | 5d |
| 1284 |  | Vigueta pretensada V11-30 190 | 5d | 2026-08-17 | 2026-08-22 | 1276, 1277 | 5d |
| 1285 |  | Vigueta pretensada V11-30 205 | 5d | 2026-08-19 | 2026-08-25 | 1276FS+2d, 1277FS+2d | 3d |
| 1286 |  | Vigueta pretensada V11-30 215 | 5d | 2026-08-19 | 2026-08-25 | 1276FS+2d, 1277FS+2d | 3d |
| 1287 |  | Vigueta pretensada V11-30 260 | 5d | 2026-08-20 | 2026-08-26 | 1276FS+3d, 1277FS+3d | 2d |
| 1288 |  | Vigueta pretensada V11-30 285 | 5d | 2026-08-20 | 2026-08-26 | 1276FS+3d, 1277FS+3d | 2d |
| 1289 |  | Vigueta pretensada V11-40 330 | 5d | 2026-08-20 | 2026-08-26 | 1276FS+3d, 1277 | 2d |
| 1290 |  | Vigueta pretensada V11-40 335 | 5d | 2026-08-20 | 2026-08-26 | 1276FS+3d, 1277 | 2d |
| 1291 |  | Vigueta pretensada V11-40 505 | 5d | 2026-08-20 | 2026-08-26 | 1276FS+3d, 1277 | 2d |
| 1292 |  | Bovedilla poliestireno azotea | 3d | 2026-08-26 | 2026-08-29 | 1282, 1283, 1284, 1285, 1286, 1287, 1288, 1289, 1290, 1291 | 2d |
| 1293 |  | Malla 66-10/10 losa de compresión | 2d | 2026-08-31 | 2026-09-01 | 1292 | 2d |
| 1294 |  | Concreto losa de azotea f’c=200 | 1d | 2026-09-02 | 2026-09-02 | 1280, 1281, 1292, 1293, 1297, 1296 | 2d |
| 1295 |  | Curado de concreto | 1d | 2026-09-03 | 2026-09-03 | 1294 | 2d |
| 1296 |  | Cimbra losa de azotea | 5d | 2026-08-17 | 2026-08-22 | 1276, 1277, 1278 | 10d |
| 1297 |  | Ramaleo de poliducto para inst. electrica en azotea | 2d | 2026-08-31 | 2026-09-01 | 1292 | 2d |
| 1298 | 1.6.10 | **PRETIL Y ACABADOS DE AZOTEA** | 19d | 2026-09-04 | 2026-09-29 |  | 2d |
| 1299 |  | Castillo K1 | 5d | 2026-09-07 | 2026-09-12 | 1301SS+2d | 2d |
| 1300 |  | Dala de cerramiento en pretil | 4d | 2026-09-10 | 2026-09-15 | 1299FS-2d, 1301FS-2d | 2d |
| 1301 |  | Muro de block 12x15x40 | 5d | 2026-09-04 | 2026-09-10 | 1295 | 2d |
| 1302 |  | Chaflán en azotea | 4d | 2026-09-12 | 2026-09-18 | 1299, 1301 | 2d |
| 1303 |  | Diamante de entortado | 4d | 2026-09-12 | 2026-09-18 | 1299, 1301 | 2d |
| 1304 |  | Aplanado exterior Mortermax fino | 5d | 2026-09-15 | 2026-09-23 | 1300, 1302FS-2d, 1303FS-2d | 2d |
| 1305 |  | Entortado de Losa | 4d | 2026-09-24 | 2026-09-29 | 1306 | 2d |
| 1306 |  | Curado de concreto | 1d | 2026-09-23 | 2026-09-24 | 1302, 1304 | 2d |
| 1307 | 1.6.11 | **PRIMERA LIMPIEZA DE OBRA** | 4d | 2026-09-04 | 2026-09-09 |  | 62d |
| 1308 |  | Primera limpieza de obra | 2d | 2026-09-04 | 2026-09-07 | 1295 | 62d |
| 1309 |  | Primera carga y acarreo de escombro | 2d | 2026-09-07 | 2026-09-09 | 1308 | 62d |
| 1310 | 1.6.12 | **IMPERMEABILIZACION** | 5d | 2026-09-29 | 2026-10-05 |  | 2d |
| 1311 |  | Impermeabilización de pretil Kover 5 años | 4d | 2026-09-29 | 2026-10-03 | 1305 | 3d |
| 1312 |  | Impermeabilización de losa Kover 5 años | 5d | 2026-09-29 | 2026-10-05 | 1305 | 2d |
| 1313 | 1.6.13 | **ALBAÑILERIA** | 62d | 2026-09-10 | 2026-11-28 |  | 21d |
| 1314 |  | Lavadero de granito | 4d | 2026-10-26 | 2026-10-29 | 1350SS+8d | 61d |
| 1315 |  | Ranurado y resane general inst. en muros | 3d | 2026-10-02 | 2026-10-06 | 1312FS-2d | 4d |
| 1316 |  | Ranurado y resane eléctrico 1/2 a 3/4 | 3d | 2026-10-02 | 2026-10-06 | 1312FS-2d | 4d |
| 1317 |  | Ranurado y resane hidráulico 1/2 a 1 | 2d | 2026-10-05 | 2026-10-07 | 1312 | 3d |
| 1318 |  | Resane sanitario tubería 2 | 2d | 2026-10-05 | 2026-10-07 | 1312 | 3d |
| 1319 |  | Resane sanitario tubería 4 | 2d | 2026-10-05 | 2026-10-07 | 1312 | 3d |
| 1320 |  | Resane minisplit tubería 3 | 2d | 2026-10-05 | 2026-10-07 | 1312 | 3d |
| 1321 |  | Ramaleo hidráulico exterior CPVC 1 1/4 | 3d | 2026-10-05 | 2026-10-08 | 1311, 1312 | 2d |
| 1322 |  | Ramaleo hidráulico exterior CPVC 1 | 2d | 2026-10-05 | 2026-10-07 | 1321SS | 2d |
| 1323 |  | Ramaleo hidráulico exterior CPVC 3/4 | 2d | 2026-10-07 | 2026-10-09 | 1322 | 2d |
| 1324 |  | Ramaleo hidráulico exterior CPVC 1/2 | 2d | 2026-10-07 | 2026-10-09 | 1322 | 2d |
| 1325 |  | Prueba hidráulica | 1d | 2026-10-09 | 2026-10-12 | 1317, 1321, 1322, 1323, 1324 | 2d |
| 1326 |  | Ramaleo sanitario exterior PVC 4 | 4d | 2026-10-05 | 2026-10-09 | 1311, 1312 | 2d |
| 1327 |  | Ramaleo sanitario exterior PVC 2 | 3d | 2026-10-06 | 2026-10-09 | 1326SS+1d | 2d |
| 1328 |  | Prueba sanitaria | 1d | 2026-10-09 | 2026-10-12 | 1318, 1319, 1320, 1326, 1327 | 2d |
| 1329 |  | Centro de carga muros PB | 4d | 2026-10-08 | 2026-10-14 | 1311FS+3d, 1312FS+3d | 4d |
| 1330 |  | Firme de concreto 8 cm | 4d | 2026-10-12 | 2026-10-16 | 1325, 1328, 1332 | 55d |

| ID | WBS | Task | Duration | Start | Finish | Predecessors | Total float |
| --- | --- | --- | --- | --- | --- | --- | --- |
| 1331 |  | Curado de concreto | 1d | 2026-10-16 | 2026-10-17 | 1330 | 55d |
| 1332 |  | Cisterna 2800 L con instalación | 18d | 2026-09-10 | 2026-10-03 | 1301, 1308, 1309 | 61d |
| 1333 |  | Banqueta y huellas de concreto | 8d | 2026-10-19 | 2026-10-28 | 1325, 1328, 1375, 1443FS-2d, 1452, 1444 | 38d |
| 1334 |  | Curado de concreto | 1d | 2026-10-29 | 2026-10-29 | 1333 | 38d |
| 1335 |  | Número oficial | 1d | 2026-11-27 | 2026-11-28 | 1343, 1344 | 38d |
| 1336 |  | Detallado de rodapié exterior | 4d | 2026-10-14 | 2026-10-19 | 1341 | 70d |
| 1337 |  | Detalle de losas y volados acabado fino | 4d | 2026-10-05 | 2026-10-09 | 1311, 1312 | 6d |
| 1338 |  | Detalle fino en muros interiores | 5d | 2026-10-07 | 2026-10-14 | 1315, 1316, 1317, 1318, 1319, 1320 | 3d |
| 1339 |  | Jardín interior bajo escalera con pozo de absorción | 12d | 2026-10-05 | 2026-10-20 | 1318FS-2d, 1319FS-2d, 1320FS-2d | 6d |
| 1340 | 1.6.14 | **ACABADOS EN FACHADA A** | 47d | 2026-09-29 | 2026-11-27 |  | 38d |
| 1341 |  | Aplanado grueso fachada | 12d | 2026-09-29 | 2026-10-14 | 1305 | 44d |
| 1342 |  | Aplanado fino estuco fachada | 10d | 2026-10-07 | 2026-10-20 | 1341SS+7d | 44d |
| 1343 |  | Pintura acrílica 1-0102P | 8d | 2026-11-13 | 2026-11-25 | 1331FS+5d, 1334FS+12d, 1345, 1348 | 40d |
| 1344 |  | Pintura acrílica 1-1404D | 10d | 2026-11-13 | 2026-11-27 | 1331FS+5d, 1334FS+12d, 1345, 1348 | 38d |
| 1345 |  | Cantera 40x60cm | 14d | 2026-10-20 | 2026-11-06 | 1341, 1342 | 44d |
| 1346 |  | Lambrin de permabase 1 cara | 3d | 2026-10-14 | 2026-10-17 | 1341 | 51d |
| 1347 |  | Enchapado de Permabase | 4d | 2026-10-17 | 2026-10-22 | 1346 | 51d |
| 1348 |  | Cubierta de Permabase | 5d | 2026-10-22 | 2026-10-28 | 1347 | 51d |
| 1349 | 1.6.15 | **APLANADOS Y PINTURA** | 63d | 2026-10-05 | 2026-12-23 |  | 4d |
| 1350 |  | Yeso pulido en muros | 14d | 2026-10-15 | 2026-11-02 | 1315, 1316, 1329FS-1d, 1337, 1338, 1339FS-8d, 1355FS-4d, 1421FS-2d, 1424, 1425, 1426, 1427, 1428FS-1d, 1429FS-1d, 1430FS-1d, 1431FS-1d, 1432FS-2d, 1433FS-2d, 1434FS-3d, 1437FS-1d, 1438FS-5d, 1439FS-5d, 1440FS-6d, 1441FS-2d, 1442FS-7d, 1351 | 2d |
| 1351 |  | Aplanado en muros enjarre grueso | 5d | 2026-10-05 | 2026-10-12 | 1311, 1312 | 5d |
| 1352 |  | Pintura vinílica OR-W13 SHOELACE | 13d | 2026-12-08 | 2026-12-23 | 1359FS-2d, 1360FS-2d, 1373FS-2d, 1380, 1381, 1382, 1383, 1384, 1385, 1391, 1392, 1393, 1394, 1455, 1456, 1458, 1459, 1388, 1389, 1386, 1387, 1395 | 2d |
| 1353 |  | Pintura vinílica PPUI5-13 Creamy M. | 10d | 2026-12-01 | 2026-12-14 | 1359, 1360, 1373, 1403, 1404, 1399, 1397 | 10d |
| 1354 |  | Pintura vinílica MD-06 Nano White | 8d | 2026-12-01 | 2026-12-11 | 1359, 1360, 1373, 1403, 1404, 1399, 1397 | 12d |
| 1355 |  | Yeso pulido en plafones | 10d | 2026-10-05 | 2026-10-17 | 1311, 1312 | 4d |
| 1356 |  | Perfilado de puertas y ventanas | 4d | 2026-10-20 | 2026-10-24 | 1350SS+4d | 65d |
| 1357 | 1.6.16 | **PISOS Y AZULEJOS** | 24d | 2026-10-27 | 2026-11-26 |  | 2d |
| 1358 | 1.6.16.1 | **AREA SOCIAL** | 15d | 2026-10-30 | 2026-11-19 |  | 2d |
| 1359 |  | Piso Adhara 44X89 | 14d | 2026-10-30 | 2026-11-18 | 1350FS-2d, 1446, 1445, 1362FS-5d | 2d |
| 1360 |  | Zoclo Adhara 44X89 | 5d | 2026-11-11 | 2026-11-19 | 1359FS-4d | 19d |
| 1361 | 1.6.16.2 | **RECAMARAS** | 8d | 2026-10-27 | 2026-11-05 |  | 2d |
| 1362 |  | Acabado aparente de pisos - pulido | 8d | 2026-10-27 | 2026-11-05 | 1350FS-5d | 2d |
| 1363 | 1.6.16.3 | **BAÑOS** | 17d | 2026-10-28 | 2026-11-19 |  | 13d |
| 1364 |  | Azulejo Mod. Ornamenta 60x30 | 5d | 2026-11-05 | 2026-11-11 | 1365FS-1d, 1435, 1436, 1446 | 13d |
| 1365 |  | Impermeabilización en regadera | 2d | 2026-11-04 | 2026-11-06 | 1350, 1369 | 13d |
| 1366 |  | Piso Mod. Valparaiso 20x20 | 4d | 2026-11-11 | 2026-11-18 | 1364 | 13d |
| 1367 |  | Zoclo Adhara 44X89 | 2d | 2026-11-17 | 2026-11-19 | 1366FS-1d | 46d |
| 1368 |  | Piso Adhara 44X89 | 3d | 2026-11-11 | 2026-11-17 | 1364 | 48d |
| 1369 |  | Fabricacion de nicho decorativo en baños | 6d | 2026-10-28 | 2026-11-04 | 1350FS-4d | 13d |
| 1370 |  | Sardinel en regadera | 4d | 2026-11-11 | 2026-11-18 | 1364 | 47d |
| 1371 | 1.6.16.4 | **ESCALERA** | 9d | 2026-11-13 | 2026-11-26 |  | 2d |
| 1372 |  | Piso Adhara 44X89 | 7d | 2026-11-13 | 2026-11-24 | 1238, 1350, 1359FS-2d | 2d |
| 1373 |  | Zoclo Adhara 44X89 | 4d | 2026-11-21 | 2026-11-26 | 1372FS-2d | 2d |
| 1374 | 1.6.17 | **EXTERIOR** | 3d | 2026-10-12 | 2026-10-15 |  | 7d |
| 1375 |  | Rastrilleo, afine y nivelado de tierra | 3d | 2026-10-12 | 2026-10-15 | 1325, 1328 | 7d |
| 1376 | 1.6.18 | **SEGUNDA LIMPIEZA DE OBRA** | 4d | 2026-11-26 | 2026-12-01 |  | 25d |
| 1377 |  | Segunda limpieza de obra | 2d | 2026-11-26 | 2026-11-28 | 1372, 1373 | 25d |
| 1378 |  | Segunda carga y acarreo de escombro | 2d | 2026-11-28 | 2026-12-01 | 1377 | 25d |
| 1379 | 1.6.19 | **CANCELERIA PUERTAS Y VENTANAS DE ALUMINIO** | 17d | 2026-11-13 | 2026-12-07 |  | 3d |
| 1380 |  | Fijo medidas 0.30x4.90m | 7d | 2026-11-18 | 2026-11-26 | 1350, 1359 | 11d |
| 1381 |  | Ventana Corrediza 1.80x1.60m | 4d | 2026-11-13 | 2026-11-20 | 1350FS+10d | 16d |
| 1382 |  | Ventana Corrediza 0.60x0.40m | 4d | 2026-11-18 | 2026-11-23 | 1350FS+12d | 14d |
| 1383 |  | Ventana Corrediza 1.54x0.50m | 4d | 2026-11-18 | 2026-11-23 | 1350FS+12d | 14d |
| 1384 |  | Fijo medidas 1.40x2.50m | 4d | 2026-11-21 | 2026-11-26 | 1350FS+10d, 1359FS+3d | 5d |
| 1385 |  | Ventana Corrediza 1.80x1.50m | 4d | 2026-11-24 | 2026-11-28 | 1350FS+7d, 1359FS+2d, 1372 | 3d |
| 1386 |  | Ventana Corrediza 1.40x1.60m | 4d | 2026-11-24 | 2026-11-28 | 1350, 1359, 1372 | 3d |
| 1387 |  | Ventana Corrediza 0.95x0.40m | 4d | 2026-11-24 | 2026-11-28 | 1350, 1359, 1372 | 3d |
| 1388 |  | Puerta corrediza 3.85x2.10m | 6d | 2026-11-26 | 2026-12-03 | 1384 | 5d |
| 1389 |  | Barandal de Cristal Templado | 6d | 2026-11-28 | 2026-12-07 | 1385, 1386, 1387 | 3d |
| 1390 | 1.6.20 | **CARPINTERIA, PUERTAS EXTERIORES E INTERIORES** | 9d | 2026-11-26 | 2026-12-08 |  | 2d |
| 1391 |  | Puerta P-01 de seguridad | 5d | 2026-11-26 | 2026-12-02 | 1373 | 6d |
| 1392 |  | Puerta P-01 interior | 8d | 2026-11-26 | 2026-12-07 | 1373 | 3d |
| 1393 |  | Puerta P-02 interior | 8d | 2026-11-26 | 2026-12-07 | 1373 | 3d |
| 1394 |  | Puerta P-03 interior | 4d | 2026-12-02 | 2026-12-08 | 1373FS+5d | 2d |
| 1395 |  | Puerta P-04 interior | 4d | 2026-12-02 | 2026-12-08 | 1373FS+5d | 2d |
| 1396 | 1.6.21 | **VOLADOS, BARANDAL Y ESCALERA** | 33d | 2026-10-20 | 2026-12-01 |  | 10d |
| 1397 |  | Barandal de Herreria en escalera | 4d | 2026-11-06 | 2026-11-11 | 1398FS-4d | 25d |
| 1398 |  | Escalera de herreria | 18d | 2026-10-20 | 2026-11-11 | 1339 | 10d |
| 1399 |  | Techumbre en acceso Principal | 14d | 2026-11-05 | 2026-11-24 | 1398FS-5d | 16d |
| 1400 |  | Techumbre en 1.80x0.50m | 7d | 2026-11-05 | 2026-11-13 | 1398FS-5d | 10d |

| ID | WBS | Task | Duration | Start | Finish | Predecessors | Total float |
| --- | --- | --- | --- | --- | --- | --- | --- |
| 1401 |  | Techumbre en 1.40x0.50m | 7d | 2026-11-13 | 2026-11-24 | 1400 | 10d |
| 1402 |  | Imper con manto prefabricado | 5d | 2026-11-19 | 2026-11-25 | 1400, 1401FS-4d | 10d |
| 1403 |  | Plafon hoja tablaroca std | 5d | 2026-11-25 | 2026-12-01 | 1402 | 10d |
| 1404 |  | Acabado Woodstock en parte inf. Cubierta | 5d | 2026-11-25 | 2026-12-01 | 1402 | 10d |
| 1405 | 1.6.22 | **INSTALACION ELECTRICA** | 16d | 2026-10-28 | 2026-11-18 |  | 31d |
| 1406 |  | Alimentación eléctrica base a centro de carga | 5d | 2026-11-02 | 2026-11-07 | 1329, 1350 | 35d |
| 1407 |  | Interruptor termomagnético 1x20 A | 1d | 2026-11-07 | 2026-11-09 | 1406 | 35d |
| 1408 |  | Interruptor termomagnético 2x20 A | 1d | 2026-11-07 | 2026-11-09 | 1406 | 35d |
| 1409 |  | Salida para apagador 3 vías | 4d | 2026-10-28 | 2026-11-02 | 1311, 1350FS-4d | 31d |
| 1410 |  | Salida para apagador doble | 3d | 2026-11-02 | 2026-11-05 | 1409 | 33d |
| 1411 |  | Salida para apagador sencillo | 3d | 2026-11-02 | 2026-11-05 | 1409 | 33d |
| 1412 |  | Salida de alumbrado en losa | 5d | 2026-11-02 | 2026-11-07 | 1409 | 31d |
| 1413 |  | Salida para contacto exterior doble | 2d | 2026-11-02 | 2026-11-04 | 1409 | 34d |
| 1414 |  | Salida para contacto 220 V | 3d | 2026-11-04 | 2026-11-07 | 1409FS+2d | 31d |
| 1415 |  | Salida para contacto doble | 5d | 2026-11-04 | 2026-11-10 | 1409FS+2d | 34d |
| 1416 |  | Salida para contacto doble área húmeda | 2d | 2026-11-07 | 2026-11-10 | 1413, 1414 | 34d |
| 1417 |  | Salida TV / telefonía / intercom | 4d | 2026-11-07 | 2026-11-12 | 1413, 1414 | 32d |
| 1418 |  | Extractor 4 baño | 5d | 2026-11-07 | 2026-11-13 | 1413, 1414 | 31d |
| 1419 |  | Prueba eléctrica | 2d | 2026-11-13 | 2026-11-18 | 1406, 1407, 1408, 1409, 1410, 1411, 1412, 1413, 1414, 1415, 1416, 1417, 1418, 1472, 1473, 1479, 1474, 1475, 1477, 1478, 1481, 1483 | 31d |
| 1420 | 1.6.23 | **INSTALACIÓN HIDRO-SANITARIA** | 11d | 2026-10-12 | 2026-10-24 |  | 2d |
| 1421 |  | Tubería condensados PVC 1 | 5d | 2026-10-12 | 2026-10-17 | 1325 | 2d |
| 1422 |  | Tubería sanitaria PVC 4 | 5d | 2026-10-12 | 2026-10-17 | 1328 | 10d |
| 1423 |  | Coladera H-444 | 1d | 2026-10-17 | 2026-10-19 | 1422 | 10d |
| 1424 |  | Caja PVC para lavadora | 3d | 2026-10-12 | 2026-10-15 | 1325 | 2d |
| 1425 |  | Salida para secadora PVC 4 | 3d | 2026-10-12 | 2026-10-15 | 1328 | 2d |
| 1426 |  | Salida hidráulica para boiler | 2d | 2026-10-12 | 2026-10-14 | 1325 | 3d |
| 1427 |  | Salida hidráulica para llave de jardín | 3d | 2026-10-12 | 2026-10-15 | 1325 | 2d |
| 1428 |  | Salida hidráulica para lavabo | 4d | 2026-10-12 | 2026-10-16 | 1325 | 2d |
| 1429 |  | Salida hidráulica para purificación | 4d | 2026-10-12 | 2026-10-16 | 1325 | 2d |
| 1430 |  | Salida sanitaria para lavabo | 2d | 2026-10-14 | 2026-10-16 | 1325FS+2d | 2d |
| 1431 |  | Salida hidráulica para lavadero | 2d | 2026-10-14 | 2026-10-16 | 1325FS+2d | 2d |
| 1432 |  | Salida sanitaria para lavadero | 2d | 2026-10-15 | 2026-10-17 | 1325FS+3d | 2d |
| 1433 |  | Salida hidráulica para lavadora | 2d | 2026-10-15 | 2026-10-17 | 1325FS+3d | 2d |
| 1434 |  | Salida sanitaria para lavadora | 2d | 2026-10-16 | 2026-10-19 | 1328FS+4d | 2d |
| 1435 |  | Salida hidráulica para regadera | 5d | 2026-10-16 | 2026-10-22 | 1325FS+4d | 7d |
| 1436 |  | Salida sanitaria para regadera | 4d | 2026-10-16 | 2026-10-21 | 1328FS+4d | 8d |
| 1437 |  | Salida hidráulica para WC | 2d | 2026-10-14 | 2026-10-16 | 1328FS+2d | 2d |
| 1438 |  | Salida sanitaria para WC | 4d | 2026-10-16 | 2026-10-21 | 1328FS+4d | 2d |
| 1439 |  | Salida hidráulica para zinc | 4d | 2026-10-16 | 2026-10-21 | 1328FS+4d | 2d |
| 1440 |  | Salida sanitaria para zinc | 3d | 2026-10-19 | 2026-10-22 | 1328FS+6d | 2d |
| 1441 |  | Tubo para ventila de baño 2 | 5d | 2026-10-12 | 2026-10-17 | 1421SS | 2d |
| 1442 |  | Tubo para minisplit PVC 3 | 5d | 2026-10-17 | 2026-10-23 | 1441 | 2d |
| 1443 |  | Cuadro de medición | 5d | 2026-10-15 | 2026-10-21 | 1375 | 7d |
| 1444 |  | Pozo de absorción 0.50x0.50x0.50 | 3d | 2026-10-15 | 2026-10-19 | 1375 | 10d |
| 1445 |  | Prueba sanitaria final | 1d | 2026-10-23 | 2026-10-24 | 1421, 1422, 1423, 1425, 1430, 1432, 1434, 1436, 1438, 1441, 1442 | 6d |
| 1446 |  | Prueba hidrostática final | 1d | 2026-10-22 | 2026-10-23 | 1426, 1427, 1428, 1429, 1431, 1433, 1435, 1437, 1439, 1443, 1444, 1449, 1450, 1448, 1447 | 7d |
| 1447 |  | Salida válvula control 19 mm | 1d | 2026-10-21 | 2026-10-22 | 1443 | 7d |
| 1448 |  | Salida válvula control 13 mm | 1d | 2026-10-21 | 2026-10-22 | 1443 | 7d |
| 1449 |  | Salida hidráulica para tanque hidroneumático | 3d | 2026-10-15 | 2026-10-19 | 1375 | 10d |
| 1450 |  | Salida hidráulica para Active Driver | 3d | 2026-10-15 | 2026-10-19 | 1375 | 10d |
| 1451 | 1.6.24 | **INSTALACION DE GAS** | 8d | 2026-10-08 | 2026-10-19 |  | 38d |
| 1452 |  | Ramaleo para gas 1/2 | 5d | 2026-10-13 | 2026-10-19 | 1375FS-2d, 1453 | 38d |
| 1453 |  | Excavación a mano material tipo B | 3d | 2026-10-08 | 2026-10-13 | 1375FF-2d | 38d |
| 1454 | 1.6.25 | **MUEBLES SANITARIOS** | 29d | 2026-11-18 | 2026-12-23 |  | 14d |
| 1455 |  | WC completo Austral | 2d | 2026-11-18 | 2026-11-20 | 1359, 1366, 1445, 1446 | 16d |
| 1456 |  | Lavabo Senna con pedestal | 4d | 2026-11-18 | 2026-11-23 | 1359, 1364, 1366, 1445, 1446 | 14d |
| 1457 |  | Tarja / lavabo combo Guinea 80x45 | 2d | 2026-11-18 | 2026-11-20 | 1203, 1359, 1364, 1366, 1446 | 45d |
| 1458 |  | Regadera con monomando | 3d | 2026-11-20 | 2026-11-24 | 1359, 1364FS+2d, 1366FS+2d, 1445, 1446 | 13d |
| 1459 |  | Coladera inserto cerámico | 2d | 2026-11-21 | 2026-11-24 | 1364, 1366FS+3d, 1446 | 13d |
| 1460 |  | Toallero sencillo | 1d | 2026-12-23 | 2026-12-23 | 1352FS-1d | 2d |
| 1461 |  | Toallero barra | 1d | 2026-12-23 | 2026-12-23 | 1352FS-1d | 2d |
| 1462 |  | Portapapel | 1d | 2026-12-23 | 2026-12-23 | 1352FS-1d | 2d |
| 1463 |  | Gancho baño | 1d | 2026-12-23 | 2026-12-23 | 1352FS-1d | 2d |
| 1464 | 1.6.26 | **EQUIPAMIENTO** | 6d | 2026-10-02 | 2026-10-09 |  | 61d |
| 1465 |  | Electronivel Rotoplas 5 m | 2d | 2026-10-03 | 2026-10-06 | 1470 | 64d |
| 1466 |  | Manómetro | 1d | 2026-10-03 | 2026-10-05 | 1470 | 65d |
| 1467 |  | Interruptor de presión 30-50 PSI | 1d | 2026-10-03 | 2026-10-05 | 1470 | 65d |
| 1468 |  | Tanque hidroneumático FPS-24LX | 3d | 2026-10-03 | 2026-10-07 | 1470 | 61d |
| 1469 |  | Bomba sumergible Dominator 1.2 HP | 2d | 2026-10-07 | 2026-10-09 | 1468 | 61d |
| 1470 |  | Cisterna prefabricada 2800 L | 1d | 2026-10-02 | 2026-10-03 | 1332FF | 61d |

| ID | WBS | Task | Duration | Start | Finish | Predecessors | Total float |
| --- | --- | --- | --- | --- | --- | --- | --- |
| 1471 | 1.6.27 | **LUMINARIAS** | 5d | 2026-11-07 | 2026-11-13 |  | 31d |
| 1472 |  | Roseta cerámica | 3d | 2026-11-07 | 2026-11-11 | 1412 | 33d |
| 1473 |  | Luminaria lagartijera LED | 3d | 2026-11-07 | 2026-11-11 | 1412 | 33d |
| 1474 |  | Spot 6W Tecnolite | 3d | 2026-11-07 | 2026-11-11 | 1412 | 33d |
| 1475 |  | Spot 7W Tecnolite | 3d | 2026-11-07 | 2026-11-11 | 1412 | 33d |
| 1476 |  | Arbotante exterior | 2d | 2026-11-07 | 2026-11-10 | 1412 | 31d |
| 1477 |  | Estaca LED exterior | 3d | 2026-11-10 | 2026-11-13 | 1476 | 31d |
| 1478 |  | Tira LED | 3d | 2026-11-10 | 2026-11-13 | 1476 | 31d |
| 1479 |  | Spot exterior 50W | 2d | 2026-11-07 | 2026-11-10 | 1412 | 34d |
| 1480 | 1.6.28 | **TIMBRE** | 2d | 2026-11-09 | 2026-11-11 |  | 33d |
| 1481 |  | Timbre inalámbrico con bocina | 2d | 2026-11-09 | 2026-11-11 | 1410FS+3d, 1411FS+3d | 33d |
| 1482 | 1.6.29 | **OBRA EXTERIOR - BARDA** | 18d | 2026-10-15 | 2026-11-06 |  | 39d |
| 1483 |  | Murete convencional | 5d | 2026-10-21 | 2026-10-27 | 1375FS+5d | 45d |
| 1484 |  | Barda de block aparente | 18d | 2026-10-15 | 2026-11-06 | 1375 | 39d |
| 1485 | 1.6.30 | **TERCER LIMPIEZA DE OBRA** | 16d | 2026-12-26 | 2027-01-18 |  | 2d |
| 1486 |  | Limpieza fina para entrega | 5d | 2026-12-26 | 2027-01-04 | 1352, 1353, 1354, 1385, 1394, 1395, 1419, 1445, 1446, 1460, 1461, 1462, 1463, 1465, 1466, 1467, 1468, 1469, 1484 | 2d |
| 1487 |  | Tercera limpieza de obra | 5d | 2027-01-04 | 2027-01-11 | 1378, 1486 | 2d |
| 1488 |  | Tercera carga y acarreo de escombro | 6d | 2027-01-11 | 2027-01-18 | 1487 | 2d |
| 1489 | 1.7 | **LOTE 04 M-661 ARTICO-A** | 174d | 2026-06-10 | 2027-01-20 |  | 0d |
| 1490 | 1.7.1 | **HITOS IMPORTANTES DEL LOTE** | 174d | 2026-06-10 | 2027-01-20 |  | 0d |
| 1491 |  | Inicio del Lote-04 M-661 Artico-A | 0d | 2026-06-10 | 2026-06-10 | 9FS+11d | 0d |
| 1492 |  | Colado de Losa de Cimentación | 0d | 2026-07-01 | 2026-07-01 | 1522 | 157d |
| 1493 |  | Colado de Losa de Entrepiso | 0d | 2026-08-08 | 2026-08-08 | 1559 | 126d |
| 1494 |  | Colado de Losa de Azotea | 0d | 2026-09-15 | 2026-09-15 | 1594 | 96d |
| 1495 |  | Entrega de vivienda | 0d | 2027-01-20 | 2027-01-20 | 1743, 1744, 1745 | 0d |
| 1496 | 1.7.2 | **TRABAJOS PRELIMINARES** | 2d | 2026-06-10 | 2026-06-12 |  | 0d |
| 1497 |  | Trazo y nivelación | 2d | 2026-06-10 | 2026-06-12 | 1491 | 0d |
| 1498 | 1.7.3 | **EXCAVACIONES** | 3d | 2026-06-12 | 2026-06-16 |  | 0d |
| 1499 |  | Excavación a mano material tipo B | 3d | 2026-06-12 | 2026-06-16 | 1497 | 0d |
| 1500 |  | Acarreo en carretilla 20 m | 2d | 2026-06-13 | 2026-06-16 | 1499SS+1d | 0d |
| 1501 | 1.7.4 | **CIMENTACION** | 13d | 2026-06-16 | 2026-07-02 |  | 0d |
| 1502 |  | Cimbra perimetral losa de cimentación | 3d | 2026-06-16 | 2026-06-19 | 1499, 1500 | 0d |
| 1503 |  | Sistema antitermitas PVC | 3d | 2026-06-16 | 2026-06-19 | 1499, 1500 | 1d |
| 1504 |  | Hule negro en cimentación | 1d | 2026-06-19 | 2026-06-22 | 1503 | 1d |
| 1505 |  | Ramaleo poliducto eléctrico cimentación | 2d | 2026-06-22 | 2026-06-24 | 1504 | 4d |
| 1506 |  | Ramaleo eléctrico base-medición a centro de carga | 1d | 2026-06-22 | 2026-06-23 | 1504 | 5d |
| 1507 |  | Ramaleo eléctrico exterior | 1d | 2026-06-24 | 2026-06-25 | 1505, 1506 | 4d |
| 1508 |  | Ramaleo para cable poliducto 3/4 | 1d | 2026-06-24 | 2026-06-25 | 1505, 1506 | 4d |
| 1509 |  | Ramaleo para TV poliducto 3/4 | 1d | 2026-06-24 | 2026-06-25 | 1505, 1506 | 4d |
| 1510 |  | Ramaleo hidráulico CPVC 1 cimentación | 1d | 2026-06-22 | 2026-06-23 | 1504 | 1d |
| 1511 |  | Ramaleo hidráulico CPVC 3/4 cimentación | 2d | 2026-06-23 | 2026-06-25 | 1510 | 1d |
| 1512 |  | Ramaleo hidráulico CPVC 1/2 cimentación | 2d | 2026-06-25 | 2026-06-27 | 1511 | 1d |
| 1513 |  | Prueba hidráulica | 1d | 2026-06-27 | 2026-06-29 | 1510, 1511, 1512 | 1d |
| 1514 |  | Ramaleo sanitario PVC 4 cimentación | 2d | 2026-06-23 | 2026-06-25 | 1504FS+1d | 2d |
| 1515 |  | Ramaleo sanitario PVC 2 cimentación | 1d | 2026-06-25 | 2026-06-26 | 1514 | 2d |
| 1516 |  | Prueba sanitaria | 1d | 2026-06-26 | 2026-06-27 | 1514, 1515 | 2d |
| 1517 |  | Acero contratrabe CT-1 | 4d | 2026-06-19 | 2026-06-25 | 1502 | 0d |
| 1518 |  | Acero contratrabe CT-2 | 4d | 2026-06-19 | 2026-06-25 | 1502 | 0d |
| 1519 |  | Malla electrosoldada 6-6/8-8 | 2d | 2026-06-27 | 2026-06-30 | 1517, 1518, 1520, 1521 | 0d |
| 1520 |  | Bastón de refuerzo LS | 2d | 2026-06-25 | 2026-06-27 | 1517, 1518 | 0d |
| 1521 |  | Bastón de refuerzo LI | 2d | 2026-06-25 | 2026-06-27 | 1517, 1518 | 0d |
| 1522 |  | Colado losa de cimentación f’c=200 | 1d | 2026-06-30 | 2026-07-01 | 1502, 1504, 1507, 1508, 1509, 1513, 1516, 1517, 1518, 1519, 1520, 1521 | 0d |
| 1523 |  | Curado de concreto | 1d | 2026-07-01 | 2026-07-02 | 1522 | 0d |
| 1524 |  | Acero zapata ZT-1 | 4d | 2026-06-25 | 2026-06-30 | 1517, 1518 | 156d |
| 1525 |  | Acero zapata ZT-2 | 4d | 2026-06-25 | 2026-06-30 | 1517, 1518 | 156d |
| 1526 |  | Colado zapatas aisladas f’c=200 | 1d | 2026-07-01 | 2026-07-02 | 1527 | 156d |
| 1527 |  | Cimbra frontera zapatas | 3d | 2026-06-27 | 2026-07-01 | 1524FS-2d, 1525FS-2d | 156d |
| 1528 | 1.7.5 | **MUROS, PLANTA BAJA. CASTILLOS Y CERRAMIENTOS** | 20d | 2026-06-26 | 2026-07-21 |  | 5d |
| 1529 |  | Anclaje de castillos y Columnas PB | 5d | 2026-06-26 | 2026-07-02 | 1517FS+1d, 1518FS+1d | 144d |
| 1530 |  | Castillo K1 | 4d | 2026-07-02 | 2026-07-07 | 1523, 1529 | 144d |
| 1531 |  | Castillo K2 | 4d | 2026-07-02 | 2026-07-07 | 1523, 1529 | 148d |
| 1532 |  | Castillo K3 | 3d | 2026-07-06 | 2026-07-08 | 1530FS-2d | 144d |
| 1533 |  | Castillo K4 | 3d | 2026-07-06 | 2026-07-08 | 1530FS-2d | 144d |
| 1534 |  | Castillo K5 | 3d | 2026-07-08 | 2026-07-10 | 1532FS-1d, 1533FS-1d | 144d |
| 1535 |  | Refuerzo de muro K6 | 3d | 2026-07-09 | 2026-07-13 | 1534FS-2d | 144d |
| 1536 |  | Columna C1 | 4d | 2026-07-02 | 2026-07-07 | 1523, 1529 | 148d |
| 1537 |  | Columna C2 | 4d | 2026-07-08 | 2026-07-13 | 1536 | 148d |
| 1538 |  | Dala de cerramiento CR-1 | 4d | 2026-07-09 | 2026-07-14 | 1530, 1531, 1532 | 147d |
| 1539 |  | Dala de cerramiento CR-2 | 3d | 2026-07-09 | 2026-07-13 | 1530, 1531, 1532 | 148d |
| 1540 |  | Cadena block dala | 4d | 2026-07-13 | 2026-07-17 | 1535 | 144d |

| ID | WBS | Task | Duration | Start | Finish | Predecessors | Total float |
| --- | --- | --- | --- | --- | --- | --- | --- |
| 1541 |  | Muro de ladrillo aparente | 15d | 2026-07-02 | 2026-07-21 | 1523 | 0d |
| 1542 |  | Muro de block planta baja | 13d | 2026-07-06 | 2026-07-21 | 1523FS+2d | 0d |
| 1543 | 1.7.6 | **ESCALERA** | 14d | 2026-08-08 | 2026-08-26 |  | 112d |
| 1544 |  | Escalera de concreto armado | 14d | 2026-08-08 | 2026-08-26 | 1559 | 112d |
| 1545 | 1.7.7 | **LOSA DE ENTREPISO (viegueta y caseton)** | 18d | 2026-07-18 | 2026-08-10 |  | 3d |
| 1546 |  | Vigueta pretensada 1.40 m | 3d | 2026-07-18 | 2026-07-22 | 1541FS-2d, 1542FS-2d | 5d |
| 1547 |  | Vigueta pretensada 1.95 m | 4d | 2026-07-20 | 2026-07-24 | 1541FS-1d, 1542FS-1d | 3d |
| 1548 |  | Vigueta pretensada 3.35 m | 4d | 2026-07-21 | 2026-07-27 | 1541, 1542 | 2d |
| 1549 |  | Vigueta pretensada 3.50 m | 4d | 2026-07-22 | 2026-07-28 | 1541FS+1d, 1542FS+1d | 1d |
| 1550 |  | Vigueta pretensada 3.75 m | 4d | 2026-07-22 | 2026-07-28 | 1541FS+1d, 1542FS+1d | 1d |
| 1551 |  | Vigueta pretensada 3.90 m | 4d | 2026-07-22 | 2026-07-28 | 1541FS+1d, 1542FS+1d | 1d |
| 1552 |  | Bovedilla poliestireno entrepiso | 2d | 2026-07-28 | 2026-07-30 | 1546, 1547, 1548, 1549, 1550, 1551 | 1d |
| 1553 |  | Dala de coronamiento | 3d | 2026-07-28 | 2026-07-31 | 1546, 1547, 1548, 1549, 1550, 1551, 1558FS-1d | 4d |
| 1554 |  | Nervadura NR-1 | 3d | 2026-07-29 | 2026-08-01 | 1546, 1547, 1548, 1549, 1550, 1551, 1558 | 0d |
| 1555 |  | Nervadura NR-2 | 3d | 2026-07-29 | 2026-08-01 | 1554SS | 2d |
| 1556 |  | Trabe TR-1 | 5d | 2026-07-29 | 2026-08-04 | 1554SS | 0d |
| 1557 |  | Malla 66-10/10 losa de compresión | 2d | 2026-08-04 | 2026-08-06 | 1552, 1553, 1567, 1570 | 1d |
| 1558 |  | Cimbra losa de azotea | 5d | 2026-07-22 | 2026-07-29 | 1541FS+1d, 1542FS+1d | 0d |
| 1559 |  | Concreto losa de entrepiso f’c=200 | 1d | 2026-08-07 | 2026-08-08 | 1554, 1555, 1556, 1557, 1564, 1567, 1570, 1561, 1572 | 0d |
| 1560 |  | Curado de concreto | 1d | 2026-08-08 | 2026-08-10 | 1559 | 0d |
| 1561 |  | Cimbra exterior corta losa | 3d | 2026-07-31 | 2026-08-04 | 1554FS-1d, 1555FS-1d | 3d |
| 1562 |  | Ramaleo poliducto eléctrico entrepiso | 2d | 2026-07-30 | 2026-08-01 | 1552 | 4d |
| 1563 |  | Ramaleo para cable poliducto 3/4 | 1d | 2026-07-30 | 2026-07-31 | 1552 | 133d |
| 1564 |  | Ramaleo para TV poliducto 3/4 | 1d | 2026-08-01 | 2026-08-03 | 1562 | 4d |
| 1565 |  | Ramaleo hidráulico CPVC 3/4 | 2d | 2026-07-31 | 2026-08-03 | 1552FS+1d | 1d |
| 1566 |  | Ramaleo hidráulico CPVC 1/2 | 1d | 2026-08-03 | 2026-08-04 | 1565 | 1d |
| 1567 |  | Prueba hidráulica | 1d | 2026-08-03 | 2026-08-04 | 1565, 1566FS-1d | 1d |
| 1568 |  | Ramaleo sanitario PVC 4 | 2d | 2026-07-31 | 2026-08-03 | 1552FS+1d | 1d |
| 1569 |  | Ramaleo sanitario PVC 2 | 1d | 2026-08-03 | 2026-08-04 | 1568 | 1d |
| 1570 |  | Prueba sanitaria | 1d | 2026-08-03 | 2026-08-04 | 1568, 1569FS-1d | 1d |
| 1571 | 1.7.8 | **MUROS EN PLANTA ALTA, CASTILLOS Y CERRM.** | 21d | 2026-08-03 | 2026-08-28 |  | 0d |
| 1572 |  | Anclaje de castillos y Columnas PA | 4d | 2026-08-03 | 2026-08-07 | 1554FS-1d, 1555FS-1d, 1556FS-1d | 0d |
| 1573 |  | Castillo K1 | 4d | 2026-08-10 | 2026-08-14 | 1560 | 4d |
| 1574 |  | Castillo K2 | 4d | 2026-08-11 | 2026-08-17 | 1560FS+1d | 3d |
| 1575 |  | Castillo K3 | 3d | 2026-08-12 | 2026-08-17 | 1560FS+2d | 3d |
| 1576 |  | Castillo K4 | 3d | 2026-08-14 | 2026-08-19 | 1573 | 4d |
| 1577 |  | Castillo K5 | 3d | 2026-08-14 | 2026-08-19 | 1573 | 4d |
| 1578 |  | Refuerzo de muro K6 | 3d | 2026-08-17 | 2026-08-20 | 1573, 1574, 1575 | 3d |
| 1579 |  | Dala de cerramiento CR-1 | 4d | 2026-08-20 | 2026-08-25 | 1576, 1577, 1578 | 3d |
| 1580 |  | Cadena block dala | 3d | 2026-08-25 | 2026-08-28 | 1578, 1579 | 3d |
| 1581 |  | Muro de ladrillo aparente | 15d | 2026-08-10 | 2026-08-28 | 1560 | 0d |
| 1582 |  | Muro de block planta alta | 14d | 2026-08-11 | 2026-08-28 | 1560FS+1d | 0d |
| 1583 | 1.7.9 | **LOSA AZOTEA** | 15d | 2026-08-28 | 2026-09-17 |  | 0d |
| 1584 |  | Cortalosa CL-1 | 2d | 2026-09-11 | 2026-09-14 | 1592 | 0d |
| 1585 |  | Vigueta pretensada V11-40 390 | 5d | 2026-08-28 | 2026-09-03 | 1580, 1581, 1582 | 3d |
| 1586 |  | Vigueta pretensada V11-30 280 | 5d | 2026-08-28 | 2026-09-03 | 1581, 1582 | 3d |
| 1587 |  | Vigueta pretensada V11-30 285 | 5d | 2026-08-28 | 2026-09-03 | 1581, 1582 | 3d |
| 1588 |  | Vigueta pretensada V11-30 220 | 5d | 2026-09-01 | 2026-09-07 | 1581FS+2d, 1582FS+2d | 1d |
| 1589 |  | Vigueta pretensada V11-40 75 | 5d | 2026-09-01 | 2026-09-07 | 1581FS+2d, 1582FS+2d | 1d |
| 1590 |  | Vigueta pretensada V11-40 195 | 5d | 2026-09-02 | 2026-09-08 | 1581FS+3d, 1582FS+3d | 0d |
| 1591 |  | Vigueta pretensada V11-50 450 | 5d | 2026-09-02 | 2026-09-08 | 1581FS+3d, 1582FS+3d | 0d |
| 1592 |  | Bovedilla poliestireno azotea | 3d | 2026-09-08 | 2026-09-11 | 1585, 1586, 1587, 1588, 1589, 1590, 1591 | 0d |
| 1593 |  | Malla 66-10/10 losa de compresión | 2d | 2026-09-11 | 2026-09-14 | 1592 | 0d |
| 1594 |  | Concreto losa de azotea f’c=200 | 1d | 2026-09-14 | 2026-09-15 | 1584, 1592, 1593, 1597, 1596 | 0d |
| 1595 |  | Curado de concreto | 1d | 2026-09-15 | 2026-09-17 | 1594 | 0d |
| 1596 |  | Cimbra losa de azotea | 5d | 2026-08-28 | 2026-09-03 | 1581, 1582 | 8d |
| 1597 |  | Ramaleo de poliducto para inst. electrica en azotea | 2d | 2026-09-11 | 2026-09-14 | 1592 | 0d |
| 1598 | 1.7.10 | **PRETIL Y ACABADOS DE AZOTEA** | 19d | 2026-09-17 | 2026-10-12 |  | 0d |
| 1599 |  | Castillo K1 | 5d | 2026-09-21 | 2026-09-26 | 1601SS+2d | 0d |
| 1600 |  | Dala de cerramiento en pretil | 4d | 2026-09-24 | 2026-09-29 | 1599FS-2d, 1601FS-2d | 0d |
| 1601 |  | Muro de block 12x15x40 | 5d | 2026-09-17 | 2026-09-24 | 1595 | 0d |
| 1602 |  | Chaflán en azotea | 4d | 2026-09-26 | 2026-10-01 | 1599, 1601 | 0d |
| 1603 |  | Aplanado exterior Mortermax fino | 5d | 2026-09-29 | 2026-10-05 | 1600, 1602FS-2d | 0d |
| 1604 |  | Acabado de azotea para impermeabilizar | 4d | 2026-10-06 | 2026-10-12 | 1605 | 0d |
| 1605 |  | Curado de concreto | 1d | 2026-10-05 | 2026-10-06 | 1602, 1603 | 0d |
| 1606 | 1.7.11 | **PRIMERA LIMPIEZA DE OBRA** | 4d | 2026-09-17 | 2026-09-23 |  | 52d |
| 1607 |  | Primera limpieza de obra | 2d | 2026-09-17 | 2026-09-21 | 1595 | 52d |
| 1608 |  | Primera carga y acarreo de escombro | 2d | 2026-09-21 | 2026-09-23 | 1607 | 52d |
| 1609 | 1.7.12 | **IMPERMEABILIZACION** | 5d | 2026-10-12 | 2026-10-17 |  | 0d |
| 1610 |  | Impermeabilización de pretil Kover 5 años | 4d | 2026-10-12 | 2026-10-16 | 1604 | 1d |

| ID | WBS | Task | Duration | Start | Finish | Predecessors | Total float |
| --- | --- | --- | --- | --- | --- | --- | --- |
| 1611 |  | Impermeabilización de losa Kover 5 años | 5d | 2026-10-12 | 2026-10-17 | 1604 | 0d |
| 1612 | 1.7.13 | **ALBAÑILERIA** | 62d | 2026-09-24 | 2026-12-11 |  | 19d |
| 1613 |  | Lavadero de granito | 4d | 2026-11-06 | 2026-11-11 | 1637SS+8d | 51d |
| 1614 |  | Ramaleo hidráulico exterior CPVC 1 1/4 | 3d | 2026-10-17 | 2026-10-21 | 1610, 1611 | 0d |
| 1615 |  | Ramaleo hidráulico exterior CPVC 1 | 2d | 2026-10-17 | 2026-10-20 | 1614SS | 0d |
| 1616 |  | Ramaleo hidráulico exterior CPVC 3/4 | 2d | 2026-10-20 | 2026-10-22 | 1615 | 0d |
| 1617 |  | Ramaleo hidráulico exterior CPVC 1/2 | 2d | 2026-10-20 | 2026-10-22 | 1615 | 0d |
| 1618 |  | Prueba hidráulica | 1d | 2026-10-22 | 2026-10-23 | 1614, 1615, 1616, 1617 | 0d |
| 1619 |  | Ramaleo sanitario exterior PVC 4 | 4d | 2026-10-17 | 2026-10-22 | 1610, 1611 | 0d |
| 1620 |  | Ramaleo sanitario exterior PVC 2 | 3d | 2026-10-19 | 2026-10-22 | 1619SS+1d | 0d |
| 1621 |  | Prueba sanitaria | 1d | 2026-10-22 | 2026-10-23 | 1619, 1620 | 0d |
| 1622 |  | Centro de carga muros PB | 4d | 2026-10-21 | 2026-10-26 | 1610FS+3d, 1611FS+3d | 2d |
| 1623 |  | Firme de concreto 8 cm | 4d | 2026-10-23 | 2026-10-28 | 1618, 1621, 1625 | 45d |
| 1624 |  | Curado de concreto | 1d | 2026-10-29 | 2026-10-29 | 1623 | 45d |
| 1625 |  | Cisterna 2800 L con instalación | 18d | 2026-09-24 | 2026-10-16 | 1601, 1607, 1608 | 51d |
| 1626 |  | Banqueta y huellas de concreto | 8d | 2026-10-31 | 2026-11-10 | 1618, 1621, 1659, 1714FS-2d, 1720 | 28d |
| 1627 |  | Curado de concreto | 1d | 2026-11-10 | 2026-11-11 | 1626 | 28d |
| 1628 |  | Número oficial | 1d | 2026-12-10 | 2026-12-11 | 1634, 1635 | 28d |
| 1629 |  | Detallado de rodapié exterior | 4d | 2026-10-27 | 2026-10-30 | 1632 | 60d |
| 1630 |  | Detallado de muros interiores | 4d | 2026-10-17 | 2026-10-22 | 1610, 1611 | 4d |
| 1631 | 1.7.14 | **ACABADOS EN FACHADA A** | 47d | 2026-10-12 | 2026-12-10 |  | 29d |
| 1632 |  | Aplanado grueso fachada | 12d | 2026-10-12 | 2026-10-26 | 1604 | 59d |
| 1633 |  | Aplanado fino estuco fachada | 10d | 2026-10-20 | 2026-11-02 | 1632SS+7d | 59d |
| 1634 |  | Pintura acrílica 1-0102P | 8d | 2026-11-27 | 2026-12-08 | 1624FS+5d, 1627FS+12d | 30d |
| 1635 |  | Pintura acrílica 1-1404D | 10d | 2026-11-27 | 2026-12-10 | 1624FS+5d, 1627FS+12d | 28d |
| 1636 | 1.7.15 | **APLANADOS Y PINTURA** | 63d | 2026-10-17 | 2027-01-11 |  | 2d |
| 1637 |  | Yeso pulido en muros | 14d | 2026-10-28 | 2026-11-13 | 1622FS-1d, 1630, 1640FS-4d, 1694FS-2d, 1695, 1696, 1697, 1698, 1699FS-1d, 1700FS-1d, 1701FS-1d, 1702FS-1d, 1703FS-2d, 1704FS-2d, 1705FS-3d, 1708FS-1d, 1709FS-5d, 1710FS-5d, 1711FS-6d, 1712FS-2d, 1713FS-7d | 0d |
| 1638 |  | Pintura vinílica 699 Cottage White | 13d | 2026-12-21 | 2027-01-11 | 1645FS-2d, 1646FS-2d, 1657FS-2d, 1664, 1665, 1666, 1667, 1668, 1669, 1671, 1672, 1673, 1674, 1723, 1724, 1725, 1726 | 0d |
| 1639 |  | Pintura vinílica 691 Pacific Bungalow | 10d | 2026-12-09 | 2026-12-21 | 1645, 1646, 1657 | 20d |
| 1640 |  | Yeso pulido en plafones | 10d | 2026-10-17 | 2026-10-29 | 1610, 1611 | 2d |
| 1641 |  | Pintura vinílica Nano White | 7d | 2026-12-12 | 2026-12-21 | 1645FS+3d, 1646FS+3d, 1657FS+3d | 20d |
| 1642 |  | Perfilado de puertas y ventanas | 4d | 2026-11-02 | 2026-11-06 | 1637SS+4d | 55d |
| 1643 | 1.7.16 | **PISOS Y AZULEJOS** | 23d | 2026-11-09 | 2026-12-09 |  | 2d |
| 1644 | 1.7.16.1 | **AREA SOCIAL** | 15d | 2026-11-11 | 2026-12-01 |  | 0d |
| 1645 |  | Piso Moonside Crema 60x60 | 14d | 2026-11-11 | 2026-11-30 | 1637FS-2d, 1716, 1715 | 0d |
| 1646 |  | Zoclo piso 60x60 Moonside Crema | 5d | 2026-11-25 | 2026-12-01 | 1645FS-4d | 17d |
| 1647 | 1.7.16.2 | **BAÑOS** | 17d | 2026-11-09 | 2026-12-01 |  | 11d |
| 1648 |  | Piso Moonside Crema 60x60 | 4d | 2026-11-25 | 2026-11-30 | 1652 | 11d |
| 1649 |  | Zoclo piso 60x60 Moonside Crema | 2d | 2026-11-28 | 2026-12-01 | 1648FS-1d | 36d |
| 1650 |  | Piso porcelánico Acali 20x20 beige | 3d | 2026-11-25 | 2026-11-28 | 1652 | 38d |
| 1651 |  | Impermeabilización en regadera | 2d | 2026-11-18 | 2026-11-20 | 1637, 1653 | 11d |
| 1652 |  | Azulejo Moonside Crema 60x60 | 5d | 2026-11-19 | 2026-11-25 | 1651FS-1d, 1706, 1707, 1716 | 11d |
| 1653 |  | Fabricacion de nicho decorativo en baños | 6d | 2026-11-09 | 2026-11-18 | 1637FS-4d | 11d |
| 1654 |  | Sardinel en regadera | 4d | 2026-11-25 | 2026-11-30 | 1652 | 37d |
| 1655 | 1.7.16.3 | **ESCALERA** | 9d | 2026-11-27 | 2026-12-09 |  | 0d |
| 1656 |  | Piso Moonside Crema 60x60 | 7d | 2026-11-27 | 2026-12-07 | 1637, 1645FS-2d | 0d |
| 1657 |  | Zoclo piso 60x60 Moonside Crema | 4d | 2026-12-03 | 2026-12-09 | 1656FS-2d | 0d |
| 1658 | 1.7.17 | **EXTERIOR** | 3d | 2026-10-23 | 2026-10-27 |  | 6d |
| 1659 |  | Rastrilleo, afine y nivelado de tierra | 3d | 2026-10-23 | 2026-10-27 | 1618, 1621 | 6d |
| 1660 | 1.7.18 | **SEGUNDA LIMPIEZA DE OBRA** | 4d | 2026-12-09 | 2026-12-14 |  | 18d |
| 1661 |  | Segunda limpieza de obra | 2d | 2026-12-09 | 2026-12-11 | 1656, 1657 | 18d |
| 1662 |  | Segunda carga y acarreo de escombro | 2d | 2026-12-11 | 2026-12-14 | 1661 | 18d |
| 1663 | 1.7.19 | **CANCELERIA PUERTAS Y VENTANAS DE ALUMINIO** | 13d | 2026-11-27 | 2026-12-14 |  | 5d |
| 1664 |  | Puerta ventana P-05 corrediza | 7d | 2026-11-30 | 2026-12-09 | 1637, 1645 | 9d |
| 1665 |  | Ventana corrediza V-01 | 4d | 2026-11-27 | 2026-12-02 | 1637FS+10d | 14d |
| 1666 |  | Ventana corrediza V-03 | 4d | 2026-11-30 | 2026-12-04 | 1637FS+12d | 12d |
| 1667 |  | Ventana corrediza V-05 | 4d | 2026-11-30 | 2026-12-04 | 1637FS+12d | 12d |
| 1668 |  | Ventana corrediza tipo XO | 4d | 2026-12-03 | 2026-12-09 | 1637FS+10d, 1645FS+3d | 9d |
| 1669 |  | Ventana fija escalera | 6d | 2026-12-07 | 2026-12-14 | 1637FS+7d, 1645FS+2d, 1656 | 5d |
| 1670 | 1.7.20 | **CARPINTERIA, PUERTAS EXTERIORES E INTERIORES** | 9d | 2026-12-09 | 2026-12-19 |  | 0d |
| 1671 |  | Puerta P-01 de seguridad | 5d | 2026-12-09 | 2026-12-15 | 1657 | 4d |
| 1672 |  | Puerta P-03 interior | 8d | 2026-12-09 | 2026-12-18 | 1657 | 1d |
| 1673 |  | Puerta P-02 interior | 8d | 2026-12-09 | 2026-12-18 | 1657 | 1d |
| 1674 |  | Puerta exterior lavandería | 4d | 2026-12-15 | 2026-12-19 | 1657FS+5d | 0d |
| 1675 | 1.7.21 | **INSTALACION ELECTRICA** | 19d | 2026-11-05 | 2026-11-30 |  | 29d |
| 1676 |  | Alimentación eléctrica base a centro de carga | 5d | 2026-11-13 | 2026-11-21 | 1622, 1637 | 33d |
| 1677 |  | Interruptor termomagnético 1x15 A | 1d | 2026-11-21 | 2026-11-23 | 1676 | 33d |
| 1678 |  | Interruptor termomagnético 1x20 A | 1d | 2026-11-21 | 2026-11-23 | 1676 | 33d |
| 1679 |  | Interruptor termomagnético 2x20 A | 1d | 2026-11-21 | 2026-11-23 | 1676 | 33d |
| 1680 |  | Salida para apagador 3 vías | 4d | 2026-11-09 | 2026-11-13 | 1610, 1637FS-4d | 29d |

| ID | WBS | Task | Duration | Start | Finish | Predecessors | Total float |
| --- | --- | --- | --- | --- | --- | --- | --- |
| 1681 |  | Salida para apagador triple | 3d | 2026-11-13 | 2026-11-19 | 1610, 1611, 1637 | 33d |
| 1682 |  | Salida para apagador doble | 3d | 2026-11-19 | 2026-11-23 | 1680, 1681 | 33d |
| 1683 |  | Salida para apagador sencillo | 3d | 2026-11-13 | 2026-11-19 | 1680 | 36d |
| 1684 |  | Salida de alumbrado en losa | 5d | 2026-11-13 | 2026-11-21 | 1680 | 31d |
| 1685 |  | Salida de alumbrado en muro | 4d | 2026-11-13 | 2026-11-20 | 1680 | 35d |
| 1686 |  | Salida para contacto 220 V | 3d | 2026-11-18 | 2026-11-21 | 1680FS+2d | 29d |
| 1687 |  | Salida para contacto doble | 5d | 2026-11-18 | 2026-11-24 | 1680FS+2d | 32d |
| 1688 |  | Salida para contacto doble área húmeda | 2d | 2026-11-21 | 2026-11-24 | 1686 | 32d |
| 1689 |  | Salida TV / telefonía / intercom | 4d | 2026-11-21 | 2026-11-26 | 1686 | 30d |
| 1690 |  | Extractor 4 baño | 5d | 2026-11-21 | 2026-11-27 | 1686 | 29d |
| 1691 |  | Prueba eléctrica | 2d | 2026-11-27 | 2026-11-30 | 1676, 1677, 1678, 1679, 1680, 1681, 1682, 1683, 1684, 1685, 1686, 1687, 1688, 1689, 1690, 1692, 1739, 1740, 1741 | 29d |
| 1692 |  | Murete convencional | 4d | 2026-11-05 | 2026-11-10 | 1626FS-4d | 42d |
| 1693 | 1.7.22 | **INSTALACIÓN HIDRO-SANITARIA** | 11d | 2026-10-23 | 2026-11-06 |  | 0d |
| 1694 |  | Tubo PVC 3/4 red de condensados | 5d | 2026-10-23 | 2026-10-29 | 1618 | 0d |
| 1695 |  | Caja PVC para lavadora | 3d | 2026-10-23 | 2026-10-27 | 1618 | 0d |
| 1696 |  | Salida para secadora PVC 4 | 3d | 2026-10-23 | 2026-10-27 | 1621 | 0d |
| 1697 |  | Salida hidráulica para boiler | 2d | 2026-10-23 | 2026-10-26 | 1618 | 1d |
| 1698 |  | Salida hidráulica para llave de jardín | 3d | 2026-10-23 | 2026-10-27 | 1618 | 0d |
| 1699 |  | Salida hidráulica para lavabo | 4d | 2026-10-23 | 2026-10-28 | 1618 | 0d |
| 1700 |  | Salida hidráulica para purificación | 4d | 2026-10-23 | 2026-10-28 | 1618 | 0d |
| 1701 |  | Salida sanitaria para lavabo | 2d | 2026-10-27 | 2026-10-28 | 1618FS+2d | 0d |
| 1702 |  | Salida hidráulica para lavadero | 2d | 2026-10-27 | 2026-10-28 | 1618FS+2d | 0d |
| 1703 |  | Salida sanitaria para lavadero | 2d | 2026-10-28 | 2026-10-29 | 1618FS+3d | 0d |
| 1704 |  | Salida hidráulica para lavadora | 2d | 2026-10-28 | 2026-10-29 | 1618FS+3d | 0d |
| 1705 |  | Salida sanitaria para lavadora | 2d | 2026-10-29 | 2026-10-30 | 1621FS+4d | 0d |
| 1706 |  | Salida hidráulica para regadera | 5d | 2026-10-29 | 2026-11-04 | 1618FS+4d | 5d |
| 1707 |  | Salida sanitaria para regadera | 4d | 2026-10-29 | 2026-11-03 | 1621FS+4d | 6d |
| 1708 |  | Salida hidráulica para WC | 2d | 2026-10-27 | 2026-10-28 | 1621FS+2d | 0d |
| 1709 |  | Salida sanitaria para WC | 4d | 2026-10-29 | 2026-11-03 | 1621FS+4d | 0d |
| 1710 |  | Salida hidráulica para zinc | 4d | 2026-10-29 | 2026-11-03 | 1621FS+4d | 0d |
| 1711 |  | Salida sanitaria para zinc | 3d | 2026-10-31 | 2026-11-04 | 1621FS+6d | 0d |
| 1712 |  | Tubo para ventila de baño 2 | 5d | 2026-10-23 | 2026-10-29 | 1694SS | 0d |
| 1713 |  | Tubo para minisplit PVC 3 | 5d | 2026-10-30 | 2026-11-05 | 1712 | 0d |
| 1714 |  | Cuadro de medición | 5d | 2026-10-28 | 2026-11-03 | 1659 | 6d |
| 1715 |  | Prueba sanitaria | 1d | 2026-11-05 | 2026-11-06 | 1696, 1701, 1703, 1705, 1707, 1709, 1712, 1713 | 4d |
| 1716 |  | Prueba hidráulica | 1d | 2026-11-04 | 2026-11-05 | 1694, 1697, 1698, 1699, 1700, 1702, 1704, 1706, 1708, 1710, 1714, 1717, 1718 | 5d |
| 1717 |  | Salida hidráulica para tanque hidroneumático | 3d | 2026-10-28 | 2026-10-30 | 1659 | 8d |
| 1718 |  | Salida hidráulica para Active Driver | 3d | 2026-10-28 | 2026-10-30 | 1659 | 8d |
| 1719 | 1.7.23 | **INSTALACION DE GAS** | 8d | 2026-10-21 | 2026-10-30 |  | 28d |
| 1720 |  | Ramaleo para gas 1/2 | 5d | 2026-10-26 | 2026-10-30 | 1659FS-2d, 1721 | 28d |
| 1721 |  | Excavación a mano material tipo B | 3d | 2026-10-21 | 2026-10-24 | 1659FF-2d | 28d |
| 1722 | 1.7.24 | **MUEBLES SANITARIOS** | 29d | 2026-11-30 | 2027-01-11 |  | 0d |
| 1723 |  | WC one piece Smart Corona | 2d | 2026-11-30 | 2026-12-02 | 1645, 1648, 1715, 1716 | 14d |
| 1724 |  | Lavabo Tarento Vanity | 4d | 2026-11-30 | 2026-12-04 | 1645, 1648, 1652, 1715, 1716 | 12d |
| 1725 |  | Regadera y monomando Thames | 3d | 2026-12-02 | 2026-12-07 | 1645, 1648FS+2d, 1652FS+2d, 1715, 1716 | 11d |
| 1726 |  | Coladera cuadrada para inserto cerámico | 2d | 2026-12-03 | 2026-12-07 | 1648FS+3d, 1652, 1716 | 11d |
| 1727 |  | Toallero argolla Thames | 1d | 2027-01-08 | 2027-01-11 | 1638FS-1d | 0d |
| 1728 |  | Toallero barra Thames | 1d | 2027-01-08 | 2027-01-11 | 1638FS-1d | 0d |
| 1729 |  | Portapapel Thames | 1d | 2027-01-08 | 2027-01-11 | 1638FS-1d | 0d |
| 1730 |  | Gancho percha Thames | 1d | 2027-01-08 | 2027-01-11 | 1638FS-1d | 0d |
| 1731 | 1.7.25 | **EQUIPAMIENTO** | 6d | 2026-10-15 | 2026-10-22 |  | 59d |
| 1732 |  | Electronivel Rotoplas 5 m | 2d | 2026-10-16 | 2026-10-19 | 1737 | 62d |
| 1733 |  | Manómetro | 1d | 2026-10-16 | 2026-10-17 | 1737 | 63d |
| 1734 |  | Interruptor de presión 30-50 PSI | 1d | 2026-10-16 | 2026-10-17 | 1737 | 63d |
| 1735 |  | Tanque hidroneumático FPS-24LX | 3d | 2026-10-16 | 2026-10-20 | 1737 | 59d |
| 1736 |  | Bomba sumergible Dominator 1.2 HP | 2d | 2026-10-20 | 2026-10-22 | 1735 | 59d |
| 1737 |  | Cisterna prefabricada 2800 L | 1d | 2026-10-15 | 2026-10-16 | 1625FF | 59d |
| 1738 | 1.7.26 | **LUMINARIAS** | 3d | 2026-11-21 | 2026-11-25 |  | 31d |
| 1739 |  | Roseta de cerámica para luminaria | 3d | 2026-11-21 | 2026-11-25 | 1684 | 31d |
| 1740 |  | Spot Brighton | 3d | 2026-11-21 | 2026-11-25 | 1684 | 31d |
| 1741 |  | Arbotante bidireccional 12W | 2d | 2026-11-21 | 2026-11-24 | 1684 | 32d |
| 1742 | 1.7.27 | **TERCER LIMPIEZA DE OBRA** | 8d | 2027-01-11 | 2027-01-20 |  | 0d |
| 1743 |  | Limpieza fina para entrega | 5d | 2027-01-11 | 2027-01-16 | 1638, 1662, 1669, 1674, 1691, 1715, 1716, 1727, 1728, 1729, 1730, 1732, 1733, 1734, 1735, 1736, 1747 | 0d |
| 1744 |  | Tercera limpieza de obra | 4d | 2027-01-13 | 2027-01-18 | 1743FS-3d | 0d |
| 1745 |  | Tercera carga y acarreo de escombro | 4d | 2027-01-15 | 2027-01-20 | 1744FS-2d | 0d |
| 1746 | 1.7.28 | **OBRA EXTERIOR - BARDA** | 18d | 2026-10-28 | 2026-11-20 |  | 37d |
| 1747 |  | Barda de block aparente | 18d | 2026-10-28 | 2026-11-20 | 1659 | 37d |

## Version 2 (data date 2026-05-20, saved 2026-05-20)

Note of the change: Programa de obra actualizado (XML de MS Project)

Last finish stays 2027-01-20. Complete tasks 8 → 14.

Changed:

| ID | Task | Start | Finish | Complete | Total float |
| --- | --- | --- | --- | --- | --- |
| 5 | INICIO LOTE-21 M-668 CORSAC-A | 2026-05-20 A | 2026-05-20 A | 0% → 100% | 13d → none |
| 7 | INICIO LOTE-02 M-661 CORSAC-B | 2026-05-20 A | 2026-05-20 A | 0% → 100% | 13d → none |
| 10 | **LOTE 20 M-663 ARTICO-A** |  |  | 1% → 2% |  |
| 22 | **CIMENTACION** | 2026-05-16 A |  | 0% → 15% | 24d → 181d |
| 23 | Cimbra perimetral losa de cimentación | 2026-05-16 A | 2026-05-20 A | 0% → 100% | 24d → none |
| 24 | Sistema antitermitas PVC | 2026-05-16 A | 2026-05-20 A | 0% → 100% | 25d → none |
| 25 | Hule negro en cimentación | 2026-05-20 A |  | 0% → 63% |  |
| 38 | Acero contratrabe CT-1 | 2026-05-20 A |  | 0% → 16% |  |
| 39 | Acero contratrabe CT-2 | 2026-05-20 A |  | 0% → 16% |  |
| 269 | **LOTE 21 M-663 CORSAC-A** | 2026-05-20 A |  |  |  |
| 270 | **HITOS IMPORTANTES DEL LOTE** | 2026-05-20 A |  |  |  |
| 271 | Inicio del Lote-21 M-663 Corsac-A | 2026-05-20 A | 2026-05-20 A | 0% → 100% | 13d → none |
| 276 | **TRABAJOS PRELIMINARES** | 2026-05-20 A |  | 0% → 31% |  |
| 277 | Trazo y nivelación | 2026-05-20 A |  | 0% → 31% |  |
| 879 | **LOTE 02 M-661 CORSAC-B** | 2026-05-20 A |  |  |  |
| 880 | **HITOS IMPORTANTES DEL LOTE** | 2026-05-20 A |  |  |  |
| 881 | Inicio del Lote-02 M-661 Corsac-B | 2026-05-20 A | 2026-05-20 A | 0% → 100% | 13d → none |
| 886 | **TRABAJOS PRELIMINARES** | 2026-05-20 A |  | 0% → 31% |  |
| 887 | Trazo y nivelación | 2026-05-20 A |  | 0% → 31% |  |

## Version 3 (data date 2026-05-20, saved 2026-05-20)

Note of the change: Programa de obra reprogramado por petición del cliente

Last finish stays 2027-01-20.

Changed:

| ID | Task | Start | Finish | Duration | Complete | Total float | Other |
| --- | --- | --- | --- | --- | --- | --- | --- |
| 10 | **LOTE 04 M-661 ARTICO-A** | 2026-06-10 → 2026-05-11 A (-30d) | 2027-01-20 → 2026-12-16 (-35d) | 174d → 175d | 0% → 2% | 0d → 24d | baseline start 2026-06-10 → 2026-05-11; baseline finish 2027-01-20 → 2026-12-16 |
| 12 | Inicio del LOTE 04 M-661 ARTICO-A |  |  |  |  |  | was named Inicio del Lote-20 M-663 Artico-A |
| 271 | Inicio del LOTE 02 M-661 CORSAC-B |  |  |  |  |  | was named Inicio del Lote-21 M-663 Corsac-A |
| 574 | **LOTE 03 M-661 CORSAC-A** | 2026-05-29 → 2026-05-20 A (-9d) | 2027-01-18 → 2027-01-04 (-14d) | 181d → 178d |  | 2d → 13d | baseline start 2026-05-29 → 2026-05-20; baseline finish 2027-01-18 → 2027-01-04 |
| 576 | Inicio del LOTE 03 M-661 CORSAC-A |  |  |  |  |  | was named Inicio del Lote-02 M-661 Corsac-B |
| 879 | **LOTE 20 M-663 ARTICO-A** | 2026-05-11 A → 2026-05-29 (+18d) | 2026-12-16 → 2027-01-18 (+33d) | 175d → 181d | 2% → 0% | 24d → 2d | baseline start 2026-05-11 → 2026-05-29; baseline finish 2026-12-16 → 2027-01-18 |
| 881 | Inicio del LOTE 20 M-663 ARTICO-A |  |  |  |  |  | was named Inicio del Lote-22 M-663 Corsac-B |
| 1184 | **LOTE 21 M-663 CORSAC-A** | 2026-05-20 A → 2026-05-29 (+9d) | 2027-01-04 → 2027-01-18 (+14d) | 178d → 181d |  | 13d → 2d | baseline start 2026-05-20 → 2026-05-29; baseline finish 2027-01-04 → 2027-01-18 |
| 1186 | Inicio del LOTE 21 M-663 CORSAC-A |  |  |  |  |  | was named Inicio del Lote-03 M-661 Corsac-A |
| 1489 | **LOTE 22 M-663 CORSAC-B** | 2026-05-29 → 2026-06-10 (+12d) | 2027-01-18 → 2027-01-20 (+2d) | 181d → 174d |  | 2d → 0d | baseline start 2026-05-29 → 2026-06-10; baseline finish 2027-01-18 → 2027-01-20 |
| 1491 | Inicio del LOTE 22 M-663 CORSAC-B |  |  |  |  |  | was named Inicio del Lote-04 M-661 Artico-A |

## Version 4 (data date 2026-05-26, saved 2026-05-26)

Note of the change: Actualizar programa de obra (XML de MS Project)

Last finish stays 2027-01-20. Complete tasks 14 → 38.

Added:

| ID | Task | Duration | Start | Finish | Predecessors |
| --- | --- | --- | --- | --- | --- |
| 7 | INICIO LOTE-20 M-663 ARTICO-A | 0d | 2026-05-29 | 2026-05-29 | 3FS+16d |
| 8 | INICIO LOTE-21 M-663 CORSAC-A | 0d | 2026-05-29 | 2026-05-29 | 3FS+16d |
| 9 | INICIO LOTE-22 M-663 CORSAC-B | 0d | 2026-06-10 | 2026-06-10 | 3FS+25d |

Removed: 4 INICIO LOTE-20 M-668 ARTICO-A; 5 INICIO LOTE-21 M-668 CORSAC-A; 6 INICIO LOTE-22 M-668 CORSAC-B

Changed:

| ID | Task | Start | Finish | Duration | Complete | Total float | Predecessors | Other |
| --- | --- | --- | --- | --- | --- | --- | --- | --- |
| 1 | **ALTOZANO - METTA - 6 CASAS** |  |  |  | 0% → 1% |  |  |  |
| 2 | **HITOS IMPORTANTES** |  | 2026-05-27 → 2026-06-10 (+14d) | 14d → 25d |  |  |  |  |
| 4 | INICIO LOTE-04 M-661 ARTICO-A | 2026-05-27 → 2026-05-11 A (-16d) | 2026-05-27 → 2026-05-11 A (-16d) |  | 0% → 100% | 0d → none | 3FS+14d → 3 | baseline start 2026-05-27 → 2026-05-11; baseline finish 2026-05-27 → 2026-05-11 |
| 6 | INICIO LOTE-03 M-661 CORSAC-A | 2026-05-15 A → 2026-05-20 A (+5d) | 2026-05-15 A → 2026-05-20 A (+5d) |  |  |  | 3FS+5d → 3FS+8d |  |
| 10 | **LOTE 04 M-661 ARTICO-A** |  |  |  | 2% → 7% |  |  |  |
| 12 | Inicio del LOTE 04 M-661 ARTICO-A |  |  |  |  |  | INICIO LOTE-20 M-668 ARTICO-A → 4 |  |
| 22 | **CIMENTACION** |  |  |  | 15% → 96% |  |  |  |
| 25 | Hule negro en cimentación |  | 2026-05-21 A |  | 63% → 100% | 25d → none |  |  |
| 26 | Ramaleo poliducto eléctrico cimentación | 2026-05-21 A | 2026-05-23 A |  | 0% → 100% | 28d → none |  |  |
| 27 | Ramaleo eléctrico base-medición a centro de carga | 2026-05-21 A | 2026-05-22 A |  | 0% → 100% | 29d → none |  |  |
| 28 | Ramaleo eléctrico exterior | 2026-05-23 A | 2026-05-25 A |  | 0% → 100% | 28d → none |  |  |
| 29 | Ramaleo para cable poliducto 3/4 | 2026-05-23 A | 2026-05-25 A |  | 0% → 100% | 28d → none |  |  |
| 30 | Ramaleo para TV poliducto 3/4 | 2026-05-23 A | 2026-05-25 A |  | 0% → 100% | 28d → none |  |  |
| 31 | Ramaleo hidráulico CPVC 1 cimentación | 2026-05-21 A | 2026-05-22 A |  | 0% → 100% | 25d → none |  |  |
| 32 | Ramaleo hidráulico CPVC 3/4 cimentación | 2026-05-22 A | 2026-05-25 A |  | 0% → 100% | 25d → none |  |  |
| 33 | Ramaleo hidráulico CPVC 1/2 cimentación | 2026-05-25 A | 2026-05-27 A |  | 0% → 100% | 25d → none |  |  |
| 34 | Prueba hidráulica | 2026-05-27 A | 2026-05-28 A |  | 0% → 100% | 25d → none |  |  |
| 35 | Ramaleo sanitario PVC 4 cimentación | 2026-05-22 A | 2026-05-25 A |  | 0% → 100% | 26d → none |  |  |
| 36 | Ramaleo sanitario PVC 2 cimentación | 2026-05-25 A | 2026-05-26 A |  | 0% → 100% | 26d → none |  |  |
| 37 | Prueba sanitaria | 2026-05-26 A | 2026-05-27 A |  | 0% → 100% | 26d → none |  |  |
| 38 | Acero contratrabe CT-1 |  | 2026-05-25 A |  | 16% → 100% | 24d → none |  |  |
| 39 | Acero contratrabe CT-2 |  | 2026-05-25 A |  | 16% → 100% | 24d → none |  |  |
| 40 | Malla electrosoldada 6-6/8-8 | 2026-05-27 A | 2026-05-29 A |  | 0% → 100% | 24d → none |  |  |
| 41 | Bastón de refuerzo LS | 2026-05-25 A | 2026-05-27 A |  | 0% → 100% | 24d → none |  |  |
| 42 | Bastón de refuerzo LI | 2026-05-25 A | 2026-05-27 A |  | 0% → 100% | 24d → none |  |  |
| 43 | Colado losa de cimentación f’c=200 | 2026-05-29 A |  |  | 0% → 88% |  |  |  |
| 45 | Acero zapata ZT-1 | 2026-05-25 A | 2026-05-29 A |  | 0% → 100% | 181d → none |  |  |
| 46 | Acero zapata ZT-2 | 2026-05-25 A | 2026-05-29 A |  | 0% → 100% | 181d → none |  |  |
| 48 | Cimbra frontera zapatas | 2026-05-27 A |  |  | 0% → 96% |  |  |  |
| 49 | **MUROS, PLANTA BAJA. CASTILLOS Y CERRAMIENTOS** | 2026-05-26 A |  |  |  | 29d → 166d |  |  |
| 50 | Anclaje de castillos y Columnas PB | 2026-05-26 A |  |  | 0% → 5% |  |  |  |
| 269 | **LOTE 02 M-661 CORSAC-B** |  |  |  | 0% → 1% |  |  |  |
| 271 | Inicio del LOTE 02 M-661 CORSAC-B |  |  |  |  |  | INICIO LOTE-21 M-668 CORSAC-A → 5 |  |
| 276 | **TRABAJOS PRELIMINARES** |  | 2026-05-22 A |  | 31% → 100% | 13d → none |  |  |
| 277 | Trazo y nivelación |  | 2026-05-22 A |  | 31% → 100% | 13d → none |  |  |
| 278 | **EXCAVACIONES** | 2026-05-22 A | 2026-05-26 A |  | 0% → 100% | 13d → none |  |  |
| 279 | Excavación a mano material tipo B | 2026-05-22 A | 2026-05-26 A |  | 0% → 100% | 13d → none |  |  |
| 280 | Acarreo en carretilla 20 m | 2026-05-23 A | 2026-05-26 A |  | 0% → 100% | 13d → none |  |  |
| 281 | **CIMENTACION** | 2026-05-26 A |  |  | 0% → 5% |  |  |  |
| 282 | Cimbra perimetral losa de cimentación | 2026-05-26 A |  |  | 0% → 8% | 13d → 0.88d |  |  |
| 283 | Sistema antitermitas PVC | 2026-05-26 A |  |  | 0% → 8% |  |  |  |
| 298 | Acero contratrabe CT-1 | 2026-05-29 A |  |  | 0% → 22% |  |  |  |
| 299 | Acero contratrabe CT-2 | 2026-05-29 A |  |  | 0% → 22% |  |  |  |
| 574 | **LOTE 03 M-661 CORSAC-A** |  |  |  | 0% → 1% |  |  |  |
| 576 | Inicio del LOTE 03 M-661 CORSAC-A |  |  |  |  |  | 5 → 6 |  |
| 581 | **TRABAJOS PRELIMINARES** |  | 2026-05-22 A |  | 31% → 100% | 13d → none |  |  |
| 582 | Trazo y nivelación |  | 2026-05-22 A |  | 31% → 100% | 13d → none |  |  |
| 583 | **EXCAVACIONES** | 2026-05-22 A | 2026-05-26 A |  | 0% → 100% | 13d → none |  |  |
| 584 | Excavación a mano material tipo B | 2026-05-22 A | 2026-05-26 A |  | 0% → 100% | 13d → none |  |  |
| 585 | Acarreo en carretilla 20 m | 2026-05-23 A | 2026-05-26 A |  | 0% → 100% | 13d → none |  |  |
| 586 | **CIMENTACION** | 2026-05-26 A |  |  | 0% → 5% |  |  |  |
| 587 | Cimbra perimetral losa de cimentación | 2026-05-26 A |  |  | 0% → 8% | 13d → 0.88d |  |  |
| 588 | Sistema antitermitas PVC | 2026-05-26 A |  |  | 0% → 8% |  |  |  |
| 603 | Acero contratrabe CT-1 | 2026-05-29 A |  |  | 0% → 22% |  |  |  |
| 604 | Acero contratrabe CT-2 | 2026-05-29 A |  |  | 0% → 22% |  |  |  |
| 881 | Inicio del LOTE 20 M-663 ARTICO-A |  |  |  |  |  | INICIO LOTE-22 M-668 CORSAC-BFS+11d → 7 |  |
| 1186 | Inicio del LOTE 21 M-663 CORSAC-A |  |  |  |  |  | 6FS+11d → 8 |  |
| 1491 | Inicio del LOTE 22 M-663 CORSAC-B |  |  |  |  |  | 4FS+11d → 9 |  |

## Version 5 (data date 2026-06-02, saved 2026-06-02)

Note of the change: Programa actualizado + favicon en todas las paginas

Last finish stays 2027-01-20. Complete tasks 38 → 62.

Changed:

| ID | Task | Start | Finish | Complete | Total float |
| --- | --- | --- | --- | --- | --- |
| 1 | **ALTOZANO - METTA - 6 CASAS** |  |  | 1% → 2% |  |
| 7 | INICIO LOTE-20 M-663 ARTICO-A | 2026-05-29 A | 2026-05-29 A | 0% → 100% | 2d → none |
| 8 | INICIO LOTE-21 M-663 CORSAC-A | 2026-05-29 A | 2026-05-29 A | 0% → 100% | 2d → none |
| 10 | **LOTE 04 M-661 ARTICO-A** |  |  | 7% → 8% |  |
| 13 | Colado de Losa de Cimentación | 2026-06-01 A | 2026-06-01 A | 0% → 100% | 182d → none |
| 22 | **CIMENTACION** |  | 2026-06-02 A | 96% → 100% | 181d → none |
| 43 | Colado losa de cimentación f’c=200 |  | 2026-06-01 A | 88% → 100% | 24d → none |
| 44 | Curado de concreto | 2026-06-01 A | 2026-06-02 A | 0% → 100% | 24d → none |
| 47 | Colado zapatas aisladas f’c=200 | 2026-06-01 A | 2026-06-02 A | 0% → 100% | 181d → none |
| 48 | Cimbra frontera zapatas |  | 2026-06-01 A | 96% → 100% | 181d → none |
| 49 | **MUROS, PLANTA BAJA. CASTILLOS Y CERRAMIENTOS** |  |  | 0% → 12% |  |
| 50 | Anclaje de castillos y Columnas PB |  | 2026-06-02 A | 5% → 100% | 169d → none |
| 51 | Castillo K1 | 2026-06-02 A |  | 0% → 22% |  |
| 52 | Castillo K2 | 2026-06-02 A |  | 0% → 22% |  |
| 57 | Columna C1 | 2026-06-02 A |  | 0% → 22% |  |
| 62 | Muro de ladrillo aparente | 2026-06-02 A |  | 0% → 6% |  |
| 269 | **LOTE 02 M-661 CORSAC-B** |  |  | 1% → 3% |  |
| 281 | **CIMENTACION** |  |  | 5% → 40% |  |
| 282 | Cimbra perimetral losa de cimentación |  | 2026-05-29 A | 8% → 100% | 0.88d → none |
| 283 | Sistema antitermitas PVC |  | 2026-05-29 A | 8% → 100% | 14d → none |
| 284 | Hule negro en cimentación | 2026-05-29 A | 2026-06-01 A | 0% → 100% | 14d → none |
| 285 | Ramaleo poliducto eléctrico cimentación | 2026-06-01 A |  | 0% → 94% |  |
| 286 | Ramaleo eléctrico base-medición a centro de carga | 2026-06-01 A | 2026-06-02 A | 0% → 100% | 18d → none |
| 290 | Ramaleo hidráulico CPVC 1-1/4" cimentación | 2026-06-01 A | 2026-06-02 A | 0% → 100% | 14d → none |
| 291 | Ramaleo hidráulico CPVC 1 cimentación | 2026-06-01 A | 2026-06-02 A | 0% → 100% | 14d → none |
| 292 | Ramaleo hidráulico CPVC 3/4 cimentación | 2026-06-02 A |  | 0% → 44% |  |
| 295 | Ramaleo sanitario PVC 4 cimentación | 2026-06-02 A |  | 0% → 44% |  |
| 298 | Acero contratrabe CT-1 |  |  | 22% → 72% |  |
| 299 | Acero contratrabe CT-2 |  |  | 22% → 72% |  |
| 574 | **LOTE 03 M-661 CORSAC-A** |  |  | 1% → 3% |  |
| 586 | **CIMENTACION** |  |  | 5% → 40% |  |
| 587 | Cimbra perimetral losa de cimentación |  | 2026-05-29 A | 8% → 100% | 0.88d → none |
| 588 | Sistema antitermitas PVC |  | 2026-05-29 A | 8% → 100% | 14d → none |
| 589 | Hule negro en cimentación | 2026-05-29 A | 2026-06-01 A | 0% → 100% | 14d → none |
| 590 | Ramaleo poliducto eléctrico cimentación | 2026-06-01 A |  | 0% → 94% |  |
| 591 | Ramaleo eléctrico base-medición a centro de carga | 2026-06-01 A | 2026-06-02 A | 0% → 100% | 18d → none |
| 595 | Ramaleo hidráulico CPVC 1-1/4" cimentación | 2026-06-01 A | 2026-06-02 A | 0% → 100% | 14d → none |
| 596 | Ramaleo hidráulico CPVC 1 cimentación | 2026-06-01 A | 2026-06-02 A | 0% → 100% | 14d → none |
| 597 | Ramaleo hidráulico CPVC 3/4 cimentación | 2026-06-02 A |  | 0% → 44% |  |
| 600 | Ramaleo sanitario PVC 4 cimentación | 2026-06-02 A |  | 0% → 44% |  |
| 603 | Acero contratrabe CT-1 |  |  | 22% → 72% |  |
| 604 | Acero contratrabe CT-2 |  |  | 22% → 72% |  |
| 879 | **LOTE 20 M-663 ARTICO-A** | 2026-05-29 A |  |  |  |
| 880 | **HITOS IMPORTANTES DEL LOTE** | 2026-05-29 A |  |  |  |
| 881 | Inicio del LOTE 20 M-663 ARTICO-A | 2026-05-29 A | 2026-05-29 A | 0% → 100% | 2d → none |
| 886 | **TRABAJOS PRELIMINARES** | 2026-05-29 A | 2026-06-02 A | 0% → 100% | 2d → none |
| 887 | Trazo y nivelación | 2026-05-29 A | 2026-06-02 A | 0% → 100% | 2d → none |
| 888 | **EXCAVACIONES** | 2026-06-02 A |  | 0% → 18% |  |
| 889 | Excavación a mano material tipo B | 2026-06-02 A |  | 0% → 29% |  |
| 1184 | **LOTE 21 M-663 CORSAC-A** | 2026-05-29 A |  |  |  |
| 1185 | **HITOS IMPORTANTES DEL LOTE** | 2026-05-29 A |  |  |  |
| 1186 | Inicio del LOTE 21 M-663 CORSAC-A | 2026-05-29 A | 2026-05-29 A | 0% → 100% | 2d → none |
| 1191 | **TRABAJOS PRELIMINARES** | 2026-05-29 A | 2026-06-02 A | 0% → 100% | 2d → none |
| 1192 | Trazo y nivelación | 2026-05-29 A | 2026-06-02 A | 0% → 100% | 2d → none |
| 1193 | **EXCAVACIONES** | 2026-06-02 A |  | 0% → 18% |  |
| 1194 | Excavación a mano material tipo B | 2026-06-02 A |  | 0% → 29% |  |

## Version 6 (data date 2026-06-08, saved 2026-06-08)

Note of the change: Programa de obra: reprogramacion al corte 08-jun-2026

Last finish stays 2027-01-20. Complete tasks 62 → 99.

Changed:

| ID | Task | Start | Finish | Complete | Total float | Other |
| --- | --- | --- | --- | --- | --- | --- |
| 1 | **ALTOZANO - METTA - 6 CASAS** |  |  | 2% → 4% |  |  |
| 2 | **HITOS IMPORTANTES** |  |  |  |  | baseline finish 2026-05-27 → 2026-06-10 |
| 6 | INICIO LOTE-03 M-661 CORSAC-A |  |  |  |  | baseline start 2026-05-15 → 2026-05-20; baseline finish 2026-05-15 → 2026-05-20 |
| 7 | INICIO LOTE-20 M-663 ARTICO-A |  |  |  |  | baseline start 2026-05-20 → 2026-05-29; baseline finish 2026-05-20 → 2026-05-29 |
| 8 | INICIO LOTE-21 M-663 CORSAC-A |  |  |  |  | baseline start 2026-05-15 → 2026-05-29; baseline finish 2026-05-15 → 2026-05-29 |
| 9 | INICIO LOTE-22 M-663 CORSAC-B |  |  |  |  | baseline start 2026-05-27 → 2026-06-10; baseline finish 2026-05-27 → 2026-06-10 |
| 10 | **LOTE 04 M-661 ARTICO-A** |  |  | 8% → 11% |  |  |
| 12 | Inicio del Lote-04 M-661 Artico-A |  |  |  |  | was named Inicio del LOTE 04 M-661 ARTICO-A |
| 18 | Trazo y nivelación |  |  |  |  | resources Artico - Trazo y nivelación → none |
| 20 | Excavación a mano material tipo B |  |  |  |  | resources Artico - Excavación a mano material tipo B → none |
| 21 | Acarreo en carretilla 20 m |  |  |  |  | resources Artico - Acarreo en carretilla 20 m → none |
| 23 | Cimbra perimetral losa de cimentación |  |  |  |  | resources Artico - Cimbra perimetral losa de cimentación → none |
| 24 | Sistema antitermitas PVC |  |  |  |  | resources Artico - Sistema antitermitas PVC → none |
| 25 | Hule negro en cimentación |  |  |  |  | resources Artico - Hule negro en cimentación → none |
| 26 | Ramaleo poliducto eléctrico cimentación |  |  |  |  | resources Artico - Ramaleo poliducto eléctrico cimentación → none |
| 27 | Ramaleo eléctrico base-medición a centro de carga |  |  |  |  | resources Artico - Ramaleo eléctrico base-medición a centro de carga → none |
| 28 | Ramaleo eléctrico exterior |  |  |  |  | resources Artico - Ramaleo eléctrico exterior → none |
| 29 | Ramaleo para cable poliducto 3/4 |  |  |  |  | resources Artico - Ramaleo para cable poliducto 3/4 → none |
| 30 | Ramaleo para TV poliducto 3/4 |  |  |  |  | resources Artico - Ramaleo para TV poliducto 3/4 → none |
| 31 | Ramaleo hidráulico CPVC 1 cimentación |  |  |  |  | resources Artico - Ramaleo hidráulico CPVC 1" cimentación → none |
| 32 | Ramaleo hidráulico CPVC 3/4 cimentación |  |  |  |  | resources Artico - Ramaleo hidráulico CPVC 3/4" cimentación → none |
| 33 | Ramaleo hidráulico CPVC 1/2 cimentación |  |  |  |  | resources Artico - Ramaleo hidráulico CPVC 1/2" cimentación → none |
| 34 | Prueba hidráulica |  |  |  |  | resources Artico - Prueba hidráulica → none |
| 35 | Ramaleo sanitario PVC 4 cimentación |  |  |  |  | resources Artico - Ramaleo sanitario PVC 4" cimentación → none |
| 36 | Ramaleo sanitario PVC 2 cimentación |  |  |  |  | resources Artico - Ramaleo sanitario PVC 2" cimentación → none |
| 37 | Prueba sanitaria |  |  |  |  | resources Artico - Prueba sanitaria → none |
| 38 | Acero contratrabe CT-1 |  |  |  |  | resources Artico - Acero contratrabe CT-1 → none |
| 39 | Acero contratrabe CT-2 |  |  |  |  | resources Artico - Acero contratrabe CT-2 → none |
| 40 | Malla electrosoldada 6-6/8-8 |  |  |  |  | resources Artico - Malla electrosoldada 6-6/8-8 → none |
| 41 | Bastón de refuerzo LS |  |  |  |  | resources Artico - Bastón de refuerzo LS → none |
| 42 | Bastón de refuerzo LI |  |  |  |  | resources Artico - Bastón de refuerzo LI → none |
| 43 | Colado losa de cimentación f’c=200 |  |  |  |  | resources Artico - Colado losa de cimentación f’c=200 → none |
| 44 | Curado de concreto |  |  |  |  | resources Artico - Curado de concreto → none |
| 45 | Acero zapata ZT-1 |  |  |  |  | resources Artico - Acero zapata ZT-1 → none |
| 46 | Acero zapata ZT-2 |  |  |  |  | resources Artico - Acero zapata ZT-2 → none |
| 47 | Colado zapatas aisladas f’c=200 |  |  |  |  | resources Artico - Colado zapatas aisladas f’c=200 → none |
| 48 | Cimbra frontera zapatas |  |  |  |  | resources Artico - Cimbra frontera zapatas → none |
| 49 | **MUROS, PLANTA BAJA. CASTILLOS Y CERRAMIENTOS** |  |  | 12% → 51% |  |  |
| 51 | Castillo K1 |  | 2026-06-06 A | 22% → 100% | 169d → none | resources Artico - Castillo K1 → none |
| 52 | Castillo K2 |  | 2026-06-06 A | 22% → 100% | 173d → none | resources Artico - Castillo K2 → none |
| 53 | Castillo K3 | 2026-06-04 A | 2026-06-08 A | 0% → 100% | 169d → none | resources Artico - Castillo K3 → none |
| 54 | Castillo K4 | 2026-06-04 A | 2026-06-08 A | 0% → 100% | 169d → none | resources Artico - Castillo K4 → none |
| 55 | Castillo K5 | 2026-06-06 A |  | 0% → 50% | 169d → 0.5d | resources Artico - Castillo K5 → none |
| 56 | Refuerzo de muro K6 | 2026-06-08 A |  | 0% → 17% |  | resources Artico - Refuerzo de muro K6 → none |
| 57 | Columna C1 |  | 2026-06-06 A | 22% → 100% | 173d → none | resources Artico - Columna C1 → none |
| 58 | Columna C2 | 2026-06-06 A |  | 0% → 38% |  | resources Artico - Columna C2 → none |
| 59 | Dala de cerramiento CR-1 | 2026-06-08 A |  | 0% → 13% |  | resources Artico - Dala de cerramiento CR-1 → none |
| 60 | Dala de cerramiento CR-2 | 2026-06-08 A |  | 0% → 17% |  | resources Artico - Dala de cerramiento CR-2 → none |
| 61 | Cadena block dala |  |  |  |  | resources Artico - Cadena block dala → none |
| 62 | Muro de ladrillo aparente |  |  | 6% → 37% |  | resources Artico - Muro de ladrillo aparente → none |
| 63 | Muro de block planta baja | 2026-06-04 A |  | 0% → 27% |  | resources Artico - Muro de block planta baja → none |
| 65 | Escalera de concreto armado |  |  |  |  | resources Artico - Escalera de concreto armado → none |
| 67 | Vigueta pretensada 1.40 m |  |  |  |  | resources Artico - Vigueta pretensada 1.40 m → none |
| 68 | Vigueta pretensada 1.95 m |  |  |  |  | resources Artico - Vigueta pretensada 1.95 m → none |
| 69 | Vigueta pretensada 3.35 m |  |  |  |  | resources Artico - Vigueta pretensada 3.35 m → none |
| 70 | Vigueta pretensada 3.50 m |  |  |  |  | resources Artico - Vigueta pretensada 3.50 m → none |
| 71 | Vigueta pretensada 3.75 m |  |  |  |  | resources Artico - Vigueta pretensada 3.75 m → none |
| 72 | Vigueta pretensada 3.90 m |  |  |  |  | resources Artico - Vigueta pretensada 3.90 m → none |
| 73 | Bovedilla poliestireno entrepiso |  |  |  |  | resources Artico - Bovedilla poliestireno entrepiso → none |
| 74 | Dala de coronamiento |  |  |  |  | resources Artico - Dala de coronamiento → none |
| 75 | Nervadura NR-1 |  |  |  |  | resources Artico - Nervadura NR-1 → none |
| 76 | Nervadura NR-2 |  |  |  |  | resources Artico - Nervadura NR-2 → none |
| 77 | Trabe TR-1 |  |  |  |  | resources Artico - Trabe TR-1 → none |
| 78 | Malla 66-10/10 losa de compresión |  |  |  |  | resources Artico - Malla 66-10/10 losa de compresión → none |
| 79 | Cimbra losa de azotea |  |  |  |  | resources Artico - Cimbra losa de azotea → none |
| 80 | Concreto losa de entrepiso f’c=200 |  |  |  |  | resources Artico - Concreto losa de entrepiso f’c=200 → none |
| 81 | Curado de concreto |  |  |  |  | resources Artico - Curado de concreto → none |
| 82 | Cimbra exterior corta losa |  |  |  |  | resources Artico - Cimbra exterior corta losa → none |
| 83 | Ramaleo poliducto eléctrico entrepiso |  |  |  |  | resources Artico - Ramaleo poliducto eléctrico entrepiso → none |
| 84 | Ramaleo para cable poliducto 3/4 |  |  |  |  | resources Artico - Ramaleo para cable poliducto 3/4 → none |

| ID | Task | Other |
| --- | --- | --- |
| 85 | Ramaleo para TV poliducto 3/4 | resources Artico - Ramaleo para TV poliducto 3/4 → none |
| 86 | Ramaleo hidráulico CPVC 3/4 | resources Artico - Ramaleo hidráulico CPVC 3/4" → none |
| 87 | Ramaleo hidráulico CPVC 1/2 | resources Artico - Ramaleo hidráulico CPVC 1/2" → none |
| 88 | Prueba hidráulica | resources Artico - Prueba hidráulica → none |
| 89 | Ramaleo sanitario PVC 4 | resources Artico - Ramaleo sanitario PVC 4" → none |
| 90 | Ramaleo sanitario PVC 2 | resources Artico - Ramaleo sanitario PVC 2" → none |
| 91 | Prueba sanitaria | resources Artico - Prueba sanitaria → none |
| 94 | Castillo K1 | resources Artico - Castillo K1 → none |
| 95 | Castillo K2 | resources Artico - Castillo K2 → none |
| 96 | Castillo K3 | resources Artico - Castillo K3 → none |
| 97 | Castillo K4 | resources Artico - Castillo K4 → none |
| 98 | Castillo K5 | resources Artico - Castillo K5 → none |
| 99 | Refuerzo de muro K6 | resources Artico - Refuerzo de muro K6 → none |
| 100 | Dala de cerramiento CR-1 | resources Artico - Dala de cerramiento CR-1 → none |
| 101 | Cadena block dala | resources Artico - Cadena block dala → none |
| 102 | Muro de ladrillo aparente | resources Artico - Muro de ladrillo aparente → none |
| 103 | Muro de block planta alta | resources Artico - Muro de block planta alta → none |
| 105 | Cortalosa CL-1 | resources Artico - Cortalosa CL-1 → none |
| 106 | Vigueta pretensada V11-40 390 | resources Artico - Vigueta pretensada V11-40 390 → none |
| 107 | Vigueta pretensada V11-30 280 | resources Artico - Vigueta pretensada V11-30 280 → none |
| 108 | Vigueta pretensada V11-30 285 | resources Artico - Vigueta pretensada V11-30 285 → none |
| 109 | Vigueta pretensada V11-30 220 | resources Artico - Vigueta pretensada V11-30 220 → none |
| 110 | Vigueta pretensada V11-40 75 | resources Artico - Vigueta pretensada V11-40 75 → none |
| 111 | Vigueta pretensada V11-40 195 | resources Artico - Vigueta pretensada V11-40 195 → none |
| 112 | Vigueta pretensada V11-50 450 | resources Artico - Vigueta pretensada V11-50 450 → none |
| 113 | Bovedilla poliestireno azotea | resources Artico - Bovedilla poliestireno azotea → none |
| 114 | Malla 66-10/10 losa de compresión | resources Artico - Malla 66-10/10 losa de compresión → none |
| 115 | Concreto losa de azotea f’c=200 | resources Artico - Concreto losa de azotea f’c=200 → none |
| 116 | Curado de concreto | resources Artico - Curado de concreto → none |
| 117 | Cimbra losa de azotea | resources Artico - Cimbra losa de azotea → none |
| 118 | Ramaleo de poliducto para inst. electrica en azotea | resources Artico - Ramaleo de poliducto para instalacion electrica en azotea → none |
| 120 | Castillo K1 | resources Artico - Castillo K1 → none |
| 121 | Dala de cerramiento en pretil | resources Artico - Dala de cerramiento en pretil → none |
| 122 | Muro de block 12x15x40 | resources Artico - Muro de block 12x15x40 → none |
| 123 | Chaflán en azotea | resources Artico - Chaflán en azotea → none |
| 124 | Aplanado exterior Mortermax fino | resources Artico - Aplanado exterior Mortermax fino → none |
| 125 | Acabado de azotea para impermeabilizar | resources Artico - Acabado de azotea para impermeabilizar → none |
| 126 | Curado de concreto | resources Artico - Curado de concreto → none |
| 128 | Primera limpieza de obra | resources Artico - Primera limpieza de obra → none |
| 129 | Primera carga y acarreo de escombro | resources Artico - Primera carga y acarreo de escombro → none |
| 131 | Impermeabilización de pretil Kover 5 años | resources Artico - Impermeabilización de pretil Kover 5 años → none |
| 132 | Impermeabilización de losa Kover 5 años | resources Artico - Impermeabilización de losa Kover 5 años → none |
| 134 | Lavadero de granito | resources Artico - Lavadero de granito → none |
| 135 | Ramaleo hidráulico exterior CPVC 1 1/4 | resources Artico - Ramaleo hidráulico exterior CPVC 1 1/4" → none |
| 136 | Ramaleo hidráulico exterior CPVC 1 | resources Artico - Ramaleo hidráulico exterior CPVC 1" → none |
| 137 | Ramaleo hidráulico exterior CPVC 3/4 | resources Artico - Ramaleo hidráulico exterior CPVC 3/4" → none |
| 138 | Ramaleo hidráulico exterior CPVC 1/2 | resources Artico - Ramaleo hidráulico exterior CPVC 1/2" → none |
| 139 | Prueba hidráulica | resources Artico - Prueba hidráulica → none |
| 140 | Ramaleo sanitario exterior PVC 4 | resources Artico - Ramaleo sanitario exterior PVC 4" → none |
| 141 | Ramaleo sanitario exterior PVC 2 | resources Artico - Ramaleo sanitario exterior PVC 2" → none |
| 142 | Prueba sanitaria | resources Artico - Prueba sanitaria → none |
| 143 | Centro de carga muros PB | resources Artico - Centro de carga muros PB → none |
| 144 | Firme de concreto 8 cm | resources Artico - Firme de concreto 8 cm → none |
| 145 | Curado de concreto | resources Artico - Curado de concreto → none |
| 146 | Cisterna 2800 L con instalación | resources Artico - Cisterna 2800 L con instalación → none |
| 147 | Banqueta y huellas de concreto | resources Artico - Banqueta y huellas de concreto → none |
| 148 | Curado de concreto | resources Artico - Curado de concreto → none |
| 149 | Número oficial | resources Artico - Número oficial → none |
| 150 | Detallado de rodapié exterior | resources Artico - Detallado de rodapié exterior → none |
| 151 | Detallado de muros interiores | resources Artico - Detallado de muros interiores → none |
| 153 | Aplanado grueso fachada | resources Artico - Aplanado grueso fachada → none |
| 154 | Aplanado fino estuco fachada | resources Artico - Aplanado fino estuco fachada → none |
| 155 | Pintura acrílica 1-0102P | resources Artico - Pintura acrílica 1-0102P → none |
| 156 | Pintura acrílica 1-1404D | resources Artico - Pintura acrílica 1-1404D → none |
| 158 | Yeso pulido en muros | resources Artico - Yeso pulido en muros → none |
| 159 | Pintura vinílica 699 Cottage White | resources Artico - Pintura vinílica 699 Cottage White → none |
| 160 | Pintura vinílica 691 Pacific Bungalow | resources Artico - Pintura vinílica 691 Pacific Bungalow → none |
| 161 | Yeso pulido en plafones | resources Artico - Yeso pulido en plafones → none |
| 162 | Pintura vinílica Nano White | resources Artico - Pintura vinílica Nano White → none |
| 163 | Perfilado de puertas y ventanas | resources Artico - Perfilado de puertas y ventanas → none |

| ID | Task | Other |
| --- | --- | --- |
| 166 | Piso Moonside Crema 60x60 | resources Artico - Piso Moonside Crema 60x60 → none |
| 167 | Zoclo piso 60x60 Moonside Crema | resources Artico - Zoclo piso 60x60 Moonside Crema → none |
| 169 | Piso Moonside Crema 60x60 | resources Artico - Piso Moonside Crema 60x60 → none |
| 170 | Zoclo piso 60x60 Moonside Crema | resources Artico - Zoclo piso 60x60 Moonside Crema → none |
| 171 | Piso porcelánico Acali 20x20 beige | resources Artico - Piso porcelánico Acali 20x20 beige → none |
| 172 | Impermeabilización en regadera | resources Artico - Impermeabilización en regadera → none |
| 173 | Azulejo Moonside Crema 60x60 | resources Artico - Azulejo Moonside Crema 60x60 → none |
| 174 | Fabricacion de nicho decorativo en baños | resources Artico - Fabricacion de nicho decorativo en baños → none |
| 175 | Sardinel en regadera | resources Artico - Sardinel en regadera → none |
| 177 | Piso Moonside Crema 60x60 | resources Artico - Piso Moonside Crema 60x60 → none |
| 178 | Zoclo piso 60x60 Moonside Crema | resources Artico - Zoclo piso 60x60 Moonside Crema → none |
| 180 | Rastrilleo, afine y nivelado de tierra | resources Artico - Rastrilleo, afine y nivelado de tierra → none |
| 182 | Segunda limpieza de obra | resources Artico - Segunda limpieza de obra → none |
| 183 | Segunda carga y acarreo de escombro | resources Artico - Segunda carga y acarreo de escombro → none |
| 185 | Puerta ventana P-05 corrediza | resources Artico - Puerta ventana P-05 corrediza → none |
| 186 | Ventana corrediza V-01 | resources Artico - Ventana corrediza V-01 → none |
| 187 | Ventana corrediza V-03 | resources Artico - Ventana corrediza V-03 → none |
| 188 | Ventana corrediza V-05 | resources Artico - Ventana corrediza V-05 → none |
| 189 | Ventana corrediza tipo XO | resources Artico - Ventana corrediza tipo XO → none |
| 190 | Ventana fija escalera | resources Artico - Ventana fija escalera → none |
| 192 | Puerta P-01 de seguridad | resources Artico - Puerta P-01 de seguridad → none |
| 193 | Puerta P-03 interior | resources Artico - Puerta P-03 interior → none |
| 194 | Puerta P-02 interior | resources Artico - Puerta P-02 interior → none |
| 195 | Puerta exterior lavandería | resources Artico - Puerta exterior lavandería → none |
| 197 | Alimentación eléctrica base a centro de carga | resources Artico - Alimentación eléctrica base a centro de carga → none |
| 198 | Interruptor termomagnético 1x15 A | resources Artico - Interruptor termomagnético 1x15 A → none |
| 199 | Interruptor termomagnético 1x20 A | resources Artico - Interruptor termomagnético 1x20 A → none |
| 200 | Interruptor termomagnético 2x20 A | resources Artico - Interruptor termomagnético 2x20 A → none |
| 201 | Salida para apagador 3 vías | resources Artico - Salida para apagador 3 vías → none |
| 202 | Salida para apagador triple | resources Artico - Salida para apagador triple → none |
| 203 | Salida para apagador doble | resources Artico - Salida para apagador doble → none |
| 204 | Salida para apagador sencillo | resources Artico - Salida para apagador sencillo → none |
| 205 | Salida de alumbrado en losa | resources Artico - Salida de alumbrado en losa → none |
| 206 | Salida de alumbrado en muro | resources Artico - Salida de alumbrado en muro → none |
| 207 | Salida para contacto 220 V | resources Artico - Salida para contacto 220 V → none |
| 208 | Salida para contacto doble | resources Artico - Salida para contacto doble → none |
| 209 | Salida para contacto doble área húmeda | resources Artico - Salida para contacto doble área húmeda → none |
| 210 | Salida TV / telefonía / intercom | resources Artico - Salida TV / telefonía / intercom → none |
| 211 | Extractor 4 baño | resources Artico - Extractor 4" baño → none |
| 212 | Prueba eléctrica | resources Artico - Prueba eléctrica → none |
| 213 | Murete convencional | resources Artico - Murete convencional → none |
| 215 | Tubo PVC 3/4 red de condensados | resources Artico - Tubo PVC 3/4" red de condensados → none |
| 216 | Caja PVC para lavadora | resources Artico - Caja PVC para lavadora → none |
| 217 | Salida para secadora PVC 4 | resources Artico - Salida para secadora PVC 4" → none |
| 218 | Salida hidráulica para boiler | resources Artico - Salida hidráulica para boiler → none |
| 219 | Salida hidráulica para llave de jardín | resources Artico - Salida hidráulica para llave de jardín → none |
| 220 | Salida hidráulica para lavabo | resources Artico - Salida hidráulica para lavabo → none |
| 221 | Salida hidráulica para purificación | resources Artico - Salida hidráulica para purificación → none |
| 222 | Salida sanitaria para lavabo | resources Artico - Salida sanitaria para lavabo → none |
| 223 | Salida hidráulica para lavadero | resources Artico - Salida hidráulica para lavadero → none |
| 224 | Salida sanitaria para lavadero | resources Artico - Salida sanitaria para lavadero → none |
| 225 | Salida hidráulica para lavadora | resources Artico - Salida hidráulica para lavadora → none |
| 226 | Salida sanitaria para lavadora | resources Artico - Salida sanitaria para lavadora → none |
| 227 | Salida hidráulica para regadera | resources Artico - Salida hidráulica para regadera → none |
| 228 | Salida sanitaria para regadera | resources Artico - Salida sanitaria para regadera → none |
| 229 | Salida hidráulica para WC | resources Artico - Salida hidráulica para WC → none |
| 230 | Salida sanitaria para WC | resources Artico - Salida sanitaria para WC → none |
| 231 | Salida hidráulica para zinc | resources Artico - Salida hidráulica para zinc → none |
| 232 | Salida sanitaria para zinc | resources Artico - Salida sanitaria para zinc → none |
| 233 | Tubo para ventila de baño 2 | resources Artico - Tubo para ventila de baño 2" → none |
| 234 | Tubo para minisplit PVC 3 | resources Artico - Tubo para minisplit PVC 3" → none |
| 235 | Cuadro de medición | resources Artico - Cuadro de medición → none |
| 236 | Prueba sanitaria | resources Artico - Prueba sanitaria → none |
| 237 | Prueba hidráulica | resources Artico - Prueba hidráulica → none |
| 238 | Salida hidráulica para tanque hidroneumático | resources Artico - Salida hidráulica para tanque hidroneumático → none |
| 239 | Salida hidráulica para Active Driver | resources Artico - Salida hidráulica para Active Driver → none |
| 241 | Ramaleo para gas 1/2 | resources Artico - Ramaleo para gas 1/2" → none |
| 242 | Excavación a mano material tipo B | resources Artico - Excavación a mano material tipo B → none |
| 244 | WC one piece Smart Corona | resources Artico - WC one piece Smart Corona → none |
| 245 | Lavabo Tarento Vanity | resources Artico - Lavabo Tarento Vanity → none |

| ID | Task | Start | Finish | Complete | Total float | Other |
| --- | --- | --- | --- | --- | --- | --- |
| 246 | Regadera y monomando Thames |  |  |  |  | resources Artico - Regadera y monomando Thames → none |
| 247 | Coladera cuadrada para inserto cerámico |  |  |  |  | resources Artico - Coladera cuadrada para inserto cerámico → none |
| 248 | Toallero argolla Thames |  |  |  |  | resources Artico - Toallero argolla Thames → none |
| 249 | Toallero barra Thames |  |  |  |  | resources Artico - Toallero barra Thames → none |
| 250 | Portapapel Thames |  |  |  |  | resources Artico - Portapapel Thames → none |
| 251 | Gancho percha Thames |  |  |  |  | resources Artico - Gancho percha Thames → none |
| 253 | Electronivel Rotoplas 5 m |  |  |  |  | resources Artico - Electronivel Rotoplas 5 m → none |
| 254 | Manómetro |  |  |  |  | resources Artico - Manómetro → none |
| 255 | Interruptor de presión 30-50 PSI |  |  |  |  | resources Artico - Interruptor de presión 30-50 PSI → none |
| 256 | Tanque hidroneumático FPS-24LX |  |  |  |  | resources Artico - Tanque hidroneumático FPS-24LX → none |
| 257 | Bomba sumergible Dominator 1.2 HP |  |  |  |  | resources Artico - Bomba sumergible Dominator 1.2 HP → none |
| 258 | Cisterna prefabricada 2800 L |  |  |  |  | resources Artico - Cisterna prefabricada 2800 L → none |
| 260 | Roseta de cerámica para luminaria |  |  |  |  | resources Artico - Roseta de cerámica para luminaria → none |
| 261 | Spot Brighton |  |  |  |  | resources Artico - Spot Brighton → none |
| 262 | Arbotante bidireccional 12W |  |  |  |  | resources Artico - Arbotante bidireccional 12W → none |
| 264 | Limpieza fina para entrega |  |  |  |  | resources Artico - Limpieza fina para entrega → none |
| 265 | Tercera limpieza de obra |  |  |  |  | resources Artico - Tercera limpieza de obra → none |
| 266 | Tercera carga y acarreo de escombro |  |  |  |  | resources Artico - Tercera carga y acarreo de escombro → none |
| 268 | Barda de block aparente |  |  |  |  | resources Artico - Barda de block aparente → none |
| 269 | **LOTE 02 M-661 CORSAC-B** |  |  | 3% → 5% |  |  |
| 271 | Inicio del Lote-02 M-661 Corsac-B |  |  |  |  | was named Inicio del LOTE 02 M-661 CORSAC-B |
| 277 | Trazo y nivelación |  |  |  |  | resources Corsac - Trazo y nivelación → none |
| 279 | Excavación a mano material tipo B |  |  |  |  | resources Corsac - Excavación a mano material tipo B → none |
| 280 | Acarreo en carretilla 20 m |  |  |  |  | resources Corsac - Acarreo en carretilla 20 m → none |
| 281 | **CIMENTACION** |  |  | 40% → 93% |  |  |
| 282 | Cimbra perimetral losa de cimentación |  |  |  |  | resources Corsac - Cimbra perimetral losa de cimentación → none |
| 283 | Sistema antitermitas PVC |  |  |  |  | resources Corsac - Sistema antitermitas PVC → none |
| 284 | Hule negro en cimentación |  |  |  |  | resources Corsac - Hule negro en cimentación → none |
| 285 | Ramaleo poliducto eléctrico cimentación |  | 2026-06-03 A | 94% → 100% | 17d → none | resources Corsac - Ramaleo poliducto eléctrico cimentación → none |
| 286 | Ramaleo eléctrico base-medición a centro de carga |  |  |  |  | resources Corsac - Ramaleo eléctrico base-medición a centro de carga → none |
| 287 | Ramaleo eléctrico exterior | 2026-06-03 A | 2026-06-04 A | 0% → 100% | 17d → none | resources Corsac - Ramaleo eléctrico exterior → none |
| 288 | Ramaleo para cable poliducto 3/4 | 2026-06-03 A | 2026-06-04 A | 0% → 100% | 17d → none | resources Corsac - Ramaleo para cable poliducto 3/4 → none |
| 289 | Ramaleo para TV poliducto 3/4 | 2026-06-03 A | 2026-06-04 A | 0% → 100% | 17d → none | resources Corsac - Ramaleo para TV poliducto 3/4 → none |
| 290 | Ramaleo hidráulico CPVC 1-1/4" cimentación |  |  |  |  | resources Corsac - Ramaleo hidráulico CPVC 1-1/4" cimentación → none |
| 291 | Ramaleo hidráulico CPVC 1 cimentación |  |  |  |  | resources Corsac - Ramaleo hidráulico CPVC 1" cimentación → none |
| 292 | Ramaleo hidráulico CPVC 3/4 cimentación |  | 2026-06-04 A | 44% → 100% | 14d → none | resources Corsac - Ramaleo hidráulico CPVC 3/4" cimentación → none |
| 293 | Ramaleo hidráulico CPVC 1/2 cimentación | 2026-06-04 A | 2026-06-06 A | 0% → 100% | 14d → none | resources Corsac - Ramaleo hidráulico CPVC 1/2" cimentación → none |
| 294 | Prueba hidráulica | 2026-06-06 A | 2026-06-08 A | 0% → 100% | 14d → none | resources Corsac - Prueba hidráulica → none |
| 295 | Ramaleo sanitario PVC 4 cimentación |  | 2026-06-04 A | 44% → 100% | 15d → none | resources Corsac - Ramaleo sanitario PVC 4" cimentación → none |
| 296 | Ramaleo sanitario PVC 2 cimentación | 2026-06-04 A | 2026-06-05 A | 0% → 100% | 15d → none | resources Corsac - Ramaleo sanitario PVC 2" cimentación → none |
| 297 | Prueba sanitaria | 2026-06-05 A | 2026-06-06 A | 0% → 100% | 15d → none | resources Corsac - Prueba sanitaria → none |
| 298 | Acero contratrabe CT-1 |  | 2026-06-04 A | 72% → 100% | 13d → none | resources Corsac - Acero contratrabe CT-1 → none |
| 299 | Acero contratrabe CT-2 |  | 2026-06-04 A | 72% → 100% | 13d → none | resources Corsac - Acero contratrabe CT-2 → none |
| 300 | Malla electrosoldada 6-6/8-8 | 2026-06-06 A |  | 0% → 75% |  | resources Corsac - Malla electrosoldada 6-6/8-8 → none |
| 301 | Bastón de refuerzo LS | 2026-06-04 A | 2026-06-06 A | 0% → 100% | 13d → none | resources Corsac - Bastón de refuerzo LS → none |
| 302 | Bastón de refuerzo LI | 2026-06-04 A | 2026-06-06 A | 0% → 100% | 13d → none | resources Corsac - Bastón de refuerzo LI → none |
| 303 | Colado losa de cimentación f’c=200 |  |  |  |  | resources Corsac - Colado losa de cimentación f’c=200 → none |
| 304 | Curado de concreto |  |  |  |  | resources Corsac - Curado de concreto → none |
| 305 | Acero zapata ZT-1 | 2026-06-04 A |  | 0% → 88% |  | resources Corsac - Acero zapata ZL → none |
| 306 | Acero zapata ZT-2 | 2026-06-04 A |  | 0% → 88% |  | resources Corsac - Acero zapata ZT-1 → none |
| 307 | **MUROS, PLANTA BAJA. CASTILLOS Y CERRAMIENTOS** | 2026-06-05 A |  | 0% → 4% | 18d → 158d |  |
| 308 | Anclaje de castillos y Columnas PB | 2026-06-05 A |  | 0% → 50% |  |  |
| 309 | Castillo K1 |  |  |  |  | resources Corsac - Castillo K1 → none |
| 310 | Castillo K3 |  |  |  |  | resources Corsac - Castillo K3 → none |
| 311 | Castillo K4 |  |  |  |  | resources Corsac - Castillo K4 → none |
| 312 | Castillo K5 |  |  |  |  | resources Corsac - Castillo K5 → none |
| 313 | Refuerzo de muro K6 |  |  |  |  | resources Corsac - Refuerzo de muro K6 → none |
| 314 | Dala de cerramiento CR-1 |  |  |  |  | resources Corsac - Dala de cerramiento CR-1 → none |
| 315 | Dala de cerramiento CR-2 |  |  |  |  | resources Corsac - Dala de cerramiento CR-2 → none |
| 316 | Cadena block dala |  |  |  |  | resources Corsac - Cadena block dala → none |
| 317 | Muro de ladrillo aparente |  |  |  |  | resources Corsac - Muro de ladrillo aparente → none |
| 318 | Muro de block planta baja |  |  |  |  | resources Corsac - Muro de block planta baja → none |
| 319 | Ramaleo electrico en Muros Planta Baja |  |  |  |  | resources Corsac - Ramaleo electrico en Muros Planta Baja → none |
| 320 | Ramaleo para cable poliducto 3/4 |  |  |  |  | resources Corsac - Ramaleo para cable poliducto 3/4 → none |
| 321 | Ramaleo para TV poliducto 3/4 |  |  |  |  | resources Corsac - Ramaleo para TV poliducto 3/4 → none |
| 323 | Escalera de concreto armado |  |  |  |  | resources Corsac - Escalera de concreto armado → none |
| 325 | Dala de coronamiento 10cm |  |  |  |  | resources Corsac - Dala de Coronamiento 10cm → none |
| 326 | Dala de coronamiento 12cm |  |  |  |  | resources Corsac - Dala de Coronamiento 12cm → none |
| 327 | Trabe TR-1 |  |  |  |  | resources Corsac - Trabe TR-1 → none |
| 328 | Trabe TR-2 |  |  |  |  | resources Corsac - Trabe TR-2 → none |

| ID | Task | Other |
| --- | --- | --- |
| 329 | Nervadura NR-1 | resources Corsac - Nervadura NR-1 → none |
| 330 | Nervadura NR-2 | resources Corsac - Nervadura NR-2 → none |
| 331 | Nervadura NR-3 | resources Corsac - Nervadura NR-3 → none |
| 332 | Nervadura NR-4 | resources Corsac - Nervadura NR-4 → none |
| 333 | Acero de refuerzo en nervios #3 | was named Hacero de refuerzo en nervios #3; resources Corsac - Acero de refuerzo en nervios #3 → none |
| 334 | Acero de refuerzo long. #3 | resources Corsac - Acero de refuerzo long. #3 → none |
| 335 | Acero de refuerzo long. #4 | resources Corsac - Acero de refuerzo long. #4 → none |
| 336 | Malla 66-10/10 losa de compresión | resources Corsac - Malla 66-10/10 losa de compresión → none |
| 337 | Acero de Losa Maciza | resources Corsac - Acero de Losa Maciza → none |
| 338 | Caseton de 60x60x20cm | resources Corsac - Caseton de 60x60x20cm → none |
| 339 | Concreto losa de entrepiso f’c=200 | resources Corsac - Concreto losa de entrepiso f’c=200 → none |
| 340 | Curado de concreto | resources Corsac - Curado de concreto → none |
| 341 | Cimbra losa de azotea | resources Corsac - Cimbra losa de entrepiso → none |
| 342 | Cimbra exterior corta losa | resources Corsac - Cimbra exterior corta losa → none |
| 343 | Ramaleo poliducto eléctrico entrepiso | resources Corsac - Ramaleo poliducto eléctrico entrepiso → none |
| 344 | Ramaleo hidráulico CPVC 3/4" | resources Corsac - Ramaleo hidráulico CPVC 3/4" → none |
| 345 | Ramaleo hidráulico CPVC 1/2" | resources Corsac - Ramaleo hidráulico CPVC 1/2" → none |
| 346 | Prueba hidráulica | resources Corsac - Prueba hidráulica → none |
| 347 | Ramaleo sanitario PVC 4" | resources Corsac - Ramaleo sanitario PVC 4" → none |
| 348 | Ramaleo sanitario PVC 2" | resources Corsac - Ramaleo sanitario PVC 2" → none |
| 349 | Prueba sanitaria | resources Corsac - Prueba sanitaria → none |
| 352 | Castillo K1 | resources Corsac - Castillo K1 → none |
| 353 | Castillo K2 | resources Corsac - Castillo K2 → none |
| 354 | Castillo K4 | resources Corsac - Castillo K4 → none |
| 355 | Castillo K5 | resources Corsac - Castillo K5 → none |
| 356 | Castillo K6 | resources Corsac - Castillo K6 → none |
| 357 | Refuerzo de muro | resources Corsac - Refuerzo de muro → none |
| 358 | Dala de cerramiento CR-1 | resources Corsac - Dala de cerramiento CR-1 → none |
| 359 | Dala de cerramiento CR-2 | resources Corsac - Dala de cerramiento CR-2 → none |
| 360 | Cadena block dala | resources Corsac - Cadena block dala → none |
| 361 | Muro de ladrillo aparente | resources Corsac - Muro de ladrillo aparente → none |
| 362 | Muro de block planta alta | resources Corsac - Muro de block planta alta → none |
| 363 | Ramaleo electrico en Muros Planta Alta | resources Corsac - Ramaleo electrico en Muros Planta Alta → none |
| 365 | Cortalosa CL-1 | resources Corsac - Cortalosa CL-1 → none |
| 366 | Cortalosa CL-2 | resources Corsac - Cortalosa CL-2 → none |
| 367 | Vigueta pretensada V11-30 125 | resources Corsac - Vigueta pretensada V11-30 125 → none |
| 368 | Vigueta pretensada V11-30 185 | resources Corsac - Vigueta pretensada V11-30 185 → none |
| 369 | Vigueta pretensada V11-30 190 | resources Corsac - Vigueta pretensada V11-30 190 → none |
| 370 | Vigueta pretensada V11-30 205 | resources Corsac - Vigueta pretensada V11-30 205 → none |
| 371 | Vigueta pretensada V11-30 215 | resources Corsac - Vigueta pretensada V11-30 215 → none |
| 372 | Vigueta pretensada V11-30 260 | resources Corsac - Vigueta pretensada V11-30 260 → none |
| 373 | Vigueta pretensada V11-30 285 | resources Corsac - Vigueta pretensada V11-30 285 → none |
| 374 | Vigueta pretensada V11-40 330 | resources Corsac - Vigueta pretensada V11-40 330 → none |
| 375 | Vigueta pretensada V11-40 335 | resources Corsac - Vigueta pretensada V11-40 335 → none |
| 376 | Vigueta pretensada V11-40 505 | resources Corsac - Vigueta pretensada V11-50 505 → none |
| 377 | Bovedilla poliestireno azotea | resources Corsac - Bovedilla poliestireno azotea → none |
| 378 | Malla 66-10/10 losa de compresión | resources Corsac - Malla 66-10/10 losa de compresión → none |
| 379 | Concreto losa de azotea f’c=200 | resources Corsac - Concreto losa de azotea f’c=200 → none |
| 380 | Curado de concreto | resources Corsac - Curado de concreto → none |
| 381 | Cimbra losa de azotea | resources Corsac - Cimbra losa de azotea → none |
| 382 | Ramaleo de poliducto para inst. electrica en azotea | resources Corsac - Ramaleo de poliducto para instalacion electrica en azotea → none |
| 384 | Castillo K1 | resources Corsac - Castillo K1 → none |
| 385 | Dala de cerramiento en pretil | resources Corsac - Dala de cerramiento en pretil → none |
| 386 | Muro de block 12x15x40 | was named Muro de ladrillo 7x14x28; resources Corsac - Muro de ladrillo 7x14x28 → none |
| 387 | Chaflán en azotea | resources Corsac - Chaflán en azotea → none |
| 388 | Diamante de entortado | resources Corsac - Diamante de entortado → none |
| 389 | Aplanado exterior Mortermax fino | resources Corsac - Aplanado exterior Mortermax fino → none |
| 390 | Entortado de Losa | resources Corsac - Entortado en Losa → none |
| 391 | Curado de concreto | resources Corsac - Curado de concreto → none |
| 393 | Primera limpieza de obra | resources Corsac - Primera limpieza de obra → none |
| 394 | Primera carga y acarreo de escombro | resources Corsac - Primera carga y acarreo de escombro → none |
| 396 | Impermeabilización de pretil Kover 5 años | resources Corsac - Impermeabilización de pretil Kover 5 años → none |
| 397 | Impermeabilización de losa Kover 5 años | resources Corsac - Impermeabilización de losa Kover 5 años → none |
| 399 | Lavadero de granito | resources Corsac - Lavadero de granito → none |
| 400 | Ranurado y resane general inst. en muros | resources Corsac - Ranurado y resane general inst. en muros → none |
| 401 | Ranurado y resane eléctrico 1/2 a 3/4 | resources Corsac - Ranurado y resane eléctrico 1/2" a 3/4" → none |
| 402 | Ranurado y resane hidráulico 1/2 a 1 | resources Corsac - Ranurado y resane hidráulico 1/2" a 1" → none |
| 403 | Resane sanitario tubería 2 | resources Corsac - Resane sanitario tubería 2" → none |
| 404 | Resane sanitario tubería 4 | resources Corsac - Resane sanitario tubería 4" → none |
| 405 | Resane minisplit tubería 3 | resources Corsac - Resane minisplit tubería 3" → none |

| ID | Task | Other |
| --- | --- | --- |
| 406 | Ramaleo hidráulico exterior CPVC 1 1/4 | resources Corsac - Ramal hidráulico exterior CPVC 1 1/4" → none |
| 407 | Ramaleo hidráulico exterior CPVC 1 | resources Corsac - Ramal hidráulico exterior CPVC 1" → none |
| 408 | Ramaleo hidráulico exterior CPVC 3/4 | resources Corsac - Ramal hidráulico exterior CPVC 3/4" → none |
| 409 | Ramaleo hidráulico exterior CPVC 1/2 | resources Corsac - Ramal hidráulico exterior CPVC 1/2" → none |
| 410 | Prueba hidráulica | resources Corsac - Prueba hidrostática ramal hidráulico → none |
| 411 | Ramaleo sanitario exterior PVC 4 | resources Corsac - Ramal sanitario exterior PVC 4" → none |
| 412 | Ramaleo sanitario exterior PVC 2 | resources Corsac - Ramal sanitario exterior PVC 2" → none |
| 413 | Prueba sanitaria | resources Corsac - Prueba instalación sanitaria → none |
| 414 | Centro de carga muros PB | resources Corsac - Centro de carga eléctrico en muros PB → none |
| 415 | Firme de concreto 8 cm | resources Corsac - Firme de concreto 8 cm f’c=200 → none |
| 416 | Curado de concreto | resources Corsac - Curado con membrana Sika → none |
| 417 | Cisterna 2800 L con instalación | resources Corsac - Nicho para cisterna 2.72x2.72x1.47 m → none |
| 418 | Banqueta y huellas de concreto | resources Corsac - Banqueta y huellas de concreto 10 cm → none |
| 419 | Curado de concreto | resources Corsac - Curado de concreto → none |
| 420 | Número oficial | resources Corsac - Número oficial → none |
| 421 | Detallado de rodapié exterior | resources Corsac - Detalle rodapié exterior acabado fino → none |
| 422 | Detalle de losas y volados acabado fino | resources Corsac - Detalle de losas y volados acabado fino → none |
| 423 | Detalle fino en muros interiores | resources Corsac - Detalle fino en muros interiores → none |
| 424 | Jardín interior bajo escalera con pozo de absorción | resources Corsac - Jardín interior bajo escalera con pozo de absorción → none |
| 426 | Aplanado grueso fachada | resources Corsac - Aplanado grueso fachada → none |
| 427 | Aplanado fino estuco fachada | resources Corsac - Aplanado fino estuco fachada → none |
| 428 | Pintura acrílica 1-0102P | resources Corsac - Pintura acrílica 1-0102P → none |
| 429 | Pintura acrílica 1-1404D | resources Corsac - Pintura acrílica 1-1404D → none |
| 430 | Cantera 40x60cm | resources Corsac - Cantera 40x60cm → none |
| 431 | Lambrin de permabase 1 cara | resources Corsac - Lambrin de permabase 1 cara → none |
| 432 | Enchapado de Permabase | resources Corsac - Enchapado de Permabase → none |
| 433 | Cubierta de Permabase | resources Corsac - Cubierta de Permabase → none |
| 435 | Yeso pulido en muros | resources Corsac - Yeso pulido en muros → none |
| 436 | Aplanado en muros enjarre grueso | resources Corsac - Aplanado en muros enjarre grueso → none |
| 437 | Pintura vinílica OR-W13 SHOELACE | resources Corsac - Pintura vinílica OR-W13 SHOELACE → none |
| 438 | Pintura vinílica PPUI5-13 Creamy M. | resources Corsac - Pintura vinílica PPUI5-13 Creamy M. → none |
| 439 | Pintura vinílica MD-06 Nano White | resources Corsac - Pintura vinílica MD-06 Nano White → none |
| 440 | Yeso pulido en plafones | resources Corsac - Yeso pulido en plafones → none |
| 441 | Perfilado de puertas y ventanas | resources Corsac - Perfilado de puertas y ventanas → none |
| 444 | Piso Adhara 44X89 | resources Corsac - Piso Adhara 44X89 → none |
| 445 | Zoclo Adhara 44X89 | resources Corsac - Zoclo Adhara 44X89 → none |
| 447 | Acabado aparente de pisos - pulido | resources Corsac - Acabado aparente de pisos - pulido → none |
| 449 | Azulejo Mod. Ornamenta 60x30 | resources Corsac - Azulejo Mod. Ornamenta 60x30 → none |
| 450 | Impermeabilización en regadera | resources Corsac - Impermeabilización en regadera → none |
| 451 | Piso Mod. Valparaiso 20x20 | resources Corsac - Piso Mod. Valparaiso 20x20 → none |
| 452 | Zoclo Adhara 44X89 | resources Corsac - Zoclo Adhara 44X89 → none |
| 453 | Piso Adhara 44X89 | resources Corsac - Piso Adhara 44X89 → none |
| 454 | Fabricacion de nicho decorativo en baños | resources Corsac - Fabricacion de nicho decorativo en baños → none |
| 455 | Sardinel en regadera | resources Corsac - Sardinel en regadera → none |
| 457 | Piso Adhara 44X89 | resources Corsac - Piso Adhara 44X89 → none |
| 458 | Zoclo Adhara 44X89 | resources Corsac - Zoclo Adhara 44X89 → none |
| 460 | Rastrilleo, afine y nivelado de tierra | resources Corsac - Rastrilleo, afine y nivelado de tierra → none |
| 462 | Segunda limpieza de obra | resources Corsac - Segunda limpieza de obra → none |
| 463 | Segunda carga y acarreo de escombro | resources Corsac - Segunda carga y acarreo de escombro → none |
| 465 | Fijo medidas 0.30x4.90m | resources Corsac - Fijo medidas 0.30x4.90m → none |
| 466 | Ventana Corrediza 1.80x1.60m | resources Corsac - Ventana Corrediza 1.80x1.60m → none |
| 467 | Ventana Corrediza 0.60x0.40m | resources Corsac - Ventana Corrediza 0.60x0.40m → none |
| 468 | Ventana Corrediza 1.54x0.50m | resources Corsac - Ventana Corrediza 1.54x0.50m → none |
| 469 | Fijo medidas 1.40x2.50m | resources Corsac - Fijo medidas 1.40x2.50m → none |
| 470 | Ventana Corrediza 1.80x1.50m | resources Corsac - Ventana Corrediza 1.80x1.50m → none |
| 471 | Ventana Corrediza 1.40x1.60m | resources Corsac - Ventana Corrediza 1.40x1.60m → none |
| 472 | Ventana Corrediza 0.95x0.40m | resources Corsac - Ventana Corrediza 0.95x0.40m → none |
| 473 | Puerta corrediza 3.85x2.10m | resources Corsac - Puerta corrediza 3.85x2.10m → none |
| 474 | Barandal de Cristal Templado | resources Corsac - Barandal de Cristal Templado → none |
| 476 | Puerta P-01 de seguridad | resources Corsac - Puerta P-01 de seguridad → none |
| 477 | Puerta P-01 interior | resources Corsac - Puerta P-01 interior → none |
| 478 | Puerta P-02 interior | resources Corsac - Puerta P-02 interior → none |
| 479 | Puerta P-03 interior | resources Corsac - Puerta P-03 interior → none |
| 480 | Puerta P-04 interior | resources Corsac - Puerta P-04 interior → none |
| 482 | Barandal de Herreria en escalera | resources Corsac - Barandal de Herreria en escalera → none |
| 483 | Escalera de herreria | resources Corsac - Escalera de herreria → none |
| 484 | Techumbre en acceso Principal | resources Corsac - Techumbre en acceso Principal → none |
| 485 | Techumbre en 1.80x0.50m | resources Corsac - Techumbre en 1.80x0.50m → none |
| 486 | Techumbre en 1.40x0.50m | resources Corsac - Techumbre en 1.40x0.50m → none |
| 487 | Imper con manto prefabricado | resources Corsac - Imper con manto prefabricado → none |

| ID | Task | Other |
| --- | --- | --- |
| 488 | Plafon hoja tablaroca std | resources Corsac - Plafon hoja tablaroca std → none |
| 489 | Acabado Woodstock en parte inf. Cubierta | resources Corsac - Acabado Woodstock en parte inf. Cubierta → none |
| 491 | Alimentación eléctrica base a centro de carga | resources Corsac - Instalación eléctrica base a centro de carga → none |
| 492 | Interruptor termomagnético 1x20 A | resources Corsac - Interruptor termomagnético 1x20 → none |
| 493 | Interruptor termomagnético 2x20 A | resources Corsac - Interruptor termomagnético 2x20 → none |
| 494 | Salida para apagador 3 vías | resources Corsac - Salida apagador 3 vías → none |
| 495 | Salida para apagador doble | resources Corsac - Salida apagador doble → none |
| 496 | Salida para apagador sencillo | resources Corsac - Salida apagador sencillo → none |
| 497 | Salida de alumbrado en losa | resources Corsac - Salida alumbrado en losa → none |
| 498 | Salida para contacto exterior doble | resources Corsac - Salida contacto exterior doble → none |
| 499 | Salida para contacto 220 V | resources Corsac - Salida contacto 220V exterior → none |
| 500 | Salida para contacto doble | resources Corsac - Salida contacto doble → none |
| 501 | Salida para contacto doble área húmeda | resources Corsac - Salida contacto área húmeda → none |
| 502 | Salida TV / telefonía / intercom | resources Corsac - Salida TV / telefonía / intercom → none |
| 503 | Extractor 4 baño | resources Corsac - Extractor 4” baño → none |
| 504 | Prueba eléctrica | resources Corsac - Prueba eléctrica → none |
| 506 | Tubería condensados PVC 1 | resources Corsac - Tubería condensados PVC 1" → none |
| 507 | Tubería sanitaria PVC 4 | resources Corsac - Tubería sanitaria PVC 4" → none |
| 508 | Coladera H-444 | resources Corsac - Coladera H-444 → none |
| 509 | Caja PVC para lavadora | resources Corsac - Caja PVC lavadora → none |
| 510 | Salida para secadora PVC 4 | resources Corsac - Salida secadora PVC 4" → none |
| 511 | Salida hidráulica para boiler | resources Corsac - Salida hidráulica boiler → none |
| 512 | Salida hidráulica para llave de jardín | resources Corsac - Salida llave de jardín → none |
| 513 | Salida hidráulica para lavabo | resources Corsac - Salida hidráulica lavabo → none |
| 514 | Salida hidráulica para purificación | resources Corsac - Salida hidráulica purificador → none |
| 515 | Salida sanitaria para lavabo | resources Corsac - Salida sanitaria lavabo → none |
| 516 | Salida hidráulica para lavadero | resources Corsac - Salida hidráulica lavadero → none |
| 517 | Salida sanitaria para lavadero | resources Corsac - Salida sanitaria lavadero → none |
| 518 | Salida hidráulica para lavadora | resources Corsac - Salida hidráulica lavadora → none |
| 519 | Salida sanitaria para lavadora | resources Corsac - Salida sanitaria lavadora 2" → none |
| 520 | Salida hidráulica para regadera | resources Corsac - Salida hidráulica regadera → none |
| 521 | Salida sanitaria para regadera | resources Corsac - Salida sanitaria regadera 2" → none |
| 522 | Salida hidráulica para WC | resources Corsac - Salida hidráulica WC → none |
| 523 | Salida sanitaria para WC | resources Corsac - Salida sanitaria WC 4" → none |
| 524 | Salida hidráulica para zinc | resources Corsac - Salida hidráulica zinc → none |
| 525 | Salida sanitaria para zinc | resources Corsac - Salida sanitaria zinc → none |
| 526 | Tubo para ventila de baño 2 | resources Corsac - Ventila baño PVC 2" → none |
| 527 | Tubo para minisplit PVC 3 | resources Corsac - Paso minisplit PVC 3" → none |
| 528 | Cuadro de medición | resources Corsac - Cuadro de medición columpio → none |
| 529 | Pozo de absorción 0.50x0.50x0.50 | resources Corsac - Pozo de absorción 0.50x0.50x0.50 → none |
| 530 | Prueba sanitaria final | resources Corsac - Prueba sanitaria final → none |
| 531 | Prueba hidrostática final | resources Corsac - Prueba hidrostática final → none |
| 532 | Salida válvula control 19 mm | resources Corsac - Salida válvula control 19 mm → none |
| 533 | Salida válvula control 13 mm | resources Corsac - Salida válvula control 13 mm → none |
| 534 | Salida hidráulica para tanque hidroneumático | resources Corsac - Salida tanque hidroneumático 1" → none |
| 535 | Salida hidráulica para Active Driver | resources Corsac - Salida Active Driver 1 1/4" → none |
| 537 | Ramaleo para gas 1/2 | resources Corsac - Ramaleo para gas 1/2" → none |
| 538 | Excavación a mano material tipo B | resources Corsac - Excavación a mano material tipo B → none |
| 540 | WC completo Austral | resources Corsac - WC completo Austral → none |
| 541 | Lavabo Senna con pedestal | resources Corsac - Lavabo Senna con pedestal → none |
| 542 | Tarja / lavabo combo Guinea 80x45 | resources Corsac - Tarja / lavabo combo Guinea 80x45 → none |
| 543 | Regadera con monomando | resources Corsac - Regadera con monomando → none |
| 544 | Coladera inserto cerámico | resources Corsac - Coladera inserto cerámico → none |
| 545 | Toallero sencillo | resources Corsac - Toallero sencillo → none |
| 546 | Toallero barra | resources Corsac - Toallero barra → none |
| 547 | Portapapel | resources Corsac - Portapapel → none |
| 548 | Gancho baño | resources Corsac - Gancho baño → none |
| 550 | Electronivel Rotoplas 5 m | resources Corsac - Electronivel Rotoplas → none |
| 551 | Manómetro | resources Corsac - Manómetro → none |
| 552 | Interruptor de presión 30-50 PSI | resources Corsac - Interruptor de presión 30-50 PSI → none |
| 553 | Tanque hidroneumático FPS-24LX | resources Corsac - Tanque hidroneumático FPS-24LX → none |
| 554 | Bomba sumergible Dominator 1.2 HP | resources Corsac - Bomba sumergible 1.2 HP → none |
| 555 | Cisterna prefabricada 2800 L | resources Corsac - Cisterna prefabricada 2800 L → none |
| 557 | Roseta cerámica | resources Corsac - Roseta cerámica → none |
| 558 | Luminaria lagartijera LED | resources Corsac - Luminaria lagartijera LED → none |
| 559 | Spot 6W Tecnolite | resources Corsac - Spot 6W Tecnolite → none |
| 560 | Spot 7W Tecnolite | resources Corsac - Spot 7W Tecnolite → none |
| 561 | Arbotante exterior | resources Corsac - Arbotante exterior → none |
| 562 | Estaca LED exterior | resources Corsac - Estaca LED exterior → none |
| 563 | Tira LED | resources Corsac - Tira LED → none |

| ID | Task | Start | Finish | Duration | Complete | Total float | Predecessors | Other |
| --- | --- | --- | --- | --- | --- | --- | --- | --- |
| 564 | Spot exterior 50W |  |  |  |  |  |  | resources Corsac - Spot exterior 50W → none |
| 566 | Timbre inalámbrico con bocina |  |  |  |  |  |  | resources Corsac - Timbre inalámbrico con bocina → none |
| 568 | Murete convencional |  |  |  |  |  |  | resources Corsac - Murete convencional → none |
| 569 | Barda de block aparente |  |  |  |  |  |  | resources Corsac - Barda de block → none |
| 571 | Limpieza fina para entrega |  |  |  |  |  |  | resources Corsac - Limpieza fina de casa → none |
| 572 | Tercera limpieza de obra |  |  |  |  |  |  | resources Corsac - Limpieza general exterior → none |
| 573 | Tercera carga y acarreo de escombro |  |  |  |  |  |  | resources Corsac - Carga y acarreo final de escombro → none |
| 574 | **LOTE 03 M-661 CORSAC-A** |  | 2027-01-04 → 2027-01-07 (+3d) | 178d → 181d | 3% → 5% | 13d → 10d |  | baseline finish 2027-01-04 → 2027-01-07 |
| 575 | **HITOS IMPORTANTES DEL LOTE** | 2026-05-29 A → 2026-05-20 A (-9d) | 2027-01-18 → 2027-01-07 (-11d) |  |  | 2d → 10d |  | baseline start 2026-05-29 → 2026-05-20; baseline finish 2027-01-18 → 2027-01-07 |
| 576 | Inicio del Lote-03 M-661 Corsac-A | 2026-05-29 A → 2026-05-20 A (-9d) | 2026-05-29 A → 2026-05-20 A (-9d) |  |  |  | 7 → 6 | was named Inicio del LOTE 20 M-663 ARTICO-A; baseline start 2026-05-29 → 2026-05-20; baseline finish 2026-05-29 → 2026-05-20 |
| 577 | Colado de Losa de Cimentación | 2026-06-19 → 2026-06-10 (-9d) | 2026-06-19 → 2026-06-10 (-9d) |  |  | 166d → 174d |  | baseline start 2026-06-19 → 2026-06-10; baseline finish 2026-06-19 → 2026-06-10 |
| 578 | Colado de Losa de Entrepiso | 2026-07-28 → 2026-07-17 (-11d) | 2026-07-28 → 2026-07-17 (-11d) |  |  | 136d → 144d |  | baseline start 2026-07-28 → 2026-07-17; baseline finish 2026-07-28 → 2026-07-17 |
| 579 | Colado de Losa de Azotea | 2026-09-02 → 2026-08-24 (-9d) | 2026-09-02 → 2026-08-24 (-9d) |  |  | 106d → 114d |  | baseline start 2026-09-02 → 2026-08-24; baseline finish 2026-09-02 → 2026-08-24 |
| 580 | Entrega de vivienda | 2027-01-18 → 2027-01-07 (-11d) | 2027-01-18 → 2027-01-07 (-11d) |  |  | 2d → 10d |  | baseline start 2027-01-18 → 2027-01-07; baseline finish 2027-01-18 → 2027-01-07 |
| 581 | **TRABAJOS PRELIMINARES** | 2026-05-29 A → 2026-05-20 A (-9d) | 2026-06-02 A → 2026-05-22 A (-11d) |  |  |  |  | baseline start 2026-05-29 → 2026-05-20; baseline finish 2026-06-02 → 2026-05-22 |
| 582 | Trazo y nivelación | 2026-05-29 A → 2026-05-20 A (-9d) | 2026-06-02 A → 2026-05-22 A (-11d) |  |  |  |  | resources Corsac - Trazo y nivelación → none; baseline start 2026-05-29 → 2026-05-20; baseline finish 2026-06-02 → 2026-05-22 |
| 583 | **EXCAVACIONES** | 2026-06-02 A → 2026-05-22 A (-11d) | 2026-06-05 → 2026-05-26 A (-10d) |  | 18% → 100% | 2d → none |  | baseline start 2026-06-02 → 2026-05-22; baseline finish 2026-06-05 → 2026-05-26 |
| 584 | Excavación a mano material tipo B | 2026-06-02 A → 2026-05-22 A (-11d) | 2026-06-05 → 2026-05-26 A (-10d) |  | 29% → 100% | 2d → none |  | baseline start 2026-06-02 → 2026-05-22; baseline finish 2026-06-05 → 2026-05-26 |
| 585 | Acarreo en carretilla 20 m | 2026-06-03 → 2026-05-23 A (-11d) | 2026-06-05 → 2026-05-26 A (-10d) |  | 0% → 100% | 2d → none |  | baseline start 2026-06-03 → 2026-05-23; baseline finish 2026-06-05 → 2026-05-26 |
| 586 | **CIMENTACION** | 2026-06-05 → 2026-05-26 A (-10d) | 2026-06-22 → 2026-06-11 (-11d) |  | 0% → 93% | 2d → 10d |  | baseline start 2026-06-05 → 2026-05-26; baseline finish 2026-06-22 → 2026-06-11 |
| 587 | Cimbra perimetral losa de cimentación | 2026-06-05 → 2026-05-26 A (-10d) | 2026-06-09 → 2026-05-29 A (-11d) |  | 0% → 100% | 2d → none |  | baseline start 2026-06-05 → 2026-05-26; baseline finish 2026-06-09 → 2026-05-29 |
| 588 | Sistema antitermitas PVC | 2026-06-05 → 2026-05-26 A (-10d) | 2026-06-09 → 2026-05-29 A (-11d) |  | 0% → 100% | 3d → none |  | baseline start 2026-06-05 → 2026-05-26; baseline finish 2026-06-09 → 2026-05-29 |
| 589 | Hule negro en cimentación | 2026-06-09 → 2026-05-29 A (-11d) | 2026-06-10 → 2026-06-01 A (-9d) |  | 0% → 100% | 3d → none |  | baseline start 2026-06-09 → 2026-05-29; baseline finish 2026-06-10 → 2026-06-01 |
| 590 | Ramaleo poliducto eléctrico cimentación | 2026-06-10 → 2026-06-01 A (-9d) | 2026-06-12 → 2026-06-03 A (-9d) |  | 0% → 100% | 6d → none |  | baseline start 2026-06-10 → 2026-06-01; baseline finish 2026-06-12 → 2026-06-03 |
| 591 | Ramaleo eléctrico base-medición a centro de carga | 2026-06-10 → 2026-06-01 A (-9d) | 2026-06-11 → 2026-06-02 A (-9d) |  | 0% → 100% | 7d → none |  | baseline start 2026-06-10 → 2026-06-01; baseline finish 2026-06-11 → 2026-06-02 |
| 592 | Ramaleo eléctrico exterior | 2026-06-12 → 2026-06-03 A (-9d) | 2026-06-13 → 2026-06-04 A (-9d) |  | 0% → 100% | 6d → none |  | baseline start 2026-06-12 → 2026-06-03; baseline finish 2026-06-13 → 2026-06-04 |
| 593 | Ramaleo para cable poliducto 3/4 | 2026-06-12 → 2026-06-03 A (-9d) | 2026-06-13 → 2026-06-04 A (-9d) |  | 0% → 100% | 6d → none |  | baseline start 2026-06-12 → 2026-06-03; baseline finish 2026-06-13 → 2026-06-04 |
| 594 | Ramaleo para TV poliducto 3/4 | 2026-06-12 → 2026-06-03 A (-9d) | 2026-06-13 → 2026-06-04 A (-9d) |  | 0% → 100% | 6d → none |  | baseline start 2026-06-12 → 2026-06-03; baseline finish 2026-06-13 → 2026-06-04 |
| 595 | Ramaleo hidráulico CPVC 1-1/4" cimentación | 2026-06-10 → 2026-06-01 A (-9d) | 2026-06-11 → 2026-06-02 A (-9d) |  | 0% → 100% | 3d → none |  | baseline start 2026-06-10 → 2026-06-01; baseline finish 2026-06-11 → 2026-06-02 |
| 596 | Ramaleo hidráulico CPVC 1 cimentación | 2026-06-10 → 2026-06-01 A (-9d) | 2026-06-11 → 2026-06-02 A (-9d) |  | 0% → 100% | 3d → none |  | baseline start 2026-06-10 → 2026-06-01; baseline finish 2026-06-11 → 2026-06-02 |
| 597 | Ramaleo hidráulico CPVC 3/4 cimentación | 2026-06-11 → 2026-06-02 A (-9d) | 2026-06-13 → 2026-06-04 A (-9d) |  | 0% → 100% | 3d → none |  | baseline start 2026-06-11 → 2026-06-02; baseline finish 2026-06-13 → 2026-06-04 |
| 598 | Ramaleo hidráulico CPVC 1/2 cimentación | 2026-06-13 → 2026-06-04 A (-9d) | 2026-06-16 → 2026-06-06 A (-10d) |  | 0% → 100% | 3d → none |  | baseline start 2026-06-13 → 2026-06-04; baseline finish 2026-06-16 → 2026-06-06 |
| 599 | Prueba hidráulica | 2026-06-16 → 2026-06-06 A (-10d) | 2026-06-17 → 2026-06-08 A (-9d) |  | 0% → 100% | 3d → none |  | baseline start 2026-06-16 → 2026-06-06; baseline finish 2026-06-17 → 2026-06-08 |
| 600 | Ramaleo sanitario PVC 4 cimentación | 2026-06-11 → 2026-06-02 A (-9d) | 2026-06-13 → 2026-06-04 A (-9d) |  | 0% → 100% | 4d → none |  | baseline start 2026-06-11 → 2026-06-02; baseline finish 2026-06-13 → 2026-06-04 |
| 601 | Ramaleo sanitario PVC 2 cimentación | 2026-06-13 → 2026-06-04 A (-9d) | 2026-06-15 → 2026-06-05 A (-10d) |  | 0% → 100% | 4d → none |  | baseline start 2026-06-13 → 2026-06-04; baseline finish 2026-06-15 → 2026-06-05 |
| 602 | Prueba sanitaria | 2026-06-15 → 2026-06-05 A (-10d) | 2026-06-16 → 2026-06-06 A (-10d) |  | 0% → 100% | 4d → none |  | baseline start 2026-06-15 → 2026-06-05; baseline finish 2026-06-16 → 2026-06-06 |
| 603 | Acero contratrabe CT-1 | 2026-06-09 → 2026-05-29 A (-11d) | 2026-06-13 → 2026-06-04 A (-9d) |  | 0% → 100% | 2d → none |  | baseline start 2026-06-09 → 2026-05-29; baseline finish 2026-06-13 → 2026-06-04 |
| 604 | Acero contratrabe CT-2 | 2026-06-09 → 2026-05-29 A (-11d) | 2026-06-13 → 2026-06-04 A (-9d) |  | 0% → 100% | 2d → none |  | baseline start 2026-06-09 → 2026-05-29; baseline finish 2026-06-13 → 2026-06-04 |
| 605 | Malla electrosoldada 6-6/8-8 | 2026-06-16 → 2026-06-06 A (-10d) | 2026-06-18 → 2026-06-09 (-9d) |  | 0% → 75% | 2d → 10d |  | baseline start 2026-06-16 → 2026-06-06; baseline finish 2026-06-18 → 2026-06-09 |
| 606 | Bastón de refuerzo LS | 2026-06-13 → 2026-06-04 A (-9d) | 2026-06-16 → 2026-06-06 A (-10d) |  | 0% → 100% | 2d → none |  | baseline start 2026-06-13 → 2026-06-04; baseline finish 2026-06-16 → 2026-06-06 |
| 607 | Bastón de refuerzo LI | 2026-06-13 → 2026-06-04 A (-9d) | 2026-06-16 → 2026-06-06 A (-10d) |  | 0% → 100% | 2d → none |  | baseline start 2026-06-13 → 2026-06-04; baseline finish 2026-06-16 → 2026-06-06 |
| 608 | Colado losa de cimentación f’c=200 | 2026-06-18 → 2026-06-09 (-9d) | 2026-06-19 → 2026-06-10 (-9d) |  |  | 2d → 10d |  | baseline start 2026-06-18 → 2026-06-09; baseline finish 2026-06-19 → 2026-06-10 |
| 609 | Curado de concreto | 2026-06-19 → 2026-06-10 (-9d) | 2026-06-22 → 2026-06-11 (-11d) |  |  | 2d → 10d |  | baseline start 2026-06-19 → 2026-06-10; baseline finish 2026-06-22 → 2026-06-11 |
| 610 | Acero zapata ZT-1 | 2026-06-13 → 2026-06-04 A (-9d) | 2026-06-18 → 2026-06-09 (-9d) |  | 0% → 88% | 2d → 10d |  | baseline start 2026-06-13 → 2026-06-04; baseline finish 2026-06-18 → 2026-06-09 |
| 611 | Acero zapata ZT-2 | 2026-06-13 → 2026-06-04 A (-9d) | 2026-06-18 → 2026-06-09 (-9d) |  | 0% → 88% | 2d → 10d |  | baseline start 2026-06-13 → 2026-06-04; baseline finish 2026-06-18 → 2026-06-09 |
| 612 | **MUROS, PLANTA BAJA. CASTILLOS Y CERRAMIENTOS** | 2026-06-15 → 2026-06-05 A (-10d) | 2026-07-09 → 2026-06-30 (-9d) |  | 0% → 4% | 7d → 158d |  | baseline start 2026-06-15 → 2026-06-05; baseline finish 2026-07-09 → 2026-06-30 |
| 613 | Anclaje de castillos y Columnas PB | 2026-06-15 → 2026-06-05 A (-10d) | 2026-06-22 → 2026-06-11 (-11d) |  | 0% → 50% | 153d → 161d |  | baseline start 2026-06-15 → 2026-06-05; baseline finish 2026-06-22 → 2026-06-11 |
| 614 | Castillo K1 | 2026-06-22 → 2026-06-11 (-11d) | 2026-06-26 → 2026-06-16 (-10d) |  |  | 153d → 161d |  | baseline start 2026-06-22 → 2026-06-11; baseline finish 2026-06-26 → 2026-06-16 |
| 615 | Castillo K3 | 2026-06-24 → 2026-06-13 (-11d) | 2026-06-27 → 2026-06-17 (-10d) |  |  | 153d → 161d |  | baseline start 2026-06-24 → 2026-06-13; baseline finish 2026-06-27 → 2026-06-17 |
| 616 | Castillo K4 | 2026-06-24 → 2026-06-13 (-11d) | 2026-06-27 → 2026-06-17 (-10d) |  |  | 153d → 161d |  | baseline start 2026-06-24 → 2026-06-13; baseline finish 2026-06-27 → 2026-06-17 |
| 617 | Castillo K5 | 2026-06-26 → 2026-06-16 (-10d) | 2026-06-30 → 2026-06-19 (-11d) |  |  | 153d → 161d |  | baseline start 2026-06-26 → 2026-06-16; baseline finish 2026-06-30 → 2026-06-19 |
| 618 | Refuerzo de muro K6 | 2026-06-27 → 2026-06-17 (-10d) | 2026-07-01 → 2026-06-22 (-9d) |  |  | 153d → 161d |  | baseline start 2026-06-27 → 2026-06-17; baseline finish 2026-07-01 → 2026-06-22 |
| 619 | Dala de cerramiento CR-1 | 2026-06-27 → 2026-06-17 (-10d) | 2026-07-02 → 2026-06-23 (-9d) |  |  | 156d → 164d |  | baseline start 2026-06-27 → 2026-06-17; baseline finish 2026-07-02 → 2026-06-23 |
| 620 | Dala de cerramiento CR-2 | 2026-06-27 → 2026-06-17 (-10d) | 2026-07-01 → 2026-06-22 (-9d) |  |  | 157d → 165d |  | baseline start 2026-06-27 → 2026-06-17; baseline finish 2026-07-01 → 2026-06-22 |
| 621 | Cadena block dala | 2026-07-01 → 2026-06-22 (-9d) | 2026-07-06 → 2026-06-26 (-10d) |  |  | 153d → 161d |  | baseline start 2026-07-01 → 2026-06-22; baseline finish 2026-07-06 → 2026-06-26 |
| 622 | Muro de ladrillo aparente | 2026-06-22 → 2026-06-11 (-11d) | 2026-07-09 → 2026-06-30 (-9d) |  |  | 2d → 10d |  | baseline start 2026-06-22 → 2026-06-11; baseline finish 2026-07-09 → 2026-06-30 |
| 623 | Muro de block planta baja | 2026-06-24 → 2026-06-13 (-11d) | 2026-07-09 → 2026-06-30 (-9d) |  |  | 2d → 10d |  | baseline start 2026-06-24 → 2026-06-13; baseline finish 2026-07-09 → 2026-06-30 |
| 624 | Ramaleo electrico en Muros Planta Baja | 2026-06-27 → 2026-06-17 (-10d) | 2026-07-02 → 2026-06-23 (-9d) |  |  | 5d → 13d |  | baseline start 2026-06-27 → 2026-06-17; baseline finish 2026-07-02 → 2026-06-23 |
| 625 | Ramaleo para cable poliducto 3/4 | 2026-07-02 → 2026-06-23 (-9d) | 2026-07-04 → 2026-06-25 (-9d) |  |  | 5d → 13d |  | baseline start 2026-07-02 → 2026-06-23; baseline finish 2026-07-04 → 2026-06-25 |
| 626 | Ramaleo para TV poliducto 3/4 | 2026-07-06 → 2026-06-25 (-11d) | 2026-07-08 → 2026-06-29 (-9d) |  |  | 5d → 13d |  | baseline start 2026-07-06 → 2026-06-25; baseline finish 2026-07-08 → 2026-06-29 |
| 627 | **ESCALERA** | 2026-07-28 → 2026-07-17 (-11d) | 2026-08-08 → 2026-07-30 (-9d) |  |  | 79d → 87d |  | baseline start 2026-07-28 → 2026-07-17; baseline finish 2026-08-08 → 2026-07-30 |
| 628 | Escalera de concreto armado | 2026-07-28 → 2026-07-17 (-11d) | 2026-08-08 → 2026-07-30 (-9d) |  |  | 79d → 87d |  | baseline start 2026-07-28 → 2026-07-17; baseline finish 2026-08-08 → 2026-07-30 |
| 629 | **LOSA DE ENTREPISO (viegueta y caseton)** | 2026-07-08 → 2026-06-27 (-11d) | 2026-07-29 → 2026-07-18 (-11d) |  |  | 5d → 13d |  | baseline start 2026-07-08 → 2026-06-27; baseline finish 2026-07-29 → 2026-07-18 |
| 630 | Dala de coronamiento 10cm | 2026-07-16 → 2026-07-07 (-9d) | 2026-07-20 → 2026-07-09 (-11d) |  |  | 5d → 13d |  | baseline start 2026-07-16 → 2026-07-07; baseline finish 2026-07-20 → 2026-07-09 |
| 631 | Dala de coronamiento 12cm | 2026-07-17 → 2026-07-08 (-9d) | 2026-07-21 → 2026-07-10 (-11d) |  |  | 4d → 12d |  | baseline start 2026-07-17 → 2026-07-08; baseline finish 2026-07-21 → 2026-07-10 |
| 632 | Trabe TR-1 | 2026-07-08 → 2026-06-27 (-11d) | 2026-07-10 → 2026-07-01 (-9d) |  |  | 6d → 14d |  | baseline start 2026-07-08 → 2026-06-27; baseline finish 2026-07-10 → 2026-07-01 |
| 633 | Trabe TR-2 | 2026-07-09 → 2026-06-29 (-10d) | 2026-07-14 → 2026-07-03 (-11d) |  |  | 4d → 12d |  | baseline start 2026-07-09 → 2026-06-29; baseline finish 2026-07-14 → 2026-07-03 |
| 634 | Nervadura NR-1 | 2026-07-10 → 2026-06-30 (-10d) | 2026-07-15 → 2026-07-04 (-11d) |  |  | 3d → 11d |  | baseline start 2026-07-10 → 2026-06-30; baseline finish 2026-07-15 → 2026-07-04 |
| 635 | Nervadura NR-2 | 2026-07-11 → 2026-07-01 (-10d) | 2026-07-16 → 2026-07-06 (-10d) |  |  | 2d → 10d |  | baseline start 2026-07-11 → 2026-07-01; baseline finish 2026-07-16 → 2026-07-06 |
| 636 | Nervadura NR-3 | 2026-07-11 → 2026-07-01 (-10d) | 2026-07-16 → 2026-07-06 (-10d) |  |  | 2d → 10d |  | baseline start 2026-07-11 → 2026-07-01; baseline finish 2026-07-16 → 2026-07-06 |

| ID | Task | Start | Finish | Total float | Other |
| --- | --- | --- | --- | --- | --- |
| 637 | Nervadura NR-4 | 2026-07-11 → 2026-07-01 (-10d) | 2026-07-16 → 2026-07-06 (-10d) | 2d → 10d | baseline start 2026-07-11 → 2026-07-01; baseline finish 2026-07-16 → 2026-07-06 |
| 638 | Acero de refuerzo en nervios #3 | 2026-07-16 → 2026-07-07 (-9d) | 2026-07-18 → 2026-07-08 (-10d) | 2d → 10d | baseline start 2026-07-16 → 2026-07-07; baseline finish 2026-07-18 → 2026-07-08 |
| 639 | Acero de refuerzo long. #3 | 2026-07-17 → 2026-07-08 (-9d) | 2026-07-21 → 2026-07-10 (-11d) | 3d → 11d | baseline start 2026-07-17 → 2026-07-08; baseline finish 2026-07-21 → 2026-07-10 |
| 640 | Acero de refuerzo long. #4 | 2026-07-17 → 2026-07-08 (-9d) | 2026-07-21 → 2026-07-10 (-11d) | 3d → 11d | baseline start 2026-07-17 → 2026-07-08; baseline finish 2026-07-21 → 2026-07-10 |
| 641 | Malla 66-10/10 losa de compresión | 2026-07-23 → 2026-07-14 (-9d) | 2026-07-27 → 2026-07-16 (-11d) | 2d → 10d | baseline start 2026-07-23 → 2026-07-14; baseline finish 2026-07-27 → 2026-07-16 |
| 642 | Acero de Losa Maciza | 2026-07-16 → 2026-07-07 (-9d) | 2026-07-20 → 2026-07-09 (-11d) | 7d → 15d | baseline start 2026-07-16 → 2026-07-07; baseline finish 2026-07-20 → 2026-07-09 |
| 643 | Caseton de 60x60x20cm | 2026-07-16 → 2026-07-07 (-9d) | 2026-07-18 → 2026-07-08 (-10d) | 6d → 14d | baseline start 2026-07-16 → 2026-07-07; baseline finish 2026-07-18 → 2026-07-08 |
| 644 | Concreto losa de entrepiso f’c=200 | 2026-07-27 → 2026-07-16 (-11d) | 2026-07-28 → 2026-07-17 (-11d) | 2d → 10d | baseline start 2026-07-27 → 2026-07-16; baseline finish 2026-07-28 → 2026-07-17 |
| 645 | Curado de concreto | 2026-07-28 → 2026-07-17 (-11d) | 2026-07-29 → 2026-07-18 (-11d) | 2d → 10d | baseline start 2026-07-28 → 2026-07-17; baseline finish 2026-07-29 → 2026-07-18 |
| 646 | Cimbra losa de azotea | 2026-07-11 → 2026-07-01 (-10d) | 2026-07-17 → 2026-07-07 (-10d) | 3d → 11d | baseline start 2026-07-11 → 2026-07-01; baseline finish 2026-07-17 → 2026-07-07 |
| 647 | Cimbra exterior corta losa | 2026-07-20 → 2026-07-10 (-10d) | 2026-07-23 → 2026-07-14 (-9d) | 4d → 12d | baseline start 2026-07-20 → 2026-07-10; baseline finish 2026-07-23 → 2026-07-14 |
| 648 | Ramaleo poliducto eléctrico entrepiso | 2026-07-18 → 2026-07-09 (-9d) | 2026-07-21 → 2026-07-10 (-11d) | 141d → 149d | baseline start 2026-07-18 → 2026-07-09; baseline finish 2026-07-21 → 2026-07-10 |
| 649 | Ramaleo hidráulico CPVC 3/4" | 2026-07-20 → 2026-07-10 (-10d) | 2026-07-22 → 2026-07-13 (-9d) | 2d → 10d | baseline start 2026-07-20 → 2026-07-10; baseline finish 2026-07-22 → 2026-07-13 |
| 650 | Ramaleo hidráulico CPVC 1/2" | 2026-07-22 → 2026-07-13 (-9d) | 2026-07-23 → 2026-07-14 (-9d) | 2d → 10d | baseline start 2026-07-22 → 2026-07-13; baseline finish 2026-07-23 → 2026-07-14 |
| 651 | Prueba hidráulica | 2026-07-22 → 2026-07-13 (-9d) | 2026-07-23 → 2026-07-14 (-9d) | 2d → 10d | baseline start 2026-07-22 → 2026-07-13; baseline finish 2026-07-23 → 2026-07-14 |
| 652 | Ramaleo sanitario PVC 4" | 2026-07-20 → 2026-07-10 (-10d) | 2026-07-22 → 2026-07-13 (-9d) | 2d → 10d | baseline start 2026-07-20 → 2026-07-10; baseline finish 2026-07-22 → 2026-07-13 |
| 653 | Ramaleo sanitario PVC 2" | 2026-07-22 → 2026-07-13 (-9d) | 2026-07-23 → 2026-07-14 (-9d) | 2d → 10d | baseline start 2026-07-22 → 2026-07-13; baseline finish 2026-07-23 → 2026-07-14 |
| 654 | Prueba sanitaria | 2026-07-22 → 2026-07-13 (-9d) | 2026-07-23 → 2026-07-14 (-9d) | 2d → 10d | baseline start 2026-07-22 → 2026-07-13; baseline finish 2026-07-23 → 2026-07-14 |
| 655 | **MUROS EN PLANTA ALTA, CASTILLOS Y CERRM.** | 2026-07-20 → 2026-07-10 (-10d) | 2026-08-17 → 2026-08-06 (-11d) | 3d → 11d | baseline start 2026-07-20 → 2026-07-10; baseline finish 2026-08-17 → 2026-08-06 |
| 656 | Anclaje de castillos y Columnas PA | 2026-07-20 → 2026-07-10 (-10d) | 2026-07-24 → 2026-07-15 (-9d) | 3d → 11d | baseline start 2026-07-20 → 2026-07-10; baseline finish 2026-07-24 → 2026-07-15 |
| 657 | Castillo K1 | 2026-07-29 → 2026-07-18 (-11d) | 2026-08-03 → 2026-07-23 (-11d) | 6d → 14d | baseline start 2026-07-29 → 2026-07-18; baseline finish 2026-08-03 → 2026-07-23 |
| 658 | Castillo K2 | 2026-07-30 → 2026-07-20 (-10d) | 2026-08-04 → 2026-07-24 (-11d) | 5d → 13d | baseline start 2026-07-30 → 2026-07-20; baseline finish 2026-08-04 → 2026-07-24 |
| 659 | Castillo K4 | 2026-08-03 → 2026-07-23 (-11d) | 2026-08-06 → 2026-07-28 (-9d) | 6d → 14d | baseline start 2026-08-03 → 2026-07-23; baseline finish 2026-08-06 → 2026-07-28 |
| 660 | Castillo K5 | 2026-08-03 → 2026-07-23 (-11d) | 2026-08-06 → 2026-07-28 (-9d) | 6d → 14d | baseline start 2026-08-03 → 2026-07-23; baseline finish 2026-08-06 → 2026-07-28 |
| 661 | Castillo K6 | 2026-08-03 → 2026-07-23 (-11d) | 2026-08-06 → 2026-07-28 (-9d) | 6d → 14d | baseline start 2026-08-03 → 2026-07-23; baseline finish 2026-08-06 → 2026-07-28 |
| 662 | Refuerzo de muro | 2026-08-04 → 2026-07-24 (-11d) | 2026-08-07 → 2026-07-29 (-9d) | 5d → 13d | baseline start 2026-08-04 → 2026-07-24; baseline finish 2026-08-07 → 2026-07-29 |
| 663 | Dala de cerramiento CR-1 | 2026-08-07 → 2026-07-29 (-9d) | 2026-08-12 → 2026-08-03 (-9d) | 5d → 13d | baseline start 2026-08-07 → 2026-07-29; baseline finish 2026-08-12 → 2026-08-03 |
| 664 | Dala de cerramiento CR-2 | 2026-08-07 → 2026-07-29 (-9d) | 2026-08-12 → 2026-08-03 (-9d) | 5d → 13d | baseline start 2026-08-07 → 2026-07-29; baseline finish 2026-08-12 → 2026-08-03 |
| 665 | Cadena block dala | 2026-08-12 → 2026-08-03 (-9d) | 2026-08-17 → 2026-08-06 (-11d) | 5d → 13d | baseline start 2026-08-12 → 2026-08-03; baseline finish 2026-08-17 → 2026-08-06 |
| 666 | Muro de ladrillo aparente | 2026-07-29 → 2026-07-18 (-11d) | 2026-08-17 → 2026-08-06 (-11d) | 2d → 10d | baseline start 2026-07-29 → 2026-07-18; baseline finish 2026-08-17 → 2026-08-06 |
| 667 | Muro de block planta alta | 2026-07-30 → 2026-07-20 (-10d) | 2026-08-17 → 2026-08-06 (-11d) | 2d → 10d | baseline start 2026-07-30 → 2026-07-20; baseline finish 2026-08-17 → 2026-08-06 |
| 668 | Ramaleo electrico en Muros Planta Alta | 2026-08-07 → 2026-07-29 (-9d) | 2026-08-12 → 2026-08-03 (-9d) | 13d → 21d | baseline start 2026-08-07 → 2026-07-29; baseline finish 2026-08-12 → 2026-08-03 |
| 669 | **LOSA AZOTEA** | 2026-08-17 → 2026-08-06 (-11d) | 2026-09-03 → 2026-08-25 (-9d) | 2d → 10d | baseline start 2026-08-17 → 2026-08-06; baseline finish 2026-09-03 → 2026-08-25 |
| 670 | Cortalosa CL-1 | 2026-08-31 → 2026-08-20 (-11d) | 2026-09-01 → 2026-08-22 (-10d) | 2d → 10d | baseline start 2026-08-31 → 2026-08-20; baseline finish 2026-09-01 → 2026-08-22 |
| 671 | Cortalosa CL-2 | 2026-08-31 → 2026-08-20 (-11d) | 2026-09-01 → 2026-08-22 (-10d) | 2d → 10d | baseline start 2026-08-31 → 2026-08-20; baseline finish 2026-09-01 → 2026-08-22 |
| 672 | Vigueta pretensada V11-30 125 | 2026-08-17 → 2026-08-06 (-11d) | 2026-08-22 → 2026-08-12 (-10d) | 5d → 13d | baseline start 2026-08-17 → 2026-08-06; baseline finish 2026-08-22 → 2026-08-12 |
| 673 | Vigueta pretensada V11-30 185 | 2026-08-17 → 2026-08-06 (-11d) | 2026-08-22 → 2026-08-12 (-10d) | 5d → 13d | baseline start 2026-08-17 → 2026-08-06; baseline finish 2026-08-22 → 2026-08-12 |
| 674 | Vigueta pretensada V11-30 190 | 2026-08-17 → 2026-08-06 (-11d) | 2026-08-22 → 2026-08-12 (-10d) | 5d → 13d | baseline start 2026-08-17 → 2026-08-06; baseline finish 2026-08-22 → 2026-08-12 |
| 675 | Vigueta pretensada V11-30 205 | 2026-08-19 → 2026-08-08 (-11d) | 2026-08-25 → 2026-08-14 (-11d) | 3d → 11d | baseline start 2026-08-19 → 2026-08-08; baseline finish 2026-08-25 → 2026-08-14 |
| 676 | Vigueta pretensada V11-30 215 | 2026-08-19 → 2026-08-08 (-11d) | 2026-08-25 → 2026-08-14 (-11d) | 3d → 11d | baseline start 2026-08-19 → 2026-08-08; baseline finish 2026-08-25 → 2026-08-14 |
| 677 | Vigueta pretensada V11-30 260 | 2026-08-20 → 2026-08-10 (-10d) | 2026-08-26 → 2026-08-17 (-9d) | 2d → 10d | baseline start 2026-08-20 → 2026-08-10; baseline finish 2026-08-26 → 2026-08-17 |
| 678 | Vigueta pretensada V11-30 285 | 2026-08-20 → 2026-08-10 (-10d) | 2026-08-26 → 2026-08-17 (-9d) | 2d → 10d | baseline start 2026-08-20 → 2026-08-10; baseline finish 2026-08-26 → 2026-08-17 |
| 679 | Vigueta pretensada V11-40 330 | 2026-08-20 → 2026-08-10 (-10d) | 2026-08-26 → 2026-08-17 (-9d) | 2d → 10d | baseline start 2026-08-20 → 2026-08-10; baseline finish 2026-08-26 → 2026-08-17 |
| 680 | Vigueta pretensada V11-40 335 | 2026-08-20 → 2026-08-10 (-10d) | 2026-08-26 → 2026-08-17 (-9d) | 2d → 10d | baseline start 2026-08-20 → 2026-08-10; baseline finish 2026-08-26 → 2026-08-17 |
| 681 | Vigueta pretensada V11-40 505 | 2026-08-20 → 2026-08-10 (-10d) | 2026-08-26 → 2026-08-17 (-9d) | 2d → 10d | baseline start 2026-08-20 → 2026-08-10; baseline finish 2026-08-26 → 2026-08-17 |
| 682 | Bovedilla poliestireno azotea | 2026-08-26 → 2026-08-17 (-9d) | 2026-08-29 → 2026-08-20 (-9d) | 2d → 10d | baseline start 2026-08-26 → 2026-08-17; baseline finish 2026-08-29 → 2026-08-20 |
| 683 | Malla 66-10/10 losa de compresión | 2026-08-31 → 2026-08-20 (-11d) | 2026-09-01 → 2026-08-22 (-10d) | 2d → 10d | baseline start 2026-08-31 → 2026-08-20; baseline finish 2026-09-01 → 2026-08-22 |
| 684 | Concreto losa de azotea f’c=200 | 2026-09-02 → 2026-08-22 (-11d) | 2026-09-02 → 2026-08-24 (-9d) | 2d → 10d | baseline start 2026-09-02 → 2026-08-22; baseline finish 2026-09-02 → 2026-08-24 |
| 685 | Curado de concreto | 2026-09-03 → 2026-08-24 (-10d) | 2026-09-03 → 2026-08-25 (-9d) | 2d → 10d | baseline start 2026-09-03 → 2026-08-24; baseline finish 2026-09-03 → 2026-08-25 |
| 686 | Cimbra losa de azotea | 2026-08-17 → 2026-08-06 (-11d) | 2026-08-22 → 2026-08-12 (-10d) | 10d → 18d | baseline start 2026-08-17 → 2026-08-06; baseline finish 2026-08-22 → 2026-08-12 |
| 687 | Ramaleo de poliducto para inst. electrica en azotea | 2026-08-31 → 2026-08-20 (-11d) | 2026-09-01 → 2026-08-22 (-10d) | 2d → 10d | baseline start 2026-08-31 → 2026-08-20; baseline finish 2026-09-01 → 2026-08-22 |
| 688 | **PRETIL Y ACABADOS DE AZOTEA** | 2026-09-04 → 2026-08-25 (-10d) | 2026-09-29 → 2026-09-18 (-11d) | 2d → 10d | baseline start 2026-09-04 → 2026-08-25; baseline finish 2026-09-29 → 2026-09-18 |
| 689 | Castillo K1 | 2026-09-07 → 2026-08-27 (-11d) | 2026-09-12 → 2026-09-02 (-10d) | 2d → 10d | baseline start 2026-09-07 → 2026-08-27; baseline finish 2026-09-12 → 2026-09-02 |
| 690 | Dala de cerramiento en pretil | 2026-09-10 → 2026-09-01 (-9d) | 2026-09-15 → 2026-09-04 (-11d) | 2d → 10d | baseline start 2026-09-10 → 2026-09-01; baseline finish 2026-09-15 → 2026-09-04 |
| 691 | Muro de block 12x15x40 | 2026-09-04 → 2026-08-25 (-10d) | 2026-09-10 → 2026-08-31 (-10d) | 2d → 10d | baseline start 2026-09-04 → 2026-08-25; baseline finish 2026-09-10 → 2026-08-31 |
| 692 | Chaflán en azotea | 2026-09-12 → 2026-09-03 (-9d) | 2026-09-18 → 2026-09-08 (-10d) | 2d → 10d | baseline start 2026-09-12 → 2026-09-03; baseline finish 2026-09-18 → 2026-09-08 |
| 693 | Diamante de entortado | 2026-09-12 → 2026-09-03 (-9d) | 2026-09-18 → 2026-09-08 (-10d) | 2d → 10d | baseline start 2026-09-12 → 2026-09-03; baseline finish 2026-09-18 → 2026-09-08 |
| 694 | Aplanado exterior Mortermax fino | 2026-09-15 → 2026-09-05 (-10d) | 2026-09-23 → 2026-09-11 (-12d) | 2d → 10d | baseline start 2026-09-15 → 2026-09-05; baseline finish 2026-09-23 → 2026-09-11 |
| 695 | Entortado de Losa | 2026-09-24 → 2026-09-12 (-12d) | 2026-09-29 → 2026-09-18 (-11d) | 2d → 10d | baseline start 2026-09-24 → 2026-09-12; baseline finish 2026-09-29 → 2026-09-18 |
| 696 | Curado de concreto | 2026-09-23 → 2026-09-11 (-12d) | 2026-09-24 → 2026-09-12 (-12d) | 2d → 10d | baseline start 2026-09-23 → 2026-09-11; baseline finish 2026-09-24 → 2026-09-12 |
| 697 | **PRIMERA LIMPIEZA DE OBRA** | 2026-09-04 → 2026-08-25 (-10d) | 2026-09-09 → 2026-08-29 (-11d) | 62d → 70d | baseline start 2026-09-04 → 2026-08-25; baseline finish 2026-09-09 → 2026-08-29 |
| 698 | Primera limpieza de obra | 2026-09-04 → 2026-08-25 (-10d) | 2026-09-07 → 2026-08-27 (-11d) | 62d → 70d | baseline start 2026-09-04 → 2026-08-25; baseline finish 2026-09-07 → 2026-08-27 |
| 699 | Primera carga y acarreo de escombro | 2026-09-07 → 2026-08-27 (-11d) | 2026-09-09 → 2026-08-29 (-11d) | 62d → 70d | baseline start 2026-09-07 → 2026-08-27; baseline finish 2026-09-09 → 2026-08-29 |
| 700 | **IMPERMEABILIZACION** | 2026-09-29 → 2026-09-18 (-11d) | 2026-10-05 → 2026-09-25 (-10d) | 2d → 10d | baseline start 2026-09-29 → 2026-09-18; baseline finish 2026-10-05 → 2026-09-25 |
| 701 | Impermeabilización de pretil Kover 5 años | 2026-09-29 → 2026-09-18 (-11d) | 2026-10-03 → 2026-09-24 (-9d) | 3d → 11d | baseline start 2026-09-29 → 2026-09-18; baseline finish 2026-10-03 → 2026-09-24 |
| 702 | Impermeabilización de losa Kover 5 años | 2026-09-29 → 2026-09-18 (-11d) | 2026-10-05 → 2026-09-25 (-10d) | 2d → 10d | baseline start 2026-09-29 → 2026-09-18; baseline finish 2026-10-05 → 2026-09-25 |
| 703 | **ALBAÑILERIA** | 2026-09-10 → 2026-09-01 (-9d) | 2026-11-28 → 2026-11-19 (-9d) | 21d → 29d | baseline start 2026-09-10 → 2026-09-01; baseline finish 2026-11-28 → 2026-11-19 |
| 704 | Lavadero de granito | 2026-10-26 → 2026-10-15 (-11d) | 2026-10-29 → 2026-10-20 (-9d) | 61d → 69d | baseline start 2026-10-26 → 2026-10-15; baseline finish 2026-10-29 → 2026-10-20 |
| 705 | Ranurado y resane general inst. en muros | 2026-10-02 → 2026-09-23 (-9d) | 2026-10-06 → 2026-09-26 (-10d) | 4d → 12d | baseline start 2026-10-02 → 2026-09-23; baseline finish 2026-10-06 → 2026-09-26 |
| 706 | Ranurado y resane eléctrico 1/2 a 3/4 | 2026-10-02 → 2026-09-23 (-9d) | 2026-10-06 → 2026-09-26 (-10d) | 4d → 12d | baseline start 2026-10-02 → 2026-09-23; baseline finish 2026-10-06 → 2026-09-26 |

| ID | Task | Start | Finish | Total float | Other |
| --- | --- | --- | --- | --- | --- |
| 707 | Ranurado y resane hidráulico 1/2 a 1 | 2026-10-05 → 2026-09-25 (-10d) | 2026-10-07 → 2026-09-28 (-9d) | 3d → 11d | baseline start 2026-10-05 → 2026-09-25; baseline finish 2026-10-07 → 2026-09-28 |
| 708 | Resane sanitario tubería 2 | 2026-10-05 → 2026-09-25 (-10d) | 2026-10-07 → 2026-09-28 (-9d) | 3d → 11d | baseline start 2026-10-05 → 2026-09-25; baseline finish 2026-10-07 → 2026-09-28 |
| 709 | Resane sanitario tubería 4 | 2026-10-05 → 2026-09-25 (-10d) | 2026-10-07 → 2026-09-28 (-9d) | 3d → 11d | baseline start 2026-10-05 → 2026-09-25; baseline finish 2026-10-07 → 2026-09-28 |
| 710 | Resane minisplit tubería 3 | 2026-10-05 → 2026-09-25 (-10d) | 2026-10-07 → 2026-09-28 (-9d) | 3d → 11d | baseline start 2026-10-05 → 2026-09-25; baseline finish 2026-10-07 → 2026-09-28 |
| 711 | Ramaleo hidráulico exterior CPVC 1 1/4 | 2026-10-05 → 2026-09-25 (-10d) | 2026-10-08 → 2026-09-29 (-9d) | 2d → 10d | baseline start 2026-10-05 → 2026-09-25; baseline finish 2026-10-08 → 2026-09-29 |
| 712 | Ramaleo hidráulico exterior CPVC 1 | 2026-10-05 → 2026-09-25 (-10d) | 2026-10-07 → 2026-09-28 (-9d) | 2d → 10d | baseline start 2026-10-05 → 2026-09-25; baseline finish 2026-10-07 → 2026-09-28 |
| 713 | Ramaleo hidráulico exterior CPVC 3/4 | 2026-10-07 → 2026-09-28 (-9d) | 2026-10-09 → 2026-09-30 (-9d) | 2d → 10d | baseline start 2026-10-07 → 2026-09-28; baseline finish 2026-10-09 → 2026-09-30 |
| 714 | Ramaleo hidráulico exterior CPVC 1/2 | 2026-10-07 → 2026-09-28 (-9d) | 2026-10-09 → 2026-09-30 (-9d) | 2d → 10d | baseline start 2026-10-07 → 2026-09-28; baseline finish 2026-10-09 → 2026-09-30 |
| 715 | Prueba hidráulica | 2026-10-09 → 2026-09-30 (-9d) | 2026-10-12 → 2026-10-01 (-11d) | 2d → 10d | baseline start 2026-10-09 → 2026-09-30; baseline finish 2026-10-12 → 2026-10-01 |
| 716 | Ramaleo sanitario exterior PVC 4 | 2026-10-05 → 2026-09-25 (-10d) | 2026-10-09 → 2026-09-30 (-9d) | 2d → 10d | baseline start 2026-10-05 → 2026-09-25; baseline finish 2026-10-09 → 2026-09-30 |
| 717 | Ramaleo sanitario exterior PVC 2 | 2026-10-06 → 2026-09-26 (-10d) | 2026-10-09 → 2026-09-30 (-9d) | 2d → 10d | baseline start 2026-10-06 → 2026-09-26; baseline finish 2026-10-09 → 2026-09-30 |
| 718 | Prueba sanitaria | 2026-10-09 → 2026-09-30 (-9d) | 2026-10-12 → 2026-10-01 (-11d) | 2d → 10d | baseline start 2026-10-09 → 2026-09-30; baseline finish 2026-10-12 → 2026-10-01 |
| 719 | Centro de carga muros PB | 2026-10-08 → 2026-09-29 (-9d) | 2026-10-14 → 2026-10-03 (-11d) | 4d → 12d | baseline start 2026-10-08 → 2026-09-29; baseline finish 2026-10-14 → 2026-10-03 |
| 720 | Firme de concreto 8 cm | 2026-10-12 → 2026-10-01 (-11d) | 2026-10-16 → 2026-10-06 (-10d) | 55d → 63d | baseline start 2026-10-12 → 2026-10-01; baseline finish 2026-10-16 → 2026-10-06 |
| 721 | Curado de concreto | 2026-10-16 → 2026-10-06 (-10d) | 2026-10-17 → 2026-10-07 (-10d) | 55d → 63d | baseline start 2026-10-16 → 2026-10-06; baseline finish 2026-10-17 → 2026-10-07 |
| 722 | Cisterna 2800 L con instalación | 2026-09-10 → 2026-09-01 (-9d) | 2026-10-03 → 2026-09-24 (-9d) | 61d → 69d | baseline start 2026-09-10 → 2026-09-01; baseline finish 2026-10-03 → 2026-09-24 |
| 723 | Banqueta y huellas de concreto | 2026-10-19 → 2026-10-08 (-11d) | 2026-10-28 → 2026-10-19 (-9d) | 38d → 46d | baseline start 2026-10-19 → 2026-10-08; baseline finish 2026-10-28 → 2026-10-19 |
| 724 | Curado de concreto | 2026-10-29 → 2026-10-19 (-10d) | 2026-10-29 → 2026-10-20 (-9d) | 38d → 46d | baseline start 2026-10-29 → 2026-10-19; baseline finish 2026-10-29 → 2026-10-20 |
| 725 | Número oficial | 2026-11-27 → 2026-11-18 (-9d) | 2026-11-28 → 2026-11-19 (-9d) | 38d → 46d | baseline start 2026-11-27 → 2026-11-18; baseline finish 2026-11-28 → 2026-11-19 |
| 726 | Detallado de rodapié exterior | 2026-10-14 → 2026-10-03 (-11d) | 2026-10-19 → 2026-10-08 (-11d) | 70d → 78d | baseline start 2026-10-14 → 2026-10-03; baseline finish 2026-10-19 → 2026-10-08 |
| 727 | Detalle de losas y volados acabado fino | 2026-10-05 → 2026-09-25 (-10d) | 2026-10-09 → 2026-09-30 (-9d) | 6d → 14d | baseline start 2026-10-05 → 2026-09-25; baseline finish 2026-10-09 → 2026-09-30 |
| 728 | Detalle fino en muros interiores | 2026-10-07 → 2026-09-28 (-9d) | 2026-10-14 → 2026-10-03 (-11d) | 3d → 11d | baseline start 2026-10-07 → 2026-09-28; baseline finish 2026-10-14 → 2026-10-03 |
| 729 | Jardín interior bajo escalera con pozo de absorción | 2026-10-05 → 2026-09-25 (-10d) | 2026-10-20 → 2026-10-09 (-11d) | 6d → 14d | baseline start 2026-10-05 → 2026-09-25; baseline finish 2026-10-20 → 2026-10-09 |
| 730 | **ACABADOS EN FACHADA A** | 2026-09-29 → 2026-09-18 (-11d) | 2026-11-27 → 2026-11-18 (-9d) | 38d → 46d | baseline start 2026-09-29 → 2026-09-18; baseline finish 2026-11-27 → 2026-11-18 |
| 731 | Aplanado grueso fachada | 2026-09-29 → 2026-09-18 (-11d) | 2026-10-14 → 2026-10-03 (-11d) | 44d → 52d | baseline start 2026-09-29 → 2026-09-18; baseline finish 2026-10-14 → 2026-10-03 |
| 732 | Aplanado fino estuco fachada | 2026-10-07 → 2026-09-28 (-9d) | 2026-10-20 → 2026-10-09 (-11d) | 44d → 52d | baseline start 2026-10-07 → 2026-09-28; baseline finish 2026-10-20 → 2026-10-09 |
| 733 | Pintura acrílica 1-0102P | 2026-11-13 → 2026-11-04 (-9d) | 2026-11-25 → 2026-11-13 (-12d) | 40d → 48d | baseline start 2026-11-13 → 2026-11-04; baseline finish 2026-11-25 → 2026-11-13 |
| 734 | Pintura acrílica 1-1404D | 2026-11-13 → 2026-11-04 (-9d) | 2026-11-27 → 2026-11-18 (-9d) | 38d → 46d | baseline start 2026-11-13 → 2026-11-04; baseline finish 2026-11-27 → 2026-11-18 |
| 735 | Cantera 40x60cm | 2026-10-20 → 2026-10-09 (-11d) | 2026-11-06 → 2026-10-27 (-10d) | 44d → 52d | baseline start 2026-10-20 → 2026-10-09; baseline finish 2026-11-06 → 2026-10-27 |
| 736 | Lambrin de permabase 1 cara | 2026-10-14 → 2026-10-03 (-11d) | 2026-10-17 → 2026-10-07 (-10d) | 51d → 59d | baseline start 2026-10-14 → 2026-10-03; baseline finish 2026-10-17 → 2026-10-07 |
| 737 | Enchapado de Permabase | 2026-10-17 → 2026-10-07 (-10d) | 2026-10-22 → 2026-10-13 (-9d) | 51d → 59d | baseline start 2026-10-17 → 2026-10-07; baseline finish 2026-10-22 → 2026-10-13 |
| 738 | Cubierta de Permabase | 2026-10-22 → 2026-10-13 (-9d) | 2026-10-28 → 2026-10-19 (-9d) | 51d → 59d | baseline start 2026-10-22 → 2026-10-13; baseline finish 2026-10-28 → 2026-10-19 |
| 739 | **APLANADOS Y PINTURA** | 2026-10-05 → 2026-09-25 (-10d) | 2026-12-23 → 2026-12-14 (-9d) | 4d → 12d | baseline start 2026-10-05 → 2026-09-25; baseline finish 2026-12-23 → 2026-12-14 |
| 740 | Yeso pulido en muros | 2026-10-15 → 2026-10-05 (-10d) | 2026-11-02 → 2026-10-22 (-11d) | 2d → 10d | baseline start 2026-10-15 → 2026-10-05; baseline finish 2026-11-02 → 2026-10-22 |
| 741 | Aplanado en muros enjarre grueso | 2026-10-05 → 2026-09-25 (-10d) | 2026-10-12 → 2026-10-01 (-11d) | 5d → 13d | baseline start 2026-10-05 → 2026-09-25; baseline finish 2026-10-12 → 2026-10-01 |
| 742 | Pintura vinílica OR-W13 SHOELACE | 2026-12-08 → 2026-11-27 (-11d) | 2026-12-23 → 2026-12-14 (-9d) | 2d → 10d | baseline start 2026-12-08 → 2026-11-27; baseline finish 2026-12-23 → 2026-12-14 |
| 743 | Pintura vinílica PPUI5-13 Creamy M. | 2026-12-01 → 2026-11-21 (-10d) | 2026-12-14 → 2026-12-03 (-11d) | 10d → 18d | baseline start 2026-12-01 → 2026-11-21; baseline finish 2026-12-14 → 2026-12-03 |
| 744 | Pintura vinílica MD-06 Nano White | 2026-12-01 → 2026-11-21 (-10d) | 2026-12-11 → 2026-12-01 (-10d) | 12d → 20d | baseline start 2026-12-01 → 2026-11-21; baseline finish 2026-12-11 → 2026-12-01 |
| 745 | Yeso pulido en plafones | 2026-10-05 → 2026-09-25 (-10d) | 2026-10-17 → 2026-10-07 (-10d) | 4d → 12d | baseline start 2026-10-05 → 2026-09-25; baseline finish 2026-10-17 → 2026-10-07 |
| 746 | Perfilado de puertas y ventanas | 2026-10-20 → 2026-10-09 (-11d) | 2026-10-24 → 2026-10-15 (-9d) | 65d → 73d | baseline start 2026-10-20 → 2026-10-09; baseline finish 2026-10-24 → 2026-10-15 |
| 747 | **PISOS Y AZULEJOS** | 2026-10-27 → 2026-10-16 (-11d) | 2026-11-26 → 2026-11-17 (-9d) | 2d → 10d | baseline start 2026-10-27 → 2026-10-16; baseline finish 2026-11-26 → 2026-11-17 |
| 748 | **AREA SOCIAL** | 2026-10-30 → 2026-10-20 (-10d) | 2026-11-19 → 2026-11-07 (-12d) | 2d → 10d | baseline start 2026-10-30 → 2026-10-20; baseline finish 2026-11-19 → 2026-11-07 |
| 749 | Piso Adhara 44X89 | 2026-10-30 → 2026-10-20 (-10d) | 2026-11-18 → 2026-11-06 (-12d) | 2d → 10d | baseline start 2026-10-30 → 2026-10-20; baseline finish 2026-11-18 → 2026-11-06 |
| 750 | Zoclo Adhara 44X89 | 2026-11-11 → 2026-11-02 (-9d) | 2026-11-19 → 2026-11-07 (-12d) | 19d → 27d | baseline start 2026-11-11 → 2026-11-02; baseline finish 2026-11-19 → 2026-11-07 |
| 751 | **RECAMARAS** | 2026-10-27 → 2026-10-16 (-11d) | 2026-11-05 → 2026-10-26 (-10d) | 2d → 10d | baseline start 2026-10-27 → 2026-10-16; baseline finish 2026-11-05 → 2026-10-26 |
| 752 | Acabado aparente de pisos - pulido | 2026-10-27 → 2026-10-16 (-11d) | 2026-11-05 → 2026-10-26 (-10d) | 2d → 10d | baseline start 2026-10-27 → 2026-10-16; baseline finish 2026-11-05 → 2026-10-26 |
| 753 | **BAÑOS** | 2026-10-28 → 2026-10-17 (-11d) | 2026-11-19 → 2026-11-07 (-12d) | 13d → 21d | baseline start 2026-10-28 → 2026-10-17; baseline finish 2026-11-19 → 2026-11-07 |
| 754 | Azulejo Mod. Ornamenta 60x30 | 2026-11-05 → 2026-10-27 (-9d) | 2026-11-11 → 2026-11-02 (-9d) | 13d → 21d | baseline start 2026-11-05 → 2026-10-27; baseline finish 2026-11-11 → 2026-11-02 |
| 755 | Impermeabilización en regadera | 2026-11-04 → 2026-10-26 (-9d) | 2026-11-06 → 2026-10-27 (-10d) | 13d → 21d | baseline start 2026-11-04 → 2026-10-26; baseline finish 2026-11-06 → 2026-10-27 |
| 756 | Piso Mod. Valparaiso 20x20 | 2026-11-11 → 2026-11-02 (-9d) | 2026-11-18 → 2026-11-06 (-12d) | 13d → 21d | baseline start 2026-11-11 → 2026-11-02; baseline finish 2026-11-18 → 2026-11-06 |
| 757 | Zoclo Adhara 44X89 | 2026-11-17 → 2026-11-05 (-12d) | 2026-11-19 → 2026-11-07 (-12d) | 46d → 54d | baseline start 2026-11-17 → 2026-11-05; baseline finish 2026-11-19 → 2026-11-07 |
| 758 | Piso Adhara 44X89 | 2026-11-11 → 2026-11-02 (-9d) | 2026-11-17 → 2026-11-05 (-12d) | 48d → 56d | baseline start 2026-11-11 → 2026-11-02; baseline finish 2026-11-17 → 2026-11-05 |
| 759 | Fabricacion de nicho decorativo en baños | 2026-10-28 → 2026-10-17 (-11d) | 2026-11-04 → 2026-10-24 (-11d) | 13d → 21d | baseline start 2026-10-28 → 2026-10-17; baseline finish 2026-11-04 → 2026-10-24 |
| 760 | Sardinel en regadera | 2026-11-11 → 2026-11-02 (-9d) | 2026-11-18 → 2026-11-06 (-12d) | 47d → 55d | baseline start 2026-11-11 → 2026-11-02; baseline finish 2026-11-18 → 2026-11-06 |
| 761 | **ESCALERA** | 2026-11-13 → 2026-11-04 (-9d) | 2026-11-26 → 2026-11-17 (-9d) | 2d → 10d | baseline start 2026-11-13 → 2026-11-04; baseline finish 2026-11-26 → 2026-11-17 |
| 762 | Piso Adhara 44X89 | 2026-11-13 → 2026-11-04 (-9d) | 2026-11-24 → 2026-11-12 (-12d) | 2d → 10d | baseline start 2026-11-13 → 2026-11-04; baseline finish 2026-11-24 → 2026-11-12 |
| 763 | Zoclo Adhara 44X89 | 2026-11-21 → 2026-11-10 (-11d) | 2026-11-26 → 2026-11-17 (-9d) | 2d → 10d | baseline start 2026-11-21 → 2026-11-10; baseline finish 2026-11-26 → 2026-11-17 |
| 764 | **EXTERIOR** | 2026-10-12 → 2026-10-01 (-11d) | 2026-10-15 → 2026-10-05 (-10d) | 7d → 15d | baseline start 2026-10-12 → 2026-10-01; baseline finish 2026-10-15 → 2026-10-05 |
| 765 | Rastrilleo, afine y nivelado de tierra | 2026-10-12 → 2026-10-01 (-11d) | 2026-10-15 → 2026-10-05 (-10d) | 7d → 15d | baseline start 2026-10-12 → 2026-10-01; baseline finish 2026-10-15 → 2026-10-05 |
| 766 | **SEGUNDA LIMPIEZA DE OBRA** | 2026-11-26 → 2026-11-17 (-9d) | 2026-12-01 → 2026-11-21 (-10d) | 25d → 33d | baseline start 2026-11-26 → 2026-11-17; baseline finish 2026-12-01 → 2026-11-21 |
| 767 | Segunda limpieza de obra | 2026-11-26 → 2026-11-17 (-9d) | 2026-11-28 → 2026-11-19 (-9d) | 25d → 33d | baseline start 2026-11-26 → 2026-11-17; baseline finish 2026-11-28 → 2026-11-19 |
| 768 | Segunda carga y acarreo de escombro | 2026-11-28 → 2026-11-19 (-9d) | 2026-12-01 → 2026-11-21 (-10d) | 25d → 33d | baseline start 2026-11-28 → 2026-11-19; baseline finish 2026-12-01 → 2026-11-21 |
| 769 | **CANCELERIA PUERTAS Y VENTANAS DE ALUMINIO** | 2026-11-13 → 2026-11-04 (-9d) | 2026-12-07 → 2026-11-26 (-11d) | 3d → 11d | baseline start 2026-11-13 → 2026-11-04; baseline finish 2026-12-07 → 2026-11-26 |
| 770 | Fijo medidas 0.30x4.90m | 2026-11-18 → 2026-11-06 (-12d) | 2026-11-26 → 2026-11-17 (-9d) | 11d → 19d | baseline start 2026-11-18 → 2026-11-06; baseline finish 2026-11-26 → 2026-11-17 |
| 771 | Ventana Corrediza 1.80x1.60m | 2026-11-13 → 2026-11-04 (-9d) | 2026-11-20 → 2026-11-09 (-11d) | 16d → 24d | baseline start 2026-11-13 → 2026-11-04; baseline finish 2026-11-20 → 2026-11-09 |
| 772 | Ventana Corrediza 0.60x0.40m | 2026-11-18 → 2026-11-06 (-12d) | 2026-11-23 → 2026-11-11 (-12d) | 14d → 22d | baseline start 2026-11-18 → 2026-11-06; baseline finish 2026-11-23 → 2026-11-11 |
| 773 | Ventana Corrediza 1.54x0.50m | 2026-11-18 → 2026-11-06 (-12d) | 2026-11-23 → 2026-11-11 (-12d) | 14d → 22d | baseline start 2026-11-18 → 2026-11-06; baseline finish 2026-11-23 → 2026-11-11 |
| 774 | Fijo medidas 1.40x2.50m | 2026-11-21 → 2026-11-10 (-11d) | 2026-11-26 → 2026-11-17 (-9d) | 5d → 13d | baseline start 2026-11-21 → 2026-11-10; baseline finish 2026-11-26 → 2026-11-17 |
| 775 | Ventana Corrediza 1.80x1.50m | 2026-11-24 → 2026-11-12 (-12d) | 2026-11-28 → 2026-11-19 (-9d) | 3d → 11d | baseline start 2026-11-24 → 2026-11-12; baseline finish 2026-11-28 → 2026-11-19 |
| 776 | Ventana Corrediza 1.40x1.60m | 2026-11-24 → 2026-11-12 (-12d) | 2026-11-28 → 2026-11-19 (-9d) | 3d → 11d | baseline start 2026-11-24 → 2026-11-12; baseline finish 2026-11-28 → 2026-11-19 |

| ID | Task | Start | Finish | Total float | Other |
| --- | --- | --- | --- | --- | --- |
| 777 | Ventana Corrediza 0.95x0.40m | 2026-11-24 → 2026-11-12 (-12d) | 2026-11-28 → 2026-11-19 (-9d) | 3d → 11d | baseline start 2026-11-24 → 2026-11-12; baseline finish 2026-11-28 → 2026-11-19 |
| 778 | Puerta corrediza 3.85x2.10m | 2026-11-26 → 2026-11-17 (-9d) | 2026-12-03 → 2026-11-24 (-9d) | 5d → 13d | baseline start 2026-11-26 → 2026-11-17; baseline finish 2026-12-03 → 2026-11-24 |
| 779 | Barandal de Cristal Templado | 2026-11-28 → 2026-11-19 (-9d) | 2026-12-07 → 2026-11-26 (-11d) | 3d → 11d | baseline start 2026-11-28 → 2026-11-19; baseline finish 2026-12-07 → 2026-11-26 |
| 780 | **CARPINTERIA, PUERTAS EXTERIORES E INTERIORES** | 2026-11-26 → 2026-11-17 (-9d) | 2026-12-08 → 2026-11-27 (-11d) | 2d → 10d | baseline start 2026-11-26 → 2026-11-17; baseline finish 2026-12-08 → 2026-11-27 |
| 781 | Puerta P-01 de seguridad | 2026-11-26 → 2026-11-17 (-9d) | 2026-12-02 → 2026-11-23 (-9d) | 6d → 14d | baseline start 2026-11-26 → 2026-11-17; baseline finish 2026-12-02 → 2026-11-23 |
| 782 | Puerta P-01 interior | 2026-11-26 → 2026-11-17 (-9d) | 2026-12-07 → 2026-11-26 (-11d) | 3d → 11d | baseline start 2026-11-26 → 2026-11-17; baseline finish 2026-12-07 → 2026-11-26 |
| 783 | Puerta P-02 interior | 2026-11-26 → 2026-11-17 (-9d) | 2026-12-07 → 2026-11-26 (-11d) | 3d → 11d | baseline start 2026-11-26 → 2026-11-17; baseline finish 2026-12-07 → 2026-11-26 |
| 784 | Puerta P-03 interior | 2026-12-02 → 2026-11-23 (-9d) | 2026-12-08 → 2026-11-27 (-11d) | 2d → 10d | baseline start 2026-12-02 → 2026-11-23; baseline finish 2026-12-08 → 2026-11-27 |
| 785 | Puerta P-04 interior | 2026-12-02 → 2026-11-23 (-9d) | 2026-12-08 → 2026-11-27 (-11d) | 2d → 10d | baseline start 2026-12-02 → 2026-11-23; baseline finish 2026-12-08 → 2026-11-27 |
| 786 | **VOLADOS, BARANDAL Y ESCALERA** | 2026-10-20 → 2026-10-09 (-11d) | 2026-12-01 → 2026-11-21 (-10d) | 10d → 18d | baseline start 2026-10-20 → 2026-10-09; baseline finish 2026-12-01 → 2026-11-21 |
| 787 | Barandal de Herreria en escalera | 2026-11-06 → 2026-10-28 (-9d) | 2026-11-11 → 2026-11-02 (-9d) | 25d → 33d | baseline start 2026-11-06 → 2026-10-28; baseline finish 2026-11-11 → 2026-11-02 |
| 788 | Escalera de herreria | 2026-10-20 → 2026-10-09 (-11d) | 2026-11-11 → 2026-11-02 (-9d) | 10d → 18d | baseline start 2026-10-20 → 2026-10-09; baseline finish 2026-11-11 → 2026-11-02 |
| 789 | Techumbre en acceso Principal | 2026-11-05 → 2026-10-27 (-9d) | 2026-11-24 → 2026-11-12 (-12d) | 16d → 24d | baseline start 2026-11-05 → 2026-10-27; baseline finish 2026-11-24 → 2026-11-12 |
| 790 | Techumbre en 1.80x0.50m | 2026-11-05 → 2026-10-27 (-9d) | 2026-11-13 → 2026-11-04 (-9d) | 10d → 18d | baseline start 2026-11-05 → 2026-10-27; baseline finish 2026-11-13 → 2026-11-04 |
| 791 | Techumbre en 1.40x0.50m | 2026-11-13 → 2026-11-04 (-9d) | 2026-11-24 → 2026-11-12 (-12d) | 10d → 18d | baseline start 2026-11-13 → 2026-11-04; baseline finish 2026-11-24 → 2026-11-12 |
| 792 | Imper con manto prefabricado | 2026-11-19 → 2026-11-07 (-12d) | 2026-11-25 → 2026-11-13 (-12d) | 10d → 18d | baseline start 2026-11-19 → 2026-11-07; baseline finish 2026-11-25 → 2026-11-13 |
| 793 | Plafon hoja tablaroca std | 2026-11-25 → 2026-11-13 (-12d) | 2026-12-01 → 2026-11-21 (-10d) | 10d → 18d | baseline start 2026-11-25 → 2026-11-13; baseline finish 2026-12-01 → 2026-11-21 |
| 794 | Acabado Woodstock en parte inf. Cubierta | 2026-11-25 → 2026-11-13 (-12d) | 2026-12-01 → 2026-11-21 (-10d) | 10d → 18d | baseline start 2026-11-25 → 2026-11-13; baseline finish 2026-12-01 → 2026-11-21 |
| 795 | **INSTALACION ELECTRICA** | 2026-10-28 → 2026-10-17 (-11d) | 2026-11-18 → 2026-11-06 (-12d) | 31d → 39d | baseline start 2026-10-28 → 2026-10-17; baseline finish 2026-11-18 → 2026-11-06 |
| 796 | Alimentación eléctrica base a centro de carga | 2026-11-02 → 2026-10-22 (-11d) | 2026-11-07 → 2026-10-28 (-10d) | 35d → 43d | baseline start 2026-11-02 → 2026-10-22; baseline finish 2026-11-07 → 2026-10-28 |
| 797 | Interruptor termomagnético 1x20 A | 2026-11-07 → 2026-10-29 (-9d) | 2026-11-09 → 2026-10-29 (-11d) | 35d → 43d | baseline start 2026-11-07 → 2026-10-29; baseline finish 2026-11-09 → 2026-10-29 |
| 798 | Interruptor termomagnético 2x20 A | 2026-11-07 → 2026-10-29 (-9d) | 2026-11-09 → 2026-10-29 (-11d) | 35d → 43d | baseline start 2026-11-07 → 2026-10-29; baseline finish 2026-11-09 → 2026-10-29 |
| 799 | Salida para apagador 3 vías | 2026-10-28 → 2026-10-17 (-11d) | 2026-11-02 → 2026-10-22 (-11d) | 31d → 39d | baseline start 2026-10-28 → 2026-10-17; baseline finish 2026-11-02 → 2026-10-22 |
| 800 | Salida para apagador doble | 2026-11-02 → 2026-10-22 (-11d) | 2026-11-05 → 2026-10-26 (-10d) | 33d → 41d | baseline start 2026-11-02 → 2026-10-22; baseline finish 2026-11-05 → 2026-10-26 |
| 801 | Salida para apagador sencillo | 2026-11-02 → 2026-10-22 (-11d) | 2026-11-05 → 2026-10-26 (-10d) | 33d → 41d | baseline start 2026-11-02 → 2026-10-22; baseline finish 2026-11-05 → 2026-10-26 |
| 802 | Salida de alumbrado en losa | 2026-11-02 → 2026-10-22 (-11d) | 2026-11-07 → 2026-10-28 (-10d) | 31d → 39d | baseline start 2026-11-02 → 2026-10-22; baseline finish 2026-11-07 → 2026-10-28 |
| 803 | Salida para contacto exterior doble | 2026-11-02 → 2026-10-22 (-11d) | 2026-11-04 → 2026-10-24 (-11d) | 34d → 42d | baseline start 2026-11-02 → 2026-10-22; baseline finish 2026-11-04 → 2026-10-24 |
| 804 | Salida para contacto 220 V | 2026-11-04 → 2026-10-26 (-9d) | 2026-11-07 → 2026-10-28 (-10d) | 31d → 39d | baseline start 2026-11-04 → 2026-10-26; baseline finish 2026-11-07 → 2026-10-28 |
| 805 | Salida para contacto doble | 2026-11-04 → 2026-10-26 (-9d) | 2026-11-10 → 2026-10-30 (-11d) | 34d → 42d | baseline start 2026-11-04 → 2026-10-26; baseline finish 2026-11-10 → 2026-10-30 |
| 806 | Salida para contacto doble área húmeda | 2026-11-07 → 2026-10-29 (-9d) | 2026-11-10 → 2026-10-30 (-11d) | 34d → 42d | baseline start 2026-11-07 → 2026-10-29; baseline finish 2026-11-10 → 2026-10-30 |
| 807 | Salida TV / telefonía / intercom | 2026-11-07 → 2026-10-29 (-9d) | 2026-11-12 → 2026-11-03 (-9d) | 32d → 40d | baseline start 2026-11-07 → 2026-10-29; baseline finish 2026-11-12 → 2026-11-03 |
| 808 | Extractor 4 baño | 2026-11-07 → 2026-10-29 (-9d) | 2026-11-13 → 2026-11-04 (-9d) | 31d → 39d | baseline start 2026-11-07 → 2026-10-29; baseline finish 2026-11-13 → 2026-11-04 |
| 809 | Prueba eléctrica | 2026-11-13 → 2026-11-04 (-9d) | 2026-11-18 → 2026-11-06 (-12d) | 31d → 39d | baseline start 2026-11-13 → 2026-11-04; baseline finish 2026-11-18 → 2026-11-06 |
| 810 | **INSTALACIÓN HIDRO-SANITARIA** | 2026-10-12 → 2026-10-01 (-11d) | 2026-10-24 → 2026-10-15 (-9d) | 2d → 10d | baseline start 2026-10-12 → 2026-10-01; baseline finish 2026-10-24 → 2026-10-15 |
| 811 | Tubería condensados PVC 1 | 2026-10-12 → 2026-10-01 (-11d) | 2026-10-17 → 2026-10-07 (-10d) | 2d → 10d | baseline start 2026-10-12 → 2026-10-01; baseline finish 2026-10-17 → 2026-10-07 |
| 812 | Tubería sanitaria PVC 4 | 2026-10-12 → 2026-10-01 (-11d) | 2026-10-17 → 2026-10-07 (-10d) | 10d → 18d | baseline start 2026-10-12 → 2026-10-01; baseline finish 2026-10-17 → 2026-10-07 |
| 813 | Coladera H-444 | 2026-10-17 → 2026-10-07 (-10d) | 2026-10-19 → 2026-10-08 (-11d) | 10d → 18d | baseline start 2026-10-17 → 2026-10-07; baseline finish 2026-10-19 → 2026-10-08 |
| 814 | Caja PVC para lavadora | 2026-10-12 → 2026-10-01 (-11d) | 2026-10-15 → 2026-10-05 (-10d) | 2d → 10d | baseline start 2026-10-12 → 2026-10-01; baseline finish 2026-10-15 → 2026-10-05 |
| 815 | Salida para secadora PVC 4 | 2026-10-12 → 2026-10-01 (-11d) | 2026-10-15 → 2026-10-05 (-10d) | 2d → 10d | baseline start 2026-10-12 → 2026-10-01; baseline finish 2026-10-15 → 2026-10-05 |
| 816 | Salida hidráulica para boiler | 2026-10-12 → 2026-10-01 (-11d) | 2026-10-14 → 2026-10-03 (-11d) | 3d → 11d | baseline start 2026-10-12 → 2026-10-01; baseline finish 2026-10-14 → 2026-10-03 |
| 817 | Salida hidráulica para llave de jardín | 2026-10-12 → 2026-10-01 (-11d) | 2026-10-15 → 2026-10-05 (-10d) | 2d → 10d | baseline start 2026-10-12 → 2026-10-01; baseline finish 2026-10-15 → 2026-10-05 |
| 818 | Salida hidráulica para lavabo | 2026-10-12 → 2026-10-01 (-11d) | 2026-10-16 → 2026-10-06 (-10d) | 2d → 10d | baseline start 2026-10-12 → 2026-10-01; baseline finish 2026-10-16 → 2026-10-06 |
| 819 | Salida hidráulica para purificación | 2026-10-12 → 2026-10-01 (-11d) | 2026-10-16 → 2026-10-06 (-10d) | 2d → 10d | baseline start 2026-10-12 → 2026-10-01; baseline finish 2026-10-16 → 2026-10-06 |
| 820 | Salida sanitaria para lavabo | 2026-10-14 → 2026-10-03 (-11d) | 2026-10-16 → 2026-10-06 (-10d) | 2d → 10d | baseline start 2026-10-14 → 2026-10-03; baseline finish 2026-10-16 → 2026-10-06 |
| 821 | Salida hidráulica para lavadero | 2026-10-14 → 2026-10-03 (-11d) | 2026-10-16 → 2026-10-06 (-10d) | 2d → 10d | baseline start 2026-10-14 → 2026-10-03; baseline finish 2026-10-16 → 2026-10-06 |
| 822 | Salida sanitaria para lavadero | 2026-10-15 → 2026-10-05 (-10d) | 2026-10-17 → 2026-10-07 (-10d) | 2d → 10d | baseline start 2026-10-15 → 2026-10-05; baseline finish 2026-10-17 → 2026-10-07 |
| 823 | Salida hidráulica para lavadora | 2026-10-15 → 2026-10-05 (-10d) | 2026-10-17 → 2026-10-07 (-10d) | 2d → 10d | baseline start 2026-10-15 → 2026-10-05; baseline finish 2026-10-17 → 2026-10-07 |
| 824 | Salida sanitaria para lavadora | 2026-10-16 → 2026-10-06 (-10d) | 2026-10-19 → 2026-10-08 (-11d) | 2d → 10d | baseline start 2026-10-16 → 2026-10-06; baseline finish 2026-10-19 → 2026-10-08 |
| 825 | Salida hidráulica para regadera | 2026-10-16 → 2026-10-06 (-10d) | 2026-10-22 → 2026-10-13 (-9d) | 7d → 15d | baseline start 2026-10-16 → 2026-10-06; baseline finish 2026-10-22 → 2026-10-13 |
| 826 | Salida sanitaria para regadera | 2026-10-16 → 2026-10-06 (-10d) | 2026-10-21 → 2026-10-12 (-9d) | 8d → 16d | baseline start 2026-10-16 → 2026-10-06; baseline finish 2026-10-21 → 2026-10-12 |
| 827 | Salida hidráulica para WC | 2026-10-14 → 2026-10-03 (-11d) | 2026-10-16 → 2026-10-06 (-10d) | 2d → 10d | baseline start 2026-10-14 → 2026-10-03; baseline finish 2026-10-16 → 2026-10-06 |
| 828 | Salida sanitaria para WC | 2026-10-16 → 2026-10-06 (-10d) | 2026-10-21 → 2026-10-12 (-9d) | 2d → 10d | baseline start 2026-10-16 → 2026-10-06; baseline finish 2026-10-21 → 2026-10-12 |
| 829 | Salida hidráulica para zinc | 2026-10-16 → 2026-10-06 (-10d) | 2026-10-21 → 2026-10-12 (-9d) | 2d → 10d | baseline start 2026-10-16 → 2026-10-06; baseline finish 2026-10-21 → 2026-10-12 |
| 830 | Salida sanitaria para zinc | 2026-10-19 → 2026-10-08 (-11d) | 2026-10-22 → 2026-10-13 (-9d) | 2d → 10d | baseline start 2026-10-19 → 2026-10-08; baseline finish 2026-10-22 → 2026-10-13 |
| 831 | Tubo para ventila de baño 2 | 2026-10-12 → 2026-10-01 (-11d) | 2026-10-17 → 2026-10-07 (-10d) | 2d → 10d | baseline start 2026-10-12 → 2026-10-01; baseline finish 2026-10-17 → 2026-10-07 |
| 832 | Tubo para minisplit PVC 3 | 2026-10-17 → 2026-10-07 (-10d) | 2026-10-23 → 2026-10-14 (-9d) | 2d → 10d | baseline start 2026-10-17 → 2026-10-07; baseline finish 2026-10-23 → 2026-10-14 |
| 833 | Cuadro de medición | 2026-10-15 → 2026-10-05 (-10d) | 2026-10-21 → 2026-10-12 (-9d) | 7d → 15d | baseline start 2026-10-15 → 2026-10-05; baseline finish 2026-10-21 → 2026-10-12 |
| 834 | Pozo de absorción 0.50x0.50x0.50 | 2026-10-15 → 2026-10-05 (-10d) | 2026-10-19 → 2026-10-08 (-11d) | 10d → 18d | baseline start 2026-10-15 → 2026-10-05; baseline finish 2026-10-19 → 2026-10-08 |
| 835 | Prueba sanitaria final | 2026-10-23 → 2026-10-14 (-9d) | 2026-10-24 → 2026-10-15 (-9d) | 6d → 14d | baseline start 2026-10-23 → 2026-10-14; baseline finish 2026-10-24 → 2026-10-15 |
| 836 | Prueba hidrostática final | 2026-10-22 → 2026-10-13 (-9d) | 2026-10-23 → 2026-10-14 (-9d) | 7d → 15d | baseline start 2026-10-22 → 2026-10-13; baseline finish 2026-10-23 → 2026-10-14 |
| 837 | Salida válvula control 19 mm | 2026-10-21 → 2026-10-12 (-9d) | 2026-10-22 → 2026-10-13 (-9d) | 7d → 15d | baseline start 2026-10-21 → 2026-10-12; baseline finish 2026-10-22 → 2026-10-13 |
| 838 | Salida válvula control 13 mm | 2026-10-21 → 2026-10-12 (-9d) | 2026-10-22 → 2026-10-13 (-9d) | 7d → 15d | baseline start 2026-10-21 → 2026-10-12; baseline finish 2026-10-22 → 2026-10-13 |
| 839 | Salida hidráulica para tanque hidroneumático | 2026-10-15 → 2026-10-05 (-10d) | 2026-10-19 → 2026-10-08 (-11d) | 10d → 18d | baseline start 2026-10-15 → 2026-10-05; baseline finish 2026-10-19 → 2026-10-08 |
| 840 | Salida hidráulica para Active Driver | 2026-10-15 → 2026-10-05 (-10d) | 2026-10-19 → 2026-10-08 (-11d) | 10d → 18d | baseline start 2026-10-15 → 2026-10-05; baseline finish 2026-10-19 → 2026-10-08 |
| 841 | **INSTALACION DE GAS** | 2026-10-08 → 2026-09-29 (-9d) | 2026-10-19 → 2026-10-08 (-11d) | 38d → 46d | baseline start 2026-10-08 → 2026-09-29; baseline finish 2026-10-19 → 2026-10-08 |
| 842 | Ramaleo para gas 1/2 | 2026-10-13 → 2026-10-02 (-11d) | 2026-10-19 → 2026-10-08 (-11d) | 38d → 46d | baseline start 2026-10-13 → 2026-10-02; baseline finish 2026-10-19 → 2026-10-08 |
| 843 | Excavación a mano material tipo B | 2026-10-08 → 2026-09-29 (-9d) | 2026-10-13 → 2026-10-02 (-11d) | 38d → 46d | baseline start 2026-10-08 → 2026-09-29; baseline finish 2026-10-13 → 2026-10-02 |
| 844 | **MUEBLES SANITARIOS** | 2026-11-18 → 2026-11-06 (-12d) | 2026-12-23 → 2026-12-14 (-9d) | 14d → 22d | baseline start 2026-11-18 → 2026-11-06; baseline finish 2026-12-23 → 2026-12-14 |
| 845 | WC completo Austral | 2026-11-18 → 2026-11-06 (-12d) | 2026-11-20 → 2026-11-09 (-11d) | 16d → 24d | baseline start 2026-11-18 → 2026-11-06; baseline finish 2026-11-20 → 2026-11-09 |
| 846 | Lavabo Senna con pedestal | 2026-11-18 → 2026-11-06 (-12d) | 2026-11-23 → 2026-11-11 (-12d) | 14d → 22d | baseline start 2026-11-18 → 2026-11-06; baseline finish 2026-11-23 → 2026-11-11 |

| ID | Task | Start | Finish | Duration | Complete | Total float | Predecessors | Other |
| --- | --- | --- | --- | --- | --- | --- | --- | --- |
| 847 | Tarja / lavabo combo Guinea 80x45 | 2026-11-18 → 2026-11-06 (-12d) | 2026-11-20 → 2026-11-09 (-11d) |  |  | 45d → 53d |  | baseline start 2026-11-18 → 2026-11-06; baseline finish 2026-11-20 → 2026-11-09 |
| 848 | Regadera con monomando | 2026-11-20 → 2026-11-09 (-11d) | 2026-11-24 → 2026-11-12 (-12d) |  |  | 13d → 21d |  | baseline start 2026-11-20 → 2026-11-09; baseline finish 2026-11-24 → 2026-11-12 |
| 849 | Coladera inserto cerámico | 2026-11-21 → 2026-11-10 (-11d) | 2026-11-24 → 2026-11-12 (-12d) |  |  | 13d → 21d |  | baseline start 2026-11-21 → 2026-11-10; baseline finish 2026-11-24 → 2026-11-12 |
| 850 | Toallero sencillo | 2026-12-23 → 2026-12-12 (-11d) | 2026-12-23 → 2026-12-14 (-9d) |  |  | 2d → 10d |  | baseline start 2026-12-23 → 2026-12-12; baseline finish 2026-12-23 → 2026-12-14 |
| 851 | Toallero barra | 2026-12-23 → 2026-12-12 (-11d) | 2026-12-23 → 2026-12-14 (-9d) |  |  | 2d → 10d |  | baseline start 2026-12-23 → 2026-12-12; baseline finish 2026-12-23 → 2026-12-14 |
| 852 | Portapapel | 2026-12-23 → 2026-12-12 (-11d) | 2026-12-23 → 2026-12-14 (-9d) |  |  | 2d → 10d |  | baseline start 2026-12-23 → 2026-12-12; baseline finish 2026-12-23 → 2026-12-14 |
| 853 | Gancho baño | 2026-12-23 → 2026-12-12 (-11d) | 2026-12-23 → 2026-12-14 (-9d) |  |  | 2d → 10d |  | baseline start 2026-12-23 → 2026-12-12; baseline finish 2026-12-23 → 2026-12-14 |
| 854 | **EQUIPAMIENTO** | 2026-10-02 → 2026-09-23 (-9d) | 2026-10-09 → 2026-09-30 (-9d) |  |  | 61d → 69d |  | baseline start 2026-10-02 → 2026-09-23; baseline finish 2026-10-09 → 2026-09-30 |
| 855 | Electronivel Rotoplas 5 m | 2026-10-03 → 2026-09-24 (-9d) | 2026-10-06 → 2026-09-26 (-10d) |  |  | 64d → 72d |  | baseline start 2026-10-03 → 2026-09-24; baseline finish 2026-10-06 → 2026-09-26 |
| 856 | Manómetro | 2026-10-03 → 2026-09-24 (-9d) | 2026-10-05 → 2026-09-25 (-10d) |  |  | 65d → 73d |  | baseline start 2026-10-03 → 2026-09-24; baseline finish 2026-10-05 → 2026-09-25 |
| 857 | Interruptor de presión 30-50 PSI | 2026-10-03 → 2026-09-24 (-9d) | 2026-10-05 → 2026-09-25 (-10d) |  |  | 65d → 73d |  | baseline start 2026-10-03 → 2026-09-24; baseline finish 2026-10-05 → 2026-09-25 |
| 858 | Tanque hidroneumático FPS-24LX | 2026-10-03 → 2026-09-24 (-9d) | 2026-10-07 → 2026-09-28 (-9d) |  |  | 61d → 69d |  | baseline start 2026-10-03 → 2026-09-24; baseline finish 2026-10-07 → 2026-09-28 |
| 859 | Bomba sumergible Dominator 1.2 HP | 2026-10-07 → 2026-09-28 (-9d) | 2026-10-09 → 2026-09-30 (-9d) |  |  | 61d → 69d |  | baseline start 2026-10-07 → 2026-09-28; baseline finish 2026-10-09 → 2026-09-30 |
| 860 | Cisterna prefabricada 2800 L | 2026-10-02 → 2026-09-23 (-9d) | 2026-10-03 → 2026-09-24 (-9d) |  |  | 61d → 69d |  | baseline start 2026-10-02 → 2026-09-23; baseline finish 2026-10-03 → 2026-09-24 |
| 861 | **LUMINARIAS** | 2026-11-07 → 2026-10-29 (-9d) | 2026-11-13 → 2026-11-04 (-9d) |  |  | 31d → 39d |  | baseline start 2026-11-07 → 2026-10-29; baseline finish 2026-11-13 → 2026-11-04 |
| 862 | Roseta cerámica | 2026-11-07 → 2026-10-29 (-9d) | 2026-11-11 → 2026-11-02 (-9d) |  |  | 33d → 41d |  | baseline start 2026-11-07 → 2026-10-29; baseline finish 2026-11-11 → 2026-11-02 |
| 863 | Luminaria lagartijera LED | 2026-11-07 → 2026-10-29 (-9d) | 2026-11-11 → 2026-11-02 (-9d) |  |  | 33d → 41d |  | baseline start 2026-11-07 → 2026-10-29; baseline finish 2026-11-11 → 2026-11-02 |
| 864 | Spot 6W Tecnolite | 2026-11-07 → 2026-10-29 (-9d) | 2026-11-11 → 2026-11-02 (-9d) |  |  | 33d → 41d |  | baseline start 2026-11-07 → 2026-10-29; baseline finish 2026-11-11 → 2026-11-02 |
| 865 | Spot 7W Tecnolite | 2026-11-07 → 2026-10-29 (-9d) | 2026-11-11 → 2026-11-02 (-9d) |  |  | 33d → 41d |  | baseline start 2026-11-07 → 2026-10-29; baseline finish 2026-11-11 → 2026-11-02 |
| 866 | Arbotante exterior | 2026-11-07 → 2026-10-29 (-9d) | 2026-11-10 → 2026-10-30 (-11d) |  |  | 31d → 39d |  | baseline start 2026-11-07 → 2026-10-29; baseline finish 2026-11-10 → 2026-10-30 |
| 867 | Estaca LED exterior | 2026-11-10 → 2026-10-31 (-10d) | 2026-11-13 → 2026-11-04 (-9d) |  |  | 31d → 39d |  | baseline start 2026-11-10 → 2026-10-31; baseline finish 2026-11-13 → 2026-11-04 |
| 868 | Tira LED | 2026-11-10 → 2026-10-31 (-10d) | 2026-11-13 → 2026-11-04 (-9d) |  |  | 31d → 39d |  | baseline start 2026-11-10 → 2026-10-31; baseline finish 2026-11-13 → 2026-11-04 |
| 869 | Spot exterior 50W | 2026-11-07 → 2026-10-29 (-9d) | 2026-11-10 → 2026-10-30 (-11d) |  |  | 34d → 42d |  | baseline start 2026-11-07 → 2026-10-29; baseline finish 2026-11-10 → 2026-10-30 |
| 870 | **TIMBRE** | 2026-11-09 → 2026-10-30 (-10d) | 2026-11-11 → 2026-11-02 (-9d) |  |  | 33d → 41d |  | baseline start 2026-11-09 → 2026-10-30; baseline finish 2026-11-11 → 2026-11-02 |
| 871 | Timbre inalámbrico con bocina | 2026-11-09 → 2026-10-30 (-10d) | 2026-11-11 → 2026-11-02 (-9d) |  |  | 33d → 41d |  | baseline start 2026-11-09 → 2026-10-30; baseline finish 2026-11-11 → 2026-11-02 |
| 872 | **OBRA EXTERIOR - BARDA** | 2026-10-15 → 2026-10-05 (-10d) | 2026-11-06 → 2026-10-27 (-10d) |  |  | 39d → 47d |  | baseline start 2026-10-15 → 2026-10-05; baseline finish 2026-11-06 → 2026-10-27 |
| 873 | Murete convencional | 2026-10-21 → 2026-10-12 (-9d) | 2026-10-27 → 2026-10-17 (-10d) |  |  | 45d → 53d |  | baseline start 2026-10-21 → 2026-10-12; baseline finish 2026-10-27 → 2026-10-17 |
| 874 | Barda de block aparente | 2026-10-15 → 2026-10-05 (-10d) | 2026-11-06 → 2026-10-27 (-10d) |  |  | 39d → 47d |  | baseline start 2026-10-15 → 2026-10-05; baseline finish 2026-11-06 → 2026-10-27 |
| 875 | **TERCER LIMPIEZA DE OBRA** | 2026-12-26 → 2026-12-14 (-12d) | 2027-01-18 → 2027-01-07 (-11d) |  |  | 2d → 10d |  | baseline start 2026-12-26 → 2026-12-14; baseline finish 2027-01-18 → 2027-01-07 |
| 876 | Limpieza fina para entrega | 2026-12-26 → 2026-12-14 (-12d) | 2027-01-04 → 2026-12-19 (-16d) |  |  | 2d → 10d |  | baseline start 2026-12-26 → 2026-12-14; baseline finish 2027-01-04 → 2026-12-19 |
| 877 | Tercera limpieza de obra | 2027-01-04 → 2026-12-21 (-14d) | 2027-01-11 → 2026-12-29 (-13d) |  |  | 2d → 10d |  | baseline start 2027-01-04 → 2026-12-21; baseline finish 2027-01-11 → 2026-12-29 |
| 878 | Tercera carga y acarreo de escombro | 2027-01-11 → 2026-12-29 (-13d) | 2027-01-18 → 2027-01-07 (-11d) |  |  | 2d → 10d |  | baseline start 2027-01-11 → 2026-12-29; baseline finish 2027-01-18 → 2027-01-07 |
| 879 | **LOTE 20 M-663 ARTICO-A** |  |  |  | 0% → 1% |  |  |  |
| 880 | **HITOS IMPORTANTES DEL LOTE** | 2026-05-20 A → 2026-05-29 A (+9d) | 2027-01-04 → 2027-01-18 (+14d) | 178d → 181d |  | 13d → 2d |  | baseline start 2026-05-20 → 2026-05-29; baseline finish 2027-01-04 → 2027-01-18 |
| 881 | Inicio del Lote-20 M-663 -Artico-A | 2026-05-20 A → 2026-05-29 A (+9d) | 2026-05-20 A → 2026-05-29 A (+9d) |  |  |  | 6 → 7 | was named Inicio del LOTE 03 M-661 CORSAC-A; baseline start 2026-05-20 → 2026-05-29; baseline finish 2026-05-20 → 2026-05-29 |
| 882 | Colado de Losa de Cimentación | 2026-06-10 → 2026-06-19 (+9d) | 2026-06-10 → 2026-06-19 (+9d) |  |  | 174d → 166d |  | baseline start 2026-06-10 → 2026-06-19; baseline finish 2026-06-10 → 2026-06-19 |
| 883 | Colado de Losa de Entrepiso | 2026-07-17 → 2026-07-28 (+11d) | 2026-07-17 → 2026-07-28 (+11d) |  |  | 144d → 136d |  | baseline start 2026-07-17 → 2026-07-28; baseline finish 2026-07-17 → 2026-07-28 |
| 884 | Colado de Losa de Azotea | 2026-08-24 → 2026-09-02 (+9d) | 2026-08-24 → 2026-09-02 (+9d) |  |  | 114d → 106d |  | baseline start 2026-08-24 → 2026-09-02; baseline finish 2026-08-24 → 2026-09-02 |
| 885 | Entrega de vivienda | 2027-01-04 → 2027-01-18 (+14d) | 2027-01-04 → 2027-01-18 (+14d) |  |  | 13d → 2d |  | baseline start 2027-01-04 → 2027-01-18; baseline finish 2027-01-04 → 2027-01-18 |
| 886 | **TRABAJOS PRELIMINARES** | 2026-05-20 A → 2026-05-29 A (+9d) | 2026-05-22 A → 2026-06-02 A (+11d) |  |  |  |  | baseline start 2026-05-20 → 2026-05-29; baseline finish 2026-05-22 → 2026-06-02 |
| 887 | Trazo y nivelación | 2026-05-20 A → 2026-05-29 A (+9d) | 2026-05-22 A → 2026-06-02 A (+11d) |  |  |  |  | resources Corsac - Trazo y nivelación → none; baseline start 2026-05-20 → 2026-05-29; baseline finish 2026-05-22 → 2026-06-02 |
| 888 | **EXCAVACIONES** | 2026-05-22 A → 2026-06-02 A (+11d) | 2026-05-26 A → 2026-06-05 A (+10d) |  |  |  |  | baseline start 2026-05-22 → 2026-06-02; baseline finish 2026-05-26 → 2026-06-05 |
| 889 | Excavación a mano material tipo B | 2026-05-22 A → 2026-06-02 A (+11d) | 2026-05-26 A → 2026-06-05 A (+10d) |  |  |  |  | baseline start 2026-05-22 → 2026-06-02; baseline finish 2026-05-26 → 2026-06-05 |
| 890 | Acarreo en carretilla 20 m | 2026-05-23 A → 2026-06-03 A (+11d) | 2026-05-26 A → 2026-06-05 A (+10d) |  |  |  |  | baseline start 2026-05-23 → 2026-06-03; baseline finish 2026-05-26 → 2026-06-05 |
| 891 | **CIMENTACION** | 2026-05-26 A → 2026-06-05 A (+10d) | 2026-06-11 → 2026-06-22 (+11d) |  | 40% → 10% | 13d → 2d |  | baseline start 2026-05-26 → 2026-06-05; baseline finish 2026-06-11 → 2026-06-22 |
| 892 | Cimbra perimetral losa de cimentación | 2026-05-26 A → 2026-06-05 A (+10d) | 2026-05-29 A → 2026-06-09 (+11d) |  | 100% → 83% | none → 2d |  | baseline start 2026-05-26 → 2026-06-05; baseline finish 2026-05-29 → 2026-06-09 |
| 893 | Sistema antitermitas PVC | 2026-05-26 A → 2026-06-05 A (+10d) | 2026-05-29 A → 2026-06-09 (+11d) |  | 100% → 83% | none → 3d |  | baseline start 2026-05-26 → 2026-06-05; baseline finish 2026-05-29 → 2026-06-09 |
| 894 | Hule negro en cimentación | 2026-05-29 A → 2026-06-09 (+11d) | 2026-06-01 A → 2026-06-10 (+9d) |  | 100% → 0% | none → 3d |  | baseline start 2026-05-29 → 2026-06-09; baseline finish 2026-06-01 → 2026-06-10 |
| 895 | Ramaleo poliducto eléctrico cimentación | 2026-06-01 A → 2026-06-10 (+9d) | 2026-06-03 → 2026-06-12 (+9d) |  | 94% → 0% | 17d → 6d |  | baseline start 2026-06-01 → 2026-06-10; baseline finish 2026-06-03 → 2026-06-12 |
| 896 | Ramaleo eléctrico base-medición a centro de carga | 2026-06-01 A → 2026-06-10 (+9d) | 2026-06-02 A → 2026-06-11 (+9d) |  | 100% → 0% | none → 7d |  | baseline start 2026-06-01 → 2026-06-10; baseline finish 2026-06-02 → 2026-06-11 |
| 897 | Ramaleo eléctrico exterior | 2026-06-03 → 2026-06-12 (+9d) | 2026-06-04 → 2026-06-13 (+9d) |  |  | 17d → 6d |  | baseline start 2026-06-03 → 2026-06-12; baseline finish 2026-06-04 → 2026-06-13 |
| 898 | Ramaleo para cable poliducto 3/4 | 2026-06-03 → 2026-06-12 (+9d) | 2026-06-04 → 2026-06-13 (+9d) |  |  | 17d → 6d |  | baseline start 2026-06-03 → 2026-06-12; baseline finish 2026-06-04 → 2026-06-13 |
| 899 | Ramaleo para TV poliducto 3/4 | 2026-06-03 → 2026-06-12 (+9d) | 2026-06-04 → 2026-06-13 (+9d) |  |  | 17d → 6d |  | baseline start 2026-06-03 → 2026-06-12; baseline finish 2026-06-04 → 2026-06-13 |
| 900 | Ramaleo hidráulico CPVC 1-1/4" cimentación | 2026-06-01 A → 2026-06-10 (+9d) | 2026-06-02 A → 2026-06-11 (+9d) |  | 100% → 0% | none → 3d |  | baseline start 2026-06-01 → 2026-06-10; baseline finish 2026-06-02 → 2026-06-11 |
| 901 | Ramaleo hidráulico CPVC 1 cimentación | 2026-06-01 A → 2026-06-10 (+9d) | 2026-06-02 A → 2026-06-11 (+9d) |  | 100% → 0% | none → 3d |  | baseline start 2026-06-01 → 2026-06-10; baseline finish 2026-06-02 → 2026-06-11 |
| 902 | Ramaleo hidráulico CPVC 3/4 cimentación | 2026-06-02 A → 2026-06-11 (+9d) | 2026-06-04 → 2026-06-13 (+9d) |  | 44% → 0% | 14d → 3d |  | baseline start 2026-06-02 → 2026-06-11; baseline finish 2026-06-04 → 2026-06-13 |
| 903 | Ramaleo hidráulico CPVC 1/2 cimentación | 2026-06-04 → 2026-06-13 (+9d) | 2026-06-06 → 2026-06-16 (+10d) |  |  | 14d → 3d |  | baseline start 2026-06-04 → 2026-06-13; baseline finish 2026-06-06 → 2026-06-16 |
| 904 | Prueba hidráulica | 2026-06-06 → 2026-06-16 (+10d) | 2026-06-08 → 2026-06-17 (+9d) |  |  | 14d → 3d |  | baseline start 2026-06-06 → 2026-06-16; baseline finish 2026-06-08 → 2026-06-17 |
| 905 | Ramaleo sanitario PVC 4 cimentación | 2026-06-02 A → 2026-06-11 (+9d) | 2026-06-04 → 2026-06-13 (+9d) |  | 44% → 0% | 15d → 4d |  | baseline start 2026-06-02 → 2026-06-11; baseline finish 2026-06-04 → 2026-06-13 |
| 906 | Ramaleo sanitario PVC 2 cimentación | 2026-06-04 → 2026-06-13 (+9d) | 2026-06-05 → 2026-06-15 (+10d) |  |  | 15d → 4d |  | baseline start 2026-06-04 → 2026-06-13; baseline finish 2026-06-05 → 2026-06-15 |
| 907 | Prueba sanitaria | 2026-06-05 → 2026-06-15 (+10d) | 2026-06-06 → 2026-06-16 (+10d) |  |  | 15d → 4d |  | baseline start 2026-06-05 → 2026-06-15; baseline finish 2026-06-06 → 2026-06-16 |
| 908 | Acero contratrabe CT-1 | 2026-05-29 A → 2026-06-09 (+11d) | 2026-06-04 → 2026-06-13 (+9d) |  | 72% → 0% | 13d → 2d |  | baseline start 2026-05-29 → 2026-06-09; baseline finish 2026-06-04 → 2026-06-13 |
| 909 | Acero contratrabe CT-2 | 2026-05-29 A → 2026-06-09 (+11d) | 2026-06-04 → 2026-06-13 (+9d) |  | 72% → 0% | 13d → 2d |  | baseline start 2026-05-29 → 2026-06-09; baseline finish 2026-06-04 → 2026-06-13 |
| 910 | Malla electrosoldada 6-6/8-8 | 2026-06-06 → 2026-06-16 (+10d) | 2026-06-09 → 2026-06-18 (+9d) |  |  | 13d → 2d |  | baseline start 2026-06-06 → 2026-06-16; baseline finish 2026-06-09 → 2026-06-18 |
| 911 | Bastón de refuerzo LS | 2026-06-04 → 2026-06-13 (+9d) | 2026-06-06 → 2026-06-16 (+10d) |  |  | 13d → 2d |  | baseline start 2026-06-04 → 2026-06-13; baseline finish 2026-06-06 → 2026-06-16 |
| 912 | Bastón de refuerzo LI | 2026-06-04 → 2026-06-13 (+9d) | 2026-06-06 → 2026-06-16 (+10d) |  |  | 13d → 2d |  | baseline start 2026-06-04 → 2026-06-13; baseline finish 2026-06-06 → 2026-06-16 |
| 913 | Colado losa de cimentación f’c=200 | 2026-06-09 → 2026-06-18 (+9d) | 2026-06-10 → 2026-06-19 (+9d) |  |  | 13d → 2d |  | baseline start 2026-06-09 → 2026-06-18; baseline finish 2026-06-10 → 2026-06-19 |
| 914 | Curado de concreto | 2026-06-10 → 2026-06-19 (+9d) | 2026-06-11 → 2026-06-22 (+11d) |  |  | 13d → 2d |  | baseline start 2026-06-10 → 2026-06-19; baseline finish 2026-06-11 → 2026-06-22 |
| 915 | Acero zapata ZT-1 | 2026-06-04 → 2026-06-13 (+9d) | 2026-06-09 → 2026-06-18 (+9d) |  |  | 13d → 2d |  | baseline start 2026-06-04 → 2026-06-13; baseline finish 2026-06-09 → 2026-06-18 |
| 916 | Acero zapata ZT-2 | 2026-06-04 → 2026-06-13 (+9d) | 2026-06-09 → 2026-06-18 (+9d) |  |  | 13d → 2d |  | baseline start 2026-06-04 → 2026-06-13; baseline finish 2026-06-09 → 2026-06-18 |

| ID | Task | Start | Finish | Total float | Other |
| --- | --- | --- | --- | --- | --- |
| 917 | **MUROS, PLANTA BAJA. CASTILLOS Y CERRAMIENTOS** | 2026-06-05 → 2026-06-15 (+10d) | 2026-06-30 → 2026-07-09 (+9d) | 18d → 7d | baseline start 2026-06-05 → 2026-06-15; baseline finish 2026-06-30 → 2026-07-09 |
| 918 | Anclaje de castillos y Columnas PB | 2026-06-05 → 2026-06-15 (+10d) | 2026-06-11 → 2026-06-22 (+11d) | 161d → 153d | baseline start 2026-06-05 → 2026-06-15; baseline finish 2026-06-11 → 2026-06-22 |
| 919 | Castillo K1 | 2026-06-11 → 2026-06-22 (+11d) | 2026-06-16 → 2026-06-26 (+10d) | 161d → 153d | baseline start 2026-06-11 → 2026-06-22; baseline finish 2026-06-16 → 2026-06-26 |
| 920 | Castillo K3 | 2026-06-13 → 2026-06-24 (+11d) | 2026-06-17 → 2026-06-27 (+10d) | 161d → 153d | baseline start 2026-06-13 → 2026-06-24; baseline finish 2026-06-17 → 2026-06-27 |
| 921 | Castillo K4 | 2026-06-13 → 2026-06-24 (+11d) | 2026-06-17 → 2026-06-27 (+10d) | 161d → 153d | baseline start 2026-06-13 → 2026-06-24; baseline finish 2026-06-17 → 2026-06-27 |
| 922 | Castillo K5 | 2026-06-16 → 2026-06-26 (+10d) | 2026-06-19 → 2026-06-30 (+11d) | 161d → 153d | baseline start 2026-06-16 → 2026-06-26; baseline finish 2026-06-19 → 2026-06-30 |
| 923 | Refuerzo de muro K6 | 2026-06-17 → 2026-06-27 (+10d) | 2026-06-22 → 2026-07-01 (+9d) | 161d → 153d | baseline start 2026-06-17 → 2026-06-27; baseline finish 2026-06-22 → 2026-07-01 |
| 924 | Dala de cerramiento CR-1 | 2026-06-17 → 2026-06-27 (+10d) | 2026-06-23 → 2026-07-02 (+9d) | 164d → 156d | baseline start 2026-06-17 → 2026-06-27; baseline finish 2026-06-23 → 2026-07-02 |
| 925 | Dala de cerramiento CR-2 | 2026-06-17 → 2026-06-27 (+10d) | 2026-06-22 → 2026-07-01 (+9d) | 165d → 157d | baseline start 2026-06-17 → 2026-06-27; baseline finish 2026-06-22 → 2026-07-01 |
| 926 | Cadena block dala | 2026-06-22 → 2026-07-01 (+9d) | 2026-06-26 → 2026-07-06 (+10d) | 161d → 153d | baseline start 2026-06-22 → 2026-07-01; baseline finish 2026-06-26 → 2026-07-06 |
| 927 | Muro de ladrillo aparente | 2026-06-11 → 2026-06-22 (+11d) | 2026-06-30 → 2026-07-09 (+9d) | 13d → 2d | baseline start 2026-06-11 → 2026-06-22; baseline finish 2026-06-30 → 2026-07-09 |
| 928 | Muro de block planta baja | 2026-06-13 → 2026-06-24 (+11d) | 2026-06-30 → 2026-07-09 (+9d) | 13d → 2d | baseline start 2026-06-13 → 2026-06-24; baseline finish 2026-06-30 → 2026-07-09 |
| 929 | Ramaleo electrico en Muros Planta Baja | 2026-06-17 → 2026-06-27 (+10d) | 2026-06-23 → 2026-07-02 (+9d) | 16d → 5d | baseline start 2026-06-17 → 2026-06-27; baseline finish 2026-06-23 → 2026-07-02 |
| 930 | Ramaleo para cable poliducto 3/4 | 2026-06-23 → 2026-07-02 (+9d) | 2026-06-25 → 2026-07-04 (+9d) | 16d → 5d | baseline start 2026-06-23 → 2026-07-02; baseline finish 2026-06-25 → 2026-07-04 |
| 931 | Ramaleo para TV poliducto 3/4 | 2026-06-25 → 2026-07-06 (+11d) | 2026-06-29 → 2026-07-08 (+9d) | 16d → 5d | baseline start 2026-06-25 → 2026-07-06; baseline finish 2026-06-29 → 2026-07-08 |
| 932 | **ESCALERA** | 2026-07-17 → 2026-07-28 (+11d) | 2026-07-30 → 2026-08-08 (+9d) | 90d → 79d | baseline start 2026-07-17 → 2026-07-28; baseline finish 2026-07-30 → 2026-08-08 |
| 933 | Escalera de concreto armado | 2026-07-17 → 2026-07-28 (+11d) | 2026-07-30 → 2026-08-08 (+9d) | 90d → 79d | baseline start 2026-07-17 → 2026-07-28; baseline finish 2026-07-30 → 2026-08-08 |
| 934 | **LOSA DE ENTREPISO (viegueta y caseton)** | 2026-06-27 → 2026-07-08 (+11d) | 2026-07-18 → 2026-07-29 (+11d) | 16d → 5d | baseline start 2026-06-27 → 2026-07-08; baseline finish 2026-07-18 → 2026-07-29 |
| 935 | Dala de coronamiento 10cm | 2026-07-07 → 2026-07-16 (+9d) | 2026-07-09 → 2026-07-20 (+11d) | 16d → 5d | baseline start 2026-07-07 → 2026-07-16; baseline finish 2026-07-09 → 2026-07-20 |
| 936 | Dala de coronamiento 12cm | 2026-07-08 → 2026-07-17 (+9d) | 2026-07-10 → 2026-07-21 (+11d) | 15d → 4d | baseline start 2026-07-08 → 2026-07-17; baseline finish 2026-07-10 → 2026-07-21 |
| 937 | Trabe TR-1 | 2026-06-27 → 2026-07-08 (+11d) | 2026-07-01 → 2026-07-10 (+9d) | 17d → 6d | baseline start 2026-06-27 → 2026-07-08; baseline finish 2026-07-01 → 2026-07-10 |
| 938 | Trabe TR-2 | 2026-06-29 → 2026-07-09 (+10d) | 2026-07-03 → 2026-07-14 (+11d) | 15d → 4d | baseline start 2026-06-29 → 2026-07-09; baseline finish 2026-07-03 → 2026-07-14 |
| 939 | Nervadura NR-1 | 2026-06-30 → 2026-07-10 (+10d) | 2026-07-04 → 2026-07-15 (+11d) | 14d → 3d | baseline start 2026-06-30 → 2026-07-10; baseline finish 2026-07-04 → 2026-07-15 |
| 940 | Nervadura NR-2 | 2026-07-01 → 2026-07-11 (+10d) | 2026-07-06 → 2026-07-16 (+10d) | 13d → 2d | baseline start 2026-07-01 → 2026-07-11; baseline finish 2026-07-06 → 2026-07-16 |
| 941 | Nervadura NR-3 | 2026-07-01 → 2026-07-11 (+10d) | 2026-07-06 → 2026-07-16 (+10d) | 13d → 2d | baseline start 2026-07-01 → 2026-07-11; baseline finish 2026-07-06 → 2026-07-16 |
| 942 | Nervadura NR-4 | 2026-07-01 → 2026-07-11 (+10d) | 2026-07-06 → 2026-07-16 (+10d) | 13d → 2d | baseline start 2026-07-01 → 2026-07-11; baseline finish 2026-07-06 → 2026-07-16 |
| 943 | Acero de refuerzo en nervios #3 | 2026-07-07 → 2026-07-16 (+9d) | 2026-07-08 → 2026-07-18 (+10d) | 13d → 2d | baseline start 2026-07-07 → 2026-07-16; baseline finish 2026-07-08 → 2026-07-18 |
| 944 | Acero de refuerzo long. #3 | 2026-07-08 → 2026-07-17 (+9d) | 2026-07-10 → 2026-07-21 (+11d) | 14d → 3d | baseline start 2026-07-08 → 2026-07-17; baseline finish 2026-07-10 → 2026-07-21 |
| 945 | Acero de refuerzo long. #4 | 2026-07-08 → 2026-07-17 (+9d) | 2026-07-10 → 2026-07-21 (+11d) | 14d → 3d | baseline start 2026-07-08 → 2026-07-17; baseline finish 2026-07-10 → 2026-07-21 |
| 946 | Malla 66-10/10 losa de compresión | 2026-07-14 → 2026-07-23 (+9d) | 2026-07-16 → 2026-07-27 (+11d) | 13d → 2d | baseline start 2026-07-14 → 2026-07-23; baseline finish 2026-07-16 → 2026-07-27 |
| 947 | Acero de Losa Maciza | 2026-07-07 → 2026-07-16 (+9d) | 2026-07-09 → 2026-07-20 (+11d) | 18d → 7d | baseline start 2026-07-07 → 2026-07-16; baseline finish 2026-07-09 → 2026-07-20 |
| 948 | Caseton de 60x60x20cm | 2026-07-07 → 2026-07-16 (+9d) | 2026-07-08 → 2026-07-18 (+10d) | 17d → 6d | baseline start 2026-07-07 → 2026-07-16; baseline finish 2026-07-08 → 2026-07-18 |
| 949 | Concreto losa de entrepiso f’c=200 | 2026-07-16 → 2026-07-27 (+11d) | 2026-07-17 → 2026-07-28 (+11d) | 13d → 2d | baseline start 2026-07-16 → 2026-07-27; baseline finish 2026-07-17 → 2026-07-28 |
| 950 | Curado de concreto | 2026-07-17 → 2026-07-28 (+11d) | 2026-07-18 → 2026-07-29 (+11d) | 13d → 2d | baseline start 2026-07-17 → 2026-07-28; baseline finish 2026-07-18 → 2026-07-29 |
| 951 | Cimbra losa de azotea | 2026-07-01 → 2026-07-11 (+10d) | 2026-07-07 → 2026-07-17 (+10d) | 14d → 3d | baseline start 2026-07-01 → 2026-07-11; baseline finish 2026-07-07 → 2026-07-17 |
| 952 | Cimbra exterior corta losa | 2026-07-10 → 2026-07-20 (+10d) | 2026-07-14 → 2026-07-23 (+9d) | 15d → 4d | baseline start 2026-07-10 → 2026-07-20; baseline finish 2026-07-14 → 2026-07-23 |
| 953 | Ramaleo poliducto eléctrico entrepiso | 2026-07-09 → 2026-07-18 (+9d) | 2026-07-10 → 2026-07-21 (+11d) | 149d → 141d | baseline start 2026-07-09 → 2026-07-18; baseline finish 2026-07-10 → 2026-07-21 |
| 954 | Ramaleo hidráulico CPVC 3/4" | 2026-07-10 → 2026-07-20 (+10d) | 2026-07-13 → 2026-07-22 (+9d) | 13d → 2d | baseline start 2026-07-10 → 2026-07-20; baseline finish 2026-07-13 → 2026-07-22 |
| 955 | Ramaleo hidráulico CPVC 1/2" | 2026-07-13 → 2026-07-22 (+9d) | 2026-07-14 → 2026-07-23 (+9d) | 13d → 2d | baseline start 2026-07-13 → 2026-07-22; baseline finish 2026-07-14 → 2026-07-23 |
| 956 | Prueba hidráulica | 2026-07-13 → 2026-07-22 (+9d) | 2026-07-14 → 2026-07-23 (+9d) | 13d → 2d | baseline start 2026-07-13 → 2026-07-22; baseline finish 2026-07-14 → 2026-07-23 |
| 957 | Ramaleo sanitario PVC 4" | 2026-07-10 → 2026-07-20 (+10d) | 2026-07-13 → 2026-07-22 (+9d) | 13d → 2d | baseline start 2026-07-10 → 2026-07-20; baseline finish 2026-07-13 → 2026-07-22 |
| 958 | Ramaleo sanitario PVC 2" | 2026-07-13 → 2026-07-22 (+9d) | 2026-07-14 → 2026-07-23 (+9d) | 13d → 2d | baseline start 2026-07-13 → 2026-07-22; baseline finish 2026-07-14 → 2026-07-23 |
| 959 | Prueba sanitaria | 2026-07-13 → 2026-07-22 (+9d) | 2026-07-14 → 2026-07-23 (+9d) | 13d → 2d | baseline start 2026-07-13 → 2026-07-22; baseline finish 2026-07-14 → 2026-07-23 |
| 960 | **MUROS EN PLANTA ALTA, CASTILLOS Y CERRM.** | 2026-07-10 → 2026-07-20 (+10d) | 2026-08-06 → 2026-08-17 (+11d) | 14d → 3d | baseline start 2026-07-10 → 2026-07-20; baseline finish 2026-08-06 → 2026-08-17 |
| 961 | Anclaje de castillos y Columnas PA | 2026-07-10 → 2026-07-20 (+10d) | 2026-07-15 → 2026-07-24 (+9d) | 14d → 3d | baseline start 2026-07-10 → 2026-07-20; baseline finish 2026-07-15 → 2026-07-24 |
| 962 | Castillo K1 | 2026-07-18 → 2026-07-29 (+11d) | 2026-07-23 → 2026-08-03 (+11d) | 17d → 6d | baseline start 2026-07-18 → 2026-07-29; baseline finish 2026-07-23 → 2026-08-03 |
| 963 | Castillo K2 | 2026-07-20 → 2026-07-30 (+10d) | 2026-07-24 → 2026-08-04 (+11d) | 16d → 5d | baseline start 2026-07-20 → 2026-07-30; baseline finish 2026-07-24 → 2026-08-04 |
| 964 | Castillo K4 | 2026-07-23 → 2026-08-03 (+11d) | 2026-07-28 → 2026-08-06 (+9d) | 17d → 6d | baseline start 2026-07-23 → 2026-08-03; baseline finish 2026-07-28 → 2026-08-06 |
| 965 | Castillo K5 | 2026-07-23 → 2026-08-03 (+11d) | 2026-07-28 → 2026-08-06 (+9d) | 17d → 6d | baseline start 2026-07-23 → 2026-08-03; baseline finish 2026-07-28 → 2026-08-06 |
| 966 | Castillo K6 | 2026-07-23 → 2026-08-03 (+11d) | 2026-07-28 → 2026-08-06 (+9d) | 17d → 6d | baseline start 2026-07-23 → 2026-08-03; baseline finish 2026-07-28 → 2026-08-06 |
| 967 | Refuerzo de muro | 2026-07-24 → 2026-08-04 (+11d) | 2026-07-29 → 2026-08-07 (+9d) | 16d → 5d | baseline start 2026-07-24 → 2026-08-04; baseline finish 2026-07-29 → 2026-08-07 |
| 968 | Dala de cerramiento CR-1 | 2026-07-29 → 2026-08-07 (+9d) | 2026-08-03 → 2026-08-12 (+9d) | 16d → 5d | baseline start 2026-07-29 → 2026-08-07; baseline finish 2026-08-03 → 2026-08-12 |
| 969 | Dala de cerramiento CR-2 | 2026-07-29 → 2026-08-07 (+9d) | 2026-08-03 → 2026-08-12 (+9d) | 16d → 5d | baseline start 2026-07-29 → 2026-08-07; baseline finish 2026-08-03 → 2026-08-12 |
| 970 | Cadena block dala | 2026-08-03 → 2026-08-12 (+9d) | 2026-08-06 → 2026-08-17 (+11d) | 16d → 5d | baseline start 2026-08-03 → 2026-08-12; baseline finish 2026-08-06 → 2026-08-17 |
| 971 | Muro de ladrillo aparente | 2026-07-18 → 2026-07-29 (+11d) | 2026-08-06 → 2026-08-17 (+11d) | 13d → 2d | baseline start 2026-07-18 → 2026-07-29; baseline finish 2026-08-06 → 2026-08-17 |
| 972 | Muro de block planta alta | 2026-07-20 → 2026-07-30 (+10d) | 2026-08-06 → 2026-08-17 (+11d) | 13d → 2d | baseline start 2026-07-20 → 2026-07-30; baseline finish 2026-08-06 → 2026-08-17 |
| 973 | Ramaleo electrico en Muros Planta Alta | 2026-07-29 → 2026-08-07 (+9d) | 2026-08-03 → 2026-08-12 (+9d) | 24d → 13d | baseline start 2026-07-29 → 2026-08-07; baseline finish 2026-08-03 → 2026-08-12 |
| 974 | **LOSA AZOTEA** | 2026-08-06 → 2026-08-17 (+11d) | 2026-08-25 → 2026-09-03 (+9d) | 13d → 2d | baseline start 2026-08-06 → 2026-08-17; baseline finish 2026-08-25 → 2026-09-03 |
| 975 | Cortalosa CL-1 | 2026-08-20 → 2026-08-31 (+11d) | 2026-08-22 → 2026-09-01 (+10d) | 13d → 2d | baseline start 2026-08-20 → 2026-08-31; baseline finish 2026-08-22 → 2026-09-01 |
| 976 | Cortalosa CL-2 | 2026-08-20 → 2026-08-31 (+11d) | 2026-08-22 → 2026-09-01 (+10d) | 13d → 2d | baseline start 2026-08-20 → 2026-08-31; baseline finish 2026-08-22 → 2026-09-01 |
| 977 | Vigueta pretensada V11-30 125 | 2026-08-06 → 2026-08-17 (+11d) | 2026-08-12 → 2026-08-22 (+10d) | 16d → 5d | baseline start 2026-08-06 → 2026-08-17; baseline finish 2026-08-12 → 2026-08-22 |
| 978 | Vigueta pretensada V11-30 185 | 2026-08-06 → 2026-08-17 (+11d) | 2026-08-12 → 2026-08-22 (+10d) | 16d → 5d | baseline start 2026-08-06 → 2026-08-17; baseline finish 2026-08-12 → 2026-08-22 |
| 979 | Vigueta pretensada V11-30 190 | 2026-08-06 → 2026-08-17 (+11d) | 2026-08-12 → 2026-08-22 (+10d) | 16d → 5d | baseline start 2026-08-06 → 2026-08-17; baseline finish 2026-08-12 → 2026-08-22 |
| 980 | Vigueta pretensada V11-30 205 | 2026-08-08 → 2026-08-19 (+11d) | 2026-08-14 → 2026-08-25 (+11d) | 14d → 3d | baseline start 2026-08-08 → 2026-08-19; baseline finish 2026-08-14 → 2026-08-25 |
| 981 | Vigueta pretensada V11-30 215 | 2026-08-08 → 2026-08-19 (+11d) | 2026-08-14 → 2026-08-25 (+11d) | 14d → 3d | baseline start 2026-08-08 → 2026-08-19; baseline finish 2026-08-14 → 2026-08-25 |
| 982 | Vigueta pretensada V11-30 260 | 2026-08-10 → 2026-08-20 (+10d) | 2026-08-17 → 2026-08-26 (+9d) | 13d → 2d | baseline start 2026-08-10 → 2026-08-20; baseline finish 2026-08-17 → 2026-08-26 |
| 983 | Vigueta pretensada V11-30 285 | 2026-08-10 → 2026-08-20 (+10d) | 2026-08-17 → 2026-08-26 (+9d) | 13d → 2d | baseline start 2026-08-10 → 2026-08-20; baseline finish 2026-08-17 → 2026-08-26 |
| 984 | Vigueta pretensada V11-40 330 | 2026-08-10 → 2026-08-20 (+10d) | 2026-08-17 → 2026-08-26 (+9d) | 13d → 2d | baseline start 2026-08-10 → 2026-08-20; baseline finish 2026-08-17 → 2026-08-26 |
| 985 | Vigueta pretensada V11-40 335 | 2026-08-10 → 2026-08-20 (+10d) | 2026-08-17 → 2026-08-26 (+9d) | 13d → 2d | baseline start 2026-08-10 → 2026-08-20; baseline finish 2026-08-17 → 2026-08-26 |
| 986 | Vigueta pretensada V11-40 505 | 2026-08-10 → 2026-08-20 (+10d) | 2026-08-17 → 2026-08-26 (+9d) | 13d → 2d | baseline start 2026-08-10 → 2026-08-20; baseline finish 2026-08-17 → 2026-08-26 |

| ID | Task | Start | Finish | Total float | Other |
| --- | --- | --- | --- | --- | --- |
| 987 | Bovedilla poliestireno azotea | 2026-08-17 → 2026-08-26 (+9d) | 2026-08-20 → 2026-08-29 (+9d) | 13d → 2d | baseline start 2026-08-17 → 2026-08-26; baseline finish 2026-08-20 → 2026-08-29 |
| 988 | Malla 66-10/10 losa de compresión | 2026-08-20 → 2026-08-31 (+11d) | 2026-08-22 → 2026-09-01 (+10d) | 13d → 2d | baseline start 2026-08-20 → 2026-08-31; baseline finish 2026-08-22 → 2026-09-01 |
| 989 | Concreto losa de azotea f’c=200 | 2026-08-22 → 2026-09-02 (+11d) | 2026-08-24 → 2026-09-02 (+9d) | 13d → 2d | baseline start 2026-08-22 → 2026-09-02; baseline finish 2026-08-24 → 2026-09-02 |
| 990 | Curado de concreto | 2026-08-24 → 2026-09-03 (+10d) | 2026-08-25 → 2026-09-03 (+9d) | 13d → 2d | baseline start 2026-08-24 → 2026-09-03; baseline finish 2026-08-25 → 2026-09-03 |
| 991 | Cimbra losa de azotea | 2026-08-06 → 2026-08-17 (+11d) | 2026-08-12 → 2026-08-22 (+10d) | 21d → 10d | baseline start 2026-08-06 → 2026-08-17; baseline finish 2026-08-12 → 2026-08-22 |
| 992 | Ramaleo de poliducto para inst. electrica en azotea | 2026-08-20 → 2026-08-31 (+11d) | 2026-08-22 → 2026-09-01 (+10d) | 13d → 2d | baseline start 2026-08-20 → 2026-08-31; baseline finish 2026-08-22 → 2026-09-01 |
| 993 | **PRETIL Y ACABADOS DE AZOTEA** | 2026-08-25 → 2026-09-04 (+10d) | 2026-09-18 → 2026-09-29 (+11d) | 13d → 2d | baseline start 2026-08-25 → 2026-09-04; baseline finish 2026-09-18 → 2026-09-29 |
| 994 | Castillo K1 | 2026-08-27 → 2026-09-07 (+11d) | 2026-09-02 → 2026-09-12 (+10d) | 13d → 2d | baseline start 2026-08-27 → 2026-09-07; baseline finish 2026-09-02 → 2026-09-12 |
| 995 | Dala de cerramiento en pretil | 2026-09-01 → 2026-09-10 (+9d) | 2026-09-04 → 2026-09-15 (+11d) | 13d → 2d | baseline start 2026-09-01 → 2026-09-10; baseline finish 2026-09-04 → 2026-09-15 |
| 996 | Muro de block 12x15x40 | 2026-08-25 → 2026-09-04 (+10d) | 2026-08-31 → 2026-09-10 (+10d) | 13d → 2d | baseline start 2026-08-25 → 2026-09-04; baseline finish 2026-08-31 → 2026-09-10 |
| 997 | Chaflán en azotea | 2026-09-03 → 2026-09-12 (+9d) | 2026-09-08 → 2026-09-18 (+10d) | 13d → 2d | baseline start 2026-09-03 → 2026-09-12; baseline finish 2026-09-08 → 2026-09-18 |
| 998 | Diamante de entortado | 2026-09-03 → 2026-09-12 (+9d) | 2026-09-08 → 2026-09-18 (+10d) | 13d → 2d | baseline start 2026-09-03 → 2026-09-12; baseline finish 2026-09-08 → 2026-09-18 |
| 999 | Aplanado exterior Mortermax fino | 2026-09-05 → 2026-09-15 (+10d) | 2026-09-11 → 2026-09-23 (+12d) | 13d → 2d | baseline start 2026-09-05 → 2026-09-15; baseline finish 2026-09-11 → 2026-09-23 |
| 1000 | Entortado de Losa | 2026-09-12 → 2026-09-24 (+12d) | 2026-09-18 → 2026-09-29 (+11d) | 13d → 2d | baseline start 2026-09-12 → 2026-09-24; baseline finish 2026-09-18 → 2026-09-29 |
| 1001 | Curado de concreto | 2026-09-11 → 2026-09-23 (+12d) | 2026-09-12 → 2026-09-24 (+12d) | 13d → 2d | baseline start 2026-09-11 → 2026-09-23; baseline finish 2026-09-12 → 2026-09-24 |
| 1002 | **PRIMERA LIMPIEZA DE OBRA** | 2026-08-25 → 2026-09-04 (+10d) | 2026-08-29 → 2026-09-09 (+11d) | 70d → 62d | baseline start 2026-08-25 → 2026-09-04; baseline finish 2026-08-29 → 2026-09-09 |
| 1003 | Primera limpieza de obra | 2026-08-25 → 2026-09-04 (+10d) | 2026-08-27 → 2026-09-07 (+11d) | 70d → 62d | baseline start 2026-08-25 → 2026-09-04; baseline finish 2026-08-27 → 2026-09-07 |
| 1004 | Primera carga y acarreo de escombro | 2026-08-27 → 2026-09-07 (+11d) | 2026-08-29 → 2026-09-09 (+11d) | 70d → 62d | baseline start 2026-08-27 → 2026-09-07; baseline finish 2026-08-29 → 2026-09-09 |
| 1005 | **IMPERMEABILIZACION** | 2026-09-18 → 2026-09-29 (+11d) | 2026-09-25 → 2026-10-05 (+10d) | 13d → 2d | baseline start 2026-09-18 → 2026-09-29; baseline finish 2026-09-25 → 2026-10-05 |
| 1006 | Impermeabilización de pretil Kover 5 años | 2026-09-18 → 2026-09-29 (+11d) | 2026-09-24 → 2026-10-03 (+9d) | 14d → 3d | baseline start 2026-09-18 → 2026-09-29; baseline finish 2026-09-24 → 2026-10-03 |
| 1007 | Impermeabilización de losa Kover 5 años | 2026-09-18 → 2026-09-29 (+11d) | 2026-09-25 → 2026-10-05 (+10d) | 13d → 2d | baseline start 2026-09-18 → 2026-09-29; baseline finish 2026-09-25 → 2026-10-05 |
| 1008 | **ALBAÑILERIA** | 2026-09-01 → 2026-09-10 (+9d) | 2026-11-19 → 2026-11-28 (+9d) | 32d → 21d | baseline start 2026-09-01 → 2026-09-10; baseline finish 2026-11-19 → 2026-11-28 |
| 1009 | Lavadero de granito | 2026-10-15 → 2026-10-26 (+11d) | 2026-10-20 → 2026-10-29 (+9d) | 69d → 61d | baseline start 2026-10-15 → 2026-10-26; baseline finish 2026-10-20 → 2026-10-29 |
| 1010 | Ranurado y resane general inst. en muros | 2026-09-23 → 2026-10-02 (+9d) | 2026-09-26 → 2026-10-06 (+10d) | 15d → 4d | baseline start 2026-09-23 → 2026-10-02; baseline finish 2026-09-26 → 2026-10-06 |
| 1011 | Ranurado y resane eléctrico 1/2 a 3/4 | 2026-09-23 → 2026-10-02 (+9d) | 2026-09-26 → 2026-10-06 (+10d) | 15d → 4d | baseline start 2026-09-23 → 2026-10-02; baseline finish 2026-09-26 → 2026-10-06 |
| 1012 | Ranurado y resane hidráulico 1/2 a 1 | 2026-09-25 → 2026-10-05 (+10d) | 2026-09-28 → 2026-10-07 (+9d) | 14d → 3d | baseline start 2026-09-25 → 2026-10-05; baseline finish 2026-09-28 → 2026-10-07 |
| 1013 | Resane sanitario tubería 2 | 2026-09-25 → 2026-10-05 (+10d) | 2026-09-28 → 2026-10-07 (+9d) | 14d → 3d | baseline start 2026-09-25 → 2026-10-05; baseline finish 2026-09-28 → 2026-10-07 |
| 1014 | Resane sanitario tubería 4 | 2026-09-25 → 2026-10-05 (+10d) | 2026-09-28 → 2026-10-07 (+9d) | 14d → 3d | baseline start 2026-09-25 → 2026-10-05; baseline finish 2026-09-28 → 2026-10-07 |
| 1015 | Resane minisplit tubería 3 | 2026-09-25 → 2026-10-05 (+10d) | 2026-09-28 → 2026-10-07 (+9d) | 14d → 3d | baseline start 2026-09-25 → 2026-10-05; baseline finish 2026-09-28 → 2026-10-07 |
| 1016 | Ramaleo hidráulico exterior CPVC 1 1/4 | 2026-09-25 → 2026-10-05 (+10d) | 2026-09-29 → 2026-10-08 (+9d) | 13d → 2d | baseline start 2026-09-25 → 2026-10-05; baseline finish 2026-09-29 → 2026-10-08 |
| 1017 | Ramaleo hidráulico exterior CPVC 1 | 2026-09-25 → 2026-10-05 (+10d) | 2026-09-28 → 2026-10-07 (+9d) | 13d → 2d | baseline start 2026-09-25 → 2026-10-05; baseline finish 2026-09-28 → 2026-10-07 |
| 1018 | Ramaleo hidráulico exterior CPVC 3/4 | 2026-09-28 → 2026-10-07 (+9d) | 2026-09-30 → 2026-10-09 (+9d) | 13d → 2d | baseline start 2026-09-28 → 2026-10-07; baseline finish 2026-09-30 → 2026-10-09 |
| 1019 | Ramaleo hidráulico exterior CPVC 1/2 | 2026-09-28 → 2026-10-07 (+9d) | 2026-09-30 → 2026-10-09 (+9d) | 13d → 2d | baseline start 2026-09-28 → 2026-10-07; baseline finish 2026-09-30 → 2026-10-09 |
| 1020 | Prueba hidráulica | 2026-09-30 → 2026-10-09 (+9d) | 2026-10-01 → 2026-10-12 (+11d) | 13d → 2d | baseline start 2026-09-30 → 2026-10-09; baseline finish 2026-10-01 → 2026-10-12 |
| 1021 | Ramaleo sanitario exterior PVC 4 | 2026-09-25 → 2026-10-05 (+10d) | 2026-09-30 → 2026-10-09 (+9d) | 13d → 2d | baseline start 2026-09-25 → 2026-10-05; baseline finish 2026-09-30 → 2026-10-09 |
| 1022 | Ramaleo sanitario exterior PVC 2 | 2026-09-26 → 2026-10-06 (+10d) | 2026-09-30 → 2026-10-09 (+9d) | 13d → 2d | baseline start 2026-09-26 → 2026-10-06; baseline finish 2026-09-30 → 2026-10-09 |
| 1023 | Prueba sanitaria | 2026-09-30 → 2026-10-09 (+9d) | 2026-10-01 → 2026-10-12 (+11d) | 13d → 2d | baseline start 2026-09-30 → 2026-10-09; baseline finish 2026-10-01 → 2026-10-12 |
| 1024 | Centro de carga muros PB | 2026-09-29 → 2026-10-08 (+9d) | 2026-10-03 → 2026-10-14 (+11d) | 15d → 4d | baseline start 2026-09-29 → 2026-10-08; baseline finish 2026-10-03 → 2026-10-14 |
| 1025 | Firme de concreto 8 cm | 2026-10-01 → 2026-10-12 (+11d) | 2026-10-06 → 2026-10-16 (+10d) | 63d → 55d | baseline start 2026-10-01 → 2026-10-12; baseline finish 2026-10-06 → 2026-10-16 |
| 1026 | Curado de concreto | 2026-10-06 → 2026-10-16 (+10d) | 2026-10-07 → 2026-10-17 (+10d) | 63d → 55d | baseline start 2026-10-06 → 2026-10-16; baseline finish 2026-10-07 → 2026-10-17 |
| 1027 | Cisterna 2800 L con instalación | 2026-09-01 → 2026-09-10 (+9d) | 2026-09-24 → 2026-10-03 (+9d) | 69d → 61d | baseline start 2026-09-01 → 2026-09-10; baseline finish 2026-09-24 → 2026-10-03 |
| 1028 | Banqueta y huellas de concreto | 2026-10-08 → 2026-10-19 (+11d) | 2026-10-19 → 2026-10-28 (+9d) | 46d → 38d | baseline start 2026-10-08 → 2026-10-19; baseline finish 2026-10-19 → 2026-10-28 |
| 1029 | Curado de concreto | 2026-10-19 → 2026-10-29 (+10d) | 2026-10-20 → 2026-10-29 (+9d) | 46d → 38d | baseline start 2026-10-19 → 2026-10-29; baseline finish 2026-10-20 → 2026-10-29 |
| 1030 | Número oficial | 2026-11-18 → 2026-11-27 (+9d) | 2026-11-19 → 2026-11-28 (+9d) | 46d → 38d | baseline start 2026-11-18 → 2026-11-27; baseline finish 2026-11-19 → 2026-11-28 |
| 1031 | Detallado de rodapié exterior | 2026-10-03 → 2026-10-14 (+11d) | 2026-10-08 → 2026-10-19 (+11d) | 78d → 70d | baseline start 2026-10-03 → 2026-10-14; baseline finish 2026-10-08 → 2026-10-19 |
| 1032 | Detalle de losas y volados acabado fino | 2026-09-25 → 2026-10-05 (+10d) | 2026-09-30 → 2026-10-09 (+9d) | 17d → 6d | baseline start 2026-09-25 → 2026-10-05; baseline finish 2026-09-30 → 2026-10-09 |
| 1033 | Detalle fino en muros interiores | 2026-09-28 → 2026-10-07 (+9d) | 2026-10-03 → 2026-10-14 (+11d) | 14d → 3d | baseline start 2026-09-28 → 2026-10-07; baseline finish 2026-10-03 → 2026-10-14 |
| 1034 | Jardín interior bajo escalera con pozo de absorción | 2026-09-25 → 2026-10-05 (+10d) | 2026-10-09 → 2026-10-20 (+11d) | 17d → 6d | baseline start 2026-09-25 → 2026-10-05; baseline finish 2026-10-09 → 2026-10-20 |
| 1035 | **ACABADOS EN FACHADA A** | 2026-09-18 → 2026-09-29 (+11d) | 2026-11-18 → 2026-11-27 (+9d) | 46d → 38d | baseline start 2026-09-18 → 2026-09-29; baseline finish 2026-11-18 → 2026-11-27 |
| 1036 | Aplanado grueso fachada | 2026-09-18 → 2026-09-29 (+11d) | 2026-10-03 → 2026-10-14 (+11d) | 52d → 44d | baseline start 2026-09-18 → 2026-09-29; baseline finish 2026-10-03 → 2026-10-14 |
| 1037 | Aplanado fino estuco fachada | 2026-09-28 → 2026-10-07 (+9d) | 2026-10-09 → 2026-10-20 (+11d) | 52d → 44d | baseline start 2026-09-28 → 2026-10-07; baseline finish 2026-10-09 → 2026-10-20 |
| 1038 | Pintura acrílica 1-0102P | 2026-11-04 → 2026-11-13 (+9d) | 2026-11-13 → 2026-11-25 (+12d) | 48d → 40d | baseline start 2026-11-04 → 2026-11-13; baseline finish 2026-11-13 → 2026-11-25 |
| 1039 | Pintura acrílica 1-1404D | 2026-11-04 → 2026-11-13 (+9d) | 2026-11-18 → 2026-11-27 (+9d) | 46d → 38d | baseline start 2026-11-04 → 2026-11-13; baseline finish 2026-11-18 → 2026-11-27 |
| 1040 | Cantera 40x60cm | 2026-10-09 → 2026-10-20 (+11d) | 2026-10-27 → 2026-11-06 (+10d) | 52d → 44d | baseline start 2026-10-09 → 2026-10-20; baseline finish 2026-10-27 → 2026-11-06 |
| 1041 | Lambrin de permabase 1 cara | 2026-10-03 → 2026-10-14 (+11d) | 2026-10-07 → 2026-10-17 (+10d) | 59d → 51d | baseline start 2026-10-03 → 2026-10-14; baseline finish 2026-10-07 → 2026-10-17 |
| 1042 | Enchapado de Permabase | 2026-10-07 → 2026-10-17 (+10d) | 2026-10-13 → 2026-10-22 (+9d) | 59d → 51d | baseline start 2026-10-07 → 2026-10-17; baseline finish 2026-10-13 → 2026-10-22 |
| 1043 | Cubierta de Permabase | 2026-10-13 → 2026-10-22 (+9d) | 2026-10-19 → 2026-10-28 (+9d) | 59d → 51d | baseline start 2026-10-13 → 2026-10-22; baseline finish 2026-10-19 → 2026-10-28 |
| 1044 | **APLANADOS Y PINTURA** | 2026-09-25 → 2026-10-05 (+10d) | 2026-12-14 → 2026-12-23 (+9d) | 15d → 4d | baseline start 2026-09-25 → 2026-10-05; baseline finish 2026-12-14 → 2026-12-23 |
| 1045 | Yeso pulido en muros | 2026-10-05 → 2026-10-15 (+10d) | 2026-10-22 → 2026-11-02 (+11d) | 13d → 2d | baseline start 2026-10-05 → 2026-10-15; baseline finish 2026-10-22 → 2026-11-02 |
| 1046 | Aplanado en muros enjarre grueso | 2026-09-25 → 2026-10-05 (+10d) | 2026-10-01 → 2026-10-12 (+11d) | 16d → 5d | baseline start 2026-09-25 → 2026-10-05; baseline finish 2026-10-01 → 2026-10-12 |
| 1047 | Pintura vinílica OR-W13 SHOELACE | 2026-11-27 → 2026-12-08 (+11d) | 2026-12-14 → 2026-12-23 (+9d) | 13d → 2d | baseline start 2026-11-27 → 2026-12-08; baseline finish 2026-12-14 → 2026-12-23 |
| 1048 | Pintura vinílica PPUI5-13 Creamy M. | 2026-11-21 → 2026-12-01 (+10d) | 2026-12-03 → 2026-12-14 (+11d) | 21d → 10d | baseline start 2026-11-21 → 2026-12-01; baseline finish 2026-12-03 → 2026-12-14 |
| 1049 | Pintura vinílica MD-06 Nano White | 2026-11-21 → 2026-12-01 (+10d) | 2026-12-01 → 2026-12-11 (+10d) | 23d → 12d | baseline start 2026-11-21 → 2026-12-01; baseline finish 2026-12-01 → 2026-12-11 |
| 1050 | Yeso pulido en plafones | 2026-09-25 → 2026-10-05 (+10d) | 2026-10-07 → 2026-10-17 (+10d) | 15d → 4d | baseline start 2026-09-25 → 2026-10-05; baseline finish 2026-10-07 → 2026-10-17 |
| 1051 | Perfilado de puertas y ventanas | 2026-10-09 → 2026-10-20 (+11d) | 2026-10-15 → 2026-10-24 (+9d) | 73d → 65d | baseline start 2026-10-09 → 2026-10-20; baseline finish 2026-10-15 → 2026-10-24 |
| 1052 | **PISOS Y AZULEJOS** | 2026-10-16 → 2026-10-27 (+11d) | 2026-11-17 → 2026-11-26 (+9d) | 13d → 2d | baseline start 2026-10-16 → 2026-10-27; baseline finish 2026-11-17 → 2026-11-26 |
| 1053 | **AREA SOCIAL** | 2026-10-20 → 2026-10-30 (+10d) | 2026-11-07 → 2026-11-19 (+12d) | 13d → 2d | baseline start 2026-10-20 → 2026-10-30; baseline finish 2026-11-07 → 2026-11-19 |
| 1054 | Piso Adhara 44X89 | 2026-10-20 → 2026-10-30 (+10d) | 2026-11-06 → 2026-11-18 (+12d) | 13d → 2d | baseline start 2026-10-20 → 2026-10-30; baseline finish 2026-11-06 → 2026-11-18 |
| 1055 | Zoclo Adhara 44X89 | 2026-11-02 → 2026-11-11 (+9d) | 2026-11-07 → 2026-11-19 (+12d) | 30d → 19d | baseline start 2026-11-02 → 2026-11-11; baseline finish 2026-11-07 → 2026-11-19 |
| 1056 | **RECAMARAS** | 2026-10-16 → 2026-10-27 (+11d) | 2026-10-26 → 2026-11-05 (+10d) | 13d → 2d | baseline start 2026-10-16 → 2026-10-27; baseline finish 2026-10-26 → 2026-11-05 |

| ID | Task | Start | Finish | Total float | Other |
| --- | --- | --- | --- | --- | --- |
| 1057 | Acabado aparente de pisos - pulido | 2026-10-16 → 2026-10-27 (+11d) | 2026-10-26 → 2026-11-05 (+10d) | 13d → 2d | baseline start 2026-10-16 → 2026-10-27; baseline finish 2026-10-26 → 2026-11-05 |
| 1058 | **BAÑOS** | 2026-10-17 → 2026-10-28 (+11d) | 2026-11-07 → 2026-11-19 (+12d) | 24d → 13d | baseline start 2026-10-17 → 2026-10-28; baseline finish 2026-11-07 → 2026-11-19 |
| 1059 | Azulejo Mod. Ornamenta 60x30 | 2026-10-27 → 2026-11-05 (+9d) | 2026-11-02 → 2026-11-11 (+9d) | 24d → 13d | baseline start 2026-10-27 → 2026-11-05; baseline finish 2026-11-02 → 2026-11-11 |
| 1060 | Impermeabilización en regadera | 2026-10-26 → 2026-11-04 (+9d) | 2026-10-27 → 2026-11-06 (+10d) | 24d → 13d | baseline start 2026-10-26 → 2026-11-04; baseline finish 2026-10-27 → 2026-11-06 |
| 1061 | Piso Mod. Valparaiso 20x20 | 2026-11-02 → 2026-11-11 (+9d) | 2026-11-06 → 2026-11-18 (+12d) | 24d → 13d | baseline start 2026-11-02 → 2026-11-11; baseline finish 2026-11-06 → 2026-11-18 |
| 1062 | Zoclo Adhara 44X89 | 2026-11-05 → 2026-11-17 (+12d) | 2026-11-07 → 2026-11-19 (+12d) | 54d → 46d | baseline start 2026-11-05 → 2026-11-17; baseline finish 2026-11-07 → 2026-11-19 |
| 1063 | Piso Adhara 44X89 | 2026-11-02 → 2026-11-11 (+9d) | 2026-11-05 → 2026-11-17 (+12d) | 56d → 48d | baseline start 2026-11-02 → 2026-11-11; baseline finish 2026-11-05 → 2026-11-17 |
| 1064 | Fabricacion de nicho decorativo en baños | 2026-10-17 → 2026-10-28 (+11d) | 2026-10-24 → 2026-11-04 (+11d) | 24d → 13d | baseline start 2026-10-17 → 2026-10-28; baseline finish 2026-10-24 → 2026-11-04 |
| 1065 | Sardinel en regadera | 2026-11-02 → 2026-11-11 (+9d) | 2026-11-06 → 2026-11-18 (+12d) | 55d → 47d | baseline start 2026-11-02 → 2026-11-11; baseline finish 2026-11-06 → 2026-11-18 |
| 1066 | **ESCALERA** | 2026-11-04 → 2026-11-13 (+9d) | 2026-11-17 → 2026-11-26 (+9d) | 13d → 2d | baseline start 2026-11-04 → 2026-11-13; baseline finish 2026-11-17 → 2026-11-26 |
| 1067 | Piso Adhara 44X89 | 2026-11-04 → 2026-11-13 (+9d) | 2026-11-12 → 2026-11-24 (+12d) | 13d → 2d | baseline start 2026-11-04 → 2026-11-13; baseline finish 2026-11-12 → 2026-11-24 |
| 1068 | Zoclo Adhara 44X89 | 2026-11-10 → 2026-11-21 (+11d) | 2026-11-17 → 2026-11-26 (+9d) | 13d → 2d | baseline start 2026-11-10 → 2026-11-21; baseline finish 2026-11-17 → 2026-11-26 |
| 1069 | **EXTERIOR** | 2026-10-01 → 2026-10-12 (+11d) | 2026-10-05 → 2026-10-15 (+10d) | 18d → 7d | baseline start 2026-10-01 → 2026-10-12; baseline finish 2026-10-05 → 2026-10-15 |
| 1070 | Rastrilleo, afine y nivelado de tierra | 2026-10-01 → 2026-10-12 (+11d) | 2026-10-05 → 2026-10-15 (+10d) | 18d → 7d | baseline start 2026-10-01 → 2026-10-12; baseline finish 2026-10-05 → 2026-10-15 |
| 1071 | **SEGUNDA LIMPIEZA DE OBRA** | 2026-11-17 → 2026-11-26 (+9d) | 2026-11-21 → 2026-12-01 (+10d) | 37d → 25d | baseline start 2026-11-17 → 2026-11-26; baseline finish 2026-11-21 → 2026-12-01 |
| 1072 | Segunda limpieza de obra | 2026-11-17 → 2026-11-26 (+9d) | 2026-11-19 → 2026-11-28 (+9d) | 37d → 25d | baseline start 2026-11-17 → 2026-11-26; baseline finish 2026-11-19 → 2026-11-28 |
| 1073 | Segunda carga y acarreo de escombro | 2026-11-19 → 2026-11-28 (+9d) | 2026-11-21 → 2026-12-01 (+10d) | 37d → 25d | baseline start 2026-11-19 → 2026-11-28; baseline finish 2026-11-21 → 2026-12-01 |
| 1074 | **CANCELERIA PUERTAS Y VENTANAS DE ALUMINIO** | 2026-11-04 → 2026-11-13 (+9d) | 2026-11-26 → 2026-12-07 (+11d) | 14d → 3d | baseline start 2026-11-04 → 2026-11-13; baseline finish 2026-11-26 → 2026-12-07 |
| 1075 | Fijo medidas 0.30x4.90m | 2026-11-06 → 2026-11-18 (+12d) | 2026-11-17 → 2026-11-26 (+9d) | 22d → 11d | baseline start 2026-11-06 → 2026-11-18; baseline finish 2026-11-17 → 2026-11-26 |
| 1076 | Ventana Corrediza 1.80x1.60m | 2026-11-04 → 2026-11-13 (+9d) | 2026-11-09 → 2026-11-20 (+11d) | 27d → 16d | baseline start 2026-11-04 → 2026-11-13; baseline finish 2026-11-09 → 2026-11-20 |
| 1077 | Ventana Corrediza 0.60x0.40m | 2026-11-06 → 2026-11-18 (+12d) | 2026-11-11 → 2026-11-23 (+12d) | 25d → 14d | baseline start 2026-11-06 → 2026-11-18; baseline finish 2026-11-11 → 2026-11-23 |
| 1078 | Ventana Corrediza 1.54x0.50m | 2026-11-06 → 2026-11-18 (+12d) | 2026-11-11 → 2026-11-23 (+12d) | 25d → 14d | baseline start 2026-11-06 → 2026-11-18; baseline finish 2026-11-11 → 2026-11-23 |
| 1079 | Fijo medidas 1.40x2.50m | 2026-11-10 → 2026-11-21 (+11d) | 2026-11-17 → 2026-11-26 (+9d) | 16d → 5d | baseline start 2026-11-10 → 2026-11-21; baseline finish 2026-11-17 → 2026-11-26 |
| 1080 | Ventana Corrediza 1.80x1.50m | 2026-11-12 → 2026-11-24 (+12d) | 2026-11-19 → 2026-11-28 (+9d) | 14d → 3d | baseline start 2026-11-12 → 2026-11-24; baseline finish 2026-11-19 → 2026-11-28 |
| 1081 | Ventana Corrediza 1.40x1.60m | 2026-11-12 → 2026-11-24 (+12d) | 2026-11-19 → 2026-11-28 (+9d) | 14d → 3d | baseline start 2026-11-12 → 2026-11-24; baseline finish 2026-11-19 → 2026-11-28 |
| 1082 | Ventana Corrediza 0.95x0.40m | 2026-11-12 → 2026-11-24 (+12d) | 2026-11-19 → 2026-11-28 (+9d) | 14d → 3d | baseline start 2026-11-12 → 2026-11-24; baseline finish 2026-11-19 → 2026-11-28 |
| 1083 | Puerta corrediza 3.85x2.10m | 2026-11-17 → 2026-11-26 (+9d) | 2026-11-24 → 2026-12-03 (+9d) | 16d → 5d | baseline start 2026-11-17 → 2026-11-26; baseline finish 2026-11-24 → 2026-12-03 |
| 1084 | Barandal de Cristal Templado | 2026-11-19 → 2026-11-28 (+9d) | 2026-11-26 → 2026-12-07 (+11d) | 14d → 3d | baseline start 2026-11-19 → 2026-11-28; baseline finish 2026-11-26 → 2026-12-07 |
| 1085 | **CARPINTERIA, PUERTAS EXTERIORES E INTERIORES** | 2026-11-17 → 2026-11-26 (+9d) | 2026-11-27 → 2026-12-08 (+11d) | 13d → 2d | baseline start 2026-11-17 → 2026-11-26; baseline finish 2026-11-27 → 2026-12-08 |
| 1086 | Puerta P-01 de seguridad | 2026-11-17 → 2026-11-26 (+9d) | 2026-11-23 → 2026-12-02 (+9d) | 17d → 6d | baseline start 2026-11-17 → 2026-11-26; baseline finish 2026-11-23 → 2026-12-02 |
| 1087 | Puerta P-01 interior | 2026-11-17 → 2026-11-26 (+9d) | 2026-11-26 → 2026-12-07 (+11d) | 14d → 3d | baseline start 2026-11-17 → 2026-11-26; baseline finish 2026-11-26 → 2026-12-07 |
| 1088 | Puerta P-02 interior | 2026-11-17 → 2026-11-26 (+9d) | 2026-11-26 → 2026-12-07 (+11d) | 14d → 3d | baseline start 2026-11-17 → 2026-11-26; baseline finish 2026-11-26 → 2026-12-07 |
| 1089 | Puerta P-03 interior | 2026-11-23 → 2026-12-02 (+9d) | 2026-11-27 → 2026-12-08 (+11d) | 13d → 2d | baseline start 2026-11-23 → 2026-12-02; baseline finish 2026-11-27 → 2026-12-08 |
| 1090 | Puerta P-04 interior | 2026-11-23 → 2026-12-02 (+9d) | 2026-11-27 → 2026-12-08 (+11d) | 13d → 2d | baseline start 2026-11-23 → 2026-12-02; baseline finish 2026-11-27 → 2026-12-08 |
| 1091 | **VOLADOS, BARANDAL Y ESCALERA** | 2026-10-09 → 2026-10-20 (+11d) | 2026-11-21 → 2026-12-01 (+10d) | 21d → 10d | baseline start 2026-10-09 → 2026-10-20; baseline finish 2026-11-21 → 2026-12-01 |
| 1092 | Barandal de Herreria en escalera | 2026-10-28 → 2026-11-06 (+9d) | 2026-11-02 → 2026-11-11 (+9d) | 36d → 25d | baseline start 2026-10-28 → 2026-11-06; baseline finish 2026-11-02 → 2026-11-11 |
| 1093 | Escalera de herreria | 2026-10-09 → 2026-10-20 (+11d) | 2026-11-02 → 2026-11-11 (+9d) | 21d → 10d | baseline start 2026-10-09 → 2026-10-20; baseline finish 2026-11-02 → 2026-11-11 |
| 1094 | Techumbre en acceso Principal | 2026-10-27 → 2026-11-05 (+9d) | 2026-11-12 → 2026-11-24 (+12d) | 27d → 16d | baseline start 2026-10-27 → 2026-11-05; baseline finish 2026-11-12 → 2026-11-24 |
| 1095 | Techumbre en 1.80x0.50m | 2026-10-27 → 2026-11-05 (+9d) | 2026-11-04 → 2026-11-13 (+9d) | 21d → 10d | baseline start 2026-10-27 → 2026-11-05; baseline finish 2026-11-04 → 2026-11-13 |
| 1096 | Techumbre en 1.40x0.50m | 2026-11-04 → 2026-11-13 (+9d) | 2026-11-12 → 2026-11-24 (+12d) | 21d → 10d | baseline start 2026-11-04 → 2026-11-13; baseline finish 2026-11-12 → 2026-11-24 |
| 1097 | Imper con manto prefabricado | 2026-11-07 → 2026-11-19 (+12d) | 2026-11-13 → 2026-11-25 (+12d) | 21d → 10d | baseline start 2026-11-07 → 2026-11-19; baseline finish 2026-11-13 → 2026-11-25 |
| 1098 | Plafon hoja tablaroca std | 2026-11-13 → 2026-11-25 (+12d) | 2026-11-21 → 2026-12-01 (+10d) | 21d → 10d | baseline start 2026-11-13 → 2026-11-25; baseline finish 2026-11-21 → 2026-12-01 |
| 1099 | Acabado Woodstock en parte inf. Cubierta | 2026-11-13 → 2026-11-25 (+12d) | 2026-11-21 → 2026-12-01 (+10d) | 21d → 10d | baseline start 2026-11-13 → 2026-11-25; baseline finish 2026-11-21 → 2026-12-01 |
| 1100 | **INSTALACION ELECTRICA** | 2026-10-17 → 2026-10-28 (+11d) | 2026-11-06 → 2026-11-18 (+12d) | 42d → 31d | baseline start 2026-10-17 → 2026-10-28; baseline finish 2026-11-06 → 2026-11-18 |
| 1101 | Alimentación eléctrica base a centro de carga | 2026-10-22 → 2026-11-02 (+11d) | 2026-10-28 → 2026-11-07 (+10d) | 46d → 35d | baseline start 2026-10-22 → 2026-11-02; baseline finish 2026-10-28 → 2026-11-07 |
| 1102 | Interruptor termomagnético 1x20 A | 2026-10-29 → 2026-11-07 (+9d) | 2026-10-29 → 2026-11-09 (+11d) | 46d → 35d | baseline start 2026-10-29 → 2026-11-07; baseline finish 2026-10-29 → 2026-11-09 |
| 1103 | Interruptor termomagnético 2x20 A | 2026-10-29 → 2026-11-07 (+9d) | 2026-10-29 → 2026-11-09 (+11d) | 46d → 35d | baseline start 2026-10-29 → 2026-11-07; baseline finish 2026-10-29 → 2026-11-09 |
| 1104 | Salida para apagador 3 vías | 2026-10-17 → 2026-10-28 (+11d) | 2026-10-22 → 2026-11-02 (+11d) | 42d → 31d | baseline start 2026-10-17 → 2026-10-28; baseline finish 2026-10-22 → 2026-11-02 |
| 1105 | Salida para apagador doble | 2026-10-22 → 2026-11-02 (+11d) | 2026-10-26 → 2026-11-05 (+10d) | 44d → 33d | baseline start 2026-10-22 → 2026-11-02; baseline finish 2026-10-26 → 2026-11-05 |
| 1106 | Salida para apagador sencillo | 2026-10-22 → 2026-11-02 (+11d) | 2026-10-26 → 2026-11-05 (+10d) | 44d → 33d | baseline start 2026-10-22 → 2026-11-02; baseline finish 2026-10-26 → 2026-11-05 |
| 1107 | Salida de alumbrado en losa | 2026-10-22 → 2026-11-02 (+11d) | 2026-10-28 → 2026-11-07 (+10d) | 42d → 31d | baseline start 2026-10-22 → 2026-11-02; baseline finish 2026-10-28 → 2026-11-07 |
| 1108 | Salida para contacto exterior doble | 2026-10-22 → 2026-11-02 (+11d) | 2026-10-24 → 2026-11-04 (+11d) | 45d → 34d | baseline start 2026-10-22 → 2026-11-02; baseline finish 2026-10-24 → 2026-11-04 |
| 1109 | Salida para contacto 220 V | 2026-10-26 → 2026-11-04 (+9d) | 2026-10-28 → 2026-11-07 (+10d) | 42d → 31d | baseline start 2026-10-26 → 2026-11-04; baseline finish 2026-10-28 → 2026-11-07 |
| 1110 | Salida para contacto doble | 2026-10-26 → 2026-11-04 (+9d) | 2026-10-30 → 2026-11-10 (+11d) | 45d → 34d | baseline start 2026-10-26 → 2026-11-04; baseline finish 2026-10-30 → 2026-11-10 |
| 1111 | Salida para contacto doble área húmeda | 2026-10-29 → 2026-11-07 (+9d) | 2026-10-30 → 2026-11-10 (+11d) | 45d → 34d | baseline start 2026-10-29 → 2026-11-07; baseline finish 2026-10-30 → 2026-11-10 |
| 1112 | Salida TV / telefonía / intercom | 2026-10-29 → 2026-11-07 (+9d) | 2026-11-03 → 2026-11-12 (+9d) | 43d → 32d | baseline start 2026-10-29 → 2026-11-07; baseline finish 2026-11-03 → 2026-11-12 |
| 1113 | Extractor 4 baño | 2026-10-29 → 2026-11-07 (+9d) | 2026-11-04 → 2026-11-13 (+9d) | 42d → 31d | baseline start 2026-10-29 → 2026-11-07; baseline finish 2026-11-04 → 2026-11-13 |
| 1114 | Prueba eléctrica | 2026-11-04 → 2026-11-13 (+9d) | 2026-11-06 → 2026-11-18 (+12d) | 42d → 31d | baseline start 2026-11-04 → 2026-11-13; baseline finish 2026-11-06 → 2026-11-18 |
| 1115 | **INSTALACIÓN HIDRO-SANITARIA** | 2026-10-01 → 2026-10-12 (+11d) | 2026-10-15 → 2026-10-24 (+9d) | 13d → 2d | baseline start 2026-10-01 → 2026-10-12; baseline finish 2026-10-15 → 2026-10-24 |
| 1116 | Tubería condensados PVC 1 | 2026-10-01 → 2026-10-12 (+11d) | 2026-10-07 → 2026-10-17 (+10d) | 13d → 2d | baseline start 2026-10-01 → 2026-10-12; baseline finish 2026-10-07 → 2026-10-17 |
| 1117 | Tubería sanitaria PVC 4 | 2026-10-01 → 2026-10-12 (+11d) | 2026-10-07 → 2026-10-17 (+10d) | 21d → 10d | baseline start 2026-10-01 → 2026-10-12; baseline finish 2026-10-07 → 2026-10-17 |
| 1118 | Coladera H-444 | 2026-10-07 → 2026-10-17 (+10d) | 2026-10-08 → 2026-10-19 (+11d) | 21d → 10d | baseline start 2026-10-07 → 2026-10-17; baseline finish 2026-10-08 → 2026-10-19 |
| 1119 | Caja PVC para lavadora | 2026-10-01 → 2026-10-12 (+11d) | 2026-10-05 → 2026-10-15 (+10d) | 13d → 2d | baseline start 2026-10-01 → 2026-10-12; baseline finish 2026-10-05 → 2026-10-15 |
| 1120 | Salida para secadora PVC 4 | 2026-10-01 → 2026-10-12 (+11d) | 2026-10-05 → 2026-10-15 (+10d) | 13d → 2d | baseline start 2026-10-01 → 2026-10-12; baseline finish 2026-10-05 → 2026-10-15 |
| 1121 | Salida hidráulica para boiler | 2026-10-01 → 2026-10-12 (+11d) | 2026-10-03 → 2026-10-14 (+11d) | 14d → 3d | baseline start 2026-10-01 → 2026-10-12; baseline finish 2026-10-03 → 2026-10-14 |
| 1122 | Salida hidráulica para llave de jardín | 2026-10-01 → 2026-10-12 (+11d) | 2026-10-05 → 2026-10-15 (+10d) | 13d → 2d | baseline start 2026-10-01 → 2026-10-12; baseline finish 2026-10-05 → 2026-10-15 |
| 1123 | Salida hidráulica para lavabo | 2026-10-01 → 2026-10-12 (+11d) | 2026-10-06 → 2026-10-16 (+10d) | 13d → 2d | baseline start 2026-10-01 → 2026-10-12; baseline finish 2026-10-06 → 2026-10-16 |
| 1124 | Salida hidráulica para purificación | 2026-10-01 → 2026-10-12 (+11d) | 2026-10-06 → 2026-10-16 (+10d) | 13d → 2d | baseline start 2026-10-01 → 2026-10-12; baseline finish 2026-10-06 → 2026-10-16 |
| 1125 | Salida sanitaria para lavabo | 2026-10-03 → 2026-10-14 (+11d) | 2026-10-06 → 2026-10-16 (+10d) | 13d → 2d | baseline start 2026-10-03 → 2026-10-14; baseline finish 2026-10-06 → 2026-10-16 |
| 1126 | Salida hidráulica para lavadero | 2026-10-03 → 2026-10-14 (+11d) | 2026-10-06 → 2026-10-16 (+10d) | 13d → 2d | baseline start 2026-10-03 → 2026-10-14; baseline finish 2026-10-06 → 2026-10-16 |

| ID | Task | Start | Finish | Duration | Complete | Total float | Other |
| --- | --- | --- | --- | --- | --- | --- | --- |
| 1127 | Salida sanitaria para lavadero | 2026-10-05 → 2026-10-15 (+10d) | 2026-10-07 → 2026-10-17 (+10d) |  |  | 13d → 2d | baseline start 2026-10-05 → 2026-10-15; baseline finish 2026-10-07 → 2026-10-17 |
| 1128 | Salida hidráulica para lavadora | 2026-10-05 → 2026-10-15 (+10d) | 2026-10-07 → 2026-10-17 (+10d) |  |  | 13d → 2d | baseline start 2026-10-05 → 2026-10-15; baseline finish 2026-10-07 → 2026-10-17 |
| 1129 | Salida sanitaria para lavadora | 2026-10-06 → 2026-10-16 (+10d) | 2026-10-08 → 2026-10-19 (+11d) |  |  | 13d → 2d | baseline start 2026-10-06 → 2026-10-16; baseline finish 2026-10-08 → 2026-10-19 |
| 1130 | Salida hidráulica para regadera | 2026-10-06 → 2026-10-16 (+10d) | 2026-10-13 → 2026-10-22 (+9d) |  |  | 18d → 7d | baseline start 2026-10-06 → 2026-10-16; baseline finish 2026-10-13 → 2026-10-22 |
| 1131 | Salida sanitaria para regadera | 2026-10-06 → 2026-10-16 (+10d) | 2026-10-12 → 2026-10-21 (+9d) |  |  | 19d → 8d | baseline start 2026-10-06 → 2026-10-16; baseline finish 2026-10-12 → 2026-10-21 |
| 1132 | Salida hidráulica para WC | 2026-10-03 → 2026-10-14 (+11d) | 2026-10-06 → 2026-10-16 (+10d) |  |  | 13d → 2d | baseline start 2026-10-03 → 2026-10-14; baseline finish 2026-10-06 → 2026-10-16 |
| 1133 | Salida sanitaria para WC | 2026-10-06 → 2026-10-16 (+10d) | 2026-10-12 → 2026-10-21 (+9d) |  |  | 13d → 2d | baseline start 2026-10-06 → 2026-10-16; baseline finish 2026-10-12 → 2026-10-21 |
| 1134 | Salida hidráulica para zinc | 2026-10-06 → 2026-10-16 (+10d) | 2026-10-12 → 2026-10-21 (+9d) |  |  | 13d → 2d | baseline start 2026-10-06 → 2026-10-16; baseline finish 2026-10-12 → 2026-10-21 |
| 1135 | Salida sanitaria para zinc | 2026-10-08 → 2026-10-19 (+11d) | 2026-10-13 → 2026-10-22 (+9d) |  |  | 13d → 2d | baseline start 2026-10-08 → 2026-10-19; baseline finish 2026-10-13 → 2026-10-22 |
| 1136 | Tubo para ventila de baño 2 | 2026-10-01 → 2026-10-12 (+11d) | 2026-10-07 → 2026-10-17 (+10d) |  |  | 13d → 2d | baseline start 2026-10-01 → 2026-10-12; baseline finish 2026-10-07 → 2026-10-17 |
| 1137 | Tubo para minisplit PVC 3 | 2026-10-07 → 2026-10-17 (+10d) | 2026-10-14 → 2026-10-23 (+9d) |  |  | 13d → 2d | baseline start 2026-10-07 → 2026-10-17; baseline finish 2026-10-14 → 2026-10-23 |
| 1138 | Cuadro de medición | 2026-10-05 → 2026-10-15 (+10d) | 2026-10-12 → 2026-10-21 (+9d) |  |  | 18d → 7d | baseline start 2026-10-05 → 2026-10-15; baseline finish 2026-10-12 → 2026-10-21 |
| 1139 | Pozo de absorción 0.50x0.50x0.50 | 2026-10-05 → 2026-10-15 (+10d) | 2026-10-08 → 2026-10-19 (+11d) |  |  | 21d → 10d | baseline start 2026-10-05 → 2026-10-15; baseline finish 2026-10-08 → 2026-10-19 |
| 1140 | Prueba sanitaria final | 2026-10-14 → 2026-10-23 (+9d) | 2026-10-15 → 2026-10-24 (+9d) |  |  | 17d → 6d | baseline start 2026-10-14 → 2026-10-23; baseline finish 2026-10-15 → 2026-10-24 |
| 1141 | Prueba hidrostática final | 2026-10-13 → 2026-10-22 (+9d) | 2026-10-14 → 2026-10-23 (+9d) |  |  | 18d → 7d | baseline start 2026-10-13 → 2026-10-22; baseline finish 2026-10-14 → 2026-10-23 |
| 1142 | Salida válvula control 19 mm | 2026-10-12 → 2026-10-21 (+9d) | 2026-10-13 → 2026-10-22 (+9d) |  |  | 18d → 7d | baseline start 2026-10-12 → 2026-10-21; baseline finish 2026-10-13 → 2026-10-22 |
| 1143 | Salida válvula control 13 mm | 2026-10-12 → 2026-10-21 (+9d) | 2026-10-13 → 2026-10-22 (+9d) |  |  | 18d → 7d | baseline start 2026-10-12 → 2026-10-21; baseline finish 2026-10-13 → 2026-10-22 |
| 1144 | Salida hidráulica para tanque hidroneumático | 2026-10-05 → 2026-10-15 (+10d) | 2026-10-08 → 2026-10-19 (+11d) |  |  | 21d → 10d | baseline start 2026-10-05 → 2026-10-15; baseline finish 2026-10-08 → 2026-10-19 |
| 1145 | Salida hidráulica para Active Driver | 2026-10-05 → 2026-10-15 (+10d) | 2026-10-08 → 2026-10-19 (+11d) |  |  | 21d → 10d | baseline start 2026-10-05 → 2026-10-15; baseline finish 2026-10-08 → 2026-10-19 |
| 1146 | **INSTALACION DE GAS** | 2026-09-29 → 2026-10-08 (+9d) | 2026-10-08 → 2026-10-19 (+11d) |  |  | 46d → 38d | baseline start 2026-09-29 → 2026-10-08; baseline finish 2026-10-08 → 2026-10-19 |
| 1147 | Ramaleo para gas 1/2 | 2026-10-02 → 2026-10-13 (+11d) | 2026-10-08 → 2026-10-19 (+11d) |  |  | 46d → 38d | baseline start 2026-10-02 → 2026-10-13; baseline finish 2026-10-08 → 2026-10-19 |
| 1148 | Excavación a mano material tipo B | 2026-09-29 → 2026-10-08 (+9d) | 2026-10-02 → 2026-10-13 (+11d) |  |  | 46d → 38d | baseline start 2026-09-29 → 2026-10-08; baseline finish 2026-10-02 → 2026-10-13 |
| 1149 | **MUEBLES SANITARIOS** | 2026-11-06 → 2026-11-18 (+12d) | 2026-12-14 → 2026-12-23 (+9d) |  |  | 25d → 14d | baseline start 2026-11-06 → 2026-11-18; baseline finish 2026-12-14 → 2026-12-23 |
| 1150 | WC completo Austral | 2026-11-06 → 2026-11-18 (+12d) | 2026-11-09 → 2026-11-20 (+11d) |  |  | 27d → 16d | baseline start 2026-11-06 → 2026-11-18; baseline finish 2026-11-09 → 2026-11-20 |
| 1151 | Lavabo Senna con pedestal | 2026-11-06 → 2026-11-18 (+12d) | 2026-11-11 → 2026-11-23 (+12d) |  |  | 25d → 14d | baseline start 2026-11-06 → 2026-11-18; baseline finish 2026-11-11 → 2026-11-23 |
| 1152 | Tarja / lavabo combo Guinea 80x45 | 2026-11-06 → 2026-11-18 (+12d) | 2026-11-09 → 2026-11-20 (+11d) |  |  | 53d → 45d | baseline start 2026-11-06 → 2026-11-18; baseline finish 2026-11-09 → 2026-11-20 |
| 1153 | Regadera con monomando | 2026-11-09 → 2026-11-20 (+11d) | 2026-11-12 → 2026-11-24 (+12d) |  |  | 24d → 13d | baseline start 2026-11-09 → 2026-11-20; baseline finish 2026-11-12 → 2026-11-24 |
| 1154 | Coladera inserto cerámico | 2026-11-10 → 2026-11-21 (+11d) | 2026-11-12 → 2026-11-24 (+12d) |  |  | 24d → 13d | baseline start 2026-11-10 → 2026-11-21; baseline finish 2026-11-12 → 2026-11-24 |
| 1155 | Toallero sencillo | 2026-12-12 → 2026-12-23 (+11d) | 2026-12-14 → 2026-12-23 (+9d) |  |  | 13d → 2d | baseline start 2026-12-12 → 2026-12-23; baseline finish 2026-12-14 → 2026-12-23 |
| 1156 | Toallero barra | 2026-12-12 → 2026-12-23 (+11d) | 2026-12-14 → 2026-12-23 (+9d) |  |  | 13d → 2d | baseline start 2026-12-12 → 2026-12-23; baseline finish 2026-12-14 → 2026-12-23 |
| 1157 | Portapapel | 2026-12-12 → 2026-12-23 (+11d) | 2026-12-14 → 2026-12-23 (+9d) |  |  | 13d → 2d | baseline start 2026-12-12 → 2026-12-23; baseline finish 2026-12-14 → 2026-12-23 |
| 1158 | Gancho baño | 2026-12-12 → 2026-12-23 (+11d) | 2026-12-14 → 2026-12-23 (+9d) |  |  | 13d → 2d | baseline start 2026-12-12 → 2026-12-23; baseline finish 2026-12-14 → 2026-12-23 |
| 1159 | **EQUIPAMIENTO** | 2026-09-23 → 2026-10-02 (+9d) | 2026-09-30 → 2026-10-09 (+9d) |  |  | 72d → 61d | baseline start 2026-09-23 → 2026-10-02; baseline finish 2026-09-30 → 2026-10-09 |
| 1160 | Electronivel Rotoplas 5 m | 2026-09-24 → 2026-10-03 (+9d) | 2026-09-26 → 2026-10-06 (+10d) |  |  | 75d → 64d | baseline start 2026-09-24 → 2026-10-03; baseline finish 2026-09-26 → 2026-10-06 |
| 1161 | Manómetro | 2026-09-24 → 2026-10-03 (+9d) | 2026-09-25 → 2026-10-05 (+10d) |  |  | 76d → 65d | baseline start 2026-09-24 → 2026-10-03; baseline finish 2026-09-25 → 2026-10-05 |
| 1162 | Interruptor de presión 30-50 PSI | 2026-09-24 → 2026-10-03 (+9d) | 2026-09-25 → 2026-10-05 (+10d) |  |  | 76d → 65d | baseline start 2026-09-24 → 2026-10-03; baseline finish 2026-09-25 → 2026-10-05 |
| 1163 | Tanque hidroneumático FPS-24LX | 2026-09-24 → 2026-10-03 (+9d) | 2026-09-28 → 2026-10-07 (+9d) |  |  | 72d → 61d | baseline start 2026-09-24 → 2026-10-03; baseline finish 2026-09-28 → 2026-10-07 |
| 1164 | Bomba sumergible Dominator 1.2 HP | 2026-09-28 → 2026-10-07 (+9d) | 2026-09-30 → 2026-10-09 (+9d) |  |  | 72d → 61d | baseline start 2026-09-28 → 2026-10-07; baseline finish 2026-09-30 → 2026-10-09 |
| 1165 | Cisterna prefabricada 2800 L | 2026-09-23 → 2026-10-02 (+9d) | 2026-09-24 → 2026-10-03 (+9d) |  |  | 72d → 61d | baseline start 2026-09-23 → 2026-10-02; baseline finish 2026-09-24 → 2026-10-03 |
| 1166 | **LUMINARIAS** | 2026-10-29 → 2026-11-07 (+9d) | 2026-11-04 → 2026-11-13 (+9d) |  |  | 42d → 31d | baseline start 2026-10-29 → 2026-11-07; baseline finish 2026-11-04 → 2026-11-13 |
| 1167 | Roseta cerámica | 2026-10-29 → 2026-11-07 (+9d) | 2026-11-02 → 2026-11-11 (+9d) |  |  | 44d → 33d | baseline start 2026-10-29 → 2026-11-07; baseline finish 2026-11-02 → 2026-11-11 |
| 1168 | Luminaria lagartijera LED | 2026-10-29 → 2026-11-07 (+9d) | 2026-11-02 → 2026-11-11 (+9d) |  |  | 44d → 33d | baseline start 2026-10-29 → 2026-11-07; baseline finish 2026-11-02 → 2026-11-11 |
| 1169 | Spot 6W Tecnolite | 2026-10-29 → 2026-11-07 (+9d) | 2026-11-02 → 2026-11-11 (+9d) |  |  | 44d → 33d | baseline start 2026-10-29 → 2026-11-07; baseline finish 2026-11-02 → 2026-11-11 |
| 1170 | Spot 7W Tecnolite | 2026-10-29 → 2026-11-07 (+9d) | 2026-11-02 → 2026-11-11 (+9d) |  |  | 44d → 33d | baseline start 2026-10-29 → 2026-11-07; baseline finish 2026-11-02 → 2026-11-11 |
| 1171 | Arbotante exterior | 2026-10-29 → 2026-11-07 (+9d) | 2026-10-30 → 2026-11-10 (+11d) |  |  | 42d → 31d | baseline start 2026-10-29 → 2026-11-07; baseline finish 2026-10-30 → 2026-11-10 |
| 1172 | Estaca LED exterior | 2026-10-31 → 2026-11-10 (+10d) | 2026-11-04 → 2026-11-13 (+9d) |  |  | 42d → 31d | baseline start 2026-10-31 → 2026-11-10; baseline finish 2026-11-04 → 2026-11-13 |
| 1173 | Tira LED | 2026-10-31 → 2026-11-10 (+10d) | 2026-11-04 → 2026-11-13 (+9d) |  |  | 42d → 31d | baseline start 2026-10-31 → 2026-11-10; baseline finish 2026-11-04 → 2026-11-13 |
| 1174 | Spot exterior 50W | 2026-10-29 → 2026-11-07 (+9d) | 2026-10-30 → 2026-11-10 (+11d) |  |  | 45d → 34d | baseline start 2026-10-29 → 2026-11-07; baseline finish 2026-10-30 → 2026-11-10 |
| 1175 | **TIMBRE** | 2026-10-30 → 2026-11-09 (+10d) | 2026-11-02 → 2026-11-11 (+9d) |  |  | 44d → 33d | baseline start 2026-10-30 → 2026-11-09; baseline finish 2026-11-02 → 2026-11-11 |
| 1176 | Timbre inalámbrico con bocina | 2026-10-30 → 2026-11-09 (+10d) | 2026-11-02 → 2026-11-11 (+9d) |  |  | 44d → 33d | baseline start 2026-10-30 → 2026-11-09; baseline finish 2026-11-02 → 2026-11-11 |
| 1177 | **OBRA EXTERIOR - BARDA** | 2026-10-05 → 2026-10-15 (+10d) | 2026-10-27 → 2026-11-06 (+10d) |  |  | 50d → 39d | baseline start 2026-10-05 → 2026-10-15; baseline finish 2026-10-27 → 2026-11-06 |
| 1178 | Murete convencional | 2026-10-12 → 2026-10-21 (+9d) | 2026-10-17 → 2026-10-27 (+10d) |  |  | 56d → 45d | baseline start 2026-10-12 → 2026-10-21; baseline finish 2026-10-17 → 2026-10-27 |
| 1179 | Barda de block aparente | 2026-10-05 → 2026-10-15 (+10d) | 2026-10-27 → 2026-11-06 (+10d) |  |  | 50d → 39d | baseline start 2026-10-05 → 2026-10-15; baseline finish 2026-10-27 → 2026-11-06 |
| 1180 | **TERCER LIMPIEZA DE OBRA** | 2026-12-14 → 2026-12-26 (+12d) | 2027-01-04 → 2027-01-18 (+14d) | 13d → 16d |  | 13d → 2d | baseline start 2026-12-14 → 2026-12-26; baseline finish 2027-01-04 → 2027-01-18 |
| 1181 | Limpieza fina para entrega | 2026-12-14 → 2026-12-26 (+12d) | 2026-12-21 → 2027-01-04 (+14d) | 6d → 5d |  | 13d → 2d | baseline start 2026-12-14 → 2026-12-26; baseline finish 2026-12-21 → 2027-01-04 |
| 1182 | Tercera limpieza de obra | 2026-12-22 → 2027-01-04 (+13d) | 2026-12-29 → 2027-01-11 (+13d) | 4d → 5d |  | 13d → 2d | baseline start 2026-12-22 → 2027-01-04; baseline finish 2026-12-29 → 2027-01-11 |
| 1183 | Tercera carga y acarreo de escombro | 2026-12-29 → 2027-01-11 (+13d) | 2027-01-04 → 2027-01-18 (+14d) | 3d → 6d |  | 13d → 2d | baseline start 2026-12-29 → 2027-01-11; baseline finish 2027-01-04 → 2027-01-18 |
| 1184 | **LOTE 21 M-663 CORSAC-A** |  |  |  | 0% → 1% |  |  |
| 1186 | Inicio del Lote-21 M-663 Corsac-A |  |  |  |  |  | was named Inicio del LOTE 21 M-663 CORSAC-A |
| 1192 | Trazo y nivelación |  |  |  |  |  | resources Corsac - Trazo y nivelación → none |
| 1193 | **EXCAVACIONES** |  | 2026-06-05 A |  | 18% → 100% | 2d → none |  |
| 1194 | Excavación a mano material tipo B |  | 2026-06-05 A |  | 29% → 100% | 2d → none |  |
| 1195 | Acarreo en carretilla 20 m | 2026-06-03 A | 2026-06-05 A |  | 0% → 100% | 2d → none |  |
| 1196 | **CIMENTACION** | 2026-06-05 A |  |  | 0% → 10% |  |  |
| 1197 | Cimbra perimetral losa de cimentación | 2026-06-05 A |  |  | 0% → 83% |  |  |
| 1198 | Sistema antitermitas PVC | 2026-06-05 A |  |  | 0% → 83% |  |  |
| 1491 | Inicio del Lote-22 M-663 Corsac-B |  |  |  |  |  | was named Inicio del LOTE 22 M-663 CORSAC-B |
| 1497 | Trazo y nivelación |  |  |  |  |  | resources Artico - Trazo y nivelación → none |

## Version 7 (data date 2026-06-13, saved 2026-06-15)

Note of the change: Módulo 09 · Look Ahead - Last Planner

Last finish 2027-01-20 → 2027-01-21 (+1d). Complete tasks 99 → 103.

Changed:

| ID | Task | Start | Finish | Duration | Complete | Total float | Predecessors |
| --- | --- | --- | --- | --- | --- | --- | --- |
| 1 | **ALTOZANO - METTA - 6 CASAS** |  | 2027-01-20 → 2027-01-21 (+1d) | 199d → 200d |  |  |  |
| 2 | **HITOS IMPORTANTES** |  | 2026-06-10 A |  | 0% → 100% | 0d → none |  |
| 9 | INICIO LOTE-22 M-663 CORSAC-B | 2026-06-10 A | 2026-06-10 A |  | 0% → 100% | 0d → none |  |
| 10 | **LOTE 04 M-661 ARTICO-A** |  | 2026-12-16 → 2026-12-22 (+6d) | 175d → 180d | 11% → 12% | 24d → 20d |  |
| 11 | **HITOS IMPORTANTES DEL LOTE** |  | 2026-12-16 → 2026-12-22 (+6d) | 175d → 180d |  | 24d → 20d |  |
| 14 | Colado de Losa de Entrepiso | 2026-07-08 → 2026-07-15 (+7d) | 2026-07-08 → 2026-07-15 (+7d) |  |  | 151d → 147d |  |
| 15 | Colado de Losa de Azotea | 2026-08-14 → 2026-08-21 (+7d) | 2026-08-14 → 2026-08-21 (+7d) |  |  | 121d → 117d |  |
| 16 | Entrega de vivienda | 2026-12-16 → 2026-12-22 (+6d) | 2026-12-16 → 2026-12-22 (+6d) |  |  | 24d → 20d |  |
| 49 | **MUROS, PLANTA BAJA. CASTILLOS Y CERRAMIENTOS** |  | 2026-06-19 → 2026-06-26 (+7d) | 20d → 25d | 51% → 47% | 166d → 162d |  |
| 51 | Castillo K1 |  | 2026-06-06 A → 2026-06-16 (+10d) | 4d → 12d | 100% → 84% | none → 0.12d |  |
| 52 | Castillo K2 |  | 2026-06-06 A → 2026-06-16 (+10d) | 4d → 12d | 100% → 84% | none → 166d |  |
| 53 | Castillo K3 | 2026-06-04 A → 2026-06-13 A (+9d) | 2026-06-08 A → 2026-06-17 (+9d) |  | 100% → 4% | none → 162d |  |
| 54 | Castillo K4 | 2026-06-04 A → 2026-06-13 A (+9d) | 2026-06-08 A → 2026-06-17 (+9d) |  | 100% → 4% | none → 162d |  |
| 55 | Castillo K5 | 2026-06-06 A → 2026-06-16 (+10d) | 2026-06-10 → 2026-06-19 (+9d) |  | 50% → 0% | 0.5d → 162d |  |
| 56 | Refuerzo de muro K6 | 2026-06-08 A → 2026-06-17 (+9d) | 2026-06-11 → 2026-06-22 (+11d) |  | 17% → 0% | 169d → 162d |  |
| 57 | Columna C1 |  | 2026-06-06 A → 2026-06-16 (+10d) | 4d → 12d | 100% → 84% | none → 3.12d |  |
| 58 | Columna C2 | 2026-06-06 A → 2026-06-10 A (+4d) | 2026-06-11 → 2026-06-19 (+8d) | 4d → 8d | 38% → 39% | 173d → 167d | 57 → 57FS-5d |
| 59 | Dala de cerramiento CR-1 | 2026-06-08 A → 2026-06-17 (+9d) | 2026-06-12 → 2026-06-23 (+11d) |  | 13% → 0% | 172d → 165d |  |
| 60 | Dala de cerramiento CR-2 | 2026-06-08 A → 2026-06-17 (+9d) | 2026-06-11 → 2026-06-22 (+11d) |  | 17% → 0% | 173d → 166d |  |
| 61 | Cadena block dala | 2026-06-11 → 2026-06-22 (+11d) | 2026-06-16 → 2026-06-26 (+10d) |  |  | 169d → 162d |  |
| 62 | Muro de ladrillo aparente | 2026-06-02 A → 2026-06-08 A (+6d) | 2026-06-19 → 2026-06-26 (+7d) |  | 37% → 34% | 24d → 20d | 44 → 44FS+5d |
| 63 | Muro de block planta baja | 2026-06-04 A → 2026-06-10 A (+6d) | 2026-06-19 → 2026-06-26 (+7d) |  | 27% → 24% | 24d → 20d | 44FS+2d → 44FS+7d |
| 64 | **ESCALERA** | 2026-07-09 → 2026-07-15 (+6d) | 2026-07-27 → 2026-08-01 (+5d) |  |  | 137d → 133d |  |
| 65 | Escalera de concreto armado | 2026-07-09 → 2026-07-15 (+6d) | 2026-07-27 → 2026-08-01 (+5d) |  |  | 137d → 133d |  |
| 66 | **LOSA DE ENTREPISO (viegueta y caseton)** | 2026-06-17 → 2026-06-24 (+7d) | 2026-07-09 → 2026-07-16 (+7d) |  |  | 27d → 23d |  |
| 67 | Vigueta pretensada 1.40 m | 2026-06-17 → 2026-06-24 (+7d) | 2026-06-22 → 2026-06-27 (+5d) |  |  | 29d → 25d |  |
| 68 | Vigueta pretensada 1.95 m | 2026-06-18 → 2026-06-25 (+7d) | 2026-06-24 → 2026-06-30 (+6d) |  |  | 27d → 23d |  |
| 69 | Vigueta pretensada 3.35 m | 2026-06-19 → 2026-06-26 (+7d) | 2026-06-25 → 2026-07-01 (+6d) |  |  | 26d → 22d |  |
| 70 | Vigueta pretensada 3.50 m | 2026-06-22 → 2026-06-27 (+5d) | 2026-06-26 → 2026-07-02 (+6d) |  |  | 25d → 21d |  |
| 71 | Vigueta pretensada 3.75 m | 2026-06-22 → 2026-06-27 (+5d) | 2026-06-26 → 2026-07-02 (+6d) |  |  | 25d → 21d |  |
| 72 | Vigueta pretensada 3.90 m | 2026-06-22 → 2026-06-27 (+5d) | 2026-06-26 → 2026-07-02 (+6d) |  |  | 25d → 21d |  |
| 73 | Bovedilla poliestireno entrepiso | 2026-06-26 → 2026-07-02 (+6d) | 2026-06-29 → 2026-07-04 (+5d) |  |  | 25d → 21d |  |
| 74 | Dala de coronamiento | 2026-06-26 → 2026-07-02 (+6d) | 2026-06-30 → 2026-07-06 (+6d) |  |  | 28d → 24d |  |
| 75 | Nervadura NR-1 | 2026-06-27 → 2026-07-03 (+6d) | 2026-07-01 → 2026-07-07 (+6d) |  |  | 24d → 20d |  |
| 76 | Nervadura NR-2 | 2026-06-27 → 2026-07-03 (+6d) | 2026-07-01 → 2026-07-07 (+6d) |  |  | 26d → 22d |  |
| 77 | Trabe TR-1 | 2026-06-27 → 2026-07-03 (+6d) | 2026-07-03 → 2026-07-09 (+6d) |  |  | 24d → 20d |  |
| 78 | Malla 66-10/10 losa de compresión | 2026-07-03 → 2026-07-10 (+7d) | 2026-07-06 → 2026-07-13 (+7d) |  |  | 25d → 21d |  |
| 79 | Cimbra losa de azotea | 2026-06-22 → 2026-06-27 (+5d) | 2026-06-27 → 2026-07-03 (+6d) |  |  | 24d → 20d |  |
| 80 | Concreto losa de entrepiso f’c=200 | 2026-07-08 → 2026-07-14 (+6d) | 2026-07-08 → 2026-07-15 (+7d) |  |  | 24d → 20d |  |
| 81 | Curado de concreto | 2026-07-09 → 2026-07-15 (+6d) | 2026-07-09 → 2026-07-16 (+7d) |  |  | 24d → 20d |  |
| 82 | Cimbra exterior corta losa | 2026-06-30 → 2026-07-07 (+7d) | 2026-07-03 → 2026-07-09 (+6d) |  |  | 27d → 23d |  |
| 83 | Ramaleo poliducto eléctrico entrepiso | 2026-06-29 → 2026-07-06 (+7d) | 2026-07-01 → 2026-07-07 (+6d) |  |  | 28d → 24d |  |
| 84 | Ramaleo para cable poliducto 3/4 | 2026-06-29 → 2026-07-06 (+7d) | 2026-06-30 → 2026-07-06 (+6d) |  |  | 158d → 154d |  |
| 85 | Ramaleo para TV poliducto 3/4 | 2026-07-01 → 2026-07-08 (+7d) | 2026-07-02 → 2026-07-08 (+6d) |  |  | 28d → 24d |  |
| 86 | Ramaleo hidráulico CPVC 3/4 | 2026-06-30 → 2026-07-07 (+7d) | 2026-07-02 → 2026-07-08 (+6d) |  |  | 25d → 21d |  |
| 87 | Ramaleo hidráulico CPVC 1/2 | 2026-07-02 → 2026-07-09 (+7d) | 2026-07-03 → 2026-07-09 (+6d) |  |  | 25d → 21d |  |
| 88 | Prueba hidráulica | 2026-07-02 → 2026-07-09 (+7d) | 2026-07-03 → 2026-07-09 (+6d) |  |  | 25d → 21d |  |
| 89 | Ramaleo sanitario PVC 4 | 2026-06-30 → 2026-07-07 (+7d) | 2026-07-02 → 2026-07-08 (+6d) |  |  | 25d → 21d |  |
| 90 | Ramaleo sanitario PVC 2 | 2026-07-02 → 2026-07-09 (+7d) | 2026-07-03 → 2026-07-09 (+6d) |  |  | 25d → 21d |  |
| 91 | Prueba sanitaria | 2026-07-02 → 2026-07-09 (+7d) | 2026-07-03 → 2026-07-09 (+6d) |  |  | 25d → 21d |  |
| 92 | **MUROS EN PLANTA ALTA, CASTILLOS Y CERRM.** | 2026-07-02 → 2026-07-09 (+7d) | 2026-07-29 → 2026-08-04 (+6d) |  |  | 24d → 20d |  |
| 93 | Anclaje de castillos y Columnas PA | 2026-07-02 → 2026-07-09 (+7d) | 2026-07-07 → 2026-07-14 (+7d) |  |  | 24d → 20d |  |
| 94 | Castillo K1 | 2026-07-10 → 2026-07-16 (+6d) | 2026-07-15 → 2026-07-21 (+6d) |  |  | 28d → 24d |  |
| 95 | Castillo K2 | 2026-07-11 → 2026-07-17 (+6d) | 2026-07-16 → 2026-07-22 (+6d) |  |  | 27d → 23d |  |
| 96 | Castillo K3 | 2026-07-13 → 2026-07-18 (+5d) | 2026-07-16 → 2026-07-22 (+6d) |  |  | 27d → 23d |  |
| 97 | Castillo K4 | 2026-07-15 → 2026-07-21 (+6d) | 2026-07-18 → 2026-07-24 (+6d) |  |  | 28d → 24d |  |
| 98 | Castillo K5 | 2026-07-15 → 2026-07-21 (+6d) | 2026-07-18 → 2026-07-24 (+6d) |  |  | 28d → 24d |  |
| 99 | Refuerzo de muro K6 | 2026-07-16 → 2026-07-22 (+6d) | 2026-07-20 → 2026-07-27 (+7d) |  |  | 27d → 23d |  |
| 100 | Dala de cerramiento CR-1 | 2026-07-20 → 2026-07-27 (+7d) | 2026-07-24 → 2026-07-31 (+7d) |  |  | 27d → 23d |  |
| 101 | Cadena block dala | 2026-07-24 → 2026-07-31 (+7d) | 2026-07-29 → 2026-08-04 (+6d) |  |  | 27d → 23d |  |
| 102 | Muro de ladrillo aparente | 2026-07-10 → 2026-07-16 (+6d) | 2026-07-29 → 2026-08-04 (+6d) |  |  | 24d → 20d |  |
| 103 | Muro de block planta alta | 2026-07-11 → 2026-07-17 (+6d) | 2026-07-29 → 2026-08-04 (+6d) |  |  | 24d → 20d |  |
| 104 | **LOSA AZOTEA** | 2026-07-29 → 2026-08-04 (+6d) | 2026-08-17 → 2026-08-22 (+5d) |  |  | 24d → 20d |  |
| 105 | Cortalosa CL-1 | 2026-08-11 → 2026-08-18 (+7d) | 2026-08-13 → 2026-08-20 (+7d) |  |  | 24d → 20d |  |
| 106 | Vigueta pretensada V11-40 390 | 2026-07-29 → 2026-08-04 (+6d) | 2026-08-04 → 2026-08-10 (+6d) |  |  | 27d → 23d |  |
| 107 | Vigueta pretensada V11-30 280 | 2026-07-29 → 2026-08-04 (+6d) | 2026-08-04 → 2026-08-10 (+6d) |  |  | 27d → 23d |  |
| 108 | Vigueta pretensada V11-30 285 | 2026-07-29 → 2026-08-04 (+6d) | 2026-08-04 → 2026-08-10 (+6d) |  |  | 27d → 23d |  |
| 109 | Vigueta pretensada V11-30 220 | 2026-07-31 → 2026-08-06 (+6d) | 2026-08-06 → 2026-08-12 (+6d) |  |  | 25d → 21d |  |
| 110 | Vigueta pretensada V11-40 75 | 2026-07-31 → 2026-08-06 (+6d) | 2026-08-06 → 2026-08-12 (+6d) |  |  | 25d → 21d |  |
| 111 | Vigueta pretensada V11-40 195 | 2026-08-01 → 2026-08-07 (+6d) | 2026-08-07 → 2026-08-13 (+6d) |  |  | 24d → 20d |  |

| ID | Task | Start | Finish | Total float |
| --- | --- | --- | --- | --- |
| 112 | Vigueta pretensada V11-50 450 | 2026-08-01 → 2026-08-07 (+6d) | 2026-08-07 → 2026-08-13 (+6d) | 24d → 20d |
| 113 | Bovedilla poliestireno azotea | 2026-08-07 → 2026-08-13 (+6d) | 2026-08-11 → 2026-08-18 (+7d) | 24d → 20d |
| 114 | Malla 66-10/10 losa de compresión | 2026-08-11 → 2026-08-18 (+7d) | 2026-08-13 → 2026-08-20 (+7d) | 24d → 20d |
| 115 | Concreto losa de azotea f’c=200 | 2026-08-13 → 2026-08-20 (+7d) | 2026-08-14 → 2026-08-21 (+7d) | 24d → 20d |
| 116 | Curado de concreto | 2026-08-14 → 2026-08-21 (+7d) | 2026-08-17 → 2026-08-22 (+5d) | 24d → 20d |
| 117 | Cimbra losa de azotea | 2026-07-29 → 2026-08-04 (+6d) | 2026-08-04 → 2026-08-10 (+6d) | 32d → 28d |
| 118 | Ramaleo de poliducto para inst. electrica en azotea | 2026-08-11 → 2026-08-18 (+7d) | 2026-08-13 → 2026-08-20 (+7d) | 24d → 20d |
| 119 | **PRETIL Y ACABADOS DE AZOTEA** | 2026-08-17 → 2026-08-22 (+5d) | 2026-09-09 → 2026-09-15 (+6d) | 24d → 20d |
| 120 | Castillo K1 | 2026-08-19 → 2026-08-25 (+6d) | 2026-08-25 → 2026-08-31 (+6d) | 24d → 20d |
| 121 | Dala de cerramiento en pretil | 2026-08-22 → 2026-08-28 (+6d) | 2026-08-27 → 2026-09-02 (+6d) | 24d → 20d |
| 122 | Muro de block 12x15x40 | 2026-08-17 → 2026-08-22 (+5d) | 2026-08-22 → 2026-08-28 (+6d) | 24d → 20d |
| 123 | Chaflán en azotea | 2026-08-25 → 2026-09-01 (+7d) | 2026-08-29 → 2026-09-04 (+6d) | 24d → 20d |
| 124 | Aplanado exterior Mortermax fino | 2026-08-27 → 2026-09-03 (+7d) | 2026-09-02 → 2026-09-09 (+7d) | 24d → 20d |
| 125 | Acabado de azotea para impermeabilizar | 2026-09-04 → 2026-09-10 (+6d) | 2026-09-09 → 2026-09-15 (+6d) | 24d → 20d |
| 126 | Curado de concreto | 2026-09-03 → 2026-09-09 (+6d) | 2026-09-03 → 2026-09-10 (+7d) | 24d → 20d |
| 127 | **PRIMERA LIMPIEZA DE OBRA** | 2026-08-17 → 2026-08-22 (+5d) | 2026-08-21 → 2026-08-27 (+6d) | 77d → 73d |
| 128 | Primera limpieza de obra | 2026-08-17 → 2026-08-22 (+5d) | 2026-08-19 → 2026-08-25 (+6d) | 77d → 73d |
| 129 | Primera carga y acarreo de escombro | 2026-08-19 → 2026-08-25 (+6d) | 2026-08-21 → 2026-08-27 (+6d) | 77d → 73d |
| 130 | **IMPERMEABILIZACION** | 2026-09-09 → 2026-09-15 (+6d) | 2026-09-15 → 2026-09-23 (+8d) | 24d → 20d |
| 131 | Impermeabilización de pretil Kover 5 años | 2026-09-09 → 2026-09-15 (+6d) | 2026-09-14 → 2026-09-22 (+8d) | 25d → 21d |
| 132 | Impermeabilización de losa Kover 5 años | 2026-09-09 → 2026-09-15 (+6d) | 2026-09-15 → 2026-09-23 (+8d) | 24d → 20d |
| 133 | **ALBAÑILERIA** | 2026-08-22 → 2026-08-28 (+6d) | 2026-11-09 → 2026-11-17 (+8d) | 43d → 39d |
| 134 | Lavadero de granito | 2026-10-06 → 2026-10-13 (+7d) | 2026-10-12 → 2026-10-17 (+5d) | 76d → 72d |
| 135 | Ramaleo hidráulico exterior CPVC 1 1/4 | 2026-09-15 → 2026-09-23 (+8d) | 2026-09-21 → 2026-09-26 (+5d) | 24d → 20d |
| 136 | Ramaleo hidráulico exterior CPVC 1 | 2026-09-15 → 2026-09-23 (+8d) | 2026-09-18 → 2026-09-25 (+7d) | 24d → 20d |
| 137 | Ramaleo hidráulico exterior CPVC 3/4 | 2026-09-18 → 2026-09-25 (+7d) | 2026-09-22 → 2026-09-28 (+6d) | 24d → 20d |
| 138 | Ramaleo hidráulico exterior CPVC 1/2 | 2026-09-18 → 2026-09-25 (+7d) | 2026-09-22 → 2026-09-28 (+6d) | 24d → 20d |
| 139 | Prueba hidráulica | 2026-09-22 → 2026-09-28 (+6d) | 2026-09-23 → 2026-09-29 (+6d) | 24d → 20d |
| 140 | Ramaleo sanitario exterior PVC 4 | 2026-09-15 → 2026-09-23 (+8d) | 2026-09-22 → 2026-09-28 (+6d) | 24d → 20d |
| 141 | Ramaleo sanitario exterior PVC 2 | 2026-09-17 → 2026-09-24 (+7d) | 2026-09-22 → 2026-09-28 (+6d) | 24d → 20d |
| 142 | Prueba sanitaria | 2026-09-22 → 2026-09-28 (+6d) | 2026-09-23 → 2026-09-29 (+6d) | 24d → 20d |
| 143 | Centro de carga muros PB | 2026-09-21 → 2026-09-26 (+5d) | 2026-09-25 → 2026-10-01 (+6d) | 26d → 22d |
| 144 | Firme de concreto 8 cm | 2026-09-23 → 2026-09-29 (+6d) | 2026-09-28 → 2026-10-03 (+5d) | 70d → 66d |
| 145 | Curado de concreto | 2026-09-28 → 2026-10-03 (+5d) | 2026-09-29 → 2026-10-05 (+6d) | 70d → 66d |
| 146 | Cisterna 2800 L con instalación | 2026-08-22 → 2026-08-28 (+6d) | 2026-09-14 → 2026-09-22 (+8d) | 76d → 72d |
| 147 | Banqueta y huellas de concreto | 2026-09-30 → 2026-10-06 (+6d) | 2026-10-09 → 2026-10-16 (+7d) | 53d → 49d |
| 148 | Curado de concreto | 2026-10-09 → 2026-10-16 (+7d) | 2026-10-12 → 2026-10-17 (+5d) | 53d → 49d |
| 149 | Número oficial | 2026-11-07 → 2026-11-13 (+6d) | 2026-11-09 → 2026-11-17 (+8d) | 53d → 49d |
| 150 | Detallado de rodapié exterior | 2026-09-25 → 2026-10-01 (+6d) | 2026-09-30 → 2026-10-06 (+6d) | 85d → 81d |
| 151 | Detallado de muros interiores | 2026-09-15 → 2026-09-23 (+8d) | 2026-09-22 → 2026-09-28 (+6d) | 28d → 24d |
| 152 | **ACABADOS EN FACHADA A** | 2026-09-09 → 2026-09-15 (+6d) | 2026-11-07 → 2026-11-13 (+6d) | 54d → 50d |
| 153 | Aplanado grueso fachada | 2026-09-09 → 2026-09-15 (+6d) | 2026-09-25 → 2026-10-01 (+6d) | 84d → 80d |
| 154 | Aplanado fino estuco fachada | 2026-09-18 → 2026-09-25 (+7d) | 2026-10-01 → 2026-10-07 (+6d) | 84d → 80d |
| 155 | Pintura acrílica 1-0102P | 2026-10-27 → 2026-11-02 (+6d) | 2026-11-05 → 2026-11-11 (+6d) | 55d → 51d |
| 156 | Pintura acrílica 1-1404D | 2026-10-27 → 2026-11-02 (+6d) | 2026-11-07 → 2026-11-13 (+6d) | 53d → 49d |
| 157 | **APLANADOS Y PINTURA** | 2026-09-15 → 2026-09-23 (+8d) | 2026-12-04 → 2026-12-11 (+7d) | 26d → 22d |
| 158 | Yeso pulido en muros | 2026-09-26 → 2026-10-02 (+6d) | 2026-10-14 → 2026-10-20 (+6d) | 24d → 20d |
| 159 | Pintura vinílica 699 Cottage White | 2026-11-19 → 2026-11-25 (+6d) | 2026-12-04 → 2026-12-11 (+7d) | 24d → 20d |
| 160 | Pintura vinílica 691 Pacific Bungalow | 2026-11-06 → 2026-11-12 (+6d) | 2026-11-20 → 2026-11-26 (+6d) | 45d → 41d |
| 161 | Yeso pulido en plafones | 2026-09-15 → 2026-09-23 (+8d) | 2026-09-29 → 2026-10-05 (+6d) | 26d → 22d |
| 162 | Pintura vinílica Nano White | 2026-11-10 → 2026-11-18 (+8d) | 2026-11-20 → 2026-11-26 (+6d) | 45d → 41d |
| 163 | Perfilado de puertas y ventanas | 2026-10-01 → 2026-10-07 (+6d) | 2026-10-06 → 2026-10-13 (+7d) | 80d → 76d |
| 164 | **PISOS Y AZULEJOS** | 2026-10-08 → 2026-10-15 (+7d) | 2026-11-06 → 2026-11-12 (+6d) | 26d → 22d |
| 165 | **AREA SOCIAL** | 2026-10-12 → 2026-10-17 (+5d) | 2026-10-29 → 2026-11-05 (+7d) | 24d → 20d |
| 166 | Piso Moonside Crema 60x60 | 2026-10-12 → 2026-10-17 (+5d) | 2026-10-28 → 2026-11-04 (+7d) | 24d → 20d |
| 167 | Zoclo piso 60x60 Moonside Crema | 2026-10-23 → 2026-10-30 (+7d) | 2026-10-29 → 2026-11-05 (+7d) | 41d → 37d |
| 168 | **BAÑOS** | 2026-10-08 → 2026-10-15 (+7d) | 2026-10-29 → 2026-11-05 (+7d) | 35d → 31d |
| 169 | Piso Moonside Crema 60x60 | 2026-10-23 → 2026-10-30 (+7d) | 2026-10-28 → 2026-11-04 (+7d) | 35d → 31d |
| 170 | Zoclo piso 60x60 Moonside Crema | 2026-10-28 → 2026-11-03 (+6d) | 2026-10-29 → 2026-11-05 (+7d) | 61d → 57d |
| 171 | Piso porcelánico Acali 20x20 beige | 2026-10-23 → 2026-10-30 (+7d) | 2026-10-27 → 2026-11-03 (+7d) | 63d → 59d |
| 172 | Impermeabilización en regadera | 2026-10-16 → 2026-10-22 (+6d) | 2026-10-19 → 2026-10-24 (+5d) | 35d → 31d |
| 173 | Azulejo Moonside Crema 60x60 | 2026-10-17 → 2026-10-23 (+6d) | 2026-10-23 → 2026-10-29 (+6d) | 35d → 31d |
| 174 | Fabricacion de nicho decorativo en baños | 2026-10-08 → 2026-10-15 (+7d) | 2026-10-16 → 2026-10-22 (+6d) | 35d → 31d |
| 175 | Sardinel en regadera | 2026-10-23 → 2026-10-30 (+7d) | 2026-10-28 → 2026-11-04 (+7d) | 62d → 58d |
| 176 | **ESCALERA** | 2026-10-27 → 2026-11-02 (+6d) | 2026-11-06 → 2026-11-12 (+6d) | 24d → 20d |
| 177 | Piso Moonside Crema 60x60 | 2026-10-27 → 2026-11-02 (+6d) | 2026-11-04 → 2026-11-10 (+6d) | 24d → 20d |
| 178 | Zoclo piso 60x60 Moonside Crema | 2026-11-02 → 2026-11-07 (+5d) | 2026-11-06 → 2026-11-12 (+6d) | 24d → 20d |
| 179 | **EXTERIOR** | 2026-09-23 → 2026-09-29 (+6d) | 2026-09-26 → 2026-10-02 (+6d) | 30d → 26d |
| 180 | Rastrilleo, afine y nivelado de tierra | 2026-09-23 → 2026-09-29 (+6d) | 2026-09-26 → 2026-10-02 (+6d) | 30d → 26d |
| 181 | **SEGUNDA LIMPIEZA DE OBRA** | 2026-11-06 → 2026-11-12 (+6d) | 2026-11-11 → 2026-11-19 (+8d) | 42d → 38d |

| ID | Task | Start | Finish | Total float |
| --- | --- | --- | --- | --- |
| 182 | Segunda limpieza de obra | 2026-11-06 → 2026-11-12 (+6d) | 2026-11-09 → 2026-11-17 (+8d) | 42d → 38d |
| 183 | Segunda carga y acarreo de escombro | 2026-11-09 → 2026-11-17 (+8d) | 2026-11-11 → 2026-11-19 (+8d) | 42d → 38d |
| 184 | **CANCELERIA PUERTAS Y VENTANAS DE ALUMINIO** | 2026-10-27 → 2026-11-02 (+6d) | 2026-11-11 → 2026-11-19 (+8d) | 29d → 25d |
| 185 | Puerta ventana P-05 corrediza | 2026-10-29 → 2026-11-04 (+6d) | 2026-11-06 → 2026-11-12 (+6d) | 33d → 29d |
| 186 | Ventana corrediza V-01 | 2026-10-27 → 2026-11-02 (+6d) | 2026-10-30 → 2026-11-06 (+7d) | 38d → 34d |
| 187 | Ventana corrediza V-03 | 2026-10-29 → 2026-11-04 (+6d) | 2026-11-03 → 2026-11-09 (+6d) | 36d → 32d |
| 188 | Ventana corrediza V-05 | 2026-10-29 → 2026-11-04 (+6d) | 2026-11-03 → 2026-11-09 (+6d) | 36d → 32d |
| 189 | Ventana corrediza tipo XO | 2026-11-02 → 2026-11-07 (+5d) | 2026-11-06 → 2026-11-12 (+6d) | 33d → 29d |
| 190 | Ventana fija escalera | 2026-11-04 → 2026-11-10 (+6d) | 2026-11-11 → 2026-11-19 (+8d) | 29d → 25d |
| 191 | **CARPINTERIA, PUERTAS EXTERIORES E INTERIORES** | 2026-11-06 → 2026-11-12 (+6d) | 2026-11-19 → 2026-11-25 (+6d) | 24d → 20d |
| 192 | Puerta P-01 de seguridad | 2026-11-06 → 2026-11-12 (+6d) | 2026-11-12 → 2026-11-20 (+8d) | 28d → 24d |
| 193 | Puerta P-03 interior | 2026-11-06 → 2026-11-12 (+6d) | 2026-11-18 → 2026-11-24 (+6d) | 25d → 21d |
| 194 | Puerta P-02 interior | 2026-11-06 → 2026-11-12 (+6d) | 2026-11-18 → 2026-11-24 (+6d) | 25d → 21d |
| 195 | Puerta exterior lavandería | 2026-11-12 → 2026-11-20 (+8d) | 2026-11-19 → 2026-11-25 (+6d) | 24d → 20d |
| 196 | **INSTALACION ELECTRICA** | 2026-10-05 → 2026-10-12 (+7d) | 2026-10-28 → 2026-11-04 (+7d) | 53d → 49d |
| 197 | Alimentación eléctrica base a centro de carga | 2026-10-14 → 2026-10-20 (+6d) | 2026-10-20 → 2026-10-26 (+6d) | 57d → 53d |
| 198 | Interruptor termomagnético 1x15 A | 2026-10-20 → 2026-10-27 (+7d) | 2026-10-21 → 2026-10-27 (+6d) | 57d → 53d |
| 199 | Interruptor termomagnético 1x20 A | 2026-10-20 → 2026-10-27 (+7d) | 2026-10-21 → 2026-10-27 (+6d) | 57d → 53d |
| 200 | Interruptor termomagnético 2x20 A | 2026-10-20 → 2026-10-27 (+7d) | 2026-10-21 → 2026-10-27 (+6d) | 57d → 53d |
| 201 | Salida para apagador 3 vías | 2026-10-08 → 2026-10-15 (+7d) | 2026-10-14 → 2026-10-20 (+6d) | 53d → 49d |
| 202 | Salida para apagador triple | 2026-10-14 → 2026-10-20 (+6d) | 2026-10-17 → 2026-10-23 (+6d) | 57d → 53d |
| 203 | Salida para apagador doble | 2026-10-17 → 2026-10-23 (+6d) | 2026-10-21 → 2026-10-27 (+6d) | 57d → 53d |
| 204 | Salida para apagador sencillo | 2026-10-14 → 2026-10-20 (+6d) | 2026-10-17 → 2026-10-23 (+6d) | 60d → 56d |
| 205 | Salida de alumbrado en losa | 2026-10-14 → 2026-10-20 (+6d) | 2026-10-20 → 2026-10-26 (+6d) | 55d → 51d |
| 206 | Salida de alumbrado en muro | 2026-10-14 → 2026-10-20 (+6d) | 2026-10-19 → 2026-10-24 (+5d) | 59d → 55d |
| 207 | Salida para contacto 220 V | 2026-10-16 → 2026-10-22 (+6d) | 2026-10-20 → 2026-10-26 (+6d) | 53d → 49d |
| 208 | Salida para contacto doble | 2026-10-16 → 2026-10-22 (+6d) | 2026-10-22 → 2026-10-28 (+6d) | 56d → 52d |
| 209 | Salida para contacto doble área húmeda | 2026-10-20 → 2026-10-27 (+7d) | 2026-10-22 → 2026-10-28 (+6d) | 56d → 52d |
| 210 | Salida TV / telefonía / intercom | 2026-10-20 → 2026-10-27 (+7d) | 2026-10-24 → 2026-10-30 (+6d) | 54d → 50d |
| 211 | Extractor 4 baño | 2026-10-20 → 2026-10-27 (+7d) | 2026-10-26 → 2026-11-02 (+7d) | 53d → 49d |
| 212 | Prueba eléctrica | 2026-10-27 → 2026-11-02 (+6d) | 2026-10-28 → 2026-11-04 (+7d) | 53d → 49d |
| 213 | Murete convencional | 2026-10-05 → 2026-10-12 (+7d) | 2026-10-09 → 2026-10-16 (+7d) | 66d → 62d |
| 214 | **INSTALACIÓN HIDRO-SANITARIA** | 2026-09-23 → 2026-09-29 (+6d) | 2026-10-06 → 2026-10-13 (+7d) | 24d → 20d |
| 215 | Tubo PVC 3/4 red de condensados | 2026-09-23 → 2026-09-29 (+6d) | 2026-09-29 → 2026-10-05 (+6d) | 24d → 20d |
| 216 | Caja PVC para lavadora | 2026-09-23 → 2026-09-29 (+6d) | 2026-09-26 → 2026-10-02 (+6d) | 24d → 20d |
| 217 | Salida para secadora PVC 4 | 2026-09-23 → 2026-09-29 (+6d) | 2026-09-26 → 2026-10-02 (+6d) | 24d → 20d |
| 218 | Salida hidráulica para boiler | 2026-09-23 → 2026-09-29 (+6d) | 2026-09-25 → 2026-10-01 (+6d) | 25d → 21d |
| 219 | Salida hidráulica para llave de jardín | 2026-09-23 → 2026-09-29 (+6d) | 2026-09-26 → 2026-10-02 (+6d) | 24d → 20d |
| 220 | Salida hidráulica para lavabo | 2026-09-23 → 2026-09-29 (+6d) | 2026-09-28 → 2026-10-03 (+5d) | 24d → 20d |
| 221 | Salida hidráulica para purificación | 2026-09-23 → 2026-09-29 (+6d) | 2026-09-28 → 2026-10-03 (+5d) | 24d → 20d |
| 222 | Salida sanitaria para lavabo | 2026-09-25 → 2026-10-01 (+6d) | 2026-09-28 → 2026-10-03 (+5d) | 24d → 20d |
| 223 | Salida hidráulica para lavadero | 2026-09-25 → 2026-10-01 (+6d) | 2026-09-28 → 2026-10-03 (+5d) | 24d → 20d |
| 224 | Salida sanitaria para lavadero | 2026-09-26 → 2026-10-02 (+6d) | 2026-09-29 → 2026-10-05 (+6d) | 24d → 20d |
| 225 | Salida hidráulica para lavadora | 2026-09-26 → 2026-10-02 (+6d) | 2026-09-29 → 2026-10-05 (+6d) | 24d → 20d |
| 226 | Salida sanitaria para lavadora | 2026-09-28 → 2026-10-03 (+5d) | 2026-09-30 → 2026-10-06 (+6d) | 24d → 20d |
| 227 | Salida hidráulica para regadera | 2026-09-28 → 2026-10-03 (+5d) | 2026-10-03 → 2026-10-09 (+6d) | 29d → 25d |
| 228 | Salida sanitaria para regadera | 2026-09-28 → 2026-10-03 (+5d) | 2026-10-02 → 2026-10-08 (+6d) | 30d → 26d |
| 229 | Salida hidráulica para WC | 2026-09-25 → 2026-10-01 (+6d) | 2026-09-28 → 2026-10-03 (+5d) | 24d → 20d |
| 230 | Salida sanitaria para WC | 2026-09-28 → 2026-10-03 (+5d) | 2026-10-02 → 2026-10-08 (+6d) | 24d → 20d |
| 231 | Salida hidráulica para zinc | 2026-09-28 → 2026-10-03 (+5d) | 2026-10-02 → 2026-10-08 (+6d) | 24d → 20d |
| 232 | Salida sanitaria para zinc | 2026-09-30 → 2026-10-06 (+6d) | 2026-10-03 → 2026-10-09 (+6d) | 24d → 20d |
| 233 | Tubo para ventila de baño 2 | 2026-09-23 → 2026-09-29 (+6d) | 2026-09-29 → 2026-10-05 (+6d) | 24d → 20d |
| 234 | Tubo para minisplit PVC 3 | 2026-09-29 → 2026-10-05 (+6d) | 2026-10-05 → 2026-10-12 (+7d) | 24d → 20d |
| 235 | Cuadro de medición | 2026-09-26 → 2026-10-02 (+6d) | 2026-10-02 → 2026-10-08 (+6d) | 30d → 26d |
| 236 | Prueba sanitaria | 2026-10-05 → 2026-10-12 (+7d) | 2026-10-06 → 2026-10-13 (+7d) | 28d → 24d |
| 237 | Prueba hidráulica | 2026-10-03 → 2026-10-09 (+6d) | 2026-10-05 → 2026-10-12 (+7d) | 29d → 25d |
| 238 | Salida hidráulica para tanque hidroneumático | 2026-09-26 → 2026-10-02 (+6d) | 2026-09-30 → 2026-10-06 (+6d) | 32d → 28d |
| 239 | Salida hidráulica para Active Driver | 2026-09-26 → 2026-10-02 (+6d) | 2026-09-30 → 2026-10-06 (+6d) | 32d → 28d |
| 240 | **INSTALACION DE GAS** | 2026-09-21 → 2026-09-26 (+5d) | 2026-09-30 → 2026-10-06 (+6d) | 53d → 49d |
| 241 | Ramaleo para gas 1/2 | 2026-09-24 → 2026-09-30 (+6d) | 2026-09-30 → 2026-10-06 (+6d) | 53d → 49d |
| 242 | Excavación a mano material tipo B | 2026-09-21 → 2026-09-26 (+5d) | 2026-09-24 → 2026-09-30 (+6d) | 53d → 49d |
| 243 | **MUEBLES SANITARIOS** | 2026-10-29 → 2026-11-04 (+6d) | 2026-12-04 → 2026-12-11 (+7d) | 24d → 20d |
| 244 | WC one piece Smart Corona | 2026-10-29 → 2026-11-04 (+6d) | 2026-10-30 → 2026-11-06 (+7d) | 38d → 34d |
| 245 | Lavabo Tarento Vanity | 2026-10-29 → 2026-11-04 (+6d) | 2026-11-03 → 2026-11-09 (+6d) | 36d → 32d |
| 246 | Regadera y monomando Thames | 2026-10-31 → 2026-11-06 (+6d) | 2026-11-04 → 2026-11-10 (+6d) | 35d → 31d |
| 247 | Coladera cuadrada para inserto cerámico | 2026-11-02 → 2026-11-07 (+5d) | 2026-11-04 → 2026-11-10 (+6d) | 35d → 31d |
| 248 | Toallero argolla Thames | 2026-12-03 → 2026-12-10 (+7d) | 2026-12-04 → 2026-12-11 (+7d) | 24d → 20d |
| 249 | Toallero barra Thames | 2026-12-03 → 2026-12-10 (+7d) | 2026-12-04 → 2026-12-11 (+7d) | 24d → 20d |
| 250 | Portapapel Thames | 2026-12-03 → 2026-12-10 (+7d) | 2026-12-04 → 2026-12-11 (+7d) | 24d → 20d |
| 251 | Gancho percha Thames | 2026-12-03 → 2026-12-10 (+7d) | 2026-12-04 → 2026-12-11 (+7d) | 24d → 20d |

| ID | Task | Start | Finish | Duration | Complete | Total float | Predecessors |
| --- | --- | --- | --- | --- | --- | --- | --- |
| 252 | **EQUIPAMIENTO** | 2026-09-12 → 2026-09-21 (+9d) | 2026-09-22 → 2026-09-28 (+6d) |  |  | 83d → 79d |  |
| 253 | Electronivel Rotoplas 5 m | 2026-09-14 → 2026-09-22 (+8d) | 2026-09-17 → 2026-09-24 (+7d) |  |  | 86d → 82d |  |
| 254 | Manómetro | 2026-09-14 → 2026-09-22 (+8d) | 2026-09-15 → 2026-09-23 (+8d) |  |  | 87d → 83d |  |
| 255 | Interruptor de presión 30-50 PSI | 2026-09-14 → 2026-09-22 (+8d) | 2026-09-15 → 2026-09-23 (+8d) |  |  | 87d → 83d |  |
| 256 | Tanque hidroneumático FPS-24LX | 2026-09-14 → 2026-09-22 (+8d) | 2026-09-18 → 2026-09-25 (+7d) |  |  | 83d → 79d |  |
| 257 | Bomba sumergible Dominator 1.2 HP | 2026-09-18 → 2026-09-25 (+7d) | 2026-09-22 → 2026-09-28 (+6d) |  |  | 83d → 79d |  |
| 258 | Cisterna prefabricada 2800 L | 2026-09-12 → 2026-09-21 (+9d) | 2026-09-14 → 2026-09-22 (+8d) |  |  | 83d → 79d |  |
| 259 | **LUMINARIAS** | 2026-10-20 → 2026-10-27 (+7d) | 2026-10-23 → 2026-10-29 (+6d) |  |  | 55d → 51d |  |
| 260 | Roseta de cerámica para luminaria | 2026-10-20 → 2026-10-27 (+7d) | 2026-10-23 → 2026-10-29 (+6d) |  |  | 55d → 51d |  |
| 261 | Spot Brighton | 2026-10-20 → 2026-10-27 (+7d) | 2026-10-23 → 2026-10-29 (+6d) |  |  | 55d → 51d |  |
| 262 | Arbotante bidireccional 12W | 2026-10-20 → 2026-10-27 (+7d) | 2026-10-22 → 2026-10-28 (+6d) |  |  | 56d → 52d |  |
| 263 | **TERCER LIMPIEZA DE OBRA** | 2026-12-04 → 2026-12-11 (+7d) | 2026-12-16 → 2026-12-22 (+6d) |  |  | 24d → 20d |  |
| 264 | Limpieza fina para entrega | 2026-12-04 → 2026-12-11 (+7d) | 2026-12-11 → 2026-12-17 (+6d) |  |  | 24d → 20d |  |
| 265 | Tercera limpieza de obra | 2026-12-08 → 2026-12-14 (+6d) | 2026-12-12 → 2026-12-18 (+6d) |  |  | 24d → 20d |  |
| 266 | Tercera carga y acarreo de escombro | 2026-12-12 → 2026-12-18 (+6d) | 2026-12-16 → 2026-12-22 (+6d) |  |  | 24d → 20d |  |
| 267 | **OBRA EXTERIOR - BARDA** | 2026-09-26 → 2026-10-02 (+6d) | 2026-10-19 → 2026-10-24 (+5d) |  |  | 61d → 57d |  |
| 268 | Barda de block aparente | 2026-09-26 → 2026-10-02 (+6d) | 2026-10-19 → 2026-10-24 (+5d) |  |  | 61d → 57d |  |
| 269 | **LOTE 02 M-661 CORSAC-B** |  | 2027-01-04 → 2027-01-11 (+7d) | 178d → 183d |  | 13d → 9d |  |
| 270 | **HITOS IMPORTANTES DEL LOTE** |  | 2027-01-04 → 2027-01-11 (+7d) | 178d → 183d |  | 13d → 9d |  |
| 272 | Colado de Losa de Cimentación | 2026-06-10 → 2026-06-16 (+6d) | 2026-06-10 → 2026-06-16 (+6d) |  |  | 174d → 170d |  |
| 273 | Colado de Losa de Entrepiso | 2026-07-17 → 2026-07-23 (+6d) | 2026-07-17 → 2026-07-23 (+6d) |  |  | 144d → 140d |  |
| 274 | Colado de Losa de Azotea | 2026-08-24 → 2026-08-29 (+5d) | 2026-08-24 → 2026-08-29 (+5d) |  |  | 114d → 110d |  |
| 275 | Entrega de vivienda | 2027-01-04 → 2027-01-11 (+7d) | 2027-01-04 → 2027-01-11 (+7d) |  |  | 13d → 9d |  |
| 281 | **CIMENTACION** |  | 2026-06-11 → 2026-06-17 (+6d) | 13d → 18d | 93% → 90% | 13d → 9d |  |
| 298 | Acero contratrabe CT-1 | 2026-05-29 A → 2026-06-05 A (+7d) | 2026-06-04 A → 2026-06-10 A (+6d) |  |  |  | 282 → 282FS+5d |
| 299 | Acero contratrabe CT-2 | 2026-05-29 A → 2026-06-05 A (+7d) | 2026-06-04 A → 2026-06-10 A (+6d) |  |  |  | 282 → 282FS+5d |
| 300 | Malla electrosoldada 6-6/8-8 | 2026-06-06 A → 2026-06-12 A (+6d) | 2026-06-09 → 2026-06-15 (+6d) |  | 75% → 56% | 13d → 9d |  |
| 301 | Bastón de refuerzo LS | 2026-06-04 A → 2026-06-10 A (+6d) | 2026-06-06 A → 2026-06-12 A (+6d) |  |  |  |  |
| 302 | Bastón de refuerzo LI | 2026-06-04 A → 2026-06-10 A (+6d) | 2026-06-06 A → 2026-06-12 A (+6d) |  |  |  |  |
| 303 | Colado losa de cimentación f’c=200 | 2026-06-09 → 2026-06-15 (+6d) | 2026-06-10 → 2026-06-16 (+6d) |  |  | 13d → 9d |  |
| 304 | Curado de concreto | 2026-06-10 → 2026-06-16 (+6d) | 2026-06-11 → 2026-06-17 (+6d) |  |  | 13d → 9d |  |
| 305 | Acero zapata ZT-1 | 2026-06-04 A → 2026-06-10 A (+6d) | 2026-06-09 → 2026-06-15 (+6d) |  | 88% → 78% | 13d → 9d |  |
| 306 | Acero zapata ZT-2 | 2026-06-04 A → 2026-06-10 A (+6d) | 2026-06-09 → 2026-06-15 (+6d) |  | 88% → 78% | 13d → 9d |  |
| 307 | **MUROS, PLANTA BAJA. CASTILLOS Y CERRAMIENTOS** | 2026-06-05 A → 2026-06-11 A (+6d) | 2026-06-30 → 2026-07-06 (+6d) |  | 4% → 3% | 158d → 154d |  |
| 308 | Anclaje de castillos y Columnas PB | 2026-06-05 A → 2026-06-11 A (+6d) | 2026-06-11 → 2026-06-17 (+6d) |  | 50% → 43% | 161d → 157d |  |
| 309 | Castillo K1 | 2026-06-11 → 2026-06-17 (+6d) | 2026-06-16 → 2026-06-23 (+7d) |  |  | 161d → 157d |  |
| 310 | Castillo K3 | 2026-06-13 → 2026-06-19 (+6d) | 2026-06-17 → 2026-06-24 (+7d) |  |  | 161d → 157d |  |
| 311 | Castillo K4 | 2026-06-13 → 2026-06-19 (+6d) | 2026-06-17 → 2026-06-24 (+7d) |  |  | 161d → 157d |  |
| 312 | Castillo K5 | 2026-06-16 → 2026-06-23 (+7d) | 2026-06-19 → 2026-06-26 (+7d) |  |  | 161d → 157d |  |
| 313 | Refuerzo de muro K6 | 2026-06-17 → 2026-06-24 (+7d) | 2026-06-22 → 2026-06-27 (+5d) |  |  | 161d → 157d |  |
| 314 | Dala de cerramiento CR-1 | 2026-06-17 → 2026-06-24 (+7d) | 2026-06-23 → 2026-06-29 (+6d) |  |  | 164d → 160d |  |
| 315 | Dala de cerramiento CR-2 | 2026-06-17 → 2026-06-24 (+7d) | 2026-06-22 → 2026-06-27 (+5d) |  |  | 165d → 161d |  |
| 316 | Cadena block dala | 2026-06-22 → 2026-06-27 (+5d) | 2026-06-26 → 2026-07-02 (+6d) |  |  | 161d → 157d |  |
| 317 | Muro de ladrillo aparente | 2026-06-11 → 2026-06-17 (+6d) | 2026-06-30 → 2026-07-06 (+6d) |  |  | 13d → 9d |  |
| 318 | Muro de block planta baja | 2026-06-13 → 2026-06-19 (+6d) | 2026-06-30 → 2026-07-06 (+6d) |  |  | 13d → 9d |  |
| 319 | Ramaleo electrico en Muros Planta Baja | 2026-06-17 → 2026-06-24 (+7d) | 2026-06-23 → 2026-06-29 (+6d) |  |  | 16d → 12d |  |
| 320 | Ramaleo para cable poliducto 3/4 | 2026-06-23 → 2026-06-29 (+6d) | 2026-06-25 → 2026-07-01 (+6d) |  |  | 16d → 12d |  |
| 321 | Ramaleo para TV poliducto 3/4 | 2026-06-25 → 2026-07-01 (+6d) | 2026-06-29 → 2026-07-04 (+5d) |  |  | 16d → 12d |  |
| 322 | **ESCALERA** | 2026-07-17 → 2026-07-23 (+6d) | 2026-07-30 → 2026-08-05 (+6d) |  |  | 90d → 86d |  |
| 323 | Escalera de concreto armado | 2026-07-17 → 2026-07-23 (+6d) | 2026-07-30 → 2026-08-05 (+6d) |  |  | 90d → 86d |  |
| 324 | **LOSA DE ENTREPISO (viegueta y caseton)** | 2026-06-27 → 2026-07-03 (+6d) | 2026-07-18 → 2026-07-24 (+6d) |  |  | 16d → 12d |  |
| 325 | Dala de coronamiento 10cm | 2026-07-07 → 2026-07-13 (+6d) | 2026-07-09 → 2026-07-16 (+7d) |  |  | 16d → 12d |  |
| 326 | Dala de coronamiento 12cm | 2026-07-08 → 2026-07-14 (+6d) | 2026-07-10 → 2026-07-17 (+7d) |  |  | 15d → 11d |  |
| 327 | Trabe TR-1 | 2026-06-27 → 2026-07-03 (+6d) | 2026-07-01 → 2026-07-07 (+6d) |  |  | 17d → 13d |  |
| 328 | Trabe TR-2 | 2026-06-29 → 2026-07-06 (+7d) | 2026-07-03 → 2026-07-09 (+6d) |  |  | 15d → 11d |  |
| 329 | Nervadura NR-1 | 2026-06-30 → 2026-07-07 (+7d) | 2026-07-04 → 2026-07-10 (+6d) |  |  | 14d → 10d |  |
| 330 | Nervadura NR-2 | 2026-07-01 → 2026-07-08 (+7d) | 2026-07-06 → 2026-07-13 (+7d) |  |  | 13d → 9d |  |
| 331 | Nervadura NR-3 | 2026-07-01 → 2026-07-08 (+7d) | 2026-07-06 → 2026-07-13 (+7d) |  |  | 13d → 9d |  |
| 332 | Nervadura NR-4 | 2026-07-01 → 2026-07-08 (+7d) | 2026-07-06 → 2026-07-13 (+7d) |  |  | 13d → 9d |  |
| 333 | Acero de refuerzo en nervios #3 | 2026-07-07 → 2026-07-13 (+6d) | 2026-07-08 → 2026-07-15 (+7d) |  |  | 13d → 9d |  |
| 334 | Acero de refuerzo long. #3 | 2026-07-08 → 2026-07-14 (+6d) | 2026-07-10 → 2026-07-17 (+7d) |  |  | 14d → 10d |  |
| 335 | Acero de refuerzo long. #4 | 2026-07-08 → 2026-07-14 (+6d) | 2026-07-10 → 2026-07-17 (+7d) |  |  | 14d → 10d |  |
| 336 | Malla 66-10/10 losa de compresión | 2026-07-14 → 2026-07-20 (+6d) | 2026-07-16 → 2026-07-22 (+6d) |  |  | 13d → 9d |  |
| 337 | Acero de Losa Maciza | 2026-07-07 → 2026-07-13 (+6d) | 2026-07-09 → 2026-07-16 (+7d) |  |  | 18d → 14d |  |
| 338 | Caseton de 60x60x20cm | 2026-07-07 → 2026-07-13 (+6d) | 2026-07-08 → 2026-07-15 (+7d) |  |  | 17d → 13d |  |
| 339 | Concreto losa de entrepiso f’c=200 | 2026-07-16 → 2026-07-22 (+6d) | 2026-07-17 → 2026-07-23 (+6d) |  |  | 13d → 9d |  |
| 340 | Curado de concreto | 2026-07-17 → 2026-07-23 (+6d) | 2026-07-18 → 2026-07-24 (+6d) |  |  | 13d → 9d |  |
| 341 | Cimbra losa de azotea | 2026-07-01 → 2026-07-08 (+7d) | 2026-07-07 → 2026-07-14 (+7d) |  |  | 14d → 10d |  |
| 342 | Cimbra exterior corta losa | 2026-07-10 → 2026-07-16 (+6d) | 2026-07-14 → 2026-07-20 (+6d) |  |  | 15d → 11d |  |
| 343 | Ramaleo poliducto eléctrico entrepiso | 2026-07-09 → 2026-07-15 (+6d) | 2026-07-10 → 2026-07-17 (+7d) |  |  | 149d → 145d |  |

| ID | Task | Start | Finish | Total float |
| --- | --- | --- | --- | --- |
| 344 | Ramaleo hidráulico CPVC 3/4" | 2026-07-10 → 2026-07-16 (+6d) | 2026-07-13 → 2026-07-18 (+5d) | 13d → 9d |
| 345 | Ramaleo hidráulico CPVC 1/2" | 2026-07-13 → 2026-07-18 (+5d) | 2026-07-14 → 2026-07-20 (+6d) | 13d → 9d |
| 346 | Prueba hidráulica | 2026-07-13 → 2026-07-18 (+5d) | 2026-07-14 → 2026-07-20 (+6d) | 13d → 9d |
| 347 | Ramaleo sanitario PVC 4" | 2026-07-10 → 2026-07-16 (+6d) | 2026-07-13 → 2026-07-18 (+5d) | 13d → 9d |
| 348 | Ramaleo sanitario PVC 2" | 2026-07-13 → 2026-07-18 (+5d) | 2026-07-14 → 2026-07-20 (+6d) | 13d → 9d |
| 349 | Prueba sanitaria | 2026-07-13 → 2026-07-18 (+5d) | 2026-07-14 → 2026-07-20 (+6d) | 13d → 9d |
| 350 | **MUROS EN PLANTA ALTA, CASTILLOS Y CERRM.** | 2026-07-10 → 2026-07-16 (+6d) | 2026-08-06 → 2026-08-12 (+6d) | 14d → 10d |
| 351 | Anclaje de castillos y Columnas PA | 2026-07-10 → 2026-07-16 (+6d) | 2026-07-15 → 2026-07-21 (+6d) | 14d → 10d |
| 352 | Castillo K1 | 2026-07-18 → 2026-07-24 (+6d) | 2026-07-23 → 2026-07-30 (+7d) | 17d → 13d |
| 353 | Castillo K2 | 2026-07-20 → 2026-07-27 (+7d) | 2026-07-24 → 2026-07-31 (+7d) | 16d → 12d |
| 354 | Castillo K4 | 2026-07-23 → 2026-07-30 (+7d) | 2026-07-28 → 2026-08-03 (+6d) | 17d → 13d |
| 355 | Castillo K5 | 2026-07-23 → 2026-07-30 (+7d) | 2026-07-28 → 2026-08-03 (+6d) | 17d → 13d |
| 356 | Castillo K6 | 2026-07-23 → 2026-07-30 (+7d) | 2026-07-28 → 2026-08-03 (+6d) | 17d → 13d |
| 357 | Refuerzo de muro | 2026-07-24 → 2026-07-31 (+7d) | 2026-07-29 → 2026-08-04 (+6d) | 16d → 12d |
| 358 | Dala de cerramiento CR-1 | 2026-07-29 → 2026-08-04 (+6d) | 2026-08-03 → 2026-08-08 (+5d) | 16d → 12d |
| 359 | Dala de cerramiento CR-2 | 2026-07-29 → 2026-08-04 (+6d) | 2026-08-03 → 2026-08-08 (+5d) | 16d → 12d |
| 360 | Cadena block dala | 2026-08-03 → 2026-08-08 (+5d) | 2026-08-06 → 2026-08-12 (+6d) | 16d → 12d |
| 361 | Muro de ladrillo aparente | 2026-07-18 → 2026-07-24 (+6d) | 2026-08-06 → 2026-08-12 (+6d) | 13d → 9d |
| 362 | Muro de block planta alta | 2026-07-20 → 2026-07-27 (+7d) | 2026-08-06 → 2026-08-12 (+6d) | 13d → 9d |
| 363 | Ramaleo electrico en Muros Planta Alta | 2026-07-29 → 2026-08-04 (+6d) | 2026-08-03 → 2026-08-08 (+5d) | 24d → 20d |
| 364 | **LOSA AZOTEA** | 2026-08-06 → 2026-08-12 (+6d) | 2026-08-25 → 2026-08-31 (+6d) | 13d → 9d |
| 365 | Cortalosa CL-1 | 2026-08-20 → 2026-08-26 (+6d) | 2026-08-22 → 2026-08-28 (+6d) | 13d → 9d |
| 366 | Cortalosa CL-2 | 2026-08-20 → 2026-08-26 (+6d) | 2026-08-22 → 2026-08-28 (+6d) | 13d → 9d |
| 367 | Vigueta pretensada V11-30 125 | 2026-08-06 → 2026-08-12 (+6d) | 2026-08-12 → 2026-08-19 (+7d) | 16d → 12d |
| 368 | Vigueta pretensada V11-30 185 | 2026-08-06 → 2026-08-12 (+6d) | 2026-08-12 → 2026-08-19 (+7d) | 16d → 12d |
| 369 | Vigueta pretensada V11-30 190 | 2026-08-06 → 2026-08-12 (+6d) | 2026-08-12 → 2026-08-19 (+7d) | 16d → 12d |
| 370 | Vigueta pretensada V11-30 205 | 2026-08-08 → 2026-08-14 (+6d) | 2026-08-14 → 2026-08-21 (+7d) | 14d → 10d |
| 371 | Vigueta pretensada V11-30 215 | 2026-08-08 → 2026-08-14 (+6d) | 2026-08-14 → 2026-08-21 (+7d) | 14d → 10d |
| 372 | Vigueta pretensada V11-30 260 | 2026-08-10 → 2026-08-17 (+7d) | 2026-08-17 → 2026-08-22 (+5d) | 13d → 9d |
| 373 | Vigueta pretensada V11-30 285 | 2026-08-10 → 2026-08-17 (+7d) | 2026-08-17 → 2026-08-22 (+5d) | 13d → 9d |
| 374 | Vigueta pretensada V11-40 330 | 2026-08-10 → 2026-08-17 (+7d) | 2026-08-17 → 2026-08-22 (+5d) | 13d → 9d |
| 375 | Vigueta pretensada V11-40 335 | 2026-08-10 → 2026-08-17 (+7d) | 2026-08-17 → 2026-08-22 (+5d) | 13d → 9d |
| 376 | Vigueta pretensada V11-40 505 | 2026-08-10 → 2026-08-17 (+7d) | 2026-08-17 → 2026-08-22 (+5d) | 13d → 9d |
| 377 | Bovedilla poliestireno azotea | 2026-08-17 → 2026-08-22 (+5d) | 2026-08-20 → 2026-08-26 (+6d) | 13d → 9d |
| 378 | Malla 66-10/10 losa de compresión | 2026-08-20 → 2026-08-26 (+6d) | 2026-08-22 → 2026-08-28 (+6d) | 13d → 9d |
| 379 | Concreto losa de azotea f’c=200 | 2026-08-22 → 2026-08-28 (+6d) | 2026-08-24 → 2026-08-29 (+5d) | 13d → 9d |
| 380 | Curado de concreto | 2026-08-24 → 2026-08-31 (+7d) | 2026-08-25 → 2026-08-31 (+6d) | 13d → 9d |
| 381 | Cimbra losa de azotea | 2026-08-06 → 2026-08-12 (+6d) | 2026-08-12 → 2026-08-19 (+7d) | 21d → 17d |
| 382 | Ramaleo de poliducto para inst. electrica en azotea | 2026-08-20 → 2026-08-26 (+6d) | 2026-08-22 → 2026-08-28 (+6d) | 13d → 9d |
| 383 | **PRETIL Y ACABADOS DE AZOTEA** | 2026-08-25 → 2026-09-01 (+7d) | 2026-09-18 → 2026-09-25 (+7d) | 13d → 9d |
| 384 | Castillo K1 | 2026-08-27 → 2026-09-03 (+7d) | 2026-09-02 → 2026-09-09 (+7d) | 13d → 9d |
| 385 | Dala de cerramiento en pretil | 2026-09-01 → 2026-09-07 (+6d) | 2026-09-04 → 2026-09-11 (+7d) | 13d → 9d |
| 386 | Muro de block 12x15x40 | 2026-08-25 → 2026-09-01 (+7d) | 2026-08-31 → 2026-09-07 (+7d) | 13d → 9d |
| 387 | Chaflán en azotea | 2026-09-03 → 2026-09-09 (+6d) | 2026-09-08 → 2026-09-14 (+6d) | 13d → 9d |
| 388 | Diamante de entortado | 2026-09-03 → 2026-09-09 (+6d) | 2026-09-08 → 2026-09-14 (+6d) | 13d → 9d |
| 389 | Aplanado exterior Mortermax fino | 2026-09-05 → 2026-09-11 (+6d) | 2026-09-11 → 2026-09-18 (+7d) | 13d → 9d |
| 390 | Entortado de Losa | 2026-09-12 → 2026-09-21 (+9d) | 2026-09-18 → 2026-09-25 (+7d) | 13d → 9d |
| 391 | Curado de concreto | 2026-09-11 → 2026-09-18 (+7d) | 2026-09-12 → 2026-09-21 (+9d) | 13d → 9d |
| 392 | **PRIMERA LIMPIEZA DE OBRA** | 2026-08-25 → 2026-09-01 (+7d) | 2026-08-29 → 2026-09-04 (+6d) | 70d → 66d |
| 393 | Primera limpieza de obra | 2026-08-25 → 2026-09-01 (+7d) | 2026-08-27 → 2026-09-02 (+6d) | 70d → 66d |
| 394 | Primera carga y acarreo de escombro | 2026-08-27 → 2026-09-03 (+7d) | 2026-08-29 → 2026-09-04 (+6d) | 70d → 66d |
| 395 | **IMPERMEABILIZACION** | 2026-09-18 → 2026-09-25 (+7d) | 2026-09-25 → 2026-10-01 (+6d) | 13d → 9d |
| 396 | Impermeabilización de pretil Kover 5 años | 2026-09-18 → 2026-09-25 (+7d) | 2026-09-24 → 2026-09-30 (+6d) | 14d → 10d |
| 397 | Impermeabilización de losa Kover 5 años | 2026-09-18 → 2026-09-25 (+7d) | 2026-09-25 → 2026-10-01 (+6d) | 13d → 9d |
| 398 | **ALBAÑILERIA** | 2026-09-01 → 2026-09-07 (+6d) | 2026-11-19 → 2026-11-25 (+6d) | 32d → 28d |
| 399 | Lavadero de granito | 2026-10-15 → 2026-10-21 (+6d) | 2026-10-20 → 2026-10-26 (+6d) | 69d → 65d |
| 400 | Ranurado y resane general inst. en muros | 2026-09-23 → 2026-09-29 (+6d) | 2026-09-26 → 2026-10-02 (+6d) | 15d → 11d |
| 401 | Ranurado y resane eléctrico 1/2 a 3/4 | 2026-09-23 → 2026-09-29 (+6d) | 2026-09-26 → 2026-10-02 (+6d) | 15d → 11d |
| 402 | Ranurado y resane hidráulico 1/2 a 1 | 2026-09-25 → 2026-10-01 (+6d) | 2026-09-28 → 2026-10-03 (+5d) | 14d → 10d |
| 403 | Resane sanitario tubería 2 | 2026-09-25 → 2026-10-01 (+6d) | 2026-09-28 → 2026-10-03 (+5d) | 14d → 10d |
| 404 | Resane sanitario tubería 4 | 2026-09-25 → 2026-10-01 (+6d) | 2026-09-28 → 2026-10-03 (+5d) | 14d → 10d |
| 405 | Resane minisplit tubería 3 | 2026-09-25 → 2026-10-01 (+6d) | 2026-09-28 → 2026-10-03 (+5d) | 14d → 10d |
| 406 | Ramaleo hidráulico exterior CPVC 1 1/4 | 2026-09-25 → 2026-10-01 (+6d) | 2026-09-29 → 2026-10-05 (+6d) | 13d → 9d |
| 407 | Ramaleo hidráulico exterior CPVC 1 | 2026-09-25 → 2026-10-01 (+6d) | 2026-09-28 → 2026-10-03 (+5d) | 13d → 9d |
| 408 | Ramaleo hidráulico exterior CPVC 3/4 | 2026-09-28 → 2026-10-03 (+5d) | 2026-09-30 → 2026-10-06 (+6d) | 13d → 9d |
| 409 | Ramaleo hidráulico exterior CPVC 1/2 | 2026-09-28 → 2026-10-03 (+5d) | 2026-09-30 → 2026-10-06 (+6d) | 13d → 9d |
| 410 | Prueba hidráulica | 2026-09-30 → 2026-10-06 (+6d) | 2026-10-01 → 2026-10-07 (+6d) | 13d → 9d |
| 411 | Ramaleo sanitario exterior PVC 4 | 2026-09-25 → 2026-10-01 (+6d) | 2026-09-30 → 2026-10-06 (+6d) | 13d → 9d |
| 412 | Ramaleo sanitario exterior PVC 2 | 2026-09-26 → 2026-10-02 (+6d) | 2026-09-30 → 2026-10-06 (+6d) | 13d → 9d |
| 413 | Prueba sanitaria | 2026-09-30 → 2026-10-06 (+6d) | 2026-10-01 → 2026-10-07 (+6d) | 13d → 9d |

| ID | Task | Start | Finish | Total float |
| --- | --- | --- | --- | --- |
| 414 | Centro de carga muros PB | 2026-09-29 → 2026-10-05 (+6d) | 2026-10-03 → 2026-10-09 (+6d) | 15d → 11d |
| 415 | Firme de concreto 8 cm | 2026-10-01 → 2026-10-07 (+6d) | 2026-10-06 → 2026-10-13 (+7d) | 63d → 59d |
| 416 | Curado de concreto | 2026-10-06 → 2026-10-13 (+7d) | 2026-10-07 → 2026-10-14 (+7d) | 63d → 59d |
| 417 | Cisterna 2800 L con instalación | 2026-09-01 → 2026-09-07 (+6d) | 2026-09-24 → 2026-09-30 (+6d) | 69d → 65d |
| 418 | Banqueta y huellas de concreto | 2026-10-08 → 2026-10-15 (+7d) | 2026-10-19 → 2026-10-24 (+5d) | 46d → 42d |
| 419 | Curado de concreto | 2026-10-19 → 2026-10-26 (+7d) | 2026-10-20 → 2026-10-26 (+6d) | 46d → 42d |
| 420 | Número oficial | 2026-11-18 → 2026-11-24 (+6d) | 2026-11-19 → 2026-11-25 (+6d) | 46d → 42d |
| 421 | Detallado de rodapié exterior | 2026-10-03 → 2026-10-09 (+6d) | 2026-10-08 → 2026-10-15 (+7d) | 78d → 74d |
| 422 | Detalle de losas y volados acabado fino | 2026-09-25 → 2026-10-01 (+6d) | 2026-09-30 → 2026-10-06 (+6d) | 17d → 13d |
| 423 | Detalle fino en muros interiores | 2026-09-28 → 2026-10-03 (+5d) | 2026-10-03 → 2026-10-09 (+6d) | 14d → 10d |
| 424 | Jardín interior bajo escalera con pozo de absorción | 2026-09-25 → 2026-10-01 (+6d) | 2026-10-09 → 2026-10-16 (+7d) | 17d → 13d |
| 425 | **ACABADOS EN FACHADA A** | 2026-09-18 → 2026-09-25 (+7d) | 2026-11-18 → 2026-11-24 (+6d) | 46d → 42d |
| 426 | Aplanado grueso fachada | 2026-09-18 → 2026-09-25 (+7d) | 2026-10-03 → 2026-10-09 (+6d) | 52d → 48d |
| 427 | Aplanado fino estuco fachada | 2026-09-28 → 2026-10-03 (+5d) | 2026-10-09 → 2026-10-16 (+7d) | 52d → 48d |
| 428 | Pintura acrílica 1-0102P | 2026-11-04 → 2026-11-10 (+6d) | 2026-11-13 → 2026-11-21 (+8d) | 48d → 44d |
| 429 | Pintura acrílica 1-1404D | 2026-11-04 → 2026-11-10 (+6d) | 2026-11-18 → 2026-11-24 (+6d) | 46d → 42d |
| 430 | Cantera 40x60cm | 2026-10-09 → 2026-10-16 (+7d) | 2026-10-27 → 2026-11-03 (+7d) | 52d → 48d |
| 431 | Lambrin de permabase 1 cara | 2026-10-03 → 2026-10-09 (+6d) | 2026-10-07 → 2026-10-14 (+7d) | 59d → 55d |
| 432 | Enchapado de Permabase | 2026-10-07 → 2026-10-14 (+7d) | 2026-10-13 → 2026-10-19 (+6d) | 59d → 55d |
| 433 | Cubierta de Permabase | 2026-10-13 → 2026-10-19 (+6d) | 2026-10-19 → 2026-10-24 (+5d) | 59d → 55d |
| 434 | **APLANADOS Y PINTURA** | 2026-09-25 → 2026-10-01 (+6d) | 2026-12-14 → 2026-12-19 (+5d) | 15d → 11d |
| 435 | Yeso pulido en muros | 2026-10-05 → 2026-10-12 (+7d) | 2026-10-22 → 2026-10-28 (+6d) | 13d → 9d |
| 436 | Aplanado en muros enjarre grueso | 2026-09-25 → 2026-10-01 (+6d) | 2026-10-01 → 2026-10-07 (+6d) | 16d → 12d |
| 437 | Pintura vinílica OR-W13 SHOELACE | 2026-11-27 → 2026-12-03 (+6d) | 2026-12-14 → 2026-12-19 (+5d) | 13d → 9d |
| 438 | Pintura vinílica PPUI5-13 Creamy M. | 2026-11-21 → 2026-11-27 (+6d) | 2026-12-03 → 2026-12-10 (+7d) | 21d → 17d |
| 439 | Pintura vinílica MD-06 Nano White | 2026-11-21 → 2026-11-27 (+6d) | 2026-12-01 → 2026-12-08 (+7d) | 23d → 19d |
| 440 | Yeso pulido en plafones | 2026-09-25 → 2026-10-01 (+6d) | 2026-10-07 → 2026-10-14 (+7d) | 15d → 11d |
| 441 | Perfilado de puertas y ventanas | 2026-10-09 → 2026-10-16 (+7d) | 2026-10-15 → 2026-10-21 (+6d) | 73d → 69d |
| 442 | **PISOS Y AZULEJOS** | 2026-10-16 → 2026-10-22 (+6d) | 2026-11-17 → 2026-11-23 (+6d) | 13d → 9d |
| 443 | **AREA SOCIAL** | 2026-10-20 → 2026-10-27 (+7d) | 2026-11-07 → 2026-11-13 (+6d) | 13d → 9d |
| 444 | Piso Adhara 44X89 | 2026-10-20 → 2026-10-27 (+7d) | 2026-11-06 → 2026-11-12 (+6d) | 13d → 9d |
| 445 | Zoclo Adhara 44X89 | 2026-11-02 → 2026-11-07 (+5d) | 2026-11-07 → 2026-11-13 (+6d) | 30d → 26d |
| 446 | **RECAMARAS** | 2026-10-16 → 2026-10-22 (+6d) | 2026-10-26 → 2026-11-02 (+7d) | 13d → 9d |
| 447 | Acabado aparente de pisos - pulido | 2026-10-16 → 2026-10-22 (+6d) | 2026-10-26 → 2026-11-02 (+7d) | 13d → 9d |
| 448 | **BAÑOS** | 2026-10-17 → 2026-10-23 (+6d) | 2026-11-07 → 2026-11-13 (+6d) | 24d → 20d |
| 449 | Azulejo Mod. Ornamenta 60x30 | 2026-10-27 → 2026-11-02 (+6d) | 2026-11-02 → 2026-11-07 (+5d) | 24d → 20d |
| 450 | Impermeabilización en regadera | 2026-10-26 → 2026-10-31 (+5d) | 2026-10-27 → 2026-11-03 (+7d) | 24d → 20d |
| 451 | Piso Mod. Valparaiso 20x20 | 2026-11-02 → 2026-11-07 (+5d) | 2026-11-06 → 2026-11-12 (+6d) | 24d → 20d |
| 452 | Zoclo Adhara 44X89 | 2026-11-05 → 2026-11-11 (+6d) | 2026-11-07 → 2026-11-13 (+6d) | 54d → 50d |
| 453 | Piso Adhara 44X89 | 2026-11-02 → 2026-11-07 (+5d) | 2026-11-05 → 2026-11-11 (+6d) | 56d → 52d |
| 454 | Fabricacion de nicho decorativo en baños | 2026-10-17 → 2026-10-23 (+6d) | 2026-10-24 → 2026-10-30 (+6d) | 24d → 20d |
| 455 | Sardinel en regadera | 2026-11-02 → 2026-11-07 (+5d) | 2026-11-06 → 2026-11-12 (+6d) | 55d → 51d |
| 456 | **ESCALERA** | 2026-11-04 → 2026-11-10 (+6d) | 2026-11-17 → 2026-11-23 (+6d) | 13d → 9d |
| 457 | Piso Adhara 44X89 | 2026-11-04 → 2026-11-10 (+6d) | 2026-11-12 → 2026-11-20 (+8d) | 13d → 9d |
| 458 | Zoclo Adhara 44X89 | 2026-11-10 → 2026-11-18 (+8d) | 2026-11-17 → 2026-11-23 (+6d) | 13d → 9d |
| 459 | **EXTERIOR** | 2026-10-01 → 2026-10-07 (+6d) | 2026-10-05 → 2026-10-12 (+7d) | 18d → 14d |
| 460 | Rastrilleo, afine y nivelado de tierra | 2026-10-01 → 2026-10-07 (+6d) | 2026-10-05 → 2026-10-12 (+7d) | 18d → 14d |
| 461 | **SEGUNDA LIMPIEZA DE OBRA** | 2026-11-17 → 2026-11-23 (+6d) | 2026-11-21 → 2026-11-27 (+6d) | 37d → 33d |
| 462 | Segunda limpieza de obra | 2026-11-17 → 2026-11-23 (+6d) | 2026-11-19 → 2026-11-25 (+6d) | 37d → 33d |
| 463 | Segunda carga y acarreo de escombro | 2026-11-19 → 2026-11-25 (+6d) | 2026-11-21 → 2026-11-27 (+6d) | 37d → 33d |
| 464 | **CANCELERIA PUERTAS Y VENTANAS DE ALUMINIO** | 2026-11-04 → 2026-11-10 (+6d) | 2026-11-26 → 2026-12-02 (+6d) | 14d → 10d |
| 465 | Fijo medidas 0.30x4.90m | 2026-11-06 → 2026-11-12 (+6d) | 2026-11-17 → 2026-11-23 (+6d) | 22d → 18d |
| 466 | Ventana Corrediza 1.80x1.60m | 2026-11-04 → 2026-11-10 (+6d) | 2026-11-09 → 2026-11-17 (+8d) | 27d → 23d |
| 467 | Ventana Corrediza 0.60x0.40m | 2026-11-06 → 2026-11-12 (+6d) | 2026-11-11 → 2026-11-19 (+8d) | 25d → 21d |
| 468 | Ventana Corrediza 1.54x0.50m | 2026-11-06 → 2026-11-12 (+6d) | 2026-11-11 → 2026-11-19 (+8d) | 25d → 21d |
| 469 | Fijo medidas 1.40x2.50m | 2026-11-10 → 2026-11-18 (+8d) | 2026-11-17 → 2026-11-23 (+6d) | 16d → 12d |
| 470 | Ventana Corrediza 1.80x1.50m | 2026-11-12 → 2026-11-20 (+8d) | 2026-11-19 → 2026-11-25 (+6d) | 14d → 10d |
| 471 | Ventana Corrediza 1.40x1.60m | 2026-11-12 → 2026-11-20 (+8d) | 2026-11-19 → 2026-11-25 (+6d) | 14d → 10d |
| 472 | Ventana Corrediza 0.95x0.40m | 2026-11-12 → 2026-11-20 (+8d) | 2026-11-19 → 2026-11-25 (+6d) | 14d → 10d |
| 473 | Puerta corrediza 3.85x2.10m | 2026-11-17 → 2026-11-23 (+6d) | 2026-11-24 → 2026-11-30 (+6d) | 16d → 12d |
| 474 | Barandal de Cristal Templado | 2026-11-19 → 2026-11-25 (+6d) | 2026-11-26 → 2026-12-02 (+6d) | 14d → 10d |
| 475 | **CARPINTERIA, PUERTAS EXTERIORES E INTERIORES** | 2026-11-17 → 2026-11-23 (+6d) | 2026-11-27 → 2026-12-03 (+6d) | 13d → 9d |
| 476 | Puerta P-01 de seguridad | 2026-11-17 → 2026-11-23 (+6d) | 2026-11-23 → 2026-11-28 (+5d) | 17d → 13d |
| 477 | Puerta P-01 interior | 2026-11-17 → 2026-11-23 (+6d) | 2026-11-26 → 2026-12-02 (+6d) | 14d → 10d |
| 478 | Puerta P-02 interior | 2026-11-17 → 2026-11-23 (+6d) | 2026-11-26 → 2026-12-02 (+6d) | 14d → 10d |
| 479 | Puerta P-03 interior | 2026-11-23 → 2026-11-28 (+5d) | 2026-11-27 → 2026-12-03 (+6d) | 13d → 9d |
| 480 | Puerta P-04 interior | 2026-11-23 → 2026-11-28 (+5d) | 2026-11-27 → 2026-12-03 (+6d) | 13d → 9d |
| 481 | **VOLADOS, BARANDAL Y ESCALERA** | 2026-10-09 → 2026-10-16 (+7d) | 2026-11-21 → 2026-11-27 (+6d) | 21d → 17d |
| 482 | Barandal de Herreria en escalera | 2026-10-28 → 2026-11-03 (+6d) | 2026-11-02 → 2026-11-07 (+5d) | 36d → 32d |
| 483 | Escalera de herreria | 2026-10-09 → 2026-10-16 (+7d) | 2026-11-02 → 2026-11-07 (+5d) | 21d → 17d |

| ID | Task | Start | Finish | Total float |
| --- | --- | --- | --- | --- |
| 484 | Techumbre en acceso Principal | 2026-10-27 → 2026-11-02 (+6d) | 2026-11-12 → 2026-11-20 (+8d) | 27d → 23d |
| 485 | Techumbre en 1.80x0.50m | 2026-10-27 → 2026-11-02 (+6d) | 2026-11-04 → 2026-11-10 (+6d) | 21d → 17d |
| 486 | Techumbre en 1.40x0.50m | 2026-11-04 → 2026-11-10 (+6d) | 2026-11-12 → 2026-11-20 (+8d) | 21d → 17d |
| 487 | Imper con manto prefabricado | 2026-11-07 → 2026-11-13 (+6d) | 2026-11-13 → 2026-11-21 (+8d) | 21d → 17d |
| 488 | Plafon hoja tablaroca std | 2026-11-13 → 2026-11-21 (+8d) | 2026-11-21 → 2026-11-27 (+6d) | 21d → 17d |
| 489 | Acabado Woodstock en parte inf. Cubierta | 2026-11-13 → 2026-11-21 (+8d) | 2026-11-21 → 2026-11-27 (+6d) | 21d → 17d |
| 490 | **INSTALACION ELECTRICA** | 2026-10-17 → 2026-10-23 (+6d) | 2026-11-06 → 2026-11-12 (+6d) | 42d → 38d |
| 491 | Alimentación eléctrica base a centro de carga | 2026-10-22 → 2026-10-29 (+7d) | 2026-10-28 → 2026-11-04 (+7d) | 46d → 42d |
| 492 | Interruptor termomagnético 1x20 A | 2026-10-29 → 2026-11-04 (+6d) | 2026-10-29 → 2026-11-05 (+7d) | 46d → 42d |
| 493 | Interruptor termomagnético 2x20 A | 2026-10-29 → 2026-11-04 (+6d) | 2026-10-29 → 2026-11-05 (+7d) | 46d → 42d |
| 494 | Salida para apagador 3 vías | 2026-10-17 → 2026-10-23 (+6d) | 2026-10-22 → 2026-10-28 (+6d) | 42d → 38d |
| 495 | Salida para apagador doble | 2026-10-22 → 2026-10-29 (+7d) | 2026-10-26 → 2026-11-02 (+7d) | 44d → 40d |
| 496 | Salida para apagador sencillo | 2026-10-22 → 2026-10-29 (+7d) | 2026-10-26 → 2026-11-02 (+7d) | 44d → 40d |
| 497 | Salida de alumbrado en losa | 2026-10-22 → 2026-10-29 (+7d) | 2026-10-28 → 2026-11-04 (+7d) | 42d → 38d |
| 498 | Salida para contacto exterior doble | 2026-10-22 → 2026-10-29 (+7d) | 2026-10-24 → 2026-10-30 (+6d) | 45d → 41d |
| 499 | Salida para contacto 220 V | 2026-10-26 → 2026-10-31 (+5d) | 2026-10-28 → 2026-11-04 (+7d) | 42d → 38d |
| 500 | Salida para contacto doble | 2026-10-26 → 2026-10-31 (+5d) | 2026-10-30 → 2026-11-06 (+7d) | 45d → 41d |
| 501 | Salida para contacto doble área húmeda | 2026-10-29 → 2026-11-04 (+6d) | 2026-10-30 → 2026-11-06 (+7d) | 45d → 41d |
| 502 | Salida TV / telefonía / intercom | 2026-10-29 → 2026-11-04 (+6d) | 2026-11-03 → 2026-11-09 (+6d) | 43d → 39d |
| 503 | Extractor 4 baño | 2026-10-29 → 2026-11-04 (+6d) | 2026-11-04 → 2026-11-10 (+6d) | 42d → 38d |
| 504 | Prueba eléctrica | 2026-11-04 → 2026-11-10 (+6d) | 2026-11-06 → 2026-11-12 (+6d) | 42d → 38d |
| 505 | **INSTALACIÓN HIDRO-SANITARIA** | 2026-10-01 → 2026-10-07 (+6d) | 2026-10-15 → 2026-10-21 (+6d) | 13d → 9d |
| 506 | Tubería condensados PVC 1 | 2026-10-01 → 2026-10-07 (+6d) | 2026-10-07 → 2026-10-14 (+7d) | 13d → 9d |
| 507 | Tubería sanitaria PVC 4 | 2026-10-01 → 2026-10-07 (+6d) | 2026-10-07 → 2026-10-14 (+7d) | 21d → 17d |
| 508 | Coladera H-444 | 2026-10-07 → 2026-10-14 (+7d) | 2026-10-08 → 2026-10-15 (+7d) | 21d → 17d |
| 509 | Caja PVC para lavadora | 2026-10-01 → 2026-10-07 (+6d) | 2026-10-05 → 2026-10-12 (+7d) | 13d → 9d |
| 510 | Salida para secadora PVC 4 | 2026-10-01 → 2026-10-07 (+6d) | 2026-10-05 → 2026-10-12 (+7d) | 13d → 9d |
| 511 | Salida hidráulica para boiler | 2026-10-01 → 2026-10-07 (+6d) | 2026-10-03 → 2026-10-09 (+6d) | 14d → 10d |
| 512 | Salida hidráulica para llave de jardín | 2026-10-01 → 2026-10-07 (+6d) | 2026-10-05 → 2026-10-12 (+7d) | 13d → 9d |
| 513 | Salida hidráulica para lavabo | 2026-10-01 → 2026-10-07 (+6d) | 2026-10-06 → 2026-10-13 (+7d) | 13d → 9d |
| 514 | Salida hidráulica para purificación | 2026-10-01 → 2026-10-07 (+6d) | 2026-10-06 → 2026-10-13 (+7d) | 13d → 9d |
| 515 | Salida sanitaria para lavabo | 2026-10-03 → 2026-10-09 (+6d) | 2026-10-06 → 2026-10-13 (+7d) | 13d → 9d |
| 516 | Salida hidráulica para lavadero | 2026-10-03 → 2026-10-09 (+6d) | 2026-10-06 → 2026-10-13 (+7d) | 13d → 9d |
| 517 | Salida sanitaria para lavadero | 2026-10-05 → 2026-10-12 (+7d) | 2026-10-07 → 2026-10-14 (+7d) | 13d → 9d |
| 518 | Salida hidráulica para lavadora | 2026-10-05 → 2026-10-12 (+7d) | 2026-10-07 → 2026-10-14 (+7d) | 13d → 9d |
| 519 | Salida sanitaria para lavadora | 2026-10-06 → 2026-10-13 (+7d) | 2026-10-08 → 2026-10-15 (+7d) | 13d → 9d |
| 520 | Salida hidráulica para regadera | 2026-10-06 → 2026-10-13 (+7d) | 2026-10-13 → 2026-10-19 (+6d) | 18d → 14d |
| 521 | Salida sanitaria para regadera | 2026-10-06 → 2026-10-13 (+7d) | 2026-10-12 → 2026-10-17 (+5d) | 19d → 15d |
| 522 | Salida hidráulica para WC | 2026-10-03 → 2026-10-09 (+6d) | 2026-10-06 → 2026-10-13 (+7d) | 13d → 9d |
| 523 | Salida sanitaria para WC | 2026-10-06 → 2026-10-13 (+7d) | 2026-10-12 → 2026-10-17 (+5d) | 13d → 9d |
| 524 | Salida hidráulica para zinc | 2026-10-06 → 2026-10-13 (+7d) | 2026-10-12 → 2026-10-17 (+5d) | 13d → 9d |
| 525 | Salida sanitaria para zinc | 2026-10-08 → 2026-10-15 (+7d) | 2026-10-13 → 2026-10-19 (+6d) | 13d → 9d |
| 526 | Tubo para ventila de baño 2 | 2026-10-01 → 2026-10-07 (+6d) | 2026-10-07 → 2026-10-14 (+7d) | 13d → 9d |
| 527 | Tubo para minisplit PVC 3 | 2026-10-07 → 2026-10-14 (+7d) | 2026-10-14 → 2026-10-20 (+6d) | 13d → 9d |
| 528 | Cuadro de medición | 2026-10-05 → 2026-10-12 (+7d) | 2026-10-12 → 2026-10-17 (+5d) | 18d → 14d |
| 529 | Pozo de absorción 0.50x0.50x0.50 | 2026-10-05 → 2026-10-12 (+7d) | 2026-10-08 → 2026-10-15 (+7d) | 21d → 17d |
| 530 | Prueba sanitaria final | 2026-10-14 → 2026-10-20 (+6d) | 2026-10-15 → 2026-10-21 (+6d) | 17d → 13d |
| 531 | Prueba hidrostática final | 2026-10-13 → 2026-10-19 (+6d) | 2026-10-14 → 2026-10-20 (+6d) | 18d → 14d |
| 532 | Salida válvula control 19 mm | 2026-10-12 → 2026-10-17 (+5d) | 2026-10-13 → 2026-10-19 (+6d) | 18d → 14d |
| 533 | Salida válvula control 13 mm | 2026-10-12 → 2026-10-17 (+5d) | 2026-10-13 → 2026-10-19 (+6d) | 18d → 14d |
| 534 | Salida hidráulica para tanque hidroneumático | 2026-10-05 → 2026-10-12 (+7d) | 2026-10-08 → 2026-10-15 (+7d) | 21d → 17d |
| 535 | Salida hidráulica para Active Driver | 2026-10-05 → 2026-10-12 (+7d) | 2026-10-08 → 2026-10-15 (+7d) | 21d → 17d |
| 536 | **INSTALACION DE GAS** | 2026-09-29 → 2026-10-05 (+6d) | 2026-10-08 → 2026-10-15 (+7d) | 46d → 42d |
| 537 | Ramaleo para gas 1/2 | 2026-10-02 → 2026-10-08 (+6d) | 2026-10-08 → 2026-10-15 (+7d) | 46d → 42d |
| 538 | Excavación a mano material tipo B | 2026-09-29 → 2026-10-05 (+6d) | 2026-10-02 → 2026-10-08 (+6d) | 46d → 42d |
| 539 | **MUEBLES SANITARIOS** | 2026-11-06 → 2026-11-12 (+6d) | 2026-12-14 → 2026-12-19 (+5d) | 25d → 21d |
| 540 | WC completo Austral | 2026-11-06 → 2026-11-12 (+6d) | 2026-11-09 → 2026-11-17 (+8d) | 27d → 23d |
| 541 | Lavabo Senna con pedestal | 2026-11-06 → 2026-11-12 (+6d) | 2026-11-11 → 2026-11-19 (+8d) | 25d → 21d |
| 542 | Tarja / lavabo combo Guinea 80x45 | 2026-11-06 → 2026-11-12 (+6d) | 2026-11-09 → 2026-11-17 (+8d) | 53d → 49d |
| 543 | Regadera con monomando | 2026-11-09 → 2026-11-17 (+8d) | 2026-11-12 → 2026-11-20 (+8d) | 24d → 20d |
| 544 | Coladera inserto cerámico | 2026-11-10 → 2026-11-18 (+8d) | 2026-11-12 → 2026-11-20 (+8d) | 24d → 20d |
| 545 | Toallero sencillo | 2026-12-12 → 2026-12-18 (+6d) | 2026-12-14 → 2026-12-19 (+5d) | 13d → 9d |
| 546 | Toallero barra | 2026-12-12 → 2026-12-18 (+6d) | 2026-12-14 → 2026-12-19 (+5d) | 13d → 9d |
| 547 | Portapapel | 2026-12-12 → 2026-12-18 (+6d) | 2026-12-14 → 2026-12-19 (+5d) | 13d → 9d |
| 548 | Gancho baño | 2026-12-12 → 2026-12-18 (+6d) | 2026-12-14 → 2026-12-19 (+5d) | 13d → 9d |
| 549 | **EQUIPAMIENTO** | 2026-09-23 → 2026-09-29 (+6d) | 2026-09-30 → 2026-10-06 (+6d) | 72d → 68d |
| 550 | Electronivel Rotoplas 5 m | 2026-09-24 → 2026-09-30 (+6d) | 2026-09-26 → 2026-10-02 (+6d) | 75d → 71d |
| 551 | Manómetro | 2026-09-24 → 2026-09-30 (+6d) | 2026-09-25 → 2026-10-01 (+6d) | 76d → 72d |
| 552 | Interruptor de presión 30-50 PSI | 2026-09-24 → 2026-09-30 (+6d) | 2026-09-25 → 2026-10-01 (+6d) | 76d → 72d |
| 553 | Tanque hidroneumático FPS-24LX | 2026-09-24 → 2026-09-30 (+6d) | 2026-09-28 → 2026-10-03 (+5d) | 72d → 68d |

| ID | Task | Start | Finish | Duration | Complete | Total float | Predecessors |
| --- | --- | --- | --- | --- | --- | --- | --- |
| 554 | Bomba sumergible Dominator 1.2 HP | 2026-09-28 → 2026-10-03 (+5d) | 2026-09-30 → 2026-10-06 (+6d) |  |  | 72d → 68d |  |
| 555 | Cisterna prefabricada 2800 L | 2026-09-23 → 2026-09-29 (+6d) | 2026-09-24 → 2026-09-30 (+6d) |  |  | 72d → 68d |  |
| 556 | **LUMINARIAS** | 2026-10-29 → 2026-11-04 (+6d) | 2026-11-04 → 2026-11-10 (+6d) |  |  | 42d → 38d |  |
| 557 | Roseta cerámica | 2026-10-29 → 2026-11-04 (+6d) | 2026-11-02 → 2026-11-07 (+5d) |  |  | 44d → 40d |  |
| 558 | Luminaria lagartijera LED | 2026-10-29 → 2026-11-04 (+6d) | 2026-11-02 → 2026-11-07 (+5d) |  |  | 44d → 40d |  |
| 559 | Spot 6W Tecnolite | 2026-10-29 → 2026-11-04 (+6d) | 2026-11-02 → 2026-11-07 (+5d) |  |  | 44d → 40d |  |
| 560 | Spot 7W Tecnolite | 2026-10-29 → 2026-11-04 (+6d) | 2026-11-02 → 2026-11-07 (+5d) |  |  | 44d → 40d |  |
| 561 | Arbotante exterior | 2026-10-29 → 2026-11-04 (+6d) | 2026-10-30 → 2026-11-06 (+7d) |  |  | 42d → 38d |  |
| 562 | Estaca LED exterior | 2026-10-31 → 2026-11-06 (+6d) | 2026-11-04 → 2026-11-10 (+6d) |  |  | 42d → 38d |  |
| 563 | Tira LED | 2026-10-31 → 2026-11-06 (+6d) | 2026-11-04 → 2026-11-10 (+6d) |  |  | 42d → 38d |  |
| 564 | Spot exterior 50W | 2026-10-29 → 2026-11-04 (+6d) | 2026-10-30 → 2026-11-06 (+7d) |  |  | 45d → 41d |  |
| 565 | **TIMBRE** | 2026-10-30 → 2026-11-05 (+6d) | 2026-11-02 → 2026-11-07 (+5d) |  |  | 44d → 40d |  |
| 566 | Timbre inalámbrico con bocina | 2026-10-30 → 2026-11-05 (+6d) | 2026-11-02 → 2026-11-07 (+5d) |  |  | 44d → 40d |  |
| 567 | **OBRA EXTERIOR - BARDA** | 2026-10-05 → 2026-10-12 (+7d) | 2026-10-27 → 2026-11-03 (+7d) |  |  | 50d → 46d |  |
| 568 | Murete convencional | 2026-10-12 → 2026-10-17 (+5d) | 2026-10-17 → 2026-10-23 (+6d) |  |  | 56d → 52d |  |
| 569 | Barda de block aparente | 2026-10-05 → 2026-10-12 (+7d) | 2026-10-27 → 2026-11-03 (+7d) |  |  | 50d → 46d |  |
| 570 | **TERCER LIMPIEZA DE OBRA** | 2026-12-14 → 2026-12-21 (+7d) | 2027-01-04 → 2027-01-11 (+7d) |  |  | 13d → 9d |  |
| 571 | Limpieza fina para entrega | 2026-12-14 → 2026-12-21 (+7d) | 2026-12-21 → 2026-12-30 (+9d) |  |  | 13d → 9d |  |
| 572 | Tercera limpieza de obra | 2026-12-22 → 2026-12-30 (+8d) | 2026-12-29 → 2027-01-06 (+8d) |  |  | 13d → 9d |  |
| 573 | Tercera carga y acarreo de escombro | 2026-12-29 → 2027-01-06 (+8d) | 2027-01-04 → 2027-01-11 (+7d) |  |  | 13d → 9d |  |
| 574 | **LOTE 03 M-661 CORSAC-A** |  | 2027-01-07 → 2027-01-14 (+7d) | 181d → 186d |  | 10d → 6d |  |
| 575 | **HITOS IMPORTANTES DEL LOTE** |  | 2027-01-07 → 2027-01-14 (+7d) | 181d → 186d |  | 10d → 6d |  |
| 577 | Colado de Losa de Cimentación | 2026-06-10 → 2026-06-16 (+6d) | 2026-06-10 → 2026-06-16 (+6d) |  |  | 174d → 170d |  |
| 578 | Colado de Losa de Entrepiso | 2026-07-17 → 2026-07-23 (+6d) | 2026-07-17 → 2026-07-23 (+6d) |  |  | 144d → 140d |  |
| 579 | Colado de Losa de Azotea | 2026-08-24 → 2026-08-29 (+5d) | 2026-08-24 → 2026-08-29 (+5d) |  |  | 114d → 110d |  |
| 580 | Entrega de vivienda | 2027-01-07 → 2027-01-14 (+7d) | 2027-01-07 → 2027-01-14 (+7d) |  |  | 10d → 6d |  |
| 586 | **CIMENTACION** |  | 2026-06-11 → 2026-06-17 (+6d) | 13d → 18d | 93% → 90% | 10d → 6d |  |
| 603 | Acero contratrabe CT-1 | 2026-05-29 A → 2026-06-05 A (+7d) | 2026-06-04 A → 2026-06-10 A (+6d) |  |  |  | 587 → 587FS+5d |
| 604 | Acero contratrabe CT-2 | 2026-05-29 A → 2026-06-05 A (+7d) | 2026-06-04 A → 2026-06-10 A (+6d) |  |  |  | 587 → 587FS+5d |
| 605 | Malla electrosoldada 6-6/8-8 | 2026-06-06 A → 2026-06-12 A (+6d) | 2026-06-09 → 2026-06-15 (+6d) |  | 75% → 56% | 10d → 6d |  |
| 606 | Bastón de refuerzo LS | 2026-06-04 A → 2026-06-10 A (+6d) | 2026-06-06 A → 2026-06-12 A (+6d) |  |  |  |  |
| 607 | Bastón de refuerzo LI | 2026-06-04 A → 2026-06-10 A (+6d) | 2026-06-06 A → 2026-06-12 A (+6d) |  |  |  |  |
| 608 | Colado losa de cimentación f’c=200 | 2026-06-09 → 2026-06-15 (+6d) | 2026-06-10 → 2026-06-16 (+6d) |  |  | 10d → 6d |  |
| 609 | Curado de concreto | 2026-06-10 → 2026-06-16 (+6d) | 2026-06-11 → 2026-06-17 (+6d) |  |  | 10d → 6d |  |
| 610 | Acero zapata ZT-1 | 2026-06-04 A → 2026-06-10 A (+6d) | 2026-06-09 → 2026-06-15 (+6d) |  | 88% → 78% | 10d → 6d |  |
| 611 | Acero zapata ZT-2 | 2026-06-04 A → 2026-06-10 A (+6d) | 2026-06-09 → 2026-06-15 (+6d) |  | 88% → 78% | 10d → 6d |  |
| 612 | **MUROS, PLANTA BAJA. CASTILLOS Y CERRAMIENTOS** | 2026-06-05 A → 2026-06-11 A (+6d) | 2026-06-30 → 2026-07-06 (+6d) |  | 4% → 3% | 158d → 154d |  |
| 613 | Anclaje de castillos y Columnas PB | 2026-06-05 A → 2026-06-11 A (+6d) | 2026-06-11 → 2026-06-17 (+6d) |  | 50% → 43% | 161d → 157d |  |
| 614 | Castillo K1 | 2026-06-11 → 2026-06-17 (+6d) | 2026-06-16 → 2026-06-23 (+7d) |  |  | 161d → 157d |  |
| 615 | Castillo K3 | 2026-06-13 → 2026-06-19 (+6d) | 2026-06-17 → 2026-06-24 (+7d) |  |  | 161d → 157d |  |
| 616 | Castillo K4 | 2026-06-13 → 2026-06-19 (+6d) | 2026-06-17 → 2026-06-24 (+7d) |  |  | 161d → 157d |  |
| 617 | Castillo K5 | 2026-06-16 → 2026-06-23 (+7d) | 2026-06-19 → 2026-06-26 (+7d) |  |  | 161d → 157d |  |
| 618 | Refuerzo de muro K6 | 2026-06-17 → 2026-06-24 (+7d) | 2026-06-22 → 2026-06-27 (+5d) |  |  | 161d → 157d |  |
| 619 | Dala de cerramiento CR-1 | 2026-06-17 → 2026-06-24 (+7d) | 2026-06-23 → 2026-06-29 (+6d) |  |  | 164d → 160d |  |
| 620 | Dala de cerramiento CR-2 | 2026-06-17 → 2026-06-24 (+7d) | 2026-06-22 → 2026-06-27 (+5d) |  |  | 165d → 161d |  |
| 621 | Cadena block dala | 2026-06-22 → 2026-06-27 (+5d) | 2026-06-26 → 2026-07-02 (+6d) |  |  | 161d → 157d |  |
| 622 | Muro de ladrillo aparente | 2026-06-11 → 2026-06-17 (+6d) | 2026-06-30 → 2026-07-06 (+6d) |  |  | 10d → 6d |  |
| 623 | Muro de block planta baja | 2026-06-13 → 2026-06-19 (+6d) | 2026-06-30 → 2026-07-06 (+6d) |  |  | 10d → 6d |  |
| 624 | Ramaleo electrico en Muros Planta Baja | 2026-06-17 → 2026-06-24 (+7d) | 2026-06-23 → 2026-06-29 (+6d) |  |  | 13d → 9d |  |
| 625 | Ramaleo para cable poliducto 3/4 | 2026-06-23 → 2026-06-29 (+6d) | 2026-06-25 → 2026-07-01 (+6d) |  |  | 13d → 9d |  |
| 626 | Ramaleo para TV poliducto 3/4 | 2026-06-25 → 2026-07-01 (+6d) | 2026-06-29 → 2026-07-04 (+5d) |  |  | 13d → 9d |  |
| 627 | **ESCALERA** | 2026-07-17 → 2026-07-23 (+6d) | 2026-07-30 → 2026-08-05 (+6d) |  |  | 87d → 83d |  |
| 628 | Escalera de concreto armado | 2026-07-17 → 2026-07-23 (+6d) | 2026-07-30 → 2026-08-05 (+6d) |  |  | 87d → 83d |  |
| 629 | **LOSA DE ENTREPISO (viegueta y caseton)** | 2026-06-27 → 2026-07-03 (+6d) | 2026-07-18 → 2026-07-24 (+6d) |  |  | 13d → 9d |  |
| 630 | Dala de coronamiento 10cm | 2026-07-07 → 2026-07-13 (+6d) | 2026-07-09 → 2026-07-16 (+7d) |  |  | 13d → 9d |  |
| 631 | Dala de coronamiento 12cm | 2026-07-08 → 2026-07-14 (+6d) | 2026-07-10 → 2026-07-17 (+7d) |  |  | 12d → 8d |  |
| 632 | Trabe TR-1 | 2026-06-27 → 2026-07-03 (+6d) | 2026-07-01 → 2026-07-07 (+6d) |  |  | 14d → 10d |  |
| 633 | Trabe TR-2 | 2026-06-29 → 2026-07-06 (+7d) | 2026-07-03 → 2026-07-09 (+6d) |  |  | 12d → 8d |  |
| 634 | Nervadura NR-1 | 2026-06-30 → 2026-07-07 (+7d) | 2026-07-04 → 2026-07-10 (+6d) |  |  | 11d → 7d |  |
| 635 | Nervadura NR-2 | 2026-07-01 → 2026-07-08 (+7d) | 2026-07-06 → 2026-07-13 (+7d) |  |  | 10d → 6d |  |
| 636 | Nervadura NR-3 | 2026-07-01 → 2026-07-08 (+7d) | 2026-07-06 → 2026-07-13 (+7d) |  |  | 10d → 6d |  |
| 637 | Nervadura NR-4 | 2026-07-01 → 2026-07-08 (+7d) | 2026-07-06 → 2026-07-13 (+7d) |  |  | 10d → 6d |  |
| 638 | Acero de refuerzo en nervios #3 | 2026-07-07 → 2026-07-13 (+6d) | 2026-07-08 → 2026-07-15 (+7d) |  |  | 10d → 6d |  |
| 639 | Acero de refuerzo long. #3 | 2026-07-08 → 2026-07-14 (+6d) | 2026-07-10 → 2026-07-17 (+7d) |  |  | 11d → 7d |  |
| 640 | Acero de refuerzo long. #4 | 2026-07-08 → 2026-07-14 (+6d) | 2026-07-10 → 2026-07-17 (+7d) |  |  | 11d → 7d |  |
| 641 | Malla 66-10/10 losa de compresión | 2026-07-14 → 2026-07-20 (+6d) | 2026-07-16 → 2026-07-22 (+6d) |  |  | 10d → 6d |  |
| 642 | Acero de Losa Maciza | 2026-07-07 → 2026-07-13 (+6d) | 2026-07-09 → 2026-07-16 (+7d) |  |  | 15d → 11d |  |
| 643 | Caseton de 60x60x20cm | 2026-07-07 → 2026-07-13 (+6d) | 2026-07-08 → 2026-07-15 (+7d) |  |  | 14d → 10d |  |
| 644 | Concreto losa de entrepiso f’c=200 | 2026-07-16 → 2026-07-22 (+6d) | 2026-07-17 → 2026-07-23 (+6d) |  |  | 10d → 6d |  |
| 645 | Curado de concreto | 2026-07-17 → 2026-07-23 (+6d) | 2026-07-18 → 2026-07-24 (+6d) |  |  | 10d → 6d |  |

| ID | Task | Start | Finish | Total float |
| --- | --- | --- | --- | --- |
| 646 | Cimbra losa de azotea | 2026-07-01 → 2026-07-08 (+7d) | 2026-07-07 → 2026-07-14 (+7d) | 11d → 7d |
| 647 | Cimbra exterior corta losa | 2026-07-10 → 2026-07-16 (+6d) | 2026-07-14 → 2026-07-20 (+6d) | 12d → 8d |
| 648 | Ramaleo poliducto eléctrico entrepiso | 2026-07-09 → 2026-07-15 (+6d) | 2026-07-10 → 2026-07-17 (+7d) | 149d → 145d |
| 649 | Ramaleo hidráulico CPVC 3/4" | 2026-07-10 → 2026-07-16 (+6d) | 2026-07-13 → 2026-07-18 (+5d) | 10d → 6d |
| 650 | Ramaleo hidráulico CPVC 1/2" | 2026-07-13 → 2026-07-18 (+5d) | 2026-07-14 → 2026-07-20 (+6d) | 10d → 6d |
| 651 | Prueba hidráulica | 2026-07-13 → 2026-07-18 (+5d) | 2026-07-14 → 2026-07-20 (+6d) | 10d → 6d |
| 652 | Ramaleo sanitario PVC 4" | 2026-07-10 → 2026-07-16 (+6d) | 2026-07-13 → 2026-07-18 (+5d) | 10d → 6d |
| 653 | Ramaleo sanitario PVC 2" | 2026-07-13 → 2026-07-18 (+5d) | 2026-07-14 → 2026-07-20 (+6d) | 10d → 6d |
| 654 | Prueba sanitaria | 2026-07-13 → 2026-07-18 (+5d) | 2026-07-14 → 2026-07-20 (+6d) | 10d → 6d |
| 655 | **MUROS EN PLANTA ALTA, CASTILLOS Y CERRM.** | 2026-07-10 → 2026-07-16 (+6d) | 2026-08-06 → 2026-08-12 (+6d) | 11d → 7d |
| 656 | Anclaje de castillos y Columnas PA | 2026-07-10 → 2026-07-16 (+6d) | 2026-07-15 → 2026-07-21 (+6d) | 11d → 7d |
| 657 | Castillo K1 | 2026-07-18 → 2026-07-24 (+6d) | 2026-07-23 → 2026-07-30 (+7d) | 14d → 10d |
| 658 | Castillo K2 | 2026-07-20 → 2026-07-27 (+7d) | 2026-07-24 → 2026-07-31 (+7d) | 13d → 9d |
| 659 | Castillo K4 | 2026-07-23 → 2026-07-30 (+7d) | 2026-07-28 → 2026-08-03 (+6d) | 14d → 10d |
| 660 | Castillo K5 | 2026-07-23 → 2026-07-30 (+7d) | 2026-07-28 → 2026-08-03 (+6d) | 14d → 10d |
| 661 | Castillo K6 | 2026-07-23 → 2026-07-30 (+7d) | 2026-07-28 → 2026-08-03 (+6d) | 14d → 10d |
| 662 | Refuerzo de muro | 2026-07-24 → 2026-07-31 (+7d) | 2026-07-29 → 2026-08-04 (+6d) | 13d → 9d |
| 663 | Dala de cerramiento CR-1 | 2026-07-29 → 2026-08-04 (+6d) | 2026-08-03 → 2026-08-08 (+5d) | 13d → 9d |
| 664 | Dala de cerramiento CR-2 | 2026-07-29 → 2026-08-04 (+6d) | 2026-08-03 → 2026-08-08 (+5d) | 13d → 9d |
| 665 | Cadena block dala | 2026-08-03 → 2026-08-08 (+5d) | 2026-08-06 → 2026-08-12 (+6d) | 13d → 9d |
| 666 | Muro de ladrillo aparente | 2026-07-18 → 2026-07-24 (+6d) | 2026-08-06 → 2026-08-12 (+6d) | 10d → 6d |
| 667 | Muro de block planta alta | 2026-07-20 → 2026-07-27 (+7d) | 2026-08-06 → 2026-08-12 (+6d) | 10d → 6d |
| 668 | Ramaleo electrico en Muros Planta Alta | 2026-07-29 → 2026-08-04 (+6d) | 2026-08-03 → 2026-08-08 (+5d) | 21d → 17d |
| 669 | **LOSA AZOTEA** | 2026-08-06 → 2026-08-12 (+6d) | 2026-08-25 → 2026-08-31 (+6d) | 10d → 6d |
| 670 | Cortalosa CL-1 | 2026-08-20 → 2026-08-26 (+6d) | 2026-08-22 → 2026-08-28 (+6d) | 10d → 6d |
| 671 | Cortalosa CL-2 | 2026-08-20 → 2026-08-26 (+6d) | 2026-08-22 → 2026-08-28 (+6d) | 10d → 6d |
| 672 | Vigueta pretensada V11-30 125 | 2026-08-06 → 2026-08-12 (+6d) | 2026-08-12 → 2026-08-19 (+7d) | 13d → 9d |
| 673 | Vigueta pretensada V11-30 185 | 2026-08-06 → 2026-08-12 (+6d) | 2026-08-12 → 2026-08-19 (+7d) | 13d → 9d |
| 674 | Vigueta pretensada V11-30 190 | 2026-08-06 → 2026-08-12 (+6d) | 2026-08-12 → 2026-08-19 (+7d) | 13d → 9d |
| 675 | Vigueta pretensada V11-30 205 | 2026-08-08 → 2026-08-14 (+6d) | 2026-08-14 → 2026-08-21 (+7d) | 11d → 7d |
| 676 | Vigueta pretensada V11-30 215 | 2026-08-08 → 2026-08-14 (+6d) | 2026-08-14 → 2026-08-21 (+7d) | 11d → 7d |
| 677 | Vigueta pretensada V11-30 260 | 2026-08-10 → 2026-08-17 (+7d) | 2026-08-17 → 2026-08-22 (+5d) | 10d → 6d |
| 678 | Vigueta pretensada V11-30 285 | 2026-08-10 → 2026-08-17 (+7d) | 2026-08-17 → 2026-08-22 (+5d) | 10d → 6d |
| 679 | Vigueta pretensada V11-40 330 | 2026-08-10 → 2026-08-17 (+7d) | 2026-08-17 → 2026-08-22 (+5d) | 10d → 6d |
| 680 | Vigueta pretensada V11-40 335 | 2026-08-10 → 2026-08-17 (+7d) | 2026-08-17 → 2026-08-22 (+5d) | 10d → 6d |
| 681 | Vigueta pretensada V11-40 505 | 2026-08-10 → 2026-08-17 (+7d) | 2026-08-17 → 2026-08-22 (+5d) | 10d → 6d |
| 682 | Bovedilla poliestireno azotea | 2026-08-17 → 2026-08-22 (+5d) | 2026-08-20 → 2026-08-26 (+6d) | 10d → 6d |
| 683 | Malla 66-10/10 losa de compresión | 2026-08-20 → 2026-08-26 (+6d) | 2026-08-22 → 2026-08-28 (+6d) | 10d → 6d |
| 684 | Concreto losa de azotea f’c=200 | 2026-08-22 → 2026-08-28 (+6d) | 2026-08-24 → 2026-08-29 (+5d) | 10d → 6d |
| 685 | Curado de concreto | 2026-08-24 → 2026-08-31 (+7d) | 2026-08-25 → 2026-08-31 (+6d) | 10d → 6d |
| 686 | Cimbra losa de azotea | 2026-08-06 → 2026-08-12 (+6d) | 2026-08-12 → 2026-08-19 (+7d) | 18d → 14d |
| 687 | Ramaleo de poliducto para inst. electrica en azotea | 2026-08-20 → 2026-08-26 (+6d) | 2026-08-22 → 2026-08-28 (+6d) | 10d → 6d |
| 688 | **PRETIL Y ACABADOS DE AZOTEA** | 2026-08-25 → 2026-09-01 (+7d) | 2026-09-18 → 2026-09-25 (+7d) | 10d → 6d |
| 689 | Castillo K1 | 2026-08-27 → 2026-09-03 (+7d) | 2026-09-02 → 2026-09-09 (+7d) | 10d → 6d |
| 690 | Dala de cerramiento en pretil | 2026-09-01 → 2026-09-07 (+6d) | 2026-09-04 → 2026-09-11 (+7d) | 10d → 6d |
| 691 | Muro de block 12x15x40 | 2026-08-25 → 2026-09-01 (+7d) | 2026-08-31 → 2026-09-07 (+7d) | 10d → 6d |
| 692 | Chaflán en azotea | 2026-09-03 → 2026-09-09 (+6d) | 2026-09-08 → 2026-09-14 (+6d) | 10d → 6d |
| 693 | Diamante de entortado | 2026-09-03 → 2026-09-09 (+6d) | 2026-09-08 → 2026-09-14 (+6d) | 10d → 6d |
| 694 | Aplanado exterior Mortermax fino | 2026-09-05 → 2026-09-11 (+6d) | 2026-09-11 → 2026-09-18 (+7d) | 10d → 6d |
| 695 | Entortado de Losa | 2026-09-12 → 2026-09-21 (+9d) | 2026-09-18 → 2026-09-25 (+7d) | 10d → 6d |
| 696 | Curado de concreto | 2026-09-11 → 2026-09-18 (+7d) | 2026-09-12 → 2026-09-21 (+9d) | 10d → 6d |
| 697 | **PRIMERA LIMPIEZA DE OBRA** | 2026-08-25 → 2026-09-01 (+7d) | 2026-08-29 → 2026-09-04 (+6d) | 70d → 66d |
| 698 | Primera limpieza de obra | 2026-08-25 → 2026-09-01 (+7d) | 2026-08-27 → 2026-09-02 (+6d) | 70d → 66d |
| 699 | Primera carga y acarreo de escombro | 2026-08-27 → 2026-09-03 (+7d) | 2026-08-29 → 2026-09-04 (+6d) | 70d → 66d |
| 700 | **IMPERMEABILIZACION** | 2026-09-18 → 2026-09-25 (+7d) | 2026-09-25 → 2026-10-01 (+6d) | 10d → 6d |
| 701 | Impermeabilización de pretil Kover 5 años | 2026-09-18 → 2026-09-25 (+7d) | 2026-09-24 → 2026-09-30 (+6d) | 11d → 7d |
| 702 | Impermeabilización de losa Kover 5 años | 2026-09-18 → 2026-09-25 (+7d) | 2026-09-25 → 2026-10-01 (+6d) | 10d → 6d |
| 703 | **ALBAÑILERIA** | 2026-09-01 → 2026-09-07 (+6d) | 2026-11-19 → 2026-11-25 (+6d) | 29d → 25d |
| 704 | Lavadero de granito | 2026-10-15 → 2026-10-21 (+6d) | 2026-10-20 → 2026-10-26 (+6d) | 69d → 65d |
| 705 | Ranurado y resane general inst. en muros | 2026-09-23 → 2026-09-29 (+6d) | 2026-09-26 → 2026-10-02 (+6d) | 12d → 8d |
| 706 | Ranurado y resane eléctrico 1/2 a 3/4 | 2026-09-23 → 2026-09-29 (+6d) | 2026-09-26 → 2026-10-02 (+6d) | 12d → 8d |
| 707 | Ranurado y resane hidráulico 1/2 a 1 | 2026-09-25 → 2026-10-01 (+6d) | 2026-09-28 → 2026-10-03 (+5d) | 11d → 7d |
| 708 | Resane sanitario tubería 2 | 2026-09-25 → 2026-10-01 (+6d) | 2026-09-28 → 2026-10-03 (+5d) | 11d → 7d |
| 709 | Resane sanitario tubería 4 | 2026-09-25 → 2026-10-01 (+6d) | 2026-09-28 → 2026-10-03 (+5d) | 11d → 7d |
| 710 | Resane minisplit tubería 3 | 2026-09-25 → 2026-10-01 (+6d) | 2026-09-28 → 2026-10-03 (+5d) | 11d → 7d |
| 711 | Ramaleo hidráulico exterior CPVC 1 1/4 | 2026-09-25 → 2026-10-01 (+6d) | 2026-09-29 → 2026-10-05 (+6d) | 10d → 6d |
| 712 | Ramaleo hidráulico exterior CPVC 1 | 2026-09-25 → 2026-10-01 (+6d) | 2026-09-28 → 2026-10-03 (+5d) | 10d → 6d |
| 713 | Ramaleo hidráulico exterior CPVC 3/4 | 2026-09-28 → 2026-10-03 (+5d) | 2026-09-30 → 2026-10-06 (+6d) | 10d → 6d |
| 714 | Ramaleo hidráulico exterior CPVC 1/2 | 2026-09-28 → 2026-10-03 (+5d) | 2026-09-30 → 2026-10-06 (+6d) | 10d → 6d |
| 715 | Prueba hidráulica | 2026-09-30 → 2026-10-06 (+6d) | 2026-10-01 → 2026-10-07 (+6d) | 10d → 6d |

| ID | Task | Start | Finish | Total float |
| --- | --- | --- | --- | --- |
| 716 | Ramaleo sanitario exterior PVC 4 | 2026-09-25 → 2026-10-01 (+6d) | 2026-09-30 → 2026-10-06 (+6d) | 10d → 6d |
| 717 | Ramaleo sanitario exterior PVC 2 | 2026-09-26 → 2026-10-02 (+6d) | 2026-09-30 → 2026-10-06 (+6d) | 10d → 6d |
| 718 | Prueba sanitaria | 2026-09-30 → 2026-10-06 (+6d) | 2026-10-01 → 2026-10-07 (+6d) | 10d → 6d |
| 719 | Centro de carga muros PB | 2026-09-29 → 2026-10-05 (+6d) | 2026-10-03 → 2026-10-09 (+6d) | 12d → 8d |
| 720 | Firme de concreto 8 cm | 2026-10-01 → 2026-10-07 (+6d) | 2026-10-06 → 2026-10-13 (+7d) | 63d → 59d |
| 721 | Curado de concreto | 2026-10-06 → 2026-10-13 (+7d) | 2026-10-07 → 2026-10-14 (+7d) | 63d → 59d |
| 722 | Cisterna 2800 L con instalación | 2026-09-01 → 2026-09-07 (+6d) | 2026-09-24 → 2026-09-30 (+6d) | 69d → 65d |
| 723 | Banqueta y huellas de concreto | 2026-10-08 → 2026-10-15 (+7d) | 2026-10-19 → 2026-10-24 (+5d) | 46d → 42d |
| 724 | Curado de concreto | 2026-10-19 → 2026-10-26 (+7d) | 2026-10-20 → 2026-10-26 (+6d) | 46d → 42d |
| 725 | Número oficial | 2026-11-18 → 2026-11-24 (+6d) | 2026-11-19 → 2026-11-25 (+6d) | 46d → 42d |
| 726 | Detallado de rodapié exterior | 2026-10-03 → 2026-10-09 (+6d) | 2026-10-08 → 2026-10-15 (+7d) | 78d → 74d |
| 727 | Detalle de losas y volados acabado fino | 2026-09-25 → 2026-10-01 (+6d) | 2026-09-30 → 2026-10-06 (+6d) | 14d → 10d |
| 728 | Detalle fino en muros interiores | 2026-09-28 → 2026-10-03 (+5d) | 2026-10-03 → 2026-10-09 (+6d) | 11d → 7d |
| 729 | Jardín interior bajo escalera con pozo de absorción | 2026-09-25 → 2026-10-01 (+6d) | 2026-10-09 → 2026-10-16 (+7d) | 14d → 10d |
| 730 | **ACABADOS EN FACHADA A** | 2026-09-18 → 2026-09-25 (+7d) | 2026-11-18 → 2026-11-24 (+6d) | 46d → 42d |
| 731 | Aplanado grueso fachada | 2026-09-18 → 2026-09-25 (+7d) | 2026-10-03 → 2026-10-09 (+6d) | 52d → 48d |
| 732 | Aplanado fino estuco fachada | 2026-09-28 → 2026-10-03 (+5d) | 2026-10-09 → 2026-10-16 (+7d) | 52d → 48d |
| 733 | Pintura acrílica 1-0102P | 2026-11-04 → 2026-11-10 (+6d) | 2026-11-13 → 2026-11-21 (+8d) | 48d → 44d |
| 734 | Pintura acrílica 1-1404D | 2026-11-04 → 2026-11-10 (+6d) | 2026-11-18 → 2026-11-24 (+6d) | 46d → 42d |
| 735 | Cantera 40x60cm | 2026-10-09 → 2026-10-16 (+7d) | 2026-10-27 → 2026-11-03 (+7d) | 52d → 48d |
| 736 | Lambrin de permabase 1 cara | 2026-10-03 → 2026-10-09 (+6d) | 2026-10-07 → 2026-10-14 (+7d) | 59d → 55d |
| 737 | Enchapado de Permabase | 2026-10-07 → 2026-10-14 (+7d) | 2026-10-13 → 2026-10-19 (+6d) | 59d → 55d |
| 738 | Cubierta de Permabase | 2026-10-13 → 2026-10-19 (+6d) | 2026-10-19 → 2026-10-24 (+5d) | 59d → 55d |
| 739 | **APLANADOS Y PINTURA** | 2026-09-25 → 2026-10-01 (+6d) | 2026-12-14 → 2026-12-19 (+5d) | 12d → 8d |
| 740 | Yeso pulido en muros | 2026-10-05 → 2026-10-12 (+7d) | 2026-10-22 → 2026-10-28 (+6d) | 10d → 6d |
| 741 | Aplanado en muros enjarre grueso | 2026-09-25 → 2026-10-01 (+6d) | 2026-10-01 → 2026-10-07 (+6d) | 13d → 9d |
| 742 | Pintura vinílica OR-W13 SHOELACE | 2026-11-27 → 2026-12-03 (+6d) | 2026-12-14 → 2026-12-19 (+5d) | 10d → 6d |
| 743 | Pintura vinílica PPUI5-13 Creamy M. | 2026-11-21 → 2026-11-27 (+6d) | 2026-12-03 → 2026-12-10 (+7d) | 18d → 14d |
| 744 | Pintura vinílica MD-06 Nano White | 2026-11-21 → 2026-11-27 (+6d) | 2026-12-01 → 2026-12-08 (+7d) | 20d → 16d |
| 745 | Yeso pulido en plafones | 2026-09-25 → 2026-10-01 (+6d) | 2026-10-07 → 2026-10-14 (+7d) | 12d → 8d |
| 746 | Perfilado de puertas y ventanas | 2026-10-09 → 2026-10-16 (+7d) | 2026-10-15 → 2026-10-21 (+6d) | 73d → 69d |
| 747 | **PISOS Y AZULEJOS** | 2026-10-16 → 2026-10-22 (+6d) | 2026-11-17 → 2026-11-23 (+6d) | 10d → 6d |
| 748 | **AREA SOCIAL** | 2026-10-20 → 2026-10-27 (+7d) | 2026-11-07 → 2026-11-13 (+6d) | 10d → 6d |
| 749 | Piso Adhara 44X89 | 2026-10-20 → 2026-10-27 (+7d) | 2026-11-06 → 2026-11-12 (+6d) | 10d → 6d |
| 750 | Zoclo Adhara 44X89 | 2026-11-02 → 2026-11-07 (+5d) | 2026-11-07 → 2026-11-13 (+6d) | 27d → 23d |
| 751 | **RECAMARAS** | 2026-10-16 → 2026-10-22 (+6d) | 2026-10-26 → 2026-11-02 (+7d) | 10d → 6d |
| 752 | Acabado aparente de pisos - pulido | 2026-10-16 → 2026-10-22 (+6d) | 2026-10-26 → 2026-11-02 (+7d) | 10d → 6d |
| 753 | **BAÑOS** | 2026-10-17 → 2026-10-23 (+6d) | 2026-11-07 → 2026-11-13 (+6d) | 21d → 17d |
| 754 | Azulejo Mod. Ornamenta 60x30 | 2026-10-27 → 2026-11-02 (+6d) | 2026-11-02 → 2026-11-07 (+5d) | 21d → 17d |
| 755 | Impermeabilización en regadera | 2026-10-26 → 2026-10-31 (+5d) | 2026-10-27 → 2026-11-03 (+7d) | 21d → 17d |
| 756 | Piso Mod. Valparaiso 20x20 | 2026-11-02 → 2026-11-07 (+5d) | 2026-11-06 → 2026-11-12 (+6d) | 21d → 17d |
| 757 | Zoclo Adhara 44X89 | 2026-11-05 → 2026-11-11 (+6d) | 2026-11-07 → 2026-11-13 (+6d) | 54d → 50d |
| 758 | Piso Adhara 44X89 | 2026-11-02 → 2026-11-07 (+5d) | 2026-11-05 → 2026-11-11 (+6d) | 56d → 52d |
| 759 | Fabricacion de nicho decorativo en baños | 2026-10-17 → 2026-10-23 (+6d) | 2026-10-24 → 2026-10-30 (+6d) | 21d → 17d |
| 760 | Sardinel en regadera | 2026-11-02 → 2026-11-07 (+5d) | 2026-11-06 → 2026-11-12 (+6d) | 55d → 51d |
| 761 | **ESCALERA** | 2026-11-04 → 2026-11-10 (+6d) | 2026-11-17 → 2026-11-23 (+6d) | 10d → 6d |
| 762 | Piso Adhara 44X89 | 2026-11-04 → 2026-11-10 (+6d) | 2026-11-12 → 2026-11-20 (+8d) | 10d → 6d |
| 763 | Zoclo Adhara 44X89 | 2026-11-10 → 2026-11-18 (+8d) | 2026-11-17 → 2026-11-23 (+6d) | 10d → 6d |
| 764 | **EXTERIOR** | 2026-10-01 → 2026-10-07 (+6d) | 2026-10-05 → 2026-10-12 (+7d) | 15d → 11d |
| 765 | Rastrilleo, afine y nivelado de tierra | 2026-10-01 → 2026-10-07 (+6d) | 2026-10-05 → 2026-10-12 (+7d) | 15d → 11d |
| 766 | **SEGUNDA LIMPIEZA DE OBRA** | 2026-11-17 → 2026-11-23 (+6d) | 2026-11-21 → 2026-11-27 (+6d) | 33d → 29d |
| 767 | Segunda limpieza de obra | 2026-11-17 → 2026-11-23 (+6d) | 2026-11-19 → 2026-11-25 (+6d) | 33d → 29d |
| 768 | Segunda carga y acarreo de escombro | 2026-11-19 → 2026-11-25 (+6d) | 2026-11-21 → 2026-11-27 (+6d) | 33d → 29d |
| 769 | **CANCELERIA PUERTAS Y VENTANAS DE ALUMINIO** | 2026-11-04 → 2026-11-10 (+6d) | 2026-11-26 → 2026-12-02 (+6d) | 11d → 7d |
| 770 | Fijo medidas 0.30x4.90m | 2026-11-06 → 2026-11-12 (+6d) | 2026-11-17 → 2026-11-23 (+6d) | 19d → 15d |
| 771 | Ventana Corrediza 1.80x1.60m | 2026-11-04 → 2026-11-10 (+6d) | 2026-11-09 → 2026-11-17 (+8d) | 24d → 20d |
| 772 | Ventana Corrediza 0.60x0.40m | 2026-11-06 → 2026-11-12 (+6d) | 2026-11-11 → 2026-11-19 (+8d) | 22d → 18d |
| 773 | Ventana Corrediza 1.54x0.50m | 2026-11-06 → 2026-11-12 (+6d) | 2026-11-11 → 2026-11-19 (+8d) | 22d → 18d |
| 774 | Fijo medidas 1.40x2.50m | 2026-11-10 → 2026-11-18 (+8d) | 2026-11-17 → 2026-11-23 (+6d) | 13d → 9d |
| 775 | Ventana Corrediza 1.80x1.50m | 2026-11-12 → 2026-11-20 (+8d) | 2026-11-19 → 2026-11-25 (+6d) | 11d → 7d |
| 776 | Ventana Corrediza 1.40x1.60m | 2026-11-12 → 2026-11-20 (+8d) | 2026-11-19 → 2026-11-25 (+6d) | 11d → 7d |
| 777 | Ventana Corrediza 0.95x0.40m | 2026-11-12 → 2026-11-20 (+8d) | 2026-11-19 → 2026-11-25 (+6d) | 11d → 7d |
| 778 | Puerta corrediza 3.85x2.10m | 2026-11-17 → 2026-11-23 (+6d) | 2026-11-24 → 2026-11-30 (+6d) | 13d → 9d |
| 779 | Barandal de Cristal Templado | 2026-11-19 → 2026-11-25 (+6d) | 2026-11-26 → 2026-12-02 (+6d) | 11d → 7d |
| 780 | **CARPINTERIA, PUERTAS EXTERIORES E INTERIORES** | 2026-11-17 → 2026-11-23 (+6d) | 2026-11-27 → 2026-12-03 (+6d) | 10d → 6d |
| 781 | Puerta P-01 de seguridad | 2026-11-17 → 2026-11-23 (+6d) | 2026-11-23 → 2026-11-28 (+5d) | 14d → 10d |
| 782 | Puerta P-01 interior | 2026-11-17 → 2026-11-23 (+6d) | 2026-11-26 → 2026-12-02 (+6d) | 11d → 7d |
| 783 | Puerta P-02 interior | 2026-11-17 → 2026-11-23 (+6d) | 2026-11-26 → 2026-12-02 (+6d) | 11d → 7d |
| 784 | Puerta P-03 interior | 2026-11-23 → 2026-11-28 (+5d) | 2026-11-27 → 2026-12-03 (+6d) | 10d → 6d |
| 785 | Puerta P-04 interior | 2026-11-23 → 2026-11-28 (+5d) | 2026-11-27 → 2026-12-03 (+6d) | 10d → 6d |

| ID | Task | Start | Finish | Total float |
| --- | --- | --- | --- | --- |
| 786 | **VOLADOS, BARANDAL Y ESCALERA** | 2026-10-09 → 2026-10-16 (+7d) | 2026-11-21 → 2026-11-27 (+6d) | 18d → 14d |
| 787 | Barandal de Herreria en escalera | 2026-10-28 → 2026-11-03 (+6d) | 2026-11-02 → 2026-11-07 (+5d) | 33d → 29d |
| 788 | Escalera de herreria | 2026-10-09 → 2026-10-16 (+7d) | 2026-11-02 → 2026-11-07 (+5d) | 18d → 14d |
| 789 | Techumbre en acceso Principal | 2026-10-27 → 2026-11-02 (+6d) | 2026-11-12 → 2026-11-20 (+8d) | 24d → 20d |
| 790 | Techumbre en 1.80x0.50m | 2026-10-27 → 2026-11-02 (+6d) | 2026-11-04 → 2026-11-10 (+6d) | 18d → 14d |
| 791 | Techumbre en 1.40x0.50m | 2026-11-04 → 2026-11-10 (+6d) | 2026-11-12 → 2026-11-20 (+8d) | 18d → 14d |
| 792 | Imper con manto prefabricado | 2026-11-07 → 2026-11-13 (+6d) | 2026-11-13 → 2026-11-21 (+8d) | 18d → 14d |
| 793 | Plafon hoja tablaroca std | 2026-11-13 → 2026-11-21 (+8d) | 2026-11-21 → 2026-11-27 (+6d) | 18d → 14d |
| 794 | Acabado Woodstock en parte inf. Cubierta | 2026-11-13 → 2026-11-21 (+8d) | 2026-11-21 → 2026-11-27 (+6d) | 18d → 14d |
| 795 | **INSTALACION ELECTRICA** | 2026-10-17 → 2026-10-23 (+6d) | 2026-11-06 → 2026-11-12 (+6d) | 39d → 35d |
| 796 | Alimentación eléctrica base a centro de carga | 2026-10-22 → 2026-10-29 (+7d) | 2026-10-28 → 2026-11-04 (+7d) | 43d → 39d |
| 797 | Interruptor termomagnético 1x20 A | 2026-10-29 → 2026-11-04 (+6d) | 2026-10-29 → 2026-11-05 (+7d) | 43d → 39d |
| 798 | Interruptor termomagnético 2x20 A | 2026-10-29 → 2026-11-04 (+6d) | 2026-10-29 → 2026-11-05 (+7d) | 43d → 39d |
| 799 | Salida para apagador 3 vías | 2026-10-17 → 2026-10-23 (+6d) | 2026-10-22 → 2026-10-28 (+6d) | 39d → 35d |
| 800 | Salida para apagador doble | 2026-10-22 → 2026-10-29 (+7d) | 2026-10-26 → 2026-11-02 (+7d) | 41d → 37d |
| 801 | Salida para apagador sencillo | 2026-10-22 → 2026-10-29 (+7d) | 2026-10-26 → 2026-11-02 (+7d) | 41d → 37d |
| 802 | Salida de alumbrado en losa | 2026-10-22 → 2026-10-29 (+7d) | 2026-10-28 → 2026-11-04 (+7d) | 39d → 35d |
| 803 | Salida para contacto exterior doble | 2026-10-22 → 2026-10-29 (+7d) | 2026-10-24 → 2026-10-30 (+6d) | 42d → 38d |
| 804 | Salida para contacto 220 V | 2026-10-26 → 2026-10-31 (+5d) | 2026-10-28 → 2026-11-04 (+7d) | 39d → 35d |
| 805 | Salida para contacto doble | 2026-10-26 → 2026-10-31 (+5d) | 2026-10-30 → 2026-11-06 (+7d) | 42d → 38d |
| 806 | Salida para contacto doble área húmeda | 2026-10-29 → 2026-11-04 (+6d) | 2026-10-30 → 2026-11-06 (+7d) | 42d → 38d |
| 807 | Salida TV / telefonía / intercom | 2026-10-29 → 2026-11-04 (+6d) | 2026-11-03 → 2026-11-09 (+6d) | 40d → 36d |
| 808 | Extractor 4 baño | 2026-10-29 → 2026-11-04 (+6d) | 2026-11-04 → 2026-11-10 (+6d) | 39d → 35d |
| 809 | Prueba eléctrica | 2026-11-04 → 2026-11-10 (+6d) | 2026-11-06 → 2026-11-12 (+6d) | 39d → 35d |
| 810 | **INSTALACIÓN HIDRO-SANITARIA** | 2026-10-01 → 2026-10-07 (+6d) | 2026-10-15 → 2026-10-21 (+6d) | 10d → 6d |
| 811 | Tubería condensados PVC 1 | 2026-10-01 → 2026-10-07 (+6d) | 2026-10-07 → 2026-10-14 (+7d) | 10d → 6d |
| 812 | Tubería sanitaria PVC 4 | 2026-10-01 → 2026-10-07 (+6d) | 2026-10-07 → 2026-10-14 (+7d) | 18d → 14d |
| 813 | Coladera H-444 | 2026-10-07 → 2026-10-14 (+7d) | 2026-10-08 → 2026-10-15 (+7d) | 18d → 14d |
| 814 | Caja PVC para lavadora | 2026-10-01 → 2026-10-07 (+6d) | 2026-10-05 → 2026-10-12 (+7d) | 10d → 6d |
| 815 | Salida para secadora PVC 4 | 2026-10-01 → 2026-10-07 (+6d) | 2026-10-05 → 2026-10-12 (+7d) | 10d → 6d |
| 816 | Salida hidráulica para boiler | 2026-10-01 → 2026-10-07 (+6d) | 2026-10-03 → 2026-10-09 (+6d) | 11d → 7d |
| 817 | Salida hidráulica para llave de jardín | 2026-10-01 → 2026-10-07 (+6d) | 2026-10-05 → 2026-10-12 (+7d) | 10d → 6d |
| 818 | Salida hidráulica para lavabo | 2026-10-01 → 2026-10-07 (+6d) | 2026-10-06 → 2026-10-13 (+7d) | 10d → 6d |
| 819 | Salida hidráulica para purificación | 2026-10-01 → 2026-10-07 (+6d) | 2026-10-06 → 2026-10-13 (+7d) | 10d → 6d |
| 820 | Salida sanitaria para lavabo | 2026-10-03 → 2026-10-09 (+6d) | 2026-10-06 → 2026-10-13 (+7d) | 10d → 6d |
| 821 | Salida hidráulica para lavadero | 2026-10-03 → 2026-10-09 (+6d) | 2026-10-06 → 2026-10-13 (+7d) | 10d → 6d |
| 822 | Salida sanitaria para lavadero | 2026-10-05 → 2026-10-12 (+7d) | 2026-10-07 → 2026-10-14 (+7d) | 10d → 6d |
| 823 | Salida hidráulica para lavadora | 2026-10-05 → 2026-10-12 (+7d) | 2026-10-07 → 2026-10-14 (+7d) | 10d → 6d |
| 824 | Salida sanitaria para lavadora | 2026-10-06 → 2026-10-13 (+7d) | 2026-10-08 → 2026-10-15 (+7d) | 10d → 6d |
| 825 | Salida hidráulica para regadera | 2026-10-06 → 2026-10-13 (+7d) | 2026-10-13 → 2026-10-19 (+6d) | 15d → 11d |
| 826 | Salida sanitaria para regadera | 2026-10-06 → 2026-10-13 (+7d) | 2026-10-12 → 2026-10-17 (+5d) | 16d → 12d |
| 827 | Salida hidráulica para WC | 2026-10-03 → 2026-10-09 (+6d) | 2026-10-06 → 2026-10-13 (+7d) | 10d → 6d |
| 828 | Salida sanitaria para WC | 2026-10-06 → 2026-10-13 (+7d) | 2026-10-12 → 2026-10-17 (+5d) | 10d → 6d |
| 829 | Salida hidráulica para zinc | 2026-10-06 → 2026-10-13 (+7d) | 2026-10-12 → 2026-10-17 (+5d) | 10d → 6d |
| 830 | Salida sanitaria para zinc | 2026-10-08 → 2026-10-15 (+7d) | 2026-10-13 → 2026-10-19 (+6d) | 10d → 6d |
| 831 | Tubo para ventila de baño 2 | 2026-10-01 → 2026-10-07 (+6d) | 2026-10-07 → 2026-10-14 (+7d) | 10d → 6d |
| 832 | Tubo para minisplit PVC 3 | 2026-10-07 → 2026-10-14 (+7d) | 2026-10-14 → 2026-10-20 (+6d) | 10d → 6d |
| 833 | Cuadro de medición | 2026-10-05 → 2026-10-12 (+7d) | 2026-10-12 → 2026-10-17 (+5d) | 15d → 11d |
| 834 | Pozo de absorción 0.50x0.50x0.50 | 2026-10-05 → 2026-10-12 (+7d) | 2026-10-08 → 2026-10-15 (+7d) | 18d → 14d |
| 835 | Prueba sanitaria final | 2026-10-14 → 2026-10-20 (+6d) | 2026-10-15 → 2026-10-21 (+6d) | 14d → 10d |
| 836 | Prueba hidrostática final | 2026-10-13 → 2026-10-19 (+6d) | 2026-10-14 → 2026-10-20 (+6d) | 15d → 11d |
| 837 | Salida válvula control 19 mm | 2026-10-12 → 2026-10-17 (+5d) | 2026-10-13 → 2026-10-19 (+6d) | 15d → 11d |
| 838 | Salida válvula control 13 mm | 2026-10-12 → 2026-10-17 (+5d) | 2026-10-13 → 2026-10-19 (+6d) | 15d → 11d |
| 839 | Salida hidráulica para tanque hidroneumático | 2026-10-05 → 2026-10-12 (+7d) | 2026-10-08 → 2026-10-15 (+7d) | 18d → 14d |
| 840 | Salida hidráulica para Active Driver | 2026-10-05 → 2026-10-12 (+7d) | 2026-10-08 → 2026-10-15 (+7d) | 18d → 14d |
| 841 | **INSTALACION DE GAS** | 2026-09-29 → 2026-10-05 (+6d) | 2026-10-08 → 2026-10-15 (+7d) | 46d → 42d |
| 842 | Ramaleo para gas 1/2 | 2026-10-02 → 2026-10-08 (+6d) | 2026-10-08 → 2026-10-15 (+7d) | 46d → 42d |
| 843 | Excavación a mano material tipo B | 2026-09-29 → 2026-10-05 (+6d) | 2026-10-02 → 2026-10-08 (+6d) | 46d → 42d |
| 844 | **MUEBLES SANITARIOS** | 2026-11-06 → 2026-11-12 (+6d) | 2026-12-14 → 2026-12-19 (+5d) | 22d → 18d |
| 845 | WC completo Austral | 2026-11-06 → 2026-11-12 (+6d) | 2026-11-09 → 2026-11-17 (+8d) | 24d → 20d |
| 846 | Lavabo Senna con pedestal | 2026-11-06 → 2026-11-12 (+6d) | 2026-11-11 → 2026-11-19 (+8d) | 22d → 18d |
| 847 | Tarja / lavabo combo Guinea 80x45 | 2026-11-06 → 2026-11-12 (+6d) | 2026-11-09 → 2026-11-17 (+8d) | 53d → 49d |
| 848 | Regadera con monomando | 2026-11-09 → 2026-11-17 (+8d) | 2026-11-12 → 2026-11-20 (+8d) | 21d → 17d |
| 849 | Coladera inserto cerámico | 2026-11-10 → 2026-11-18 (+8d) | 2026-11-12 → 2026-11-20 (+8d) | 21d → 17d |
| 850 | Toallero sencillo | 2026-12-12 → 2026-12-18 (+6d) | 2026-12-14 → 2026-12-19 (+5d) | 10d → 6d |
| 851 | Toallero barra | 2026-12-12 → 2026-12-18 (+6d) | 2026-12-14 → 2026-12-19 (+5d) | 10d → 6d |
| 852 | Portapapel | 2026-12-12 → 2026-12-18 (+6d) | 2026-12-14 → 2026-12-19 (+5d) | 10d → 6d |
| 853 | Gancho baño | 2026-12-12 → 2026-12-18 (+6d) | 2026-12-14 → 2026-12-19 (+5d) | 10d → 6d |
| 854 | **EQUIPAMIENTO** | 2026-09-23 → 2026-09-29 (+6d) | 2026-09-30 → 2026-10-06 (+6d) | 69d → 65d |
| 855 | Electronivel Rotoplas 5 m | 2026-09-24 → 2026-09-30 (+6d) | 2026-09-26 → 2026-10-02 (+6d) | 72d → 68d |

| ID | Task | Start | Finish | Duration | Complete | Total float |
| --- | --- | --- | --- | --- | --- | --- |
| 856 | Manómetro | 2026-09-24 → 2026-09-30 (+6d) | 2026-09-25 → 2026-10-01 (+6d) |  |  | 73d → 69d |
| 857 | Interruptor de presión 30-50 PSI | 2026-09-24 → 2026-09-30 (+6d) | 2026-09-25 → 2026-10-01 (+6d) |  |  | 73d → 69d |
| 858 | Tanque hidroneumático FPS-24LX | 2026-09-24 → 2026-09-30 (+6d) | 2026-09-28 → 2026-10-03 (+5d) |  |  | 69d → 65d |
| 859 | Bomba sumergible Dominator 1.2 HP | 2026-09-28 → 2026-10-03 (+5d) | 2026-09-30 → 2026-10-06 (+6d) |  |  | 69d → 65d |
| 860 | Cisterna prefabricada 2800 L | 2026-09-23 → 2026-09-29 (+6d) | 2026-09-24 → 2026-09-30 (+6d) |  |  | 69d → 65d |
| 861 | **LUMINARIAS** | 2026-10-29 → 2026-11-04 (+6d) | 2026-11-04 → 2026-11-10 (+6d) |  |  | 39d → 35d |
| 862 | Roseta cerámica | 2026-10-29 → 2026-11-04 (+6d) | 2026-11-02 → 2026-11-07 (+5d) |  |  | 41d → 37d |
| 863 | Luminaria lagartijera LED | 2026-10-29 → 2026-11-04 (+6d) | 2026-11-02 → 2026-11-07 (+5d) |  |  | 41d → 37d |
| 864 | Spot 6W Tecnolite | 2026-10-29 → 2026-11-04 (+6d) | 2026-11-02 → 2026-11-07 (+5d) |  |  | 41d → 37d |
| 865 | Spot 7W Tecnolite | 2026-10-29 → 2026-11-04 (+6d) | 2026-11-02 → 2026-11-07 (+5d) |  |  | 41d → 37d |
| 866 | Arbotante exterior | 2026-10-29 → 2026-11-04 (+6d) | 2026-10-30 → 2026-11-06 (+7d) |  |  | 39d → 35d |
| 867 | Estaca LED exterior | 2026-10-31 → 2026-11-06 (+6d) | 2026-11-04 → 2026-11-10 (+6d) |  |  | 39d → 35d |
| 868 | Tira LED | 2026-10-31 → 2026-11-06 (+6d) | 2026-11-04 → 2026-11-10 (+6d) |  |  | 39d → 35d |
| 869 | Spot exterior 50W | 2026-10-29 → 2026-11-04 (+6d) | 2026-10-30 → 2026-11-06 (+7d) |  |  | 42d → 38d |
| 870 | **TIMBRE** | 2026-10-30 → 2026-11-05 (+6d) | 2026-11-02 → 2026-11-07 (+5d) |  |  | 41d → 37d |
| 871 | Timbre inalámbrico con bocina | 2026-10-30 → 2026-11-05 (+6d) | 2026-11-02 → 2026-11-07 (+5d) |  |  | 41d → 37d |
| 872 | **OBRA EXTERIOR - BARDA** | 2026-10-05 → 2026-10-12 (+7d) | 2026-10-27 → 2026-11-03 (+7d) |  |  | 47d → 43d |
| 873 | Murete convencional | 2026-10-12 → 2026-10-17 (+5d) | 2026-10-17 → 2026-10-23 (+6d) |  |  | 53d → 49d |
| 874 | Barda de block aparente | 2026-10-05 → 2026-10-12 (+7d) | 2026-10-27 → 2026-11-03 (+7d) |  |  | 47d → 43d |
| 875 | **TERCER LIMPIEZA DE OBRA** | 2026-12-14 → 2026-12-21 (+7d) | 2027-01-07 → 2027-01-14 (+7d) |  |  | 10d → 6d |
| 876 | Limpieza fina para entrega | 2026-12-14 → 2026-12-21 (+7d) | 2026-12-19 → 2026-12-29 (+10d) |  |  | 10d → 6d |
| 877 | Tercera limpieza de obra | 2026-12-21 → 2026-12-29 (+8d) | 2026-12-29 → 2027-01-06 (+8d) |  |  | 10d → 6d |
| 878 | Tercera carga y acarreo de escombro | 2026-12-29 → 2027-01-06 (+8d) | 2027-01-07 → 2027-01-14 (+7d) |  |  | 10d → 6d |
| 879 | **LOTE 20 M-663 ARTICO-A** |  | 2027-01-18 → 2027-01-21 (+3d) | 181d → 184d | 1% → 2% | 2d → 0d |
| 880 | **HITOS IMPORTANTES DEL LOTE** |  | 2027-01-18 → 2027-01-21 (+3d) | 181d → 184d |  | 2d → 0d |
| 882 | Colado de Losa de Cimentación | 2026-06-19 → 2026-06-24 (+5d) | 2026-06-19 → 2026-06-24 (+5d) |  |  | 166d → 164d |
| 883 | Colado de Losa de Entrepiso | 2026-07-28 → 2026-07-31 (+3d) | 2026-07-28 → 2026-07-31 (+3d) |  |  | 136d → 134d |
| 884 | Colado de Losa de Azotea | 2026-09-02 → 2026-09-07 (+5d) | 2026-09-02 → 2026-09-07 (+5d) |  |  | 106d → 104d |
| 885 | Entrega de vivienda | 2027-01-18 → 2027-01-21 (+3d) | 2027-01-18 → 2027-01-21 (+3d) |  |  | 2d → 0d |
| 886 | **TRABAJOS PRELIMINARES** |  | 2026-06-02 A → 2026-06-05 A (+3d) | 2d → 5d |  |  |
| 887 | Trazo y nivelación |  | 2026-06-02 A → 2026-06-05 A (+3d) | 2d → 5d |  |  |
| 888 | **EXCAVACIONES** | 2026-06-02 A → 2026-06-05 A (+3d) | 2026-06-05 A → 2026-06-09 A (+4d) |  |  |  |
| 889 | Excavación a mano material tipo B | 2026-06-02 A → 2026-06-05 A (+3d) | 2026-06-05 A → 2026-06-09 A (+4d) |  |  |  |
| 890 | Acarreo en carretilla 20 m | 2026-06-03 A → 2026-06-06 A (+3d) | 2026-06-05 A → 2026-06-09 A (+4d) |  |  |  |
| 891 | **CIMENTACION** | 2026-06-05 A → 2026-06-09 A (+4d) | 2026-06-22 → 2026-06-25 (+3d) |  | 10% → 20% | 2d → 0d |
| 892 | Cimbra perimetral losa de cimentación | 2026-06-05 A → 2026-06-09 A (+4d) | 2026-06-09 → 2026-06-12 A (+3d) |  | 83% → 100% | 2d → none |
| 893 | Sistema antitermitas PVC | 2026-06-05 A → 2026-06-09 A (+4d) | 2026-06-09 → 2026-06-12 A (+3d) |  | 83% → 100% | 3d → none |
| 894 | Hule negro en cimentación | 2026-06-09 → 2026-06-12 A (+3d) | 2026-06-10 → 2026-06-13 A (+3d) |  | 0% → 100% | 3d → none |
| 895 | Ramaleo poliducto eléctrico cimentación | 2026-06-10 → 2026-06-13 A (+3d) | 2026-06-12 → 2026-06-16 (+4d) |  | 0% → 6% | 6d → 4d |
| 896 | Ramaleo eléctrico base-medición a centro de carga | 2026-06-10 → 2026-06-13 A (+3d) | 2026-06-11 → 2026-06-15 (+4d) |  | 0% → 13% | 7d → 5d |
| 897 | Ramaleo eléctrico exterior | 2026-06-12 → 2026-06-16 (+4d) | 2026-06-13 → 2026-06-17 (+4d) |  |  | 6d → 4d |
| 898 | Ramaleo para cable poliducto 3/4 | 2026-06-12 → 2026-06-16 (+4d) | 2026-06-13 → 2026-06-17 (+4d) |  |  | 6d → 4d |
| 899 | Ramaleo para TV poliducto 3/4 | 2026-06-12 → 2026-06-16 (+4d) | 2026-06-13 → 2026-06-17 (+4d) |  |  | 6d → 4d |
| 900 | Ramaleo hidráulico CPVC 1-1/4" cimentación | 2026-06-10 → 2026-06-13 A (+3d) | 2026-06-11 → 2026-06-15 (+4d) |  | 0% → 13% | 3d → 5d |
| 901 | Ramaleo hidráulico CPVC 1 cimentación | 2026-06-10 → 2026-06-13 A (+3d) | 2026-06-11 → 2026-06-15 (+4d) |  | 0% → 13% | 3d → 1d |
| 902 | Ramaleo hidráulico CPVC 3/4 cimentación | 2026-06-11 → 2026-06-15 (+4d) | 2026-06-13 → 2026-06-17 (+4d) |  |  | 3d → 1d |
| 903 | Ramaleo hidráulico CPVC 1/2 cimentación | 2026-06-13 → 2026-06-17 (+4d) | 2026-06-16 → 2026-06-19 (+3d) |  |  | 3d → 1d |
| 904 | Prueba hidráulica | 2026-06-16 → 2026-06-19 (+3d) | 2026-06-17 → 2026-06-22 (+5d) |  |  | 3d → 1d |
| 905 | Ramaleo sanitario PVC 4 cimentación | 2026-06-11 → 2026-06-15 (+4d) | 2026-06-13 → 2026-06-17 (+4d) |  |  | 4d → 2d |
| 906 | Ramaleo sanitario PVC 2 cimentación | 2026-06-13 → 2026-06-17 (+4d) | 2026-06-15 → 2026-06-18 (+3d) |  |  | 4d → 2d |
| 907 | Prueba sanitaria | 2026-06-15 → 2026-06-18 (+3d) | 2026-06-16 → 2026-06-19 (+3d) |  |  | 4d → 2d |
| 908 | Acero contratrabe CT-1 | 2026-06-09 → 2026-06-12 A (+3d) | 2026-06-13 → 2026-06-17 (+4d) |  | 0% → 28% | 2d → 0d |
| 909 | Acero contratrabe CT-2 | 2026-06-09 → 2026-06-12 A (+3d) | 2026-06-13 → 2026-06-17 (+4d) |  | 0% → 28% | 2d → 0d |
| 910 | Malla electrosoldada 6-6/8-8 | 2026-06-16 → 2026-06-19 (+3d) | 2026-06-18 → 2026-06-23 (+5d) |  |  | 2d → 0d |
| 911 | Bastón de refuerzo LS | 2026-06-13 → 2026-06-17 (+4d) | 2026-06-16 → 2026-06-19 (+3d) |  |  | 2d → 0d |
| 912 | Bastón de refuerzo LI | 2026-06-13 → 2026-06-17 (+4d) | 2026-06-16 → 2026-06-19 (+3d) |  |  | 2d → 0d |
| 913 | Colado losa de cimentación f’c=200 | 2026-06-18 → 2026-06-23 (+5d) | 2026-06-19 → 2026-06-24 (+5d) |  |  | 2d → 0d |
| 914 | Curado de concreto | 2026-06-19 → 2026-06-24 (+5d) | 2026-06-22 → 2026-06-25 (+3d) |  |  | 2d → 0d |
| 915 | Acero zapata ZT-1 | 2026-06-13 → 2026-06-17 (+4d) | 2026-06-18 → 2026-06-23 (+5d) |  |  | 2d → 0d |
| 916 | Acero zapata ZT-2 | 2026-06-13 → 2026-06-17 (+4d) | 2026-06-18 → 2026-06-23 (+5d) |  |  | 2d → 0d |
| 917 | **MUROS, PLANTA BAJA. CASTILLOS Y CERRAMIENTOS** | 2026-06-15 → 2026-06-18 (+3d) | 2026-07-09 → 2026-07-14 (+5d) |  |  | 7d → 5d |
| 918 | Anclaje de castillos y Columnas PB | 2026-06-15 → 2026-06-18 (+3d) | 2026-06-22 → 2026-06-25 (+3d) |  |  | 153d → 151d |
| 919 | Castillo K1 | 2026-06-22 → 2026-06-25 (+3d) | 2026-06-26 → 2026-06-30 (+4d) |  |  | 153d → 151d |
| 920 | Castillo K3 | 2026-06-24 → 2026-06-27 (+3d) | 2026-06-27 → 2026-07-01 (+4d) |  |  | 153d → 151d |
| 921 | Castillo K4 | 2026-06-24 → 2026-06-27 (+3d) | 2026-06-27 → 2026-07-01 (+4d) |  |  | 153d → 151d |
| 922 | Castillo K5 | 2026-06-26 → 2026-06-30 (+4d) | 2026-06-30 → 2026-07-03 (+3d) |  |  | 153d → 151d |
| 923 | Refuerzo de muro K6 | 2026-06-27 → 2026-07-01 (+4d) | 2026-07-01 → 2026-07-04 (+3d) |  |  | 153d → 151d |
| 924 | Dala de cerramiento CR-1 | 2026-06-27 → 2026-07-01 (+4d) | 2026-07-02 → 2026-07-06 (+4d) |  |  | 156d → 154d |
| 925 | Dala de cerramiento CR-2 | 2026-06-27 → 2026-07-01 (+4d) | 2026-07-01 → 2026-07-04 (+3d) |  |  | 157d → 155d |
| 926 | Cadena block dala | 2026-07-01 → 2026-07-06 (+5d) | 2026-07-06 → 2026-07-09 (+3d) |  |  | 153d → 151d |

| ID | Task | Start | Finish | Total float |
| --- | --- | --- | --- | --- |
| 927 | Muro de ladrillo aparente | 2026-06-22 → 2026-06-25 (+3d) | 2026-07-09 → 2026-07-14 (+5d) | 2d → 0d |
| 928 | Muro de block planta baja | 2026-06-24 → 2026-06-27 (+3d) | 2026-07-09 → 2026-07-14 (+5d) | 2d → 0d |
| 929 | Ramaleo electrico en Muros Planta Baja | 2026-06-27 → 2026-07-01 (+4d) | 2026-07-02 → 2026-07-06 (+4d) | 5d → 3d |
| 930 | Ramaleo para cable poliducto 3/4 | 2026-07-02 → 2026-07-07 (+5d) | 2026-07-04 → 2026-07-08 (+4d) | 5d → 3d |
| 931 | Ramaleo para TV poliducto 3/4 | 2026-07-06 → 2026-07-09 (+3d) | 2026-07-08 → 2026-07-13 (+5d) | 5d → 3d |
| 932 | **ESCALERA** | 2026-07-28 → 2026-07-31 (+3d) | 2026-08-08 → 2026-08-12 (+4d) | 79d → 77d |
| 933 | Escalera de concreto armado | 2026-07-28 → 2026-07-31 (+3d) | 2026-08-08 → 2026-08-12 (+4d) | 79d → 77d |
| 934 | **LOSA DE ENTREPISO (viegueta y caseton)** | 2026-07-08 → 2026-07-11 (+3d) | 2026-07-29 → 2026-08-01 (+3d) | 5d → 3d |
| 935 | Dala de coronamiento 10cm | 2026-07-16 → 2026-07-20 (+4d) | 2026-07-20 → 2026-07-23 (+3d) | 5d → 3d |
| 936 | Dala de coronamiento 12cm | 2026-07-17 → 2026-07-21 (+4d) | 2026-07-21 → 2026-07-24 (+3d) | 4d → 2d |
| 937 | Trabe TR-1 | 2026-07-08 → 2026-07-11 (+3d) | 2026-07-10 → 2026-07-15 (+5d) | 6d → 4d |
| 938 | Trabe TR-2 | 2026-07-09 → 2026-07-13 (+4d) | 2026-07-14 → 2026-07-17 (+3d) | 4d → 2d |
| 939 | Nervadura NR-1 | 2026-07-10 → 2026-07-14 (+4d) | 2026-07-15 → 2026-07-18 (+3d) | 3d → 1d |
| 940 | Nervadura NR-2 | 2026-07-11 → 2026-07-15 (+4d) | 2026-07-16 → 2026-07-20 (+4d) | 2d → 0d |
| 941 | Nervadura NR-3 | 2026-07-11 → 2026-07-15 (+4d) | 2026-07-16 → 2026-07-20 (+4d) | 2d → 0d |
| 942 | Nervadura NR-4 | 2026-07-11 → 2026-07-15 (+4d) | 2026-07-16 → 2026-07-20 (+4d) | 2d → 0d |
| 943 | Acero de refuerzo en nervios #3 | 2026-07-16 → 2026-07-20 (+4d) | 2026-07-18 → 2026-07-22 (+4d) | 2d → 0d |
| 944 | Acero de refuerzo long. #3 | 2026-07-17 → 2026-07-21 (+4d) | 2026-07-21 → 2026-07-24 (+3d) | 3d → 1d |
| 945 | Acero de refuerzo long. #4 | 2026-07-17 → 2026-07-21 (+4d) | 2026-07-21 → 2026-07-24 (+3d) | 3d → 1d |
| 946 | Malla 66-10/10 losa de compresión | 2026-07-23 → 2026-07-28 (+5d) | 2026-07-27 → 2026-07-30 (+3d) | 2d → 0d |
| 947 | Acero de Losa Maciza | 2026-07-16 → 2026-07-20 (+4d) | 2026-07-20 → 2026-07-23 (+3d) | 7d → 5d |
| 948 | Caseton de 60x60x20cm | 2026-07-16 → 2026-07-20 (+4d) | 2026-07-18 → 2026-07-22 (+4d) | 6d → 4d |
| 949 | Concreto losa de entrepiso f’c=200 | 2026-07-27 → 2026-07-30 (+3d) | 2026-07-28 → 2026-07-31 (+3d) | 2d → 0d |
| 950 | Curado de concreto | 2026-07-28 → 2026-07-31 (+3d) | 2026-07-29 → 2026-08-01 (+3d) | 2d → 0d |
| 951 | Cimbra losa de azotea | 2026-07-11 → 2026-07-15 (+4d) | 2026-07-17 → 2026-07-21 (+4d) | 3d → 1d |
| 952 | Cimbra exterior corta losa | 2026-07-20 → 2026-07-23 (+3d) | 2026-07-23 → 2026-07-28 (+5d) | 4d → 2d |
| 953 | Ramaleo poliducto eléctrico entrepiso | 2026-07-18 → 2026-07-22 (+4d) | 2026-07-21 → 2026-07-24 (+3d) | 141d → 139d |
| 954 | Ramaleo hidráulico CPVC 3/4" | 2026-07-20 → 2026-07-23 (+3d) | 2026-07-22 → 2026-07-27 (+5d) | 2d → 0d |
| 955 | Ramaleo hidráulico CPVC 1/2" | 2026-07-22 → 2026-07-27 (+5d) | 2026-07-23 → 2026-07-28 (+5d) | 2d → 0d |
| 956 | Prueba hidráulica | 2026-07-22 → 2026-07-27 (+5d) | 2026-07-23 → 2026-07-28 (+5d) | 2d → 0d |
| 957 | Ramaleo sanitario PVC 4" | 2026-07-20 → 2026-07-23 (+3d) | 2026-07-22 → 2026-07-27 (+5d) | 2d → 0d |
| 958 | Ramaleo sanitario PVC 2" | 2026-07-22 → 2026-07-27 (+5d) | 2026-07-23 → 2026-07-28 (+5d) | 2d → 0d |
| 959 | Prueba sanitaria | 2026-07-22 → 2026-07-27 (+5d) | 2026-07-23 → 2026-07-28 (+5d) | 2d → 0d |
| 960 | **MUROS EN PLANTA ALTA, CASTILLOS Y CERRM.** | 2026-07-20 → 2026-07-23 (+3d) | 2026-08-17 → 2026-08-20 (+3d) | 3d → 1d |
| 961 | Anclaje de castillos y Columnas PA | 2026-07-20 → 2026-07-23 (+3d) | 2026-07-24 → 2026-07-29 (+5d) | 3d → 1d |
| 962 | Castillo K1 | 2026-07-29 → 2026-08-01 (+3d) | 2026-08-03 → 2026-08-06 (+3d) | 6d → 4d |
| 963 | Castillo K2 | 2026-07-30 → 2026-08-03 (+4d) | 2026-08-04 → 2026-08-07 (+3d) | 5d → 3d |
| 964 | Castillo K4 | 2026-08-03 → 2026-08-06 (+3d) | 2026-08-06 → 2026-08-10 (+4d) | 6d → 4d |
| 965 | Castillo K5 | 2026-08-03 → 2026-08-06 (+3d) | 2026-08-06 → 2026-08-10 (+4d) | 6d → 4d |
| 966 | Castillo K6 | 2026-08-03 → 2026-08-06 (+3d) | 2026-08-06 → 2026-08-10 (+4d) | 6d → 4d |
| 967 | Refuerzo de muro | 2026-08-04 → 2026-08-07 (+3d) | 2026-08-07 → 2026-08-11 (+4d) | 5d → 3d |
| 968 | Dala de cerramiento CR-1 | 2026-08-07 → 2026-08-11 (+4d) | 2026-08-12 → 2026-08-17 (+5d) | 5d → 3d |
| 969 | Dala de cerramiento CR-2 | 2026-08-07 → 2026-08-11 (+4d) | 2026-08-12 → 2026-08-17 (+5d) | 5d → 3d |
| 970 | Cadena block dala | 2026-08-12 → 2026-08-17 (+5d) | 2026-08-17 → 2026-08-20 (+3d) | 5d → 3d |
| 971 | Muro de ladrillo aparente | 2026-07-29 → 2026-08-01 (+3d) | 2026-08-17 → 2026-08-20 (+3d) | 2d → 0d |
| 972 | Muro de block planta alta | 2026-07-30 → 2026-08-03 (+4d) | 2026-08-17 → 2026-08-20 (+3d) | 2d → 0d |
| 973 | Ramaleo electrico en Muros Planta Alta | 2026-08-07 → 2026-08-11 (+4d) | 2026-08-12 → 2026-08-17 (+5d) | 13d → 11d |
| 974 | **LOSA AZOTEA** | 2026-08-17 → 2026-08-20 (+3d) | 2026-09-03 → 2026-09-08 (+5d) | 2d → 0d |
| 975 | Cortalosa CL-1 | 2026-08-31 → 2026-09-03 (+3d) | 2026-09-01 → 2026-09-04 (+3d) | 2d → 0d |
| 976 | Cortalosa CL-2 | 2026-08-31 → 2026-09-03 (+3d) | 2026-09-01 → 2026-09-04 (+3d) | 2d → 0d |
| 977 | Vigueta pretensada V11-30 125 | 2026-08-17 → 2026-08-20 (+3d) | 2026-08-22 → 2026-08-26 (+4d) | 5d → 3d |
| 978 | Vigueta pretensada V11-30 185 | 2026-08-17 → 2026-08-20 (+3d) | 2026-08-22 → 2026-08-26 (+4d) | 5d → 3d |
| 979 | Vigueta pretensada V11-30 190 | 2026-08-17 → 2026-08-20 (+3d) | 2026-08-22 → 2026-08-26 (+4d) | 5d → 3d |
| 980 | Vigueta pretensada V11-30 205 | 2026-08-19 → 2026-08-22 (+3d) | 2026-08-25 → 2026-08-28 (+3d) | 3d → 1d |
| 981 | Vigueta pretensada V11-30 215 | 2026-08-19 → 2026-08-22 (+3d) | 2026-08-25 → 2026-08-28 (+3d) | 3d → 1d |
| 982 | Vigueta pretensada V11-30 260 | 2026-08-20 → 2026-08-24 (+4d) | 2026-08-26 → 2026-08-29 (+3d) | 2d → 0d |
| 983 | Vigueta pretensada V11-30 285 | 2026-08-20 → 2026-08-24 (+4d) | 2026-08-26 → 2026-08-29 (+3d) | 2d → 0d |
| 984 | Vigueta pretensada V11-40 330 | 2026-08-20 → 2026-08-24 (+4d) | 2026-08-26 → 2026-08-29 (+3d) | 2d → 0d |
| 985 | Vigueta pretensada V11-40 335 | 2026-08-20 → 2026-08-24 (+4d) | 2026-08-26 → 2026-08-29 (+3d) | 2d → 0d |
| 986 | Vigueta pretensada V11-40 505 | 2026-08-20 → 2026-08-24 (+4d) | 2026-08-26 → 2026-08-29 (+3d) | 2d → 0d |
| 987 | Bovedilla poliestireno azotea | 2026-08-26 → 2026-08-31 (+5d) | 2026-08-29 → 2026-09-02 (+4d) | 2d → 0d |
| 988 | Malla 66-10/10 losa de compresión | 2026-08-31 → 2026-09-03 (+3d) | 2026-09-01 → 2026-09-04 (+3d) | 2d → 0d |
| 989 | Concreto losa de azotea f’c=200 | 2026-09-02 → 2026-09-05 (+3d) | 2026-09-02 → 2026-09-07 (+5d) | 2d → 0d |
| 990 | Curado de concreto | 2026-09-03 → 2026-09-07 (+4d) | 2026-09-03 → 2026-09-08 (+5d) | 2d → 0d |
| 991 | Cimbra losa de azotea | 2026-08-17 → 2026-08-20 (+3d) | 2026-08-22 → 2026-08-26 (+4d) | 10d → 8d |
| 992 | Ramaleo de poliducto para inst. electrica en azotea | 2026-08-31 → 2026-09-03 (+3d) | 2026-09-01 → 2026-09-04 (+3d) | 2d → 0d |
| 993 | **PRETIL Y ACABADOS DE AZOTEA** | 2026-09-04 → 2026-09-08 (+4d) | 2026-09-29 → 2026-10-02 (+3d) | 2d → 0d |
| 994 | Castillo K1 | 2026-09-07 → 2026-09-10 (+3d) | 2026-09-12 → 2026-09-17 (+5d) | 2d → 0d |
| 995 | Dala de cerramiento en pretil | 2026-09-10 → 2026-09-14 (+4d) | 2026-09-15 → 2026-09-21 (+6d) | 2d → 0d |
| 996 | Muro de block 12x15x40 | 2026-09-04 → 2026-09-08 (+4d) | 2026-09-10 → 2026-09-14 (+4d) | 2d → 0d |

| ID | Task | Start | Finish | Total float |
| --- | --- | --- | --- | --- |
| 997 | Chaflán en azotea | 2026-09-12 → 2026-09-17 (+5d) | 2026-09-18 → 2026-09-23 (+5d) | 2d → 0d |
| 998 | Diamante de entortado | 2026-09-12 → 2026-09-17 (+5d) | 2026-09-18 → 2026-09-23 (+5d) | 2d → 0d |
| 999 | Aplanado exterior Mortermax fino | 2026-09-15 → 2026-09-21 (+6d) | 2026-09-23 → 2026-09-26 (+3d) | 2d → 0d |
| 1000 | Entortado de Losa | 2026-09-24 → 2026-09-28 (+4d) | 2026-09-29 → 2026-10-02 (+3d) | 2d → 0d |
| 1001 | Curado de concreto | 2026-09-23 → 2026-09-26 (+3d) | 2026-09-24 → 2026-09-28 (+4d) | 2d → 0d |
| 1002 | **PRIMERA LIMPIEZA DE OBRA** | 2026-09-04 → 2026-09-08 (+4d) | 2026-09-09 → 2026-09-12 (+3d) | 62d → 60d |
| 1003 | Primera limpieza de obra | 2026-09-04 → 2026-09-08 (+4d) | 2026-09-07 → 2026-09-10 (+3d) | 62d → 60d |
| 1004 | Primera carga y acarreo de escombro | 2026-09-07 → 2026-09-10 (+3d) | 2026-09-09 → 2026-09-12 (+3d) | 62d → 60d |
| 1005 | **IMPERMEABILIZACION** | 2026-09-29 → 2026-10-02 (+3d) | 2026-10-05 → 2026-10-08 (+3d) | 2d → 0d |
| 1006 | Impermeabilización de pretil Kover 5 años | 2026-09-29 → 2026-10-02 (+3d) | 2026-10-03 → 2026-10-07 (+4d) | 3d → 1d |
| 1007 | Impermeabilización de losa Kover 5 años | 2026-09-29 → 2026-10-02 (+3d) | 2026-10-05 → 2026-10-08 (+3d) | 2d → 0d |
| 1008 | **ALBAÑILERIA** | 2026-09-10 → 2026-09-14 (+4d) | 2026-11-28 → 2026-12-02 (+4d) | 21d → 19d |
| 1009 | Lavadero de granito | 2026-10-26 → 2026-10-29 (+3d) | 2026-10-29 → 2026-11-03 (+5d) | 61d → 59d |
| 1010 | Ranurado y resane general inst. en muros | 2026-10-02 → 2026-10-06 (+4d) | 2026-10-06 → 2026-10-09 (+3d) | 4d → 2d |
| 1011 | Ranurado y resane eléctrico 1/2 a 3/4 | 2026-10-02 → 2026-10-06 (+4d) | 2026-10-06 → 2026-10-09 (+3d) | 4d → 2d |
| 1012 | Ranurado y resane hidráulico 1/2 a 1 | 2026-10-05 → 2026-10-08 (+3d) | 2026-10-07 → 2026-10-12 (+5d) | 3d → 1d |
| 1013 | Resane sanitario tubería 2 | 2026-10-05 → 2026-10-08 (+3d) | 2026-10-07 → 2026-10-12 (+5d) | 3d → 1d |
| 1014 | Resane sanitario tubería 4 | 2026-10-05 → 2026-10-08 (+3d) | 2026-10-07 → 2026-10-12 (+5d) | 3d → 1d |
| 1015 | Resane minisplit tubería 3 | 2026-10-05 → 2026-10-08 (+3d) | 2026-10-07 → 2026-10-12 (+5d) | 3d → 1d |
| 1016 | Ramaleo hidráulico exterior CPVC 1 1/4 | 2026-10-05 → 2026-10-08 (+3d) | 2026-10-08 → 2026-10-13 (+5d) | 2d → 0d |
| 1017 | Ramaleo hidráulico exterior CPVC 1 | 2026-10-05 → 2026-10-08 (+3d) | 2026-10-07 → 2026-10-12 (+5d) | 2d → 0d |
| 1018 | Ramaleo hidráulico exterior CPVC 3/4 | 2026-10-07 → 2026-10-12 (+5d) | 2026-10-09 → 2026-10-14 (+5d) | 2d → 0d |
| 1019 | Ramaleo hidráulico exterior CPVC 1/2 | 2026-10-07 → 2026-10-12 (+5d) | 2026-10-09 → 2026-10-14 (+5d) | 2d → 0d |
| 1020 | Prueba hidráulica | 2026-10-09 → 2026-10-14 (+5d) | 2026-10-12 → 2026-10-15 (+3d) | 2d → 0d |
| 1021 | Ramaleo sanitario exterior PVC 4 | 2026-10-05 → 2026-10-08 (+3d) | 2026-10-09 → 2026-10-14 (+5d) | 2d → 0d |
| 1022 | Ramaleo sanitario exterior PVC 2 | 2026-10-06 → 2026-10-09 (+3d) | 2026-10-09 → 2026-10-14 (+5d) | 2d → 0d |
| 1023 | Prueba sanitaria | 2026-10-09 → 2026-10-14 (+5d) | 2026-10-12 → 2026-10-15 (+3d) | 2d → 0d |
| 1024 | Centro de carga muros PB | 2026-10-08 → 2026-10-13 (+5d) | 2026-10-14 → 2026-10-17 (+3d) | 4d → 2d |
| 1025 | Firme de concreto 8 cm | 2026-10-12 → 2026-10-15 (+3d) | 2026-10-16 → 2026-10-20 (+4d) | 55d → 53d |
| 1026 | Curado de concreto | 2026-10-16 → 2026-10-20 (+4d) | 2026-10-17 → 2026-10-21 (+4d) | 55d → 53d |
| 1027 | Cisterna 2800 L con instalación | 2026-09-10 → 2026-09-14 (+4d) | 2026-10-03 → 2026-10-07 (+4d) | 61d → 59d |
| 1028 | Banqueta y huellas de concreto | 2026-10-19 → 2026-10-22 (+3d) | 2026-10-28 → 2026-11-02 (+5d) | 38d → 36d |
| 1029 | Curado de concreto | 2026-10-29 → 2026-11-02 (+4d) | 2026-10-29 → 2026-11-03 (+5d) | 38d → 36d |
| 1030 | Número oficial | 2026-11-27 → 2026-12-01 (+4d) | 2026-11-28 → 2026-12-02 (+4d) | 38d → 36d |
| 1031 | Detallado de rodapié exterior | 2026-10-14 → 2026-10-17 (+3d) | 2026-10-19 → 2026-10-22 (+3d) | 70d → 68d |
| 1032 | Detalle de losas y volados acabado fino | 2026-10-05 → 2026-10-08 (+3d) | 2026-10-09 → 2026-10-14 (+5d) | 6d → 4d |
| 1033 | Detalle fino en muros interiores | 2026-10-07 → 2026-10-12 (+5d) | 2026-10-14 → 2026-10-17 (+3d) | 3d → 1d |
| 1034 | Jardín interior bajo escalera con pozo de absorción | 2026-10-05 → 2026-10-08 (+3d) | 2026-10-20 → 2026-10-23 (+3d) | 6d → 4d |
| 1035 | **ACABADOS EN FACHADA A** | 2026-09-29 → 2026-10-02 (+3d) | 2026-11-27 → 2026-12-01 (+4d) | 38d → 36d |
| 1036 | Aplanado grueso fachada | 2026-09-29 → 2026-10-02 (+3d) | 2026-10-14 → 2026-10-17 (+3d) | 44d → 42d |
| 1037 | Aplanado fino estuco fachada | 2026-10-07 → 2026-10-12 (+5d) | 2026-10-20 → 2026-10-23 (+3d) | 44d → 42d |
| 1038 | Pintura acrílica 1-0102P | 2026-11-13 → 2026-11-19 (+6d) | 2026-11-25 → 2026-11-28 (+3d) | 40d → 38d |
| 1039 | Pintura acrílica 1-1404D | 2026-11-13 → 2026-11-19 (+6d) | 2026-11-27 → 2026-12-01 (+4d) | 38d → 36d |
| 1040 | Cantera 40x60cm | 2026-10-20 → 2026-10-23 (+3d) | 2026-11-06 → 2026-11-10 (+4d) | 44d → 42d |
| 1041 | Lambrin de permabase 1 cara | 2026-10-14 → 2026-10-17 (+3d) | 2026-10-17 → 2026-10-21 (+4d) | 51d → 49d |
| 1042 | Enchapado de Permabase | 2026-10-17 → 2026-10-21 (+4d) | 2026-10-22 → 2026-10-26 (+4d) | 51d → 49d |
| 1043 | Cubierta de Permabase | 2026-10-22 → 2026-10-27 (+5d) | 2026-10-28 → 2026-11-02 (+5d) | 51d → 49d |
| 1044 | **APLANADOS Y PINTURA** | 2026-10-05 → 2026-10-08 (+3d) | 2026-12-23 → 2026-12-30 (+7d) | 4d → 2d |
| 1045 | Yeso pulido en muros | 2026-10-15 → 2026-10-19 (+4d) | 2026-11-02 → 2026-11-05 (+3d) | 2d → 0d |
| 1046 | Aplanado en muros enjarre grueso | 2026-10-05 → 2026-10-08 (+3d) | 2026-10-12 → 2026-10-15 (+3d) | 5d → 3d |
| 1047 | Pintura vinílica OR-W13 SHOELACE | 2026-12-08 → 2026-12-11 (+3d) | 2026-12-23 → 2026-12-30 (+7d) | 2d → 0d |
| 1048 | Pintura vinílica PPUI5-13 Creamy M. | 2026-12-01 → 2026-12-04 (+3d) | 2026-12-14 → 2026-12-17 (+3d) | 10d → 8d |
| 1049 | Pintura vinílica MD-06 Nano White | 2026-12-01 → 2026-12-04 (+3d) | 2026-12-11 → 2026-12-15 (+4d) | 12d → 10d |
| 1050 | Yeso pulido en plafones | 2026-10-05 → 2026-10-08 (+3d) | 2026-10-17 → 2026-10-21 (+4d) | 4d → 2d |
| 1051 | Perfilado de puertas y ventanas | 2026-10-20 → 2026-10-23 (+3d) | 2026-10-24 → 2026-10-28 (+4d) | 65d → 63d |
| 1052 | **PISOS Y AZULEJOS** | 2026-10-27 → 2026-10-30 (+3d) | 2026-11-26 → 2026-11-30 (+4d) | 2d → 0d |
| 1053 | **AREA SOCIAL** | 2026-10-30 → 2026-11-03 (+4d) | 2026-11-19 → 2026-11-23 (+4d) | 2d → 0d |
| 1054 | Piso Adhara 44X89 | 2026-10-30 → 2026-11-03 (+4d) | 2026-11-18 → 2026-11-21 (+3d) | 2d → 0d |
| 1055 | Zoclo Adhara 44X89 | 2026-11-11 → 2026-11-17 (+6d) | 2026-11-19 → 2026-11-23 (+4d) | 19d → 17d |
| 1056 | **RECAMARAS** | 2026-10-27 → 2026-10-30 (+3d) | 2026-11-05 → 2026-11-09 (+4d) | 2d → 0d |
| 1057 | Acabado aparente de pisos - pulido | 2026-10-27 → 2026-10-30 (+3d) | 2026-11-05 → 2026-11-09 (+4d) | 2d → 0d |
| 1058 | **BAÑOS** | 2026-10-28 → 2026-10-31 (+3d) | 2026-11-19 → 2026-11-23 (+4d) | 13d → 11d |
| 1059 | Azulejo Mod. Ornamenta 60x30 | 2026-11-05 → 2026-11-09 (+4d) | 2026-11-11 → 2026-11-17 (+6d) | 13d → 11d |
| 1060 | Impermeabilización en regadera | 2026-11-04 → 2026-11-07 (+3d) | 2026-11-06 → 2026-11-10 (+4d) | 13d → 11d |
| 1061 | Piso Mod. Valparaiso 20x20 | 2026-11-11 → 2026-11-17 (+6d) | 2026-11-18 → 2026-11-21 (+3d) | 13d → 11d |
| 1062 | Zoclo Adhara 44X89 | 2026-11-17 → 2026-11-20 (+3d) | 2026-11-19 → 2026-11-23 (+4d) | 46d → 44d |
| 1063 | Piso Adhara 44X89 | 2026-11-11 → 2026-11-17 (+6d) | 2026-11-17 → 2026-11-20 (+3d) | 48d → 46d |
| 1064 | Fabricacion de nicho decorativo en baños | 2026-10-28 → 2026-10-31 (+3d) | 2026-11-04 → 2026-11-07 (+3d) | 13d → 11d |
| 1065 | Sardinel en regadera | 2026-11-11 → 2026-11-17 (+6d) | 2026-11-18 → 2026-11-21 (+3d) | 47d → 45d |
| 1066 | **ESCALERA** | 2026-11-13 → 2026-11-19 (+6d) | 2026-11-26 → 2026-11-30 (+4d) | 2d → 0d |

| ID | Task | Start | Finish | Total float |
| --- | --- | --- | --- | --- |
| 1067 | Piso Adhara 44X89 | 2026-11-13 → 2026-11-19 (+6d) | 2026-11-24 → 2026-11-27 (+3d) | 2d → 0d |
| 1068 | Zoclo Adhara 44X89 | 2026-11-21 → 2026-11-25 (+4d) | 2026-11-26 → 2026-11-30 (+4d) | 2d → 0d |
| 1069 | **EXTERIOR** | 2026-10-12 → 2026-10-15 (+3d) | 2026-10-15 → 2026-10-19 (+4d) | 7d → 5d |
| 1070 | Rastrilleo, afine y nivelado de tierra | 2026-10-12 → 2026-10-15 (+3d) | 2026-10-15 → 2026-10-19 (+4d) | 7d → 5d |
| 1071 | **SEGUNDA LIMPIEZA DE OBRA** | 2026-11-26 → 2026-11-30 (+4d) | 2026-12-01 → 2026-12-04 (+3d) | 25d → 23d |
| 1072 | Segunda limpieza de obra | 2026-11-26 → 2026-11-30 (+4d) | 2026-11-28 → 2026-12-02 (+4d) | 25d → 23d |
| 1073 | Segunda carga y acarreo de escombro | 2026-11-28 → 2026-12-02 (+4d) | 2026-12-01 → 2026-12-04 (+3d) | 25d → 23d |
| 1074 | **CANCELERIA PUERTAS Y VENTANAS DE ALUMINIO** | 2026-11-13 → 2026-11-19 (+6d) | 2026-12-07 → 2026-12-10 (+3d) | 3d → 1d |
| 1075 | Fijo medidas 0.30x4.90m | 2026-11-18 → 2026-11-21 (+3d) | 2026-11-26 → 2026-11-30 (+4d) | 11d → 9d |
| 1076 | Ventana Corrediza 1.80x1.60m | 2026-11-13 → 2026-11-19 (+6d) | 2026-11-20 → 2026-11-24 (+4d) | 16d → 14d |
| 1077 | Ventana Corrediza 0.60x0.40m | 2026-11-18 → 2026-11-21 (+3d) | 2026-11-23 → 2026-11-26 (+3d) | 14d → 12d |
| 1078 | Ventana Corrediza 1.54x0.50m | 2026-11-18 → 2026-11-21 (+3d) | 2026-11-23 → 2026-11-26 (+3d) | 14d → 12d |
| 1079 | Fijo medidas 1.40x2.50m | 2026-11-21 → 2026-11-25 (+4d) | 2026-11-26 → 2026-11-30 (+4d) | 5d → 3d |
| 1080 | Ventana Corrediza 1.80x1.50m | 2026-11-24 → 2026-11-27 (+3d) | 2026-11-28 → 2026-12-02 (+4d) | 3d → 1d |
| 1081 | Ventana Corrediza 1.40x1.60m | 2026-11-24 → 2026-11-27 (+3d) | 2026-11-28 → 2026-12-02 (+4d) | 3d → 1d |
| 1082 | Ventana Corrediza 0.95x0.40m | 2026-11-24 → 2026-11-27 (+3d) | 2026-11-28 → 2026-12-02 (+4d) | 3d → 1d |
| 1083 | Puerta corrediza 3.85x2.10m | 2026-11-26 → 2026-11-30 (+4d) | 2026-12-03 → 2026-12-08 (+5d) | 5d → 3d |
| 1084 | Barandal de Cristal Templado | 2026-11-28 → 2026-12-02 (+4d) | 2026-12-07 → 2026-12-10 (+3d) | 3d → 1d |
| 1085 | **CARPINTERIA, PUERTAS EXTERIORES E INTERIORES** | 2026-11-26 → 2026-11-30 (+4d) | 2026-12-08 → 2026-12-11 (+3d) | 2d → 0d |
| 1086 | Puerta P-01 de seguridad | 2026-11-26 → 2026-11-30 (+4d) | 2026-12-02 → 2026-12-07 (+5d) | 6d → 4d |
| 1087 | Puerta P-01 interior | 2026-11-26 → 2026-11-30 (+4d) | 2026-12-07 → 2026-12-10 (+3d) | 3d → 1d |
| 1088 | Puerta P-02 interior | 2026-11-26 → 2026-11-30 (+4d) | 2026-12-07 → 2026-12-10 (+3d) | 3d → 1d |
| 1089 | Puerta P-03 interior | 2026-12-02 → 2026-12-07 (+5d) | 2026-12-08 → 2026-12-11 (+3d) | 2d → 0d |
| 1090 | Puerta P-04 interior | 2026-12-02 → 2026-12-07 (+5d) | 2026-12-08 → 2026-12-11 (+3d) | 2d → 0d |
| 1091 | **VOLADOS, BARANDAL Y ESCALERA** | 2026-10-20 → 2026-10-23 (+3d) | 2026-12-01 → 2026-12-04 (+3d) | 10d → 8d |
| 1092 | Barandal de Herreria en escalera | 2026-11-06 → 2026-11-10 (+4d) | 2026-11-11 → 2026-11-17 (+6d) | 25d → 23d |
| 1093 | Escalera de herreria | 2026-10-20 → 2026-10-23 (+3d) | 2026-11-11 → 2026-11-17 (+6d) | 10d → 8d |
| 1094 | Techumbre en acceso Principal | 2026-11-05 → 2026-11-09 (+4d) | 2026-11-24 → 2026-11-27 (+3d) | 16d → 14d |
| 1095 | Techumbre en 1.80x0.50m | 2026-11-05 → 2026-11-09 (+4d) | 2026-11-13 → 2026-11-19 (+6d) | 10d → 8d |
| 1096 | Techumbre en 1.40x0.50m | 2026-11-13 → 2026-11-19 (+6d) | 2026-11-24 → 2026-11-27 (+3d) | 10d → 8d |
| 1097 | Imper con manto prefabricado | 2026-11-19 → 2026-11-23 (+4d) | 2026-11-25 → 2026-11-28 (+3d) | 10d → 8d |
| 1098 | Plafon hoja tablaroca std | 2026-11-25 → 2026-11-28 (+3d) | 2026-12-01 → 2026-12-04 (+3d) | 10d → 8d |
| 1099 | Acabado Woodstock en parte inf. Cubierta | 2026-11-25 → 2026-11-28 (+3d) | 2026-12-01 → 2026-12-04 (+3d) | 10d → 8d |
| 1100 | **INSTALACION ELECTRICA** | 2026-10-28 → 2026-10-31 (+3d) | 2026-11-18 → 2026-11-21 (+3d) | 31d → 29d |
| 1101 | Alimentación eléctrica base a centro de carga | 2026-11-02 → 2026-11-05 (+3d) | 2026-11-07 → 2026-11-11 (+4d) | 35d → 33d |
| 1102 | Interruptor termomagnético 1x20 A | 2026-11-07 → 2026-11-11 (+4d) | 2026-11-09 → 2026-11-12 (+3d) | 35d → 33d |
| 1103 | Interruptor termomagnético 2x20 A | 2026-11-07 → 2026-11-11 (+4d) | 2026-11-09 → 2026-11-12 (+3d) | 35d → 33d |
| 1104 | Salida para apagador 3 vías | 2026-10-28 → 2026-10-31 (+3d) | 2026-11-02 → 2026-11-05 (+3d) | 31d → 29d |
| 1105 | Salida para apagador doble | 2026-11-02 → 2026-11-05 (+3d) | 2026-11-05 → 2026-11-09 (+4d) | 33d → 31d |
| 1106 | Salida para apagador sencillo | 2026-11-02 → 2026-11-05 (+3d) | 2026-11-05 → 2026-11-09 (+4d) | 33d → 31d |
| 1107 | Salida de alumbrado en losa | 2026-11-02 → 2026-11-05 (+3d) | 2026-11-07 → 2026-11-11 (+4d) | 31d → 29d |
| 1108 | Salida para contacto exterior doble | 2026-11-02 → 2026-11-05 (+3d) | 2026-11-04 → 2026-11-07 (+3d) | 34d → 32d |
| 1109 | Salida para contacto 220 V | 2026-11-04 → 2026-11-07 (+3d) | 2026-11-07 → 2026-11-11 (+4d) | 31d → 29d |
| 1110 | Salida para contacto doble | 2026-11-04 → 2026-11-07 (+3d) | 2026-11-10 → 2026-11-13 (+3d) | 34d → 32d |
| 1111 | Salida para contacto doble área húmeda | 2026-11-07 → 2026-11-11 (+4d) | 2026-11-10 → 2026-11-13 (+3d) | 34d → 32d |
| 1112 | Salida TV / telefonía / intercom | 2026-11-07 → 2026-11-11 (+4d) | 2026-11-12 → 2026-11-18 (+6d) | 32d → 30d |
| 1113 | Extractor 4 baño | 2026-11-07 → 2026-11-11 (+4d) | 2026-11-13 → 2026-11-19 (+6d) | 31d → 29d |
| 1114 | Prueba eléctrica | 2026-11-13 → 2026-11-19 (+6d) | 2026-11-18 → 2026-11-21 (+3d) | 31d → 29d |
| 1115 | **INSTALACIÓN HIDRO-SANITARIA** | 2026-10-12 → 2026-10-15 (+3d) | 2026-10-24 → 2026-10-28 (+4d) | 2d → 0d |
| 1116 | Tubería condensados PVC 1 | 2026-10-12 → 2026-10-15 (+3d) | 2026-10-17 → 2026-10-21 (+4d) | 2d → 0d |
| 1117 | Tubería sanitaria PVC 4 | 2026-10-12 → 2026-10-15 (+3d) | 2026-10-17 → 2026-10-21 (+4d) | 10d → 8d |
| 1118 | Coladera H-444 | 2026-10-17 → 2026-10-21 (+4d) | 2026-10-19 → 2026-10-22 (+3d) | 10d → 8d |
| 1119 | Caja PVC para lavadora | 2026-10-12 → 2026-10-15 (+3d) | 2026-10-15 → 2026-10-19 (+4d) | 2d → 0d |
| 1120 | Salida para secadora PVC 4 | 2026-10-12 → 2026-10-15 (+3d) | 2026-10-15 → 2026-10-19 (+4d) | 2d → 0d |
| 1121 | Salida hidráulica para boiler | 2026-10-12 → 2026-10-15 (+3d) | 2026-10-14 → 2026-10-17 (+3d) | 3d → 1d |
| 1122 | Salida hidráulica para llave de jardín | 2026-10-12 → 2026-10-15 (+3d) | 2026-10-15 → 2026-10-19 (+4d) | 2d → 0d |
| 1123 | Salida hidráulica para lavabo | 2026-10-12 → 2026-10-15 (+3d) | 2026-10-16 → 2026-10-20 (+4d) | 2d → 0d |
| 1124 | Salida hidráulica para purificación | 2026-10-12 → 2026-10-15 (+3d) | 2026-10-16 → 2026-10-20 (+4d) | 2d → 0d |
| 1125 | Salida sanitaria para lavabo | 2026-10-14 → 2026-10-17 (+3d) | 2026-10-16 → 2026-10-20 (+4d) | 2d → 0d |
| 1126 | Salida hidráulica para lavadero | 2026-10-14 → 2026-10-17 (+3d) | 2026-10-16 → 2026-10-20 (+4d) | 2d → 0d |
| 1127 | Salida sanitaria para lavadero | 2026-10-15 → 2026-10-19 (+4d) | 2026-10-17 → 2026-10-21 (+4d) | 2d → 0d |
| 1128 | Salida hidráulica para lavadora | 2026-10-15 → 2026-10-19 (+4d) | 2026-10-17 → 2026-10-21 (+4d) | 2d → 0d |
| 1129 | Salida sanitaria para lavadora | 2026-10-16 → 2026-10-20 (+4d) | 2026-10-19 → 2026-10-22 (+3d) | 2d → 0d |
| 1130 | Salida hidráulica para regadera | 2026-10-16 → 2026-10-20 (+4d) | 2026-10-22 → 2026-10-26 (+4d) | 7d → 5d |
| 1131 | Salida sanitaria para regadera | 2026-10-16 → 2026-10-20 (+4d) | 2026-10-21 → 2026-10-24 (+3d) | 8d → 6d |
| 1132 | Salida hidráulica para WC | 2026-10-14 → 2026-10-17 (+3d) | 2026-10-16 → 2026-10-20 (+4d) | 2d → 0d |
| 1133 | Salida sanitaria para WC | 2026-10-16 → 2026-10-20 (+4d) | 2026-10-21 → 2026-10-24 (+3d) | 2d → 0d |
| 1134 | Salida hidráulica para zinc | 2026-10-16 → 2026-10-20 (+4d) | 2026-10-21 → 2026-10-24 (+3d) | 2d → 0d |
| 1135 | Salida sanitaria para zinc | 2026-10-19 → 2026-10-22 (+3d) | 2026-10-22 → 2026-10-26 (+4d) | 2d → 0d |
| 1136 | Tubo para ventila de baño 2 | 2026-10-12 → 2026-10-15 (+3d) | 2026-10-17 → 2026-10-21 (+4d) | 2d → 0d |

| ID | Task | Start | Finish | Duration | Complete | Total float |
| --- | --- | --- | --- | --- | --- | --- |
| 1137 | Tubo para minisplit PVC 3 | 2026-10-17 → 2026-10-21 (+4d) | 2026-10-23 → 2026-10-27 (+4d) |  |  | 2d → 0d |
| 1138 | Cuadro de medición | 2026-10-15 → 2026-10-19 (+4d) | 2026-10-21 → 2026-10-24 (+3d) |  |  | 7d → 5d |
| 1139 | Pozo de absorción 0.50x0.50x0.50 | 2026-10-15 → 2026-10-19 (+4d) | 2026-10-19 → 2026-10-22 (+3d) |  |  | 10d → 8d |
| 1140 | Prueba sanitaria final | 2026-10-23 → 2026-10-28 (+5d) | 2026-10-24 → 2026-10-28 (+4d) |  |  | 6d → 4d |
| 1141 | Prueba hidrostática final | 2026-10-22 → 2026-10-27 (+5d) | 2026-10-23 → 2026-10-27 (+4d) |  |  | 7d → 5d |
| 1142 | Salida válvula control 19 mm | 2026-10-21 → 2026-10-26 (+5d) | 2026-10-22 → 2026-10-26 (+4d) |  |  | 7d → 5d |
| 1143 | Salida válvula control 13 mm | 2026-10-21 → 2026-10-26 (+5d) | 2026-10-22 → 2026-10-26 (+4d) |  |  | 7d → 5d |
| 1144 | Salida hidráulica para tanque hidroneumático | 2026-10-15 → 2026-10-19 (+4d) | 2026-10-19 → 2026-10-22 (+3d) |  |  | 10d → 8d |
| 1145 | Salida hidráulica para Active Driver | 2026-10-15 → 2026-10-19 (+4d) | 2026-10-19 → 2026-10-22 (+3d) |  |  | 10d → 8d |
| 1146 | **INSTALACION DE GAS** | 2026-10-08 → 2026-10-13 (+5d) | 2026-10-19 → 2026-10-22 (+3d) |  |  | 38d → 36d |
| 1147 | Ramaleo para gas 1/2 | 2026-10-13 → 2026-10-16 (+3d) | 2026-10-19 → 2026-10-22 (+3d) |  |  | 38d → 36d |
| 1148 | Excavación a mano material tipo B | 2026-10-08 → 2026-10-13 (+5d) | 2026-10-13 → 2026-10-16 (+3d) |  |  | 38d → 36d |
| 1149 | **MUEBLES SANITARIOS** | 2026-11-18 → 2026-11-21 (+3d) | 2026-12-23 → 2026-12-30 (+7d) |  |  | 14d → 12d |
| 1150 | WC completo Austral | 2026-11-18 → 2026-11-21 (+3d) | 2026-11-20 → 2026-11-24 (+4d) |  |  | 16d → 14d |
| 1151 | Lavabo Senna con pedestal | 2026-11-18 → 2026-11-21 (+3d) | 2026-11-23 → 2026-11-26 (+3d) |  |  | 14d → 12d |
| 1152 | Tarja / lavabo combo Guinea 80x45 | 2026-11-18 → 2026-11-21 (+3d) | 2026-11-20 → 2026-11-24 (+4d) |  |  | 45d → 43d |
| 1153 | Regadera con monomando | 2026-11-20 → 2026-11-24 (+4d) | 2026-11-24 → 2026-11-27 (+3d) |  |  | 13d → 11d |
| 1154 | Coladera inserto cerámico | 2026-11-21 → 2026-11-25 (+4d) | 2026-11-24 → 2026-11-27 (+3d) |  |  | 13d → 11d |
| 1155 | Toallero sencillo | 2026-12-23 → 2026-12-29 (+6d) | 2026-12-23 → 2026-12-30 (+7d) |  |  | 2d → 0d |
| 1156 | Toallero barra | 2026-12-23 → 2026-12-29 (+6d) | 2026-12-23 → 2026-12-30 (+7d) |  |  | 2d → 0d |
| 1157 | Portapapel | 2026-12-23 → 2026-12-29 (+6d) | 2026-12-23 → 2026-12-30 (+7d) |  |  | 2d → 0d |
| 1158 | Gancho baño | 2026-12-23 → 2026-12-29 (+6d) | 2026-12-23 → 2026-12-30 (+7d) |  |  | 2d → 0d |
| 1159 | **EQUIPAMIENTO** | 2026-10-02 → 2026-10-06 (+4d) | 2026-10-09 → 2026-10-14 (+5d) |  |  | 61d → 59d |
| 1160 | Electronivel Rotoplas 5 m | 2026-10-03 → 2026-10-07 (+4d) | 2026-10-06 → 2026-10-09 (+3d) |  |  | 64d → 62d |
| 1161 | Manómetro | 2026-10-03 → 2026-10-07 (+4d) | 2026-10-05 → 2026-10-08 (+3d) |  |  | 65d → 63d |
| 1162 | Interruptor de presión 30-50 PSI | 2026-10-03 → 2026-10-07 (+4d) | 2026-10-05 → 2026-10-08 (+3d) |  |  | 65d → 63d |
| 1163 | Tanque hidroneumático FPS-24LX | 2026-10-03 → 2026-10-07 (+4d) | 2026-10-07 → 2026-10-12 (+5d) |  |  | 61d → 59d |
| 1164 | Bomba sumergible Dominator 1.2 HP | 2026-10-07 → 2026-10-12 (+5d) | 2026-10-09 → 2026-10-14 (+5d) |  |  | 61d → 59d |
| 1165 | Cisterna prefabricada 2800 L | 2026-10-02 → 2026-10-06 (+4d) | 2026-10-03 → 2026-10-07 (+4d) |  |  | 61d → 59d |
| 1166 | **LUMINARIAS** | 2026-11-07 → 2026-11-11 (+4d) | 2026-11-13 → 2026-11-19 (+6d) |  |  | 31d → 29d |
| 1167 | Roseta cerámica | 2026-11-07 → 2026-11-11 (+4d) | 2026-11-11 → 2026-11-17 (+6d) |  |  | 33d → 31d |
| 1168 | Luminaria lagartijera LED | 2026-11-07 → 2026-11-11 (+4d) | 2026-11-11 → 2026-11-17 (+6d) |  |  | 33d → 31d |
| 1169 | Spot 6W Tecnolite | 2026-11-07 → 2026-11-11 (+4d) | 2026-11-11 → 2026-11-17 (+6d) |  |  | 33d → 31d |
| 1170 | Spot 7W Tecnolite | 2026-11-07 → 2026-11-11 (+4d) | 2026-11-11 → 2026-11-17 (+6d) |  |  | 33d → 31d |
| 1171 | Arbotante exterior | 2026-11-07 → 2026-11-11 (+4d) | 2026-11-10 → 2026-11-13 (+3d) |  |  | 31d → 29d |
| 1172 | Estaca LED exterior | 2026-11-10 → 2026-11-13 (+3d) | 2026-11-13 → 2026-11-19 (+6d) |  |  | 31d → 29d |
| 1173 | Tira LED | 2026-11-10 → 2026-11-13 (+3d) | 2026-11-13 → 2026-11-19 (+6d) |  |  | 31d → 29d |
| 1174 | Spot exterior 50W | 2026-11-07 → 2026-11-11 (+4d) | 2026-11-10 → 2026-11-13 (+3d) |  |  | 34d → 32d |
| 1175 | **TIMBRE** | 2026-11-09 → 2026-11-12 (+3d) | 2026-11-11 → 2026-11-17 (+6d) |  |  | 33d → 31d |
| 1176 | Timbre inalámbrico con bocina | 2026-11-09 → 2026-11-12 (+3d) | 2026-11-11 → 2026-11-17 (+6d) |  |  | 33d → 31d |
| 1177 | **OBRA EXTERIOR - BARDA** | 2026-10-15 → 2026-10-19 (+4d) | 2026-11-06 → 2026-11-10 (+4d) |  |  | 39d → 37d |
| 1178 | Murete convencional | 2026-10-21 → 2026-10-26 (+5d) | 2026-10-27 → 2026-10-30 (+3d) |  |  | 45d → 43d |
| 1179 | Barda de block aparente | 2026-10-15 → 2026-10-19 (+4d) | 2026-11-06 → 2026-11-10 (+4d) |  |  | 39d → 37d |
| 1180 | **TERCER LIMPIEZA DE OBRA** | 2026-12-26 → 2026-12-30 (+4d) | 2027-01-18 → 2027-01-21 (+3d) |  |  | 2d → 0d |
| 1181 | Limpieza fina para entrega | 2026-12-26 → 2026-12-30 (+4d) | 2027-01-04 → 2027-01-07 (+3d) |  |  | 2d → 0d |
| 1182 | Tercera limpieza de obra | 2027-01-04 → 2027-01-07 (+3d) | 2027-01-11 → 2027-01-14 (+3d) |  |  | 2d → 0d |
| 1183 | Tercera carga y acarreo de escombro | 2027-01-11 → 2027-01-14 (+3d) | 2027-01-18 → 2027-01-21 (+3d) |  |  | 2d → 0d |
| 1184 | **LOTE 21 M-663 CORSAC-A** |  | 2027-01-18 → 2027-01-21 (+3d) | 181d → 184d | 1% → 2% | 2d → 0d |
| 1185 | **HITOS IMPORTANTES DEL LOTE** |  | 2027-01-18 → 2027-01-21 (+3d) | 181d → 184d |  | 2d → 0d |
| 1187 | Colado de Losa de Cimentación | 2026-06-19 → 2026-06-24 (+5d) | 2026-06-19 → 2026-06-24 (+5d) |  |  | 166d → 164d |
| 1188 | Colado de Losa de Entrepiso | 2026-07-28 → 2026-07-31 (+3d) | 2026-07-28 → 2026-07-31 (+3d) |  |  | 136d → 134d |
| 1189 | Colado de Losa de Azotea | 2026-09-02 → 2026-09-07 (+5d) | 2026-09-02 → 2026-09-07 (+5d) |  |  | 106d → 104d |
| 1190 | Entrega de vivienda | 2027-01-18 → 2027-01-21 (+3d) | 2027-01-18 → 2027-01-21 (+3d) |  |  | 2d → 0d |
| 1191 | **TRABAJOS PRELIMINARES** |  | 2026-06-02 A → 2026-06-05 A (+3d) | 2d → 5d |  |  |
| 1192 | Trazo y nivelación |  | 2026-06-02 A → 2026-06-05 A (+3d) | 2d → 5d |  |  |
| 1193 | **EXCAVACIONES** | 2026-06-02 A → 2026-06-05 A (+3d) | 2026-06-05 A → 2026-06-09 A (+4d) |  |  |  |
| 1194 | Excavación a mano material tipo B | 2026-06-02 A → 2026-06-05 A (+3d) | 2026-06-05 A → 2026-06-09 A (+4d) |  |  |  |
| 1195 | Acarreo en carretilla 20 m | 2026-06-03 A → 2026-06-06 A (+3d) | 2026-06-05 A → 2026-06-09 A (+4d) |  |  |  |
| 1196 | **CIMENTACION** | 2026-06-05 A → 2026-06-09 A (+4d) | 2026-06-22 → 2026-06-25 (+3d) |  | 10% → 20% | 2d → 0d |
| 1197 | Cimbra perimetral losa de cimentación | 2026-06-05 A → 2026-06-09 A (+4d) | 2026-06-09 → 2026-06-12 A (+3d) |  | 83% → 100% | 2d → none |
| 1198 | Sistema antitermitas PVC | 2026-06-05 A → 2026-06-09 A (+4d) | 2026-06-09 → 2026-06-12 A (+3d) |  | 83% → 100% | 3d → none |
| 1199 | Hule negro en cimentación | 2026-06-09 → 2026-06-12 A (+3d) | 2026-06-10 → 2026-06-13 A (+3d) |  | 0% → 100% | 3d → none |
| 1200 | Ramaleo poliducto eléctrico cimentación | 2026-06-10 → 2026-06-13 A (+3d) | 2026-06-12 → 2026-06-16 (+4d) |  | 0% → 6% | 6d → 4d |
| 1201 | Ramaleo eléctrico base-medición a centro de carga | 2026-06-10 → 2026-06-13 A (+3d) | 2026-06-11 → 2026-06-15 (+4d) |  | 0% → 13% | 7d → 5d |
| 1202 | Ramaleo eléctrico exterior | 2026-06-12 → 2026-06-16 (+4d) | 2026-06-13 → 2026-06-17 (+4d) |  |  | 6d → 4d |
| 1203 | Ramaleo para cable poliducto 3/4 | 2026-06-12 → 2026-06-16 (+4d) | 2026-06-13 → 2026-06-17 (+4d) |  |  | 6d → 4d |
| 1204 | Ramaleo para TV poliducto 3/4 | 2026-06-12 → 2026-06-16 (+4d) | 2026-06-13 → 2026-06-17 (+4d) |  |  | 6d → 4d |
| 1205 | Ramaleo hidráulico CPVC 1-1/4" cimentación | 2026-06-10 → 2026-06-13 A (+3d) | 2026-06-11 → 2026-06-15 (+4d) |  | 0% → 13% | 3d → 5d |
| 1206 | Ramaleo hidráulico CPVC 1 cimentación | 2026-06-10 → 2026-06-13 A (+3d) | 2026-06-11 → 2026-06-15 (+4d) |  | 0% → 13% | 3d → 1d |
| 1207 | Ramaleo hidráulico CPVC 3/4 cimentación | 2026-06-11 → 2026-06-15 (+4d) | 2026-06-13 → 2026-06-17 (+4d) |  |  | 3d → 1d |

| ID | Task | Start | Finish | Complete | Total float |
| --- | --- | --- | --- | --- | --- |
| 1208 | Ramaleo hidráulico CPVC 1/2 cimentación | 2026-06-13 → 2026-06-17 (+4d) | 2026-06-16 → 2026-06-19 (+3d) |  | 3d → 1d |
| 1209 | Prueba hidráulica | 2026-06-16 → 2026-06-19 (+3d) | 2026-06-17 → 2026-06-22 (+5d) |  | 3d → 1d |
| 1210 | Ramaleo sanitario PVC 4 cimentación | 2026-06-11 → 2026-06-15 (+4d) | 2026-06-13 → 2026-06-17 (+4d) |  | 4d → 2d |
| 1211 | Ramaleo sanitario PVC 2 cimentación | 2026-06-13 → 2026-06-17 (+4d) | 2026-06-15 → 2026-06-18 (+3d) |  | 4d → 2d |
| 1212 | Prueba sanitaria | 2026-06-15 → 2026-06-18 (+3d) | 2026-06-16 → 2026-06-19 (+3d) |  | 4d → 2d |
| 1213 | Acero contratrabe CT-1 | 2026-06-09 → 2026-06-12 A (+3d) | 2026-06-13 → 2026-06-17 (+4d) | 0% → 28% | 2d → 0d |
| 1214 | Acero contratrabe CT-2 | 2026-06-09 → 2026-06-12 A (+3d) | 2026-06-13 → 2026-06-17 (+4d) | 0% → 28% | 2d → 0d |
| 1215 | Malla electrosoldada 6-6/8-8 | 2026-06-16 → 2026-06-19 (+3d) | 2026-06-18 → 2026-06-23 (+5d) |  | 2d → 0d |
| 1216 | Bastón de refuerzo LS | 2026-06-13 → 2026-06-17 (+4d) | 2026-06-16 → 2026-06-19 (+3d) |  | 2d → 0d |
| 1217 | Bastón de refuerzo LI | 2026-06-13 → 2026-06-17 (+4d) | 2026-06-16 → 2026-06-19 (+3d) |  | 2d → 0d |
| 1218 | Colado losa de cimentación f’c=200 | 2026-06-18 → 2026-06-23 (+5d) | 2026-06-19 → 2026-06-24 (+5d) |  | 2d → 0d |
| 1219 | Curado de concreto | 2026-06-19 → 2026-06-24 (+5d) | 2026-06-22 → 2026-06-25 (+3d) |  | 2d → 0d |
| 1220 | Acero zapata ZT-1 | 2026-06-13 → 2026-06-17 (+4d) | 2026-06-18 → 2026-06-23 (+5d) |  | 2d → 0d |
| 1221 | Acero zapata ZT-2 | 2026-06-13 → 2026-06-17 (+4d) | 2026-06-18 → 2026-06-23 (+5d) |  | 2d → 0d |
| 1222 | **MUROS, PLANTA BAJA. CASTILLOS Y CERRAMIENTOS** | 2026-06-15 → 2026-06-18 (+3d) | 2026-07-09 → 2026-07-14 (+5d) |  | 7d → 5d |
| 1223 | Anclaje de castillos y Columnas PB | 2026-06-15 → 2026-06-18 (+3d) | 2026-06-22 → 2026-06-25 (+3d) |  | 153d → 151d |
| 1224 | Castillo K1 | 2026-06-22 → 2026-06-25 (+3d) | 2026-06-26 → 2026-06-30 (+4d) |  | 153d → 151d |
| 1225 | Castillo K3 | 2026-06-24 → 2026-06-27 (+3d) | 2026-06-27 → 2026-07-01 (+4d) |  | 153d → 151d |
| 1226 | Castillo K4 | 2026-06-24 → 2026-06-27 (+3d) | 2026-06-27 → 2026-07-01 (+4d) |  | 153d → 151d |
| 1227 | Castillo K5 | 2026-06-26 → 2026-06-30 (+4d) | 2026-06-30 → 2026-07-03 (+3d) |  | 153d → 151d |
| 1228 | Refuerzo de muro K6 | 2026-06-27 → 2026-07-01 (+4d) | 2026-07-01 → 2026-07-04 (+3d) |  | 153d → 151d |
| 1229 | Dala de cerramiento CR-1 | 2026-06-27 → 2026-07-01 (+4d) | 2026-07-02 → 2026-07-06 (+4d) |  | 156d → 154d |
| 1230 | Dala de cerramiento CR-2 | 2026-06-27 → 2026-07-01 (+4d) | 2026-07-01 → 2026-07-04 (+3d) |  | 157d → 155d |
| 1231 | Cadena block dala | 2026-07-01 → 2026-07-06 (+5d) | 2026-07-06 → 2026-07-09 (+3d) |  | 153d → 151d |
| 1232 | Muro de ladrillo aparente | 2026-06-22 → 2026-06-25 (+3d) | 2026-07-09 → 2026-07-14 (+5d) |  | 2d → 0d |
| 1233 | Muro de block planta baja | 2026-06-24 → 2026-06-27 (+3d) | 2026-07-09 → 2026-07-14 (+5d) |  | 2d → 0d |
| 1234 | Ramaleo electrico en Muros Planta Baja | 2026-06-27 → 2026-07-01 (+4d) | 2026-07-02 → 2026-07-06 (+4d) |  | 5d → 3d |
| 1235 | Ramaleo para cable poliducto 3/4 | 2026-07-02 → 2026-07-07 (+5d) | 2026-07-04 → 2026-07-08 (+4d) |  | 5d → 3d |
| 1236 | Ramaleo para TV poliducto 3/4 | 2026-07-06 → 2026-07-09 (+3d) | 2026-07-08 → 2026-07-13 (+5d) |  | 5d → 3d |
| 1237 | **ESCALERA** | 2026-07-28 → 2026-07-31 (+3d) | 2026-08-08 → 2026-08-12 (+4d) |  | 79d → 77d |
| 1238 | Escalera de concreto armado | 2026-07-28 → 2026-07-31 (+3d) | 2026-08-08 → 2026-08-12 (+4d) |  | 79d → 77d |
| 1239 | **LOSA DE ENTREPISO (viegueta y caseton)** | 2026-07-08 → 2026-07-11 (+3d) | 2026-07-29 → 2026-08-01 (+3d) |  | 5d → 3d |
| 1240 | Dala de coronamiento 10cm | 2026-07-16 → 2026-07-20 (+4d) | 2026-07-20 → 2026-07-23 (+3d) |  | 5d → 3d |
| 1241 | Dala de coronamiento 12cm | 2026-07-17 → 2026-07-21 (+4d) | 2026-07-21 → 2026-07-24 (+3d) |  | 4d → 2d |
| 1242 | Trabe TR-1 | 2026-07-08 → 2026-07-11 (+3d) | 2026-07-10 → 2026-07-15 (+5d) |  | 6d → 4d |
| 1243 | Trabe TR-2 | 2026-07-09 → 2026-07-13 (+4d) | 2026-07-14 → 2026-07-17 (+3d) |  | 4d → 2d |
| 1244 | Nervadura NR-1 | 2026-07-10 → 2026-07-14 (+4d) | 2026-07-15 → 2026-07-18 (+3d) |  | 3d → 1d |
| 1245 | Nervadura NR-2 | 2026-07-11 → 2026-07-15 (+4d) | 2026-07-16 → 2026-07-20 (+4d) |  | 2d → 0d |
| 1246 | Nervadura NR-3 | 2026-07-11 → 2026-07-15 (+4d) | 2026-07-16 → 2026-07-20 (+4d) |  | 2d → 0d |
| 1247 | Nervadura NR-4 | 2026-07-11 → 2026-07-15 (+4d) | 2026-07-16 → 2026-07-20 (+4d) |  | 2d → 0d |
| 1248 | Acero de refuerzo en nervios #3 | 2026-07-16 → 2026-07-20 (+4d) | 2026-07-18 → 2026-07-22 (+4d) |  | 2d → 0d |
| 1249 | Acero de refuerzo long. #3 | 2026-07-17 → 2026-07-21 (+4d) | 2026-07-21 → 2026-07-24 (+3d) |  | 3d → 1d |
| 1250 | Acero de refuerzo long. #4 | 2026-07-17 → 2026-07-21 (+4d) | 2026-07-21 → 2026-07-24 (+3d) |  | 3d → 1d |
| 1251 | Malla 66-10/10 losa de compresión | 2026-07-23 → 2026-07-28 (+5d) | 2026-07-27 → 2026-07-30 (+3d) |  | 2d → 0d |
| 1252 | Acero de Losa Maciza | 2026-07-16 → 2026-07-20 (+4d) | 2026-07-20 → 2026-07-23 (+3d) |  | 7d → 5d |
| 1253 | Caseton de 60x60x20cm | 2026-07-16 → 2026-07-20 (+4d) | 2026-07-18 → 2026-07-22 (+4d) |  | 6d → 4d |
| 1254 | Concreto losa de entrepiso f’c=200 | 2026-07-27 → 2026-07-30 (+3d) | 2026-07-28 → 2026-07-31 (+3d) |  | 2d → 0d |
| 1255 | Curado de concreto | 2026-07-28 → 2026-07-31 (+3d) | 2026-07-29 → 2026-08-01 (+3d) |  | 2d → 0d |
| 1256 | Cimbra losa de azotea | 2026-07-11 → 2026-07-15 (+4d) | 2026-07-17 → 2026-07-21 (+4d) |  | 3d → 1d |
| 1257 | Cimbra exterior corta losa | 2026-07-20 → 2026-07-23 (+3d) | 2026-07-23 → 2026-07-28 (+5d) |  | 4d → 2d |
| 1258 | Ramaleo poliducto eléctrico entrepiso | 2026-07-18 → 2026-07-22 (+4d) | 2026-07-21 → 2026-07-24 (+3d) |  | 141d → 139d |
| 1259 | Ramaleo hidráulico CPVC 3/4" | 2026-07-20 → 2026-07-23 (+3d) | 2026-07-22 → 2026-07-27 (+5d) |  | 2d → 0d |
| 1260 | Ramaleo hidráulico CPVC 1/2" | 2026-07-22 → 2026-07-27 (+5d) | 2026-07-23 → 2026-07-28 (+5d) |  | 2d → 0d |
| 1261 | Prueba hidráulica | 2026-07-22 → 2026-07-27 (+5d) | 2026-07-23 → 2026-07-28 (+5d) |  | 2d → 0d |
| 1262 | Ramaleo sanitario PVC 4" | 2026-07-20 → 2026-07-23 (+3d) | 2026-07-22 → 2026-07-27 (+5d) |  | 2d → 0d |
| 1263 | Ramaleo sanitario PVC 2" | 2026-07-22 → 2026-07-27 (+5d) | 2026-07-23 → 2026-07-28 (+5d) |  | 2d → 0d |
| 1264 | Prueba sanitaria | 2026-07-22 → 2026-07-27 (+5d) | 2026-07-23 → 2026-07-28 (+5d) |  | 2d → 0d |
| 1265 | **MUROS EN PLANTA ALTA, CASTILLOS Y CERRM.** | 2026-07-20 → 2026-07-23 (+3d) | 2026-08-17 → 2026-08-20 (+3d) |  | 3d → 1d |
| 1266 | Anclaje de castillos y Columnas PA | 2026-07-20 → 2026-07-23 (+3d) | 2026-07-24 → 2026-07-29 (+5d) |  | 3d → 1d |
| 1267 | Castillo K1 | 2026-07-29 → 2026-08-01 (+3d) | 2026-08-03 → 2026-08-06 (+3d) |  | 6d → 4d |
| 1268 | Castillo K2 | 2026-07-30 → 2026-08-03 (+4d) | 2026-08-04 → 2026-08-07 (+3d) |  | 5d → 3d |
| 1269 | Castillo K4 | 2026-08-03 → 2026-08-06 (+3d) | 2026-08-06 → 2026-08-10 (+4d) |  | 6d → 4d |
| 1270 | Castillo K5 | 2026-08-03 → 2026-08-06 (+3d) | 2026-08-06 → 2026-08-10 (+4d) |  | 6d → 4d |
| 1271 | Castillo K6 | 2026-08-03 → 2026-08-06 (+3d) | 2026-08-06 → 2026-08-10 (+4d) |  | 6d → 4d |
| 1272 | Refuerzo de muro | 2026-08-04 → 2026-08-07 (+3d) | 2026-08-07 → 2026-08-11 (+4d) |  | 5d → 3d |
| 1273 | Dala de cerramiento CR-1 | 2026-08-07 → 2026-08-11 (+4d) | 2026-08-12 → 2026-08-17 (+5d) |  | 5d → 3d |
| 1274 | Dala de cerramiento CR-2 | 2026-08-07 → 2026-08-11 (+4d) | 2026-08-12 → 2026-08-17 (+5d) |  | 5d → 3d |
| 1275 | Cadena block dala | 2026-08-12 → 2026-08-17 (+5d) | 2026-08-17 → 2026-08-20 (+3d) |  | 5d → 3d |
| 1276 | Muro de ladrillo aparente | 2026-07-29 → 2026-08-01 (+3d) | 2026-08-17 → 2026-08-20 (+3d) |  | 2d → 0d |
| 1277 | Muro de block planta alta | 2026-07-30 → 2026-08-03 (+4d) | 2026-08-17 → 2026-08-20 (+3d) |  | 2d → 0d |

| ID | Task | Start | Finish | Total float |
| --- | --- | --- | --- | --- |
| 1278 | Ramaleo electrico en Muros Planta Alta | 2026-08-07 → 2026-08-11 (+4d) | 2026-08-12 → 2026-08-17 (+5d) | 13d → 11d |
| 1279 | **LOSA AZOTEA** | 2026-08-17 → 2026-08-20 (+3d) | 2026-09-03 → 2026-09-08 (+5d) | 2d → 0d |
| 1280 | Cortalosa CL-1 | 2026-08-31 → 2026-09-03 (+3d) | 2026-09-01 → 2026-09-04 (+3d) | 2d → 0d |
| 1281 | Cortalosa CL-2 | 2026-08-31 → 2026-09-03 (+3d) | 2026-09-01 → 2026-09-04 (+3d) | 2d → 0d |
| 1282 | Vigueta pretensada V11-30 125 | 2026-08-17 → 2026-08-20 (+3d) | 2026-08-22 → 2026-08-26 (+4d) | 5d → 3d |
| 1283 | Vigueta pretensada V11-30 185 | 2026-08-17 → 2026-08-20 (+3d) | 2026-08-22 → 2026-08-26 (+4d) | 5d → 3d |
| 1284 | Vigueta pretensada V11-30 190 | 2026-08-17 → 2026-08-20 (+3d) | 2026-08-22 → 2026-08-26 (+4d) | 5d → 3d |
| 1285 | Vigueta pretensada V11-30 205 | 2026-08-19 → 2026-08-22 (+3d) | 2026-08-25 → 2026-08-28 (+3d) | 3d → 1d |
| 1286 | Vigueta pretensada V11-30 215 | 2026-08-19 → 2026-08-22 (+3d) | 2026-08-25 → 2026-08-28 (+3d) | 3d → 1d |
| 1287 | Vigueta pretensada V11-30 260 | 2026-08-20 → 2026-08-24 (+4d) | 2026-08-26 → 2026-08-29 (+3d) | 2d → 0d |
| 1288 | Vigueta pretensada V11-30 285 | 2026-08-20 → 2026-08-24 (+4d) | 2026-08-26 → 2026-08-29 (+3d) | 2d → 0d |
| 1289 | Vigueta pretensada V11-40 330 | 2026-08-20 → 2026-08-24 (+4d) | 2026-08-26 → 2026-08-29 (+3d) | 2d → 0d |
| 1290 | Vigueta pretensada V11-40 335 | 2026-08-20 → 2026-08-24 (+4d) | 2026-08-26 → 2026-08-29 (+3d) | 2d → 0d |
| 1291 | Vigueta pretensada V11-40 505 | 2026-08-20 → 2026-08-24 (+4d) | 2026-08-26 → 2026-08-29 (+3d) | 2d → 0d |
| 1292 | Bovedilla poliestireno azotea | 2026-08-26 → 2026-08-31 (+5d) | 2026-08-29 → 2026-09-02 (+4d) | 2d → 0d |
| 1293 | Malla 66-10/10 losa de compresión | 2026-08-31 → 2026-09-03 (+3d) | 2026-09-01 → 2026-09-04 (+3d) | 2d → 0d |
| 1294 | Concreto losa de azotea f’c=200 | 2026-09-02 → 2026-09-05 (+3d) | 2026-09-02 → 2026-09-07 (+5d) | 2d → 0d |
| 1295 | Curado de concreto | 2026-09-03 → 2026-09-07 (+4d) | 2026-09-03 → 2026-09-08 (+5d) | 2d → 0d |
| 1296 | Cimbra losa de azotea | 2026-08-17 → 2026-08-20 (+3d) | 2026-08-22 → 2026-08-26 (+4d) | 10d → 8d |
| 1297 | Ramaleo de poliducto para inst. electrica en azotea | 2026-08-31 → 2026-09-03 (+3d) | 2026-09-01 → 2026-09-04 (+3d) | 2d → 0d |
| 1298 | **PRETIL Y ACABADOS DE AZOTEA** | 2026-09-04 → 2026-09-08 (+4d) | 2026-09-29 → 2026-10-02 (+3d) | 2d → 0d |
| 1299 | Castillo K1 | 2026-09-07 → 2026-09-10 (+3d) | 2026-09-12 → 2026-09-17 (+5d) | 2d → 0d |
| 1300 | Dala de cerramiento en pretil | 2026-09-10 → 2026-09-14 (+4d) | 2026-09-15 → 2026-09-21 (+6d) | 2d → 0d |
| 1301 | Muro de block 12x15x40 | 2026-09-04 → 2026-09-08 (+4d) | 2026-09-10 → 2026-09-14 (+4d) | 2d → 0d |
| 1302 | Chaflán en azotea | 2026-09-12 → 2026-09-17 (+5d) | 2026-09-18 → 2026-09-23 (+5d) | 2d → 0d |
| 1303 | Diamante de entortado | 2026-09-12 → 2026-09-17 (+5d) | 2026-09-18 → 2026-09-23 (+5d) | 2d → 0d |
| 1304 | Aplanado exterior Mortermax fino | 2026-09-15 → 2026-09-21 (+6d) | 2026-09-23 → 2026-09-26 (+3d) | 2d → 0d |
| 1305 | Entortado de Losa | 2026-09-24 → 2026-09-28 (+4d) | 2026-09-29 → 2026-10-02 (+3d) | 2d → 0d |
| 1306 | Curado de concreto | 2026-09-23 → 2026-09-26 (+3d) | 2026-09-24 → 2026-09-28 (+4d) | 2d → 0d |
| 1307 | **PRIMERA LIMPIEZA DE OBRA** | 2026-09-04 → 2026-09-08 (+4d) | 2026-09-09 → 2026-09-12 (+3d) | 62d → 60d |
| 1308 | Primera limpieza de obra | 2026-09-04 → 2026-09-08 (+4d) | 2026-09-07 → 2026-09-10 (+3d) | 62d → 60d |
| 1309 | Primera carga y acarreo de escombro | 2026-09-07 → 2026-09-10 (+3d) | 2026-09-09 → 2026-09-12 (+3d) | 62d → 60d |
| 1310 | **IMPERMEABILIZACION** | 2026-09-29 → 2026-10-02 (+3d) | 2026-10-05 → 2026-10-08 (+3d) | 2d → 0d |
| 1311 | Impermeabilización de pretil Kover 5 años | 2026-09-29 → 2026-10-02 (+3d) | 2026-10-03 → 2026-10-07 (+4d) | 3d → 1d |
| 1312 | Impermeabilización de losa Kover 5 años | 2026-09-29 → 2026-10-02 (+3d) | 2026-10-05 → 2026-10-08 (+3d) | 2d → 0d |
| 1313 | **ALBAÑILERIA** | 2026-09-10 → 2026-09-14 (+4d) | 2026-11-28 → 2026-12-02 (+4d) | 21d → 19d |
| 1314 | Lavadero de granito | 2026-10-26 → 2026-10-29 (+3d) | 2026-10-29 → 2026-11-03 (+5d) | 61d → 59d |
| 1315 | Ranurado y resane general inst. en muros | 2026-10-02 → 2026-10-06 (+4d) | 2026-10-06 → 2026-10-09 (+3d) | 4d → 2d |
| 1316 | Ranurado y resane eléctrico 1/2 a 3/4 | 2026-10-02 → 2026-10-06 (+4d) | 2026-10-06 → 2026-10-09 (+3d) | 4d → 2d |
| 1317 | Ranurado y resane hidráulico 1/2 a 1 | 2026-10-05 → 2026-10-08 (+3d) | 2026-10-07 → 2026-10-12 (+5d) | 3d → 1d |
| 1318 | Resane sanitario tubería 2 | 2026-10-05 → 2026-10-08 (+3d) | 2026-10-07 → 2026-10-12 (+5d) | 3d → 1d |
| 1319 | Resane sanitario tubería 4 | 2026-10-05 → 2026-10-08 (+3d) | 2026-10-07 → 2026-10-12 (+5d) | 3d → 1d |
| 1320 | Resane minisplit tubería 3 | 2026-10-05 → 2026-10-08 (+3d) | 2026-10-07 → 2026-10-12 (+5d) | 3d → 1d |
| 1321 | Ramaleo hidráulico exterior CPVC 1 1/4 | 2026-10-05 → 2026-10-08 (+3d) | 2026-10-08 → 2026-10-13 (+5d) | 2d → 0d |
| 1322 | Ramaleo hidráulico exterior CPVC 1 | 2026-10-05 → 2026-10-08 (+3d) | 2026-10-07 → 2026-10-12 (+5d) | 2d → 0d |
| 1323 | Ramaleo hidráulico exterior CPVC 3/4 | 2026-10-07 → 2026-10-12 (+5d) | 2026-10-09 → 2026-10-14 (+5d) | 2d → 0d |
| 1324 | Ramaleo hidráulico exterior CPVC 1/2 | 2026-10-07 → 2026-10-12 (+5d) | 2026-10-09 → 2026-10-14 (+5d) | 2d → 0d |
| 1325 | Prueba hidráulica | 2026-10-09 → 2026-10-14 (+5d) | 2026-10-12 → 2026-10-15 (+3d) | 2d → 0d |
| 1326 | Ramaleo sanitario exterior PVC 4 | 2026-10-05 → 2026-10-08 (+3d) | 2026-10-09 → 2026-10-14 (+5d) | 2d → 0d |
| 1327 | Ramaleo sanitario exterior PVC 2 | 2026-10-06 → 2026-10-09 (+3d) | 2026-10-09 → 2026-10-14 (+5d) | 2d → 0d |
| 1328 | Prueba sanitaria | 2026-10-09 → 2026-10-14 (+5d) | 2026-10-12 → 2026-10-15 (+3d) | 2d → 0d |
| 1329 | Centro de carga muros PB | 2026-10-08 → 2026-10-13 (+5d) | 2026-10-14 → 2026-10-17 (+3d) | 4d → 2d |
| 1330 | Firme de concreto 8 cm | 2026-10-12 → 2026-10-15 (+3d) | 2026-10-16 → 2026-10-20 (+4d) | 55d → 53d |
| 1331 | Curado de concreto | 2026-10-16 → 2026-10-20 (+4d) | 2026-10-17 → 2026-10-21 (+4d) | 55d → 53d |
| 1332 | Cisterna 2800 L con instalación | 2026-09-10 → 2026-09-14 (+4d) | 2026-10-03 → 2026-10-07 (+4d) | 61d → 59d |
| 1333 | Banqueta y huellas de concreto | 2026-10-19 → 2026-10-22 (+3d) | 2026-10-28 → 2026-11-02 (+5d) | 38d → 36d |
| 1334 | Curado de concreto | 2026-10-29 → 2026-11-02 (+4d) | 2026-10-29 → 2026-11-03 (+5d) | 38d → 36d |
| 1335 | Número oficial | 2026-11-27 → 2026-12-01 (+4d) | 2026-11-28 → 2026-12-02 (+4d) | 38d → 36d |
| 1336 | Detallado de rodapié exterior | 2026-10-14 → 2026-10-17 (+3d) | 2026-10-19 → 2026-10-22 (+3d) | 70d → 68d |
| 1337 | Detalle de losas y volados acabado fino | 2026-10-05 → 2026-10-08 (+3d) | 2026-10-09 → 2026-10-14 (+5d) | 6d → 4d |
| 1338 | Detalle fino en muros interiores | 2026-10-07 → 2026-10-12 (+5d) | 2026-10-14 → 2026-10-17 (+3d) | 3d → 1d |
| 1339 | Jardín interior bajo escalera con pozo de absorción | 2026-10-05 → 2026-10-08 (+3d) | 2026-10-20 → 2026-10-23 (+3d) | 6d → 4d |
| 1340 | **ACABADOS EN FACHADA A** | 2026-09-29 → 2026-10-02 (+3d) | 2026-11-27 → 2026-12-01 (+4d) | 38d → 36d |
| 1341 | Aplanado grueso fachada | 2026-09-29 → 2026-10-02 (+3d) | 2026-10-14 → 2026-10-17 (+3d) | 44d → 42d |
| 1342 | Aplanado fino estuco fachada | 2026-10-07 → 2026-10-12 (+5d) | 2026-10-20 → 2026-10-23 (+3d) | 44d → 42d |
| 1343 | Pintura acrílica 1-0102P | 2026-11-13 → 2026-11-19 (+6d) | 2026-11-25 → 2026-11-28 (+3d) | 40d → 38d |
| 1344 | Pintura acrílica 1-1404D | 2026-11-13 → 2026-11-19 (+6d) | 2026-11-27 → 2026-12-01 (+4d) | 38d → 36d |
| 1345 | Cantera 40x60cm | 2026-10-20 → 2026-10-23 (+3d) | 2026-11-06 → 2026-11-10 (+4d) | 44d → 42d |
| 1346 | Lambrin de permabase 1 cara | 2026-10-14 → 2026-10-17 (+3d) | 2026-10-17 → 2026-10-21 (+4d) | 51d → 49d |
| 1347 | Enchapado de Permabase | 2026-10-17 → 2026-10-21 (+4d) | 2026-10-22 → 2026-10-26 (+4d) | 51d → 49d |

| ID | Task | Start | Finish | Total float |
| --- | --- | --- | --- | --- |
| 1348 | Cubierta de Permabase | 2026-10-22 → 2026-10-27 (+5d) | 2026-10-28 → 2026-11-02 (+5d) | 51d → 49d |
| 1349 | **APLANADOS Y PINTURA** | 2026-10-05 → 2026-10-08 (+3d) | 2026-12-23 → 2026-12-30 (+7d) | 4d → 2d |
| 1350 | Yeso pulido en muros | 2026-10-15 → 2026-10-19 (+4d) | 2026-11-02 → 2026-11-05 (+3d) | 2d → 0d |
| 1351 | Aplanado en muros enjarre grueso | 2026-10-05 → 2026-10-08 (+3d) | 2026-10-12 → 2026-10-15 (+3d) | 5d → 3d |
| 1352 | Pintura vinílica OR-W13 SHOELACE | 2026-12-08 → 2026-12-11 (+3d) | 2026-12-23 → 2026-12-30 (+7d) | 2d → 0d |
| 1353 | Pintura vinílica PPUI5-13 Creamy M. | 2026-12-01 → 2026-12-04 (+3d) | 2026-12-14 → 2026-12-17 (+3d) | 10d → 8d |
| 1354 | Pintura vinílica MD-06 Nano White | 2026-12-01 → 2026-12-04 (+3d) | 2026-12-11 → 2026-12-15 (+4d) | 12d → 10d |
| 1355 | Yeso pulido en plafones | 2026-10-05 → 2026-10-08 (+3d) | 2026-10-17 → 2026-10-21 (+4d) | 4d → 2d |
| 1356 | Perfilado de puertas y ventanas | 2026-10-20 → 2026-10-23 (+3d) | 2026-10-24 → 2026-10-28 (+4d) | 65d → 63d |
| 1357 | **PISOS Y AZULEJOS** | 2026-10-27 → 2026-10-30 (+3d) | 2026-11-26 → 2026-11-30 (+4d) | 2d → 0d |
| 1358 | **AREA SOCIAL** | 2026-10-30 → 2026-11-03 (+4d) | 2026-11-19 → 2026-11-23 (+4d) | 2d → 0d |
| 1359 | Piso Adhara 44X89 | 2026-10-30 → 2026-11-03 (+4d) | 2026-11-18 → 2026-11-21 (+3d) | 2d → 0d |
| 1360 | Zoclo Adhara 44X89 | 2026-11-11 → 2026-11-17 (+6d) | 2026-11-19 → 2026-11-23 (+4d) | 19d → 17d |
| 1361 | **RECAMARAS** | 2026-10-27 → 2026-10-30 (+3d) | 2026-11-05 → 2026-11-09 (+4d) | 2d → 0d |
| 1362 | Acabado aparente de pisos - pulido | 2026-10-27 → 2026-10-30 (+3d) | 2026-11-05 → 2026-11-09 (+4d) | 2d → 0d |
| 1363 | **BAÑOS** | 2026-10-28 → 2026-10-31 (+3d) | 2026-11-19 → 2026-11-23 (+4d) | 13d → 11d |
| 1364 | Azulejo Mod. Ornamenta 60x30 | 2026-11-05 → 2026-11-09 (+4d) | 2026-11-11 → 2026-11-17 (+6d) | 13d → 11d |
| 1365 | Impermeabilización en regadera | 2026-11-04 → 2026-11-07 (+3d) | 2026-11-06 → 2026-11-10 (+4d) | 13d → 11d |
| 1366 | Piso Mod. Valparaiso 20x20 | 2026-11-11 → 2026-11-17 (+6d) | 2026-11-18 → 2026-11-21 (+3d) | 13d → 11d |
| 1367 | Zoclo Adhara 44X89 | 2026-11-17 → 2026-11-20 (+3d) | 2026-11-19 → 2026-11-23 (+4d) | 46d → 44d |
| 1368 | Piso Adhara 44X89 | 2026-11-11 → 2026-11-17 (+6d) | 2026-11-17 → 2026-11-20 (+3d) | 48d → 46d |
| 1369 | Fabricacion de nicho decorativo en baños | 2026-10-28 → 2026-10-31 (+3d) | 2026-11-04 → 2026-11-07 (+3d) | 13d → 11d |
| 1370 | Sardinel en regadera | 2026-11-11 → 2026-11-17 (+6d) | 2026-11-18 → 2026-11-21 (+3d) | 47d → 45d |
| 1371 | **ESCALERA** | 2026-11-13 → 2026-11-19 (+6d) | 2026-11-26 → 2026-11-30 (+4d) | 2d → 0d |
| 1372 | Piso Adhara 44X89 | 2026-11-13 → 2026-11-19 (+6d) | 2026-11-24 → 2026-11-27 (+3d) | 2d → 0d |
| 1373 | Zoclo Adhara 44X89 | 2026-11-21 → 2026-11-25 (+4d) | 2026-11-26 → 2026-11-30 (+4d) | 2d → 0d |
| 1374 | **EXTERIOR** | 2026-10-12 → 2026-10-15 (+3d) | 2026-10-15 → 2026-10-19 (+4d) | 7d → 5d |
| 1375 | Rastrilleo, afine y nivelado de tierra | 2026-10-12 → 2026-10-15 (+3d) | 2026-10-15 → 2026-10-19 (+4d) | 7d → 5d |
| 1376 | **SEGUNDA LIMPIEZA DE OBRA** | 2026-11-26 → 2026-11-30 (+4d) | 2026-12-01 → 2026-12-04 (+3d) | 25d → 23d |
| 1377 | Segunda limpieza de obra | 2026-11-26 → 2026-11-30 (+4d) | 2026-11-28 → 2026-12-02 (+4d) | 25d → 23d |
| 1378 | Segunda carga y acarreo de escombro | 2026-11-28 → 2026-12-02 (+4d) | 2026-12-01 → 2026-12-04 (+3d) | 25d → 23d |
| 1379 | **CANCELERIA PUERTAS Y VENTANAS DE ALUMINIO** | 2026-11-13 → 2026-11-19 (+6d) | 2026-12-07 → 2026-12-10 (+3d) | 3d → 1d |
| 1380 | Fijo medidas 0.30x4.90m | 2026-11-18 → 2026-11-21 (+3d) | 2026-11-26 → 2026-11-30 (+4d) | 11d → 9d |
| 1381 | Ventana Corrediza 1.80x1.60m | 2026-11-13 → 2026-11-19 (+6d) | 2026-11-20 → 2026-11-24 (+4d) | 16d → 14d |
| 1382 | Ventana Corrediza 0.60x0.40m | 2026-11-18 → 2026-11-21 (+3d) | 2026-11-23 → 2026-11-26 (+3d) | 14d → 12d |
| 1383 | Ventana Corrediza 1.54x0.50m | 2026-11-18 → 2026-11-21 (+3d) | 2026-11-23 → 2026-11-26 (+3d) | 14d → 12d |
| 1384 | Fijo medidas 1.40x2.50m | 2026-11-21 → 2026-11-25 (+4d) | 2026-11-26 → 2026-11-30 (+4d) | 5d → 3d |
| 1385 | Ventana Corrediza 1.80x1.50m | 2026-11-24 → 2026-11-27 (+3d) | 2026-11-28 → 2026-12-02 (+4d) | 3d → 1d |
| 1386 | Ventana Corrediza 1.40x1.60m | 2026-11-24 → 2026-11-27 (+3d) | 2026-11-28 → 2026-12-02 (+4d) | 3d → 1d |
| 1387 | Ventana Corrediza 0.95x0.40m | 2026-11-24 → 2026-11-27 (+3d) | 2026-11-28 → 2026-12-02 (+4d) | 3d → 1d |
| 1388 | Puerta corrediza 3.85x2.10m | 2026-11-26 → 2026-11-30 (+4d) | 2026-12-03 → 2026-12-08 (+5d) | 5d → 3d |
| 1389 | Barandal de Cristal Templado | 2026-11-28 → 2026-12-02 (+4d) | 2026-12-07 → 2026-12-10 (+3d) | 3d → 1d |
| 1390 | **CARPINTERIA, PUERTAS EXTERIORES E INTERIORES** | 2026-11-26 → 2026-11-30 (+4d) | 2026-12-08 → 2026-12-11 (+3d) | 2d → 0d |
| 1391 | Puerta P-01 de seguridad | 2026-11-26 → 2026-11-30 (+4d) | 2026-12-02 → 2026-12-07 (+5d) | 6d → 4d |
| 1392 | Puerta P-01 interior | 2026-11-26 → 2026-11-30 (+4d) | 2026-12-07 → 2026-12-10 (+3d) | 3d → 1d |
| 1393 | Puerta P-02 interior | 2026-11-26 → 2026-11-30 (+4d) | 2026-12-07 → 2026-12-10 (+3d) | 3d → 1d |
| 1394 | Puerta P-03 interior | 2026-12-02 → 2026-12-07 (+5d) | 2026-12-08 → 2026-12-11 (+3d) | 2d → 0d |
| 1395 | Puerta P-04 interior | 2026-12-02 → 2026-12-07 (+5d) | 2026-12-08 → 2026-12-11 (+3d) | 2d → 0d |
| 1396 | **VOLADOS, BARANDAL Y ESCALERA** | 2026-10-20 → 2026-10-23 (+3d) | 2026-12-01 → 2026-12-04 (+3d) | 10d → 8d |
| 1397 | Barandal de Herreria en escalera | 2026-11-06 → 2026-11-10 (+4d) | 2026-11-11 → 2026-11-17 (+6d) | 25d → 23d |
| 1398 | Escalera de herreria | 2026-10-20 → 2026-10-23 (+3d) | 2026-11-11 → 2026-11-17 (+6d) | 10d → 8d |
| 1399 | Techumbre en acceso Principal | 2026-11-05 → 2026-11-09 (+4d) | 2026-11-24 → 2026-11-27 (+3d) | 16d → 14d |
| 1400 | Techumbre en 1.80x0.50m | 2026-11-05 → 2026-11-09 (+4d) | 2026-11-13 → 2026-11-19 (+6d) | 10d → 8d |
| 1401 | Techumbre en 1.40x0.50m | 2026-11-13 → 2026-11-19 (+6d) | 2026-11-24 → 2026-11-27 (+3d) | 10d → 8d |
| 1402 | Imper con manto prefabricado | 2026-11-19 → 2026-11-23 (+4d) | 2026-11-25 → 2026-11-28 (+3d) | 10d → 8d |
| 1403 | Plafon hoja tablaroca std | 2026-11-25 → 2026-11-28 (+3d) | 2026-12-01 → 2026-12-04 (+3d) | 10d → 8d |
| 1404 | Acabado Woodstock en parte inf. Cubierta | 2026-11-25 → 2026-11-28 (+3d) | 2026-12-01 → 2026-12-04 (+3d) | 10d → 8d |
| 1405 | **INSTALACION ELECTRICA** | 2026-10-28 → 2026-10-31 (+3d) | 2026-11-18 → 2026-11-21 (+3d) | 31d → 29d |
| 1406 | Alimentación eléctrica base a centro de carga | 2026-11-02 → 2026-11-05 (+3d) | 2026-11-07 → 2026-11-11 (+4d) | 35d → 33d |
| 1407 | Interruptor termomagnético 1x20 A | 2026-11-07 → 2026-11-11 (+4d) | 2026-11-09 → 2026-11-12 (+3d) | 35d → 33d |
| 1408 | Interruptor termomagnético 2x20 A | 2026-11-07 → 2026-11-11 (+4d) | 2026-11-09 → 2026-11-12 (+3d) | 35d → 33d |
| 1409 | Salida para apagador 3 vías | 2026-10-28 → 2026-10-31 (+3d) | 2026-11-02 → 2026-11-05 (+3d) | 31d → 29d |
| 1410 | Salida para apagador doble | 2026-11-02 → 2026-11-05 (+3d) | 2026-11-05 → 2026-11-09 (+4d) | 33d → 31d |
| 1411 | Salida para apagador sencillo | 2026-11-02 → 2026-11-05 (+3d) | 2026-11-05 → 2026-11-09 (+4d) | 33d → 31d |
| 1412 | Salida de alumbrado en losa | 2026-11-02 → 2026-11-05 (+3d) | 2026-11-07 → 2026-11-11 (+4d) | 31d → 29d |
| 1413 | Salida para contacto exterior doble | 2026-11-02 → 2026-11-05 (+3d) | 2026-11-04 → 2026-11-07 (+3d) | 34d → 32d |
| 1414 | Salida para contacto 220 V | 2026-11-04 → 2026-11-07 (+3d) | 2026-11-07 → 2026-11-11 (+4d) | 31d → 29d |
| 1415 | Salida para contacto doble | 2026-11-04 → 2026-11-07 (+3d) | 2026-11-10 → 2026-11-13 (+3d) | 34d → 32d |
| 1416 | Salida para contacto doble área húmeda | 2026-11-07 → 2026-11-11 (+4d) | 2026-11-10 → 2026-11-13 (+3d) | 34d → 32d |
| 1417 | Salida TV / telefonía / intercom | 2026-11-07 → 2026-11-11 (+4d) | 2026-11-12 → 2026-11-18 (+6d) | 32d → 30d |

| ID | Task | Start | Finish | Total float |
| --- | --- | --- | --- | --- |
| 1418 | Extractor 4 baño | 2026-11-07 → 2026-11-11 (+4d) | 2026-11-13 → 2026-11-19 (+6d) | 31d → 29d |
| 1419 | Prueba eléctrica | 2026-11-13 → 2026-11-19 (+6d) | 2026-11-18 → 2026-11-21 (+3d) | 31d → 29d |
| 1420 | **INSTALACIÓN HIDRO-SANITARIA** | 2026-10-12 → 2026-10-15 (+3d) | 2026-10-24 → 2026-10-28 (+4d) | 2d → 0d |
| 1421 | Tubería condensados PVC 1 | 2026-10-12 → 2026-10-15 (+3d) | 2026-10-17 → 2026-10-21 (+4d) | 2d → 0d |
| 1422 | Tubería sanitaria PVC 4 | 2026-10-12 → 2026-10-15 (+3d) | 2026-10-17 → 2026-10-21 (+4d) | 10d → 8d |
| 1423 | Coladera H-444 | 2026-10-17 → 2026-10-21 (+4d) | 2026-10-19 → 2026-10-22 (+3d) | 10d → 8d |
| 1424 | Caja PVC para lavadora | 2026-10-12 → 2026-10-15 (+3d) | 2026-10-15 → 2026-10-19 (+4d) | 2d → 0d |
| 1425 | Salida para secadora PVC 4 | 2026-10-12 → 2026-10-15 (+3d) | 2026-10-15 → 2026-10-19 (+4d) | 2d → 0d |
| 1426 | Salida hidráulica para boiler | 2026-10-12 → 2026-10-15 (+3d) | 2026-10-14 → 2026-10-17 (+3d) | 3d → 1d |
| 1427 | Salida hidráulica para llave de jardín | 2026-10-12 → 2026-10-15 (+3d) | 2026-10-15 → 2026-10-19 (+4d) | 2d → 0d |
| 1428 | Salida hidráulica para lavabo | 2026-10-12 → 2026-10-15 (+3d) | 2026-10-16 → 2026-10-20 (+4d) | 2d → 0d |
| 1429 | Salida hidráulica para purificación | 2026-10-12 → 2026-10-15 (+3d) | 2026-10-16 → 2026-10-20 (+4d) | 2d → 0d |
| 1430 | Salida sanitaria para lavabo | 2026-10-14 → 2026-10-17 (+3d) | 2026-10-16 → 2026-10-20 (+4d) | 2d → 0d |
| 1431 | Salida hidráulica para lavadero | 2026-10-14 → 2026-10-17 (+3d) | 2026-10-16 → 2026-10-20 (+4d) | 2d → 0d |
| 1432 | Salida sanitaria para lavadero | 2026-10-15 → 2026-10-19 (+4d) | 2026-10-17 → 2026-10-21 (+4d) | 2d → 0d |
| 1433 | Salida hidráulica para lavadora | 2026-10-15 → 2026-10-19 (+4d) | 2026-10-17 → 2026-10-21 (+4d) | 2d → 0d |
| 1434 | Salida sanitaria para lavadora | 2026-10-16 → 2026-10-20 (+4d) | 2026-10-19 → 2026-10-22 (+3d) | 2d → 0d |
| 1435 | Salida hidráulica para regadera | 2026-10-16 → 2026-10-20 (+4d) | 2026-10-22 → 2026-10-26 (+4d) | 7d → 5d |
| 1436 | Salida sanitaria para regadera | 2026-10-16 → 2026-10-20 (+4d) | 2026-10-21 → 2026-10-24 (+3d) | 8d → 6d |
| 1437 | Salida hidráulica para WC | 2026-10-14 → 2026-10-17 (+3d) | 2026-10-16 → 2026-10-20 (+4d) | 2d → 0d |
| 1438 | Salida sanitaria para WC | 2026-10-16 → 2026-10-20 (+4d) | 2026-10-21 → 2026-10-24 (+3d) | 2d → 0d |
| 1439 | Salida hidráulica para zinc | 2026-10-16 → 2026-10-20 (+4d) | 2026-10-21 → 2026-10-24 (+3d) | 2d → 0d |
| 1440 | Salida sanitaria para zinc | 2026-10-19 → 2026-10-22 (+3d) | 2026-10-22 → 2026-10-26 (+4d) | 2d → 0d |
| 1441 | Tubo para ventila de baño 2 | 2026-10-12 → 2026-10-15 (+3d) | 2026-10-17 → 2026-10-21 (+4d) | 2d → 0d |
| 1442 | Tubo para minisplit PVC 3 | 2026-10-17 → 2026-10-21 (+4d) | 2026-10-23 → 2026-10-27 (+4d) | 2d → 0d |
| 1443 | Cuadro de medición | 2026-10-15 → 2026-10-19 (+4d) | 2026-10-21 → 2026-10-24 (+3d) | 7d → 5d |
| 1444 | Pozo de absorción 0.50x0.50x0.50 | 2026-10-15 → 2026-10-19 (+4d) | 2026-10-19 → 2026-10-22 (+3d) | 10d → 8d |
| 1445 | Prueba sanitaria final | 2026-10-23 → 2026-10-28 (+5d) | 2026-10-24 → 2026-10-28 (+4d) | 6d → 4d |
| 1446 | Prueba hidrostática final | 2026-10-22 → 2026-10-27 (+5d) | 2026-10-23 → 2026-10-27 (+4d) | 7d → 5d |
| 1447 | Salida válvula control 19 mm | 2026-10-21 → 2026-10-26 (+5d) | 2026-10-22 → 2026-10-26 (+4d) | 7d → 5d |
| 1448 | Salida válvula control 13 mm | 2026-10-21 → 2026-10-26 (+5d) | 2026-10-22 → 2026-10-26 (+4d) | 7d → 5d |
| 1449 | Salida hidráulica para tanque hidroneumático | 2026-10-15 → 2026-10-19 (+4d) | 2026-10-19 → 2026-10-22 (+3d) | 10d → 8d |
| 1450 | Salida hidráulica para Active Driver | 2026-10-15 → 2026-10-19 (+4d) | 2026-10-19 → 2026-10-22 (+3d) | 10d → 8d |
| 1451 | **INSTALACION DE GAS** | 2026-10-08 → 2026-10-13 (+5d) | 2026-10-19 → 2026-10-22 (+3d) | 38d → 36d |
| 1452 | Ramaleo para gas 1/2 | 2026-10-13 → 2026-10-16 (+3d) | 2026-10-19 → 2026-10-22 (+3d) | 38d → 36d |
| 1453 | Excavación a mano material tipo B | 2026-10-08 → 2026-10-13 (+5d) | 2026-10-13 → 2026-10-16 (+3d) | 38d → 36d |
| 1454 | **MUEBLES SANITARIOS** | 2026-11-18 → 2026-11-21 (+3d) | 2026-12-23 → 2026-12-30 (+7d) | 14d → 12d |
| 1455 | WC completo Austral | 2026-11-18 → 2026-11-21 (+3d) | 2026-11-20 → 2026-11-24 (+4d) | 16d → 14d |
| 1456 | Lavabo Senna con pedestal | 2026-11-18 → 2026-11-21 (+3d) | 2026-11-23 → 2026-11-26 (+3d) | 14d → 12d |
| 1457 | Tarja / lavabo combo Guinea 80x45 | 2026-11-18 → 2026-11-21 (+3d) | 2026-11-20 → 2026-11-24 (+4d) | 45d → 43d |
| 1458 | Regadera con monomando | 2026-11-20 → 2026-11-24 (+4d) | 2026-11-24 → 2026-11-27 (+3d) | 13d → 11d |
| 1459 | Coladera inserto cerámico | 2026-11-21 → 2026-11-25 (+4d) | 2026-11-24 → 2026-11-27 (+3d) | 13d → 11d |
| 1460 | Toallero sencillo | 2026-12-23 → 2026-12-29 (+6d) | 2026-12-23 → 2026-12-30 (+7d) | 2d → 0d |
| 1461 | Toallero barra | 2026-12-23 → 2026-12-29 (+6d) | 2026-12-23 → 2026-12-30 (+7d) | 2d → 0d |
| 1462 | Portapapel | 2026-12-23 → 2026-12-29 (+6d) | 2026-12-23 → 2026-12-30 (+7d) | 2d → 0d |
| 1463 | Gancho baño | 2026-12-23 → 2026-12-29 (+6d) | 2026-12-23 → 2026-12-30 (+7d) | 2d → 0d |
| 1464 | **EQUIPAMIENTO** | 2026-10-02 → 2026-10-06 (+4d) | 2026-10-09 → 2026-10-14 (+5d) | 61d → 59d |
| 1465 | Electronivel Rotoplas 5 m | 2026-10-03 → 2026-10-07 (+4d) | 2026-10-06 → 2026-10-09 (+3d) | 64d → 62d |
| 1466 | Manómetro | 2026-10-03 → 2026-10-07 (+4d) | 2026-10-05 → 2026-10-08 (+3d) | 65d → 63d |
| 1467 | Interruptor de presión 30-50 PSI | 2026-10-03 → 2026-10-07 (+4d) | 2026-10-05 → 2026-10-08 (+3d) | 65d → 63d |
| 1468 | Tanque hidroneumático FPS-24LX | 2026-10-03 → 2026-10-07 (+4d) | 2026-10-07 → 2026-10-12 (+5d) | 61d → 59d |
| 1469 | Bomba sumergible Dominator 1.2 HP | 2026-10-07 → 2026-10-12 (+5d) | 2026-10-09 → 2026-10-14 (+5d) | 61d → 59d |
| 1470 | Cisterna prefabricada 2800 L | 2026-10-02 → 2026-10-06 (+4d) | 2026-10-03 → 2026-10-07 (+4d) | 61d → 59d |
| 1471 | **LUMINARIAS** | 2026-11-07 → 2026-11-11 (+4d) | 2026-11-13 → 2026-11-19 (+6d) | 31d → 29d |
| 1472 | Roseta cerámica | 2026-11-07 → 2026-11-11 (+4d) | 2026-11-11 → 2026-11-17 (+6d) | 33d → 31d |
| 1473 | Luminaria lagartijera LED | 2026-11-07 → 2026-11-11 (+4d) | 2026-11-11 → 2026-11-17 (+6d) | 33d → 31d |
| 1474 | Spot 6W Tecnolite | 2026-11-07 → 2026-11-11 (+4d) | 2026-11-11 → 2026-11-17 (+6d) | 33d → 31d |
| 1475 | Spot 7W Tecnolite | 2026-11-07 → 2026-11-11 (+4d) | 2026-11-11 → 2026-11-17 (+6d) | 33d → 31d |
| 1476 | Arbotante exterior | 2026-11-07 → 2026-11-11 (+4d) | 2026-11-10 → 2026-11-13 (+3d) | 31d → 29d |
| 1477 | Estaca LED exterior | 2026-11-10 → 2026-11-13 (+3d) | 2026-11-13 → 2026-11-19 (+6d) | 31d → 29d |
| 1478 | Tira LED | 2026-11-10 → 2026-11-13 (+3d) | 2026-11-13 → 2026-11-19 (+6d) | 31d → 29d |
| 1479 | Spot exterior 50W | 2026-11-07 → 2026-11-11 (+4d) | 2026-11-10 → 2026-11-13 (+3d) | 34d → 32d |
| 1480 | **TIMBRE** | 2026-11-09 → 2026-11-12 (+3d) | 2026-11-11 → 2026-11-17 (+6d) | 33d → 31d |
| 1481 | Timbre inalámbrico con bocina | 2026-11-09 → 2026-11-12 (+3d) | 2026-11-11 → 2026-11-17 (+6d) | 33d → 31d |
| 1482 | **OBRA EXTERIOR - BARDA** | 2026-10-15 → 2026-10-19 (+4d) | 2026-11-06 → 2026-11-10 (+4d) | 39d → 37d |
| 1483 | Murete convencional | 2026-10-21 → 2026-10-26 (+5d) | 2026-10-27 → 2026-10-30 (+3d) | 45d → 43d |
| 1484 | Barda de block aparente | 2026-10-15 → 2026-10-19 (+4d) | 2026-11-06 → 2026-11-10 (+4d) | 39d → 37d |
| 1485 | **TERCER LIMPIEZA DE OBRA** | 2026-12-26 → 2026-12-30 (+4d) | 2027-01-18 → 2027-01-21 (+3d) | 2d → 0d |
| 1486 | Limpieza fina para entrega | 2026-12-26 → 2026-12-30 (+4d) | 2027-01-04 → 2027-01-07 (+3d) | 2d → 0d |
| 1487 | Tercera limpieza de obra | 2027-01-04 → 2027-01-07 (+3d) | 2027-01-11 → 2027-01-14 (+3d) | 2d → 0d |

| ID | Task | Start | Finish | Complete | Total float |
| --- | --- | --- | --- | --- | --- |
| 1488 | Tercera carga y acarreo de escombro | 2027-01-11 → 2027-01-14 (+3d) | 2027-01-18 → 2027-01-21 (+3d) |  | 2d → 0d |
| 1489 | **LOTE 22 M-663 CORSAC-B** | 2026-06-10 A |  |  | 0d → 1d |
| 1490 | **HITOS IMPORTANTES DEL LOTE** | 2026-06-10 A |  |  | 0d → 1d |
| 1491 | Inicio del Lote-22 M-663 Corsac-B | 2026-06-10 A | 2026-06-10 A | 0% → 100% | 0d → none |
| 1496 | **TRABAJOS PRELIMINARES** | 2026-06-10 A | 2026-06-12 A | 0% → 100% | 0d → none |
| 1497 | Trazo y nivelación | 2026-06-10 A | 2026-06-12 A | 0% → 100% | 0d → none |
| 1498 | **EXCAVACIONES** | 2026-06-12 A |  | 0% → 25% | 0d → 1d |
| 1499 | Excavación a mano material tipo B | 2026-06-12 A |  | 0% → 38% | 0d → 1d |
| 1500 | Acarreo en carretilla 20 m | 2026-06-13 A |  | 0% → 6% | 0d → 1d |

## Version 8 (data date 2026-06-20, saved 2026-06-18)

Note of the change: Programa de Obra: reprograma Gantt al corte de la semana actual

Last finish stays 2027-01-21. Complete tasks 103 → 160.

Changed:

| ID | Task | Start | Finish | Complete | Total float |
| --- | --- | --- | --- | --- | --- |
| 1 | **ALTOZANO - METTA - 6 CASAS** |  |  | 4% → 7% |  |
| 10 | **LOTE 04 M-661 ARTICO-A** |  |  | 12% → 16% |  |
| 49 | **MUROS, PLANTA BAJA. CASTILLOS Y CERRAMIENTOS** |  |  | 47% → 86% |  |
| 51 | Castillo K1 |  | 2026-06-16 A | 84% → 100% | 0.12d → none |
| 52 | Castillo K2 |  | 2026-06-16 A | 84% → 100% | 166d → none |
| 53 | Castillo K3 |  | 2026-06-17 A | 4% → 100% | 162d → none |
| 54 | Castillo K4 |  | 2026-06-17 A | 4% → 100% | 162d → none |
| 55 | Castillo K5 | 2026-06-16 A | 2026-06-19 A | 0% → 100% | 162d → none |
| 56 | Refuerzo de muro K6 | 2026-06-17 A |  | 0% → 92% |  |
| 57 | Columna C1 |  | 2026-06-16 A | 84% → 100% | 3.12d → none |
| 58 | Columna C2 |  | 2026-06-19 A | 39% → 100% | 167d → none |
| 59 | Dala de cerramiento CR-1 | 2026-06-17 A |  | 0% → 69% |  |
| 60 | Dala de cerramiento CR-2 | 2026-06-17 A |  | 0% → 92% |  |
| 62 | Muro de ladrillo aparente |  |  | 34% → 72% |  |
| 63 | Muro de block planta baja |  |  | 24% → 67% |  |
| 269 | **LOTE 02 M-661 CORSAC-B** |  |  | 5% → 6% |  |
| 272 | Colado de Losa de Cimentación | 2026-06-16 A | 2026-06-16 A | 0% → 100% | 170d → none |
| 281 | **CIMENTACION** |  | 2026-06-17 A | 90% → 100% | 9d → none |
| 300 | Malla electrosoldada 6-6/8-8 |  | 2026-06-15 A | 56% → 100% | 9d → none |
| 303 | Colado losa de cimentación f’c=200 | 2026-06-15 A | 2026-06-16 A | 0% → 100% | 9d → none |
| 304 | Curado de concreto | 2026-06-16 A | 2026-06-17 A | 0% → 100% | 9d → none |
| 305 | Acero zapata ZT-1 |  | 2026-06-15 A | 78% → 100% | 9d → none |
| 306 | Acero zapata ZT-2 |  | 2026-06-15 A | 78% → 100% | 9d → none |
| 307 | **MUROS, PLANTA BAJA. CASTILLOS Y CERRAMIENTOS** |  |  | 3% → 18% |  |
| 308 | Anclaje de castillos y Columnas PB |  | 2026-06-17 A | 43% → 100% | 157d → none |
| 309 | Castillo K1 | 2026-06-17 A |  | 0% → 69% | 157d → 0.75d |
| 310 | Castillo K3 | 2026-06-19 A |  | 0% → 25% |  |
| 311 | Castillo K4 | 2026-06-19 A |  | 0% → 25% |  |
| 317 | Muro de ladrillo aparente | 2026-06-17 A |  | 0% → 18% |  |
| 318 | Muro de block planta baja | 2026-06-19 A |  | 0% → 6% |  |
| 574 | **LOTE 03 M-661 CORSAC-A** |  |  | 5% → 6% |  |
| 577 | Colado de Losa de Cimentación | 2026-06-16 A | 2026-06-16 A | 0% → 100% | 170d → none |
| 586 | **CIMENTACION** |  | 2026-06-17 A | 90% → 100% | 6d → none |
| 605 | Malla electrosoldada 6-6/8-8 |  | 2026-06-15 A | 56% → 100% | 6d → none |
| 608 | Colado losa de cimentación f’c=200 | 2026-06-15 A | 2026-06-16 A | 0% → 100% | 6d → none |
| 609 | Curado de concreto | 2026-06-16 A | 2026-06-17 A | 0% → 100% | 6d → none |
| 610 | Acero zapata ZT-1 |  | 2026-06-15 A | 78% → 100% | 6d → none |
| 611 | Acero zapata ZT-2 |  | 2026-06-15 A | 78% → 100% | 6d → none |
| 612 | **MUROS, PLANTA BAJA. CASTILLOS Y CERRAMIENTOS** |  |  | 3% → 18% |  |
| 613 | Anclaje de castillos y Columnas PB |  | 2026-06-17 A | 43% → 100% | 157d → none |
| 614 | Castillo K1 | 2026-06-17 A |  | 0% → 69% | 157d → 0.75d |
| 615 | Castillo K3 | 2026-06-19 A |  | 0% → 25% |  |
| 616 | Castillo K4 | 2026-06-19 A |  | 0% → 25% |  |
| 622 | Muro de ladrillo aparente | 2026-06-17 A |  | 0% → 18% |  |
| 623 | Muro de block planta baja | 2026-06-19 A |  | 0% → 6% |  |
| 879 | **LOTE 20 M-663 ARTICO-A** |  |  | 2% → 5% |  |
| 891 | **CIMENTACION** |  |  | 20% → 88% |  |
| 895 | Ramaleo poliducto eléctrico cimentación |  | 2026-06-16 A | 6% → 100% | 4d → none |
| 896 | Ramaleo eléctrico base-medición a centro de carga |  | 2026-06-15 A | 13% → 100% | 5d → none |
| 897 | Ramaleo eléctrico exterior | 2026-06-16 A | 2026-06-17 A | 0% → 100% | 4d → none |
| 898 | Ramaleo para cable poliducto 3/4 | 2026-06-16 A | 2026-06-17 A | 0% → 100% | 4d → none |
| 899 | Ramaleo para TV poliducto 3/4 | 2026-06-16 A | 2026-06-17 A | 0% → 100% | 4d → none |
| 900 | Ramaleo hidráulico CPVC 1-1/4" cimentación |  | 2026-06-15 A | 13% → 100% | 5d → none |
| 901 | Ramaleo hidráulico CPVC 1 cimentación |  | 2026-06-15 A | 13% → 100% | 1d → none |
| 902 | Ramaleo hidráulico CPVC 3/4 cimentación | 2026-06-15 A | 2026-06-17 A | 0% → 100% | 1d → none |
| 903 | Ramaleo hidráulico CPVC 1/2 cimentación | 2026-06-17 A | 2026-06-19 A | 0% → 100% | 1d → none |
| 904 | Prueba hidráulica | 2026-06-19 A |  | 0% → 75% |  |
| 905 | Ramaleo sanitario PVC 4 cimentación | 2026-06-15 A | 2026-06-17 A | 0% → 100% | 2d → none |
| 906 | Ramaleo sanitario PVC 2 cimentación | 2026-06-17 A | 2026-06-18 A | 0% → 100% | 2d → none |
| 907 | Prueba sanitaria | 2026-06-18 A | 2026-06-19 A | 0% → 100% | 2d → none |
| 908 | Acero contratrabe CT-1 |  | 2026-06-17 A | 28% → 100% | 0d → none |
| 909 | Acero contratrabe CT-2 |  | 2026-06-17 A | 28% → 100% | 0d → none |
| 910 | Malla electrosoldada 6-6/8-8 | 2026-06-19 A |  | 0% → 38% |  |
| 911 | Bastón de refuerzo LS | 2026-06-17 A | 2026-06-19 A | 0% → 100% | 0d → none |
| 912 | Bastón de refuerzo LI | 2026-06-17 A | 2026-06-19 A | 0% → 100% | 0d → none |
| 915 | Acero zapata ZT-1 | 2026-06-17 A |  | 0% → 69% |  |
| 916 | Acero zapata ZT-2 | 2026-06-17 A |  | 0% → 69% |  |
| 917 | **MUROS, PLANTA BAJA. CASTILLOS Y CERRAMIENTOS** | 2026-06-18 A |  | 0% → 3% | 5d → 148d |
| 918 | Anclaje de castillos y Columnas PB | 2026-06-18 A |  | 0% → 35% |  |
| 1184 | **LOTE 21 M-663 CORSAC-A** |  |  | 2% → 5% |  |

| ID | Task | Start | Finish | Complete | Total float |
| --- | --- | --- | --- | --- | --- |
| 1196 | **CIMENTACION** |  |  | 20% → 88% |  |
| 1200 | Ramaleo poliducto eléctrico cimentación |  | 2026-06-16 A | 6% → 100% | 4d → none |
| 1201 | Ramaleo eléctrico base-medición a centro de carga |  | 2026-06-15 A | 13% → 100% | 5d → none |
| 1202 | Ramaleo eléctrico exterior | 2026-06-16 A | 2026-06-17 A | 0% → 100% | 4d → none |
| 1203 | Ramaleo para cable poliducto 3/4 | 2026-06-16 A | 2026-06-17 A | 0% → 100% | 4d → none |
| 1204 | Ramaleo para TV poliducto 3/4 | 2026-06-16 A | 2026-06-17 A | 0% → 100% | 4d → none |
| 1205 | Ramaleo hidráulico CPVC 1-1/4" cimentación |  | 2026-06-15 A | 13% → 100% | 5d → none |
| 1206 | Ramaleo hidráulico CPVC 1 cimentación |  | 2026-06-15 A | 13% → 100% | 1d → none |
| 1207 | Ramaleo hidráulico CPVC 3/4 cimentación | 2026-06-15 A | 2026-06-17 A | 0% → 100% | 1d → none |
| 1208 | Ramaleo hidráulico CPVC 1/2 cimentación | 2026-06-17 A | 2026-06-19 A | 0% → 100% | 1d → none |
| 1209 | Prueba hidráulica | 2026-06-19 A |  | 0% → 75% |  |
| 1210 | Ramaleo sanitario PVC 4 cimentación | 2026-06-15 A | 2026-06-17 A | 0% → 100% | 2d → none |
| 1211 | Ramaleo sanitario PVC 2 cimentación | 2026-06-17 A | 2026-06-18 A | 0% → 100% | 2d → none |
| 1212 | Prueba sanitaria | 2026-06-18 A | 2026-06-19 A | 0% → 100% | 2d → none |
| 1213 | Acero contratrabe CT-1 |  | 2026-06-17 A | 28% → 100% | 0d → none |
| 1214 | Acero contratrabe CT-2 |  | 2026-06-17 A | 28% → 100% | 0d → none |
| 1215 | Malla electrosoldada 6-6/8-8 | 2026-06-19 A |  | 0% → 38% |  |
| 1216 | Bastón de refuerzo LS | 2026-06-17 A | 2026-06-19 A | 0% → 100% | 0d → none |
| 1217 | Bastón de refuerzo LI | 2026-06-17 A | 2026-06-19 A | 0% → 100% | 0d → none |
| 1220 | Acero zapata ZT-1 | 2026-06-17 A |  | 0% → 69% |  |
| 1221 | Acero zapata ZT-2 | 2026-06-17 A |  | 0% → 69% |  |
| 1222 | **MUROS, PLANTA BAJA. CASTILLOS Y CERRAMIENTOS** | 2026-06-18 A |  | 0% → 3% | 5d → 148d |
| 1223 | Anclaje de castillos y Columnas PB | 2026-06-18 A |  | 0% → 35% |  |
| 1489 | **LOTE 22 M-663 CORSAC-B** |  |  | 0% → 2% |  |
| 1498 | **EXCAVACIONES** |  | 2026-06-16 A | 25% → 100% | 1d → none |
| 1499 | Excavación a mano material tipo B |  | 2026-06-16 A | 38% → 100% | 1d → none |
| 1500 | Acarreo en carretilla 20 m |  | 2026-06-16 A | 6% → 100% | 1d → none |
| 1501 | **CIMENTACION** | 2026-06-16 A |  | 0% → 16% | 1d → 157d |
| 1502 | Cimbra perimetral losa de cimentación | 2026-06-16 A | 2026-06-19 A | 0% → 100% | 1d → none |
| 1503 | Sistema antitermitas PVC | 2026-06-16 A | 2026-06-19 A | 0% → 100% | 2d → none |
| 1504 | Hule negro en cimentación | 2026-06-19 A |  | 0% → 75% |  |
| 1517 | Acero contratrabe CT-1 | 2026-06-19 A |  | 0% → 19% |  |
| 1518 | Acero contratrabe CT-2 | 2026-06-19 A |  | 0% → 19% |  |

## Version 9 (data date 2026-06-22, saved 2026-06-24)

Note of the change: data: actualiza programa real (línea base vs avance) y semana en curso

Last finish 2027-01-21 → 2027-02-09 (+19d). Complete tasks 160 → 90.

Changed:

| ID | Task | Start | Finish | Duration | Complete | Total float | Predecessors |
| --- | --- | --- | --- | --- | --- | --- | --- |
| 1 | **ALTOZANO - METTA - 6 CASAS** |  | 2027-01-21 → 2027-02-09 (+19d) | 200d → 215d | 7% → 4% |  |  |
| 49 | **MUROS, PLANTA BAJA. CASTILLOS Y CERRAMIENTOS** |  | 2026-06-26 → 2026-06-27 (+1d) | 25d → 26d | 86% → 83% | 162d → 176d |  |
| 51 | Castillo K1 |  | 2026-06-16 A → 2026-06-18 A (+2d) | 12d → 14d |  |  |  |
| 53 | Castillo K3 | 2026-06-13 A → 2026-06-16 A (+3d) | 2026-06-17 A → 2026-06-19 A (+2d) |  |  |  |  |
| 54 | Castillo K4 | 2026-06-13 A → 2026-06-16 A (+3d) | 2026-06-17 A → 2026-06-19 A (+2d) |  |  |  |  |
| 55 | Castillo K5 | 2026-06-16 A → 2026-06-18 A (+2d) | 2026-06-19 A → 2026-06-23 (+4d) |  | 100% → 92% | none → 1.75d |  |
| 56 | Refuerzo de muro K6 | 2026-06-17 A → 2026-06-19 A (+2d) | 2026-06-22 → 2026-06-24 (+2d) |  | 92% → 58% | 162d → 1.75d |  |
| 59 | Dala de cerramiento CR-1 | 2026-06-17 A → 2026-06-23 (+6d) | 2026-06-23 → 2026-06-27 (+4d) |  | 69% → 0% | 165d → 176d | 51, 52, 53 → 51, 52FS+2d, 53FS+2d |
| 60 | Dala de cerramiento CR-2 | 2026-06-17 A → 2026-06-23 (+6d) | 2026-06-22 → 2026-06-26 (+4d) |  | 92% → 0% | 166d → 177d | 51, 52, 53 → 51, 52FS+2d, 53FS+2d |
| 61 | Cadena block dala | 2026-06-22 → 2026-06-19 A (-3d) | 2026-06-26 → 2026-06-25 (-1d) |  | 0% → 44% | 162d → 178d | 56 → 56FS-3d |
| 62 | Muro de ladrillo aparente |  |  |  | 72% → 78% | 20d → 35d |  |
| 63 | Muro de block planta baja |  |  |  | 67% → 75% | 20d → 35d |  |
| 66 | **LOSA DE ENTREPISO (viegueta y caseton)** | 2026-06-24 → 2026-06-26 (+2d) |  | 18d → 16d |  | 23d → 36d |  |
| 67 | Vigueta pretensada 1.40 m | 2026-06-24 → 2026-06-26 (+2d) | 2026-06-27 → 2026-06-30 (+3d) |  |  | 25d → 38d | 62FS-2d, 63FS-2d → 62, 63 |
| 68 | Vigueta pretensada 1.95 m | 2026-06-25 → 2026-06-26 (+1d) | 2026-06-30 → 2026-07-01 (+1d) |  |  | 23d → 37d | 62FS-1d, 63FS-1d → 62, 63 |
| 269 | **LOTE 02 M-661 CORSAC-B** |  | 2027-01-11 → 2027-01-15 (+4d) | 183d → 187d |  | 9d → 20d |  |
| 270 | **HITOS IMPORTANTES DEL LOTE** |  | 2027-01-11 → 2027-01-15 (+4d) | 183d → 187d |  | 9d → 20d |  |
| 273 | Colado de Losa de Entrepiso | 2026-07-23 → 2026-07-29 (+6d) | 2026-07-23 → 2026-07-29 (+6d) |  |  | 140d → 151d |  |
| 274 | Colado de Losa de Azotea | 2026-08-29 → 2026-09-03 (+5d) | 2026-08-29 → 2026-09-03 (+5d) |  |  | 110d → 121d |  |
| 275 | Entrega de vivienda | 2027-01-11 → 2027-01-15 (+4d) | 2027-01-11 → 2027-01-15 (+4d) |  |  | 9d → 20d |  |
| 307 | **MUROS, PLANTA BAJA. CASTILLOS Y CERRAMIENTOS** |  | 2026-07-06 → 2026-07-10 (+4d) | 20d → 24d | 18% → 10% | 154d → 165d |  |
| 309 | Castillo K1 | 2026-06-17 A → 2026-06-19 A (+2d) | 2026-06-23 → 2026-06-25 (+2d) |  | 69% → 44% | 0.75d → 170d | 304, 308 → 304FS+2d, 308 |
| 310 | Castillo K3 | 2026-06-19 A → 2026-06-23 (+4d) | 2026-06-24 → 2026-06-26 (+2d) |  | 25% → 0% | 157d → 170d |  |
| 311 | Castillo K4 | 2026-06-19 A → 2026-06-23 (+4d) | 2026-06-24 → 2026-06-26 (+2d) |  | 25% → 0% | 157d → 170d |  |
| 312 | Castillo K5 | 2026-06-23 → 2026-06-25 (+2d) | 2026-06-26 → 2026-06-29 (+3d) |  |  | 157d → 170d |  |
| 313 | Refuerzo de muro K6 | 2026-06-24 → 2026-06-26 (+2d) | 2026-06-27 → 2026-06-30 (+3d) |  |  | 157d → 170d |  |
| 314 | Dala de cerramiento CR-1 | 2026-06-24 → 2026-06-26 (+2d) | 2026-06-29 → 2026-07-01 (+2d) |  |  | 160d → 173d |  |
| 315 | Dala de cerramiento CR-2 | 2026-06-24 → 2026-06-26 (+2d) | 2026-06-27 → 2026-06-30 (+3d) |  |  | 161d → 174d |  |
| 316 | Cadena block dala | 2026-06-27 → 2026-06-30 (+3d) | 2026-07-02 → 2026-07-04 (+2d) |  |  | 157d → 170d |  |
| 317 | Muro de ladrillo aparente | 2026-06-17 A → 2026-06-23 (+6d) | 2026-07-06 → 2026-07-10 (+4d) |  | 18% → 0% | 9d → 20d | 304 → 304FS+4d |
| 318 | Muro de block planta baja | 2026-06-19 A → 2026-06-24 (+5d) | 2026-07-06 → 2026-07-09 (+3d) |  | 6% → 0% | 9d → 21d | 304FS+2d → 304FS+5d |
| 319 | Ramaleo electrico en Muros Planta Baja | 2026-06-24 → 2026-06-29 (+5d) | 2026-06-29 → 2026-07-03 (+4d) |  |  | 12d → 23d |  |
| 320 | Ramaleo para cable poliducto 3/4 | 2026-06-29 → 2026-07-03 (+4d) | 2026-07-01 → 2026-07-06 (+5d) |  |  | 12d → 23d |  |
| 321 | Ramaleo para TV poliducto 3/4 | 2026-07-01 → 2026-07-07 (+6d) | 2026-07-04 → 2026-07-09 (+5d) |  |  | 12d → 23d |  |
| 322 | **ESCALERA** | 2026-07-23 → 2026-07-29 (+6d) | 2026-08-05 → 2026-08-10 (+5d) |  |  | 86d → 97d |  |
| 323 | Escalera de concreto armado | 2026-07-23 → 2026-07-29 (+6d) | 2026-08-05 → 2026-08-10 (+5d) |  |  | 86d → 97d |  |
| 324 | **LOSA DE ENTREPISO (viegueta y caseton)** | 2026-07-03 → 2026-07-09 (+6d) | 2026-07-24 → 2026-07-30 (+6d) |  |  | 12d → 23d |  |
| 325 | Dala de coronamiento 10cm | 2026-07-13 → 2026-07-17 (+4d) | 2026-07-16 → 2026-07-21 (+5d) |  |  | 12d → 23d |  |
| 326 | Dala de coronamiento 12cm | 2026-07-14 → 2026-07-18 (+4d) | 2026-07-17 → 2026-07-22 (+5d) |  |  | 11d → 22d |  |
| 327 | Trabe TR-1 | 2026-07-03 → 2026-07-09 (+6d) | 2026-07-07 → 2026-07-13 (+6d) |  |  | 13d → 24d |  |
| 328 | Trabe TR-2 | 2026-07-06 → 2026-07-10 (+4d) | 2026-07-09 → 2026-07-15 (+6d) |  |  | 11d → 22d |  |
| 329 | Nervadura NR-1 | 2026-07-07 → 2026-07-11 (+4d) | 2026-07-10 → 2026-07-16 (+6d) |  |  | 10d → 21d |  |
| 330 | Nervadura NR-2 | 2026-07-08 → 2026-07-13 (+5d) | 2026-07-13 → 2026-07-17 (+4d) |  |  | 9d → 20d |  |
| 331 | Nervadura NR-3 | 2026-07-08 → 2026-07-13 (+5d) | 2026-07-13 → 2026-07-17 (+4d) |  |  | 9d → 20d |  |
| 332 | Nervadura NR-4 | 2026-07-08 → 2026-07-13 (+5d) | 2026-07-13 → 2026-07-17 (+4d) |  |  | 9d → 20d |  |
| 333 | Acero de refuerzo en nervios #3 | 2026-07-13 → 2026-07-17 (+4d) | 2026-07-15 → 2026-07-20 (+5d) |  |  | 9d → 20d |  |
| 334 | Acero de refuerzo long. #3 | 2026-07-14 → 2026-07-18 (+4d) | 2026-07-17 → 2026-07-22 (+5d) |  |  | 10d → 21d |  |
| 335 | Acero de refuerzo long. #4 | 2026-07-14 → 2026-07-18 (+4d) | 2026-07-17 → 2026-07-22 (+5d) |  |  | 10d → 21d |  |
| 336 | Malla 66-10/10 losa de compresión | 2026-07-20 → 2026-07-24 (+4d) | 2026-07-22 → 2026-07-28 (+6d) |  |  | 9d → 20d |  |
| 337 | Acero de Losa Maciza | 2026-07-13 → 2026-07-17 (+4d) | 2026-07-16 → 2026-07-21 (+5d) |  |  | 14d → 25d |  |
| 338 | Caseton de 60x60x20cm | 2026-07-13 → 2026-07-17 (+4d) | 2026-07-15 → 2026-07-20 (+5d) |  |  | 13d → 24d |  |
| 339 | Concreto losa de entrepiso f’c=200 | 2026-07-22 → 2026-07-28 (+6d) | 2026-07-23 → 2026-07-29 (+6d) |  |  | 9d → 20d |  |
| 340 | Curado de concreto | 2026-07-23 → 2026-07-29 (+6d) | 2026-07-24 → 2026-07-30 (+6d) |  |  | 9d → 20d |  |
| 341 | Cimbra losa de azotea | 2026-07-08 → 2026-07-13 (+5d) | 2026-07-14 → 2026-07-18 (+4d) |  |  | 10d → 21d |  |
| 342 | Cimbra exterior corta losa | 2026-07-16 → 2026-07-21 (+5d) | 2026-07-20 → 2026-07-24 (+4d) |  |  | 11d → 22d |  |
| 343 | Ramaleo poliducto eléctrico entrepiso | 2026-07-15 → 2026-07-20 (+5d) | 2026-07-17 → 2026-07-22 (+5d) |  |  | 145d → 156d |  |
| 344 | Ramaleo hidráulico CPVC 3/4" | 2026-07-16 → 2026-07-21 (+5d) | 2026-07-18 → 2026-07-23 (+5d) |  |  | 9d → 20d |  |
| 345 | Ramaleo hidráulico CPVC 1/2" | 2026-07-18 → 2026-07-23 (+5d) | 2026-07-20 → 2026-07-24 (+4d) |  |  | 9d → 20d |  |
| 346 | Prueba hidráulica | 2026-07-18 → 2026-07-23 (+5d) | 2026-07-20 → 2026-07-24 (+4d) |  |  | 9d → 20d |  |
| 347 | Ramaleo sanitario PVC 4" | 2026-07-16 → 2026-07-21 (+5d) | 2026-07-18 → 2026-07-23 (+5d) |  |  | 9d → 20d |  |
| 348 | Ramaleo sanitario PVC 2" | 2026-07-18 → 2026-07-23 (+5d) | 2026-07-20 → 2026-07-24 (+4d) |  |  | 9d → 20d |  |
| 349 | Prueba sanitaria | 2026-07-18 → 2026-07-23 (+5d) | 2026-07-20 → 2026-07-24 (+4d) |  |  | 9d → 20d |  |
| 350 | **MUROS EN PLANTA ALTA, CASTILLOS Y CERRM.** | 2026-07-16 → 2026-07-21 (+5d) | 2026-08-12 → 2026-08-18 (+6d) |  |  | 10d → 21d |  |
| 351 | Anclaje de castillos y Columnas PA | 2026-07-16 → 2026-07-21 (+5d) | 2026-07-21 → 2026-07-27 (+6d) |  |  | 10d → 21d |  |
| 352 | Castillo K1 | 2026-07-24 → 2026-07-30 (+6d) | 2026-07-30 → 2026-08-04 (+5d) |  |  | 13d → 24d |  |
| 353 | Castillo K2 | 2026-07-27 → 2026-07-31 (+4d) | 2026-07-31 → 2026-08-05 (+5d) |  |  | 12d → 23d |  |
| 354 | Castillo K4 | 2026-07-30 → 2026-08-04 (+5d) | 2026-08-03 → 2026-08-07 (+4d) |  |  | 13d → 24d |  |
| 355 | Castillo K5 | 2026-07-30 → 2026-08-04 (+5d) | 2026-08-03 → 2026-08-07 (+4d) |  |  | 13d → 24d |  |
| 356 | Castillo K6 | 2026-07-30 → 2026-08-04 (+5d) | 2026-08-03 → 2026-08-07 (+4d) |  |  | 13d → 24d |  |
| 357 | Refuerzo de muro | 2026-07-31 → 2026-08-05 (+5d) | 2026-08-04 → 2026-08-08 (+4d) |  |  | 12d → 23d |  |

| ID | Task | Start | Finish | Total float |
| --- | --- | --- | --- | --- |
| 358 | Dala de cerramiento CR-1 | 2026-08-04 → 2026-08-08 (+4d) | 2026-08-08 → 2026-08-13 (+5d) | 12d → 23d |
| 359 | Dala de cerramiento CR-2 | 2026-08-04 → 2026-08-08 (+4d) | 2026-08-08 → 2026-08-13 (+5d) | 12d → 23d |
| 360 | Cadena block dala | 2026-08-08 → 2026-08-13 (+5d) | 2026-08-12 → 2026-08-18 (+6d) | 12d → 23d |
| 361 | Muro de ladrillo aparente | 2026-07-24 → 2026-07-30 (+6d) | 2026-08-12 → 2026-08-18 (+6d) | 9d → 20d |
| 362 | Muro de block planta alta | 2026-07-27 → 2026-07-31 (+4d) | 2026-08-12 → 2026-08-18 (+6d) | 9d → 20d |
| 363 | Ramaleo electrico en Muros Planta Alta | 2026-08-04 → 2026-08-08 (+4d) | 2026-08-08 → 2026-08-13 (+5d) | 20d → 31d |
| 364 | **LOSA AZOTEA** | 2026-08-12 → 2026-08-18 (+6d) | 2026-08-31 → 2026-09-04 (+4d) | 9d → 20d |
| 365 | Cortalosa CL-1 | 2026-08-26 → 2026-09-01 (+6d) | 2026-08-28 → 2026-09-02 (+5d) | 9d → 20d |
| 366 | Cortalosa CL-2 | 2026-08-26 → 2026-09-01 (+6d) | 2026-08-28 → 2026-09-02 (+5d) | 9d → 20d |
| 367 | Vigueta pretensada V11-30 125 | 2026-08-12 → 2026-08-18 (+6d) | 2026-08-19 → 2026-08-24 (+5d) | 12d → 23d |
| 368 | Vigueta pretensada V11-30 185 | 2026-08-12 → 2026-08-18 (+6d) | 2026-08-19 → 2026-08-24 (+5d) | 12d → 23d |
| 369 | Vigueta pretensada V11-30 190 | 2026-08-12 → 2026-08-18 (+6d) | 2026-08-19 → 2026-08-24 (+5d) | 12d → 23d |
| 370 | Vigueta pretensada V11-30 205 | 2026-08-14 → 2026-08-20 (+6d) | 2026-08-21 → 2026-08-26 (+5d) | 10d → 21d |
| 371 | Vigueta pretensada V11-30 215 | 2026-08-14 → 2026-08-20 (+6d) | 2026-08-21 → 2026-08-26 (+5d) | 10d → 21d |
| 372 | Vigueta pretensada V11-30 260 | 2026-08-17 → 2026-08-21 (+4d) | 2026-08-22 → 2026-08-27 (+5d) | 9d → 20d |
| 373 | Vigueta pretensada V11-30 285 | 2026-08-17 → 2026-08-21 (+4d) | 2026-08-22 → 2026-08-27 (+5d) | 9d → 20d |
| 374 | Vigueta pretensada V11-40 330 | 2026-08-17 → 2026-08-21 (+4d) | 2026-08-22 → 2026-08-27 (+5d) | 9d → 20d |
| 375 | Vigueta pretensada V11-40 335 | 2026-08-17 → 2026-08-21 (+4d) | 2026-08-22 → 2026-08-27 (+5d) | 9d → 20d |
| 376 | Vigueta pretensada V11-40 505 | 2026-08-17 → 2026-08-21 (+4d) | 2026-08-22 → 2026-08-27 (+5d) | 9d → 20d |
| 377 | Bovedilla poliestireno azotea | 2026-08-22 → 2026-08-27 (+5d) | 2026-08-26 → 2026-08-31 (+5d) | 9d → 20d |
| 378 | Malla 66-10/10 losa de compresión | 2026-08-26 → 2026-09-01 (+6d) | 2026-08-28 → 2026-09-02 (+5d) | 9d → 20d |
| 379 | Concreto losa de azotea f’c=200 | 2026-08-28 → 2026-09-03 (+6d) | 2026-08-29 → 2026-09-03 (+5d) | 9d → 20d |
| 380 | Curado de concreto | 2026-08-31 → 2026-09-04 (+4d) | 2026-08-31 → 2026-09-04 (+4d) | 9d → 20d |
| 381 | Cimbra losa de azotea | 2026-08-12 → 2026-08-18 (+6d) | 2026-08-19 → 2026-08-24 (+5d) | 17d → 28d |
| 382 | Ramaleo de poliducto para inst. electrica en azotea | 2026-08-26 → 2026-09-01 (+6d) | 2026-08-28 → 2026-09-02 (+5d) | 9d → 20d |
| 383 | **PRETIL Y ACABADOS DE AZOTEA** | 2026-09-01 → 2026-09-05 (+4d) | 2026-09-25 → 2026-09-30 (+5d) | 9d → 20d |
| 384 | Castillo K1 | 2026-09-03 → 2026-09-08 (+5d) | 2026-09-09 → 2026-09-14 (+5d) | 9d → 20d |
| 385 | Dala de cerramiento en pretil | 2026-09-07 → 2026-09-11 (+4d) | 2026-09-11 → 2026-09-17 (+6d) | 9d → 20d |
| 386 | Muro de block 12x15x40 | 2026-09-01 → 2026-09-05 (+4d) | 2026-09-07 → 2026-09-11 (+4d) | 9d → 20d |
| 387 | Chaflán en azotea | 2026-09-09 → 2026-09-14 (+5d) | 2026-09-14 → 2026-09-21 (+7d) | 9d → 20d |
| 388 | Diamante de entortado | 2026-09-09 → 2026-09-14 (+5d) | 2026-09-14 → 2026-09-21 (+7d) | 9d → 20d |
| 389 | Aplanado exterior Mortermax fino | 2026-09-11 → 2026-09-17 (+6d) | 2026-09-18 → 2026-09-24 (+6d) | 9d → 20d |
| 390 | Entortado de Losa | 2026-09-21 → 2026-09-25 (+4d) | 2026-09-25 → 2026-09-30 (+5d) | 9d → 20d |
| 391 | Curado de concreto | 2026-09-18 → 2026-09-24 (+6d) | 2026-09-21 → 2026-09-25 (+4d) | 9d → 20d |
| 392 | **PRIMERA LIMPIEZA DE OBRA** | 2026-09-01 → 2026-09-05 (+4d) | 2026-09-04 → 2026-09-10 (+6d) | 66d → 77d |
| 393 | Primera limpieza de obra | 2026-09-01 → 2026-09-05 (+4d) | 2026-09-02 → 2026-09-08 (+6d) | 66d → 77d |
| 394 | Primera carga y acarreo de escombro | 2026-09-03 → 2026-09-08 (+5d) | 2026-09-04 → 2026-09-10 (+6d) | 66d → 77d |
| 395 | **IMPERMEABILIZACION** | 2026-09-25 → 2026-09-30 (+5d) | 2026-10-01 → 2026-10-06 (+5d) | 9d → 20d |
| 396 | Impermeabilización de pretil Kover 5 años | 2026-09-25 → 2026-09-30 (+5d) | 2026-09-30 → 2026-10-05 (+5d) | 10d → 21d |
| 397 | Impermeabilización de losa Kover 5 años | 2026-09-25 → 2026-09-30 (+5d) | 2026-10-01 → 2026-10-06 (+5d) | 9d → 20d |
| 398 | **ALBAÑILERIA** | 2026-09-07 → 2026-09-11 (+4d) | 2026-11-25 → 2026-11-30 (+5d) | 28d → 39d |
| 399 | Lavadero de granito | 2026-10-21 → 2026-10-27 (+6d) | 2026-10-26 → 2026-10-30 (+4d) | 65d → 76d |
| 400 | Ranurado y resane general inst. en muros | 2026-09-29 → 2026-10-03 (+4d) | 2026-10-02 → 2026-10-07 (+5d) | 11d → 22d |
| 401 | Ranurado y resane eléctrico 1/2 a 3/4 | 2026-09-29 → 2026-10-03 (+4d) | 2026-10-02 → 2026-10-07 (+5d) | 11d → 22d |
| 402 | Ranurado y resane hidráulico 1/2 a 1 | 2026-10-01 → 2026-10-06 (+5d) | 2026-10-03 → 2026-10-08 (+5d) | 10d → 21d |
| 403 | Resane sanitario tubería 2 | 2026-10-01 → 2026-10-06 (+5d) | 2026-10-03 → 2026-10-08 (+5d) | 10d → 21d |
| 404 | Resane sanitario tubería 4 | 2026-10-01 → 2026-10-06 (+5d) | 2026-10-03 → 2026-10-08 (+5d) | 10d → 21d |
| 405 | Resane minisplit tubería 3 | 2026-10-01 → 2026-10-06 (+5d) | 2026-10-03 → 2026-10-08 (+5d) | 10d → 21d |
| 406 | Ramaleo hidráulico exterior CPVC 1 1/4 | 2026-10-01 → 2026-10-06 (+5d) | 2026-10-05 → 2026-10-09 (+4d) | 9d → 20d |
| 407 | Ramaleo hidráulico exterior CPVC 1 | 2026-10-01 → 2026-10-06 (+5d) | 2026-10-03 → 2026-10-08 (+5d) | 9d → 20d |
| 408 | Ramaleo hidráulico exterior CPVC 3/4 | 2026-10-03 → 2026-10-08 (+5d) | 2026-10-06 → 2026-10-12 (+6d) | 9d → 20d |
| 409 | Ramaleo hidráulico exterior CPVC 1/2 | 2026-10-03 → 2026-10-08 (+5d) | 2026-10-06 → 2026-10-12 (+6d) | 9d → 20d |
| 410 | Prueba hidráulica | 2026-10-06 → 2026-10-12 (+6d) | 2026-10-07 → 2026-10-13 (+6d) | 9d → 20d |
| 411 | Ramaleo sanitario exterior PVC 4 | 2026-10-01 → 2026-10-06 (+5d) | 2026-10-06 → 2026-10-12 (+6d) | 9d → 20d |
| 412 | Ramaleo sanitario exterior PVC 2 | 2026-10-02 → 2026-10-07 (+5d) | 2026-10-06 → 2026-10-12 (+6d) | 9d → 20d |
| 413 | Prueba sanitaria | 2026-10-06 → 2026-10-12 (+6d) | 2026-10-07 → 2026-10-13 (+6d) | 9d → 20d |
| 414 | Centro de carga muros PB | 2026-10-05 → 2026-10-09 (+4d) | 2026-10-09 → 2026-10-15 (+6d) | 11d → 22d |
| 415 | Firme de concreto 8 cm | 2026-10-07 → 2026-10-13 (+6d) | 2026-10-13 → 2026-10-17 (+4d) | 59d → 70d |
| 416 | Curado de concreto | 2026-10-13 → 2026-10-17 (+4d) | 2026-10-14 → 2026-10-19 (+5d) | 59d → 70d |
| 417 | Cisterna 2800 L con instalación | 2026-09-07 → 2026-09-11 (+4d) | 2026-09-30 → 2026-10-05 (+5d) | 65d → 76d |
| 418 | Banqueta y huellas de concreto | 2026-10-15 → 2026-10-20 (+5d) | 2026-10-24 → 2026-10-29 (+5d) | 42d → 53d |
| 419 | Curado de concreto | 2026-10-26 → 2026-10-30 (+4d) | 2026-10-26 → 2026-10-30 (+4d) | 42d → 53d |
| 420 | Número oficial | 2026-11-24 → 2026-11-28 (+4d) | 2026-11-25 → 2026-11-30 (+5d) | 42d → 53d |
| 421 | Detallado de rodapié exterior | 2026-10-09 → 2026-10-15 (+6d) | 2026-10-15 → 2026-10-20 (+5d) | 74d → 85d |
| 422 | Detalle de losas y volados acabado fino | 2026-10-01 → 2026-10-06 (+5d) | 2026-10-06 → 2026-10-12 (+6d) | 13d → 24d |
| 423 | Detalle fino en muros interiores | 2026-10-03 → 2026-10-08 (+5d) | 2026-10-09 → 2026-10-15 (+6d) | 10d → 21d |
| 424 | Jardín interior bajo escalera con pozo de absorción | 2026-10-01 → 2026-10-06 (+5d) | 2026-10-16 → 2026-10-21 (+5d) | 13d → 24d |
| 425 | **ACABADOS EN FACHADA A** | 2026-09-25 → 2026-09-30 (+5d) | 2026-11-24 → 2026-11-28 (+4d) | 42d → 53d |
| 426 | Aplanado grueso fachada | 2026-09-25 → 2026-09-30 (+5d) | 2026-10-09 → 2026-10-15 (+6d) | 48d → 59d |
| 427 | Aplanado fino estuco fachada | 2026-10-03 → 2026-10-08 (+5d) | 2026-10-16 → 2026-10-21 (+5d) | 48d → 59d |

| ID | Task | Start | Finish | Total float |
| --- | --- | --- | --- | --- |
| 428 | Pintura acrílica 1-0102P | 2026-11-10 → 2026-11-17 (+7d) | 2026-11-21 → 2026-11-26 (+5d) | 44d → 55d |
| 429 | Pintura acrílica 1-1404D | 2026-11-10 → 2026-11-17 (+7d) | 2026-11-24 → 2026-11-28 (+4d) | 42d → 53d |
| 430 | Cantera 40x60cm | 2026-10-16 → 2026-10-21 (+5d) | 2026-11-03 → 2026-11-07 (+4d) | 48d → 59d |
| 431 | Lambrin de permabase 1 cara | 2026-10-09 → 2026-10-15 (+6d) | 2026-10-14 → 2026-10-19 (+5d) | 55d → 66d |
| 432 | Enchapado de Permabase | 2026-10-14 → 2026-10-19 (+5d) | 2026-10-19 → 2026-10-23 (+4d) | 55d → 66d |
| 433 | Cubierta de Permabase | 2026-10-19 → 2026-10-23 (+4d) | 2026-10-24 → 2026-10-29 (+5d) | 55d → 66d |
| 434 | **APLANADOS Y PINTURA** | 2026-10-01 → 2026-10-06 (+5d) | 2026-12-19 → 2026-12-28 (+9d) | 11d → 22d |
| 435 | Yeso pulido en muros | 2026-10-12 → 2026-10-16 (+4d) | 2026-10-28 → 2026-11-03 (+6d) | 9d → 20d |
| 436 | Aplanado en muros enjarre grueso | 2026-10-01 → 2026-10-06 (+5d) | 2026-10-07 → 2026-10-13 (+6d) | 12d → 23d |
| 437 | Pintura vinílica OR-W13 SHOELACE | 2026-12-03 → 2026-12-09 (+6d) | 2026-12-19 → 2026-12-28 (+9d) | 9d → 20d |
| 438 | Pintura vinílica PPUI5-13 Creamy M. | 2026-11-27 → 2026-12-02 (+5d) | 2026-12-10 → 2026-12-15 (+5d) | 17d → 28d |
| 439 | Pintura vinílica MD-06 Nano White | 2026-11-27 → 2026-12-02 (+5d) | 2026-12-08 → 2026-12-12 (+4d) | 19d → 30d |
| 440 | Yeso pulido en plafones | 2026-10-01 → 2026-10-06 (+5d) | 2026-10-14 → 2026-10-19 (+5d) | 11d → 22d |
| 441 | Perfilado de puertas y ventanas | 2026-10-16 → 2026-10-21 (+5d) | 2026-10-21 → 2026-10-26 (+5d) | 69d → 80d |
| 442 | **PISOS Y AZULEJOS** | 2026-10-22 → 2026-10-28 (+6d) | 2026-11-23 → 2026-11-27 (+4d) | 9d → 20d |
| 443 | **AREA SOCIAL** | 2026-10-27 → 2026-10-31 (+4d) | 2026-11-13 → 2026-11-20 (+7d) | 9d → 20d |
| 444 | Piso Adhara 44X89 | 2026-10-27 → 2026-10-31 (+4d) | 2026-11-12 → 2026-11-19 (+7d) | 9d → 20d |
| 445 | Zoclo Adhara 44X89 | 2026-11-07 → 2026-11-12 (+5d) | 2026-11-13 → 2026-11-20 (+7d) | 26d → 37d |
| 446 | **RECAMARAS** | 2026-10-22 → 2026-10-28 (+6d) | 2026-11-02 → 2026-11-06 (+4d) | 9d → 20d |
| 447 | Acabado aparente de pisos - pulido | 2026-10-22 → 2026-10-28 (+6d) | 2026-11-02 → 2026-11-06 (+4d) | 9d → 20d |
| 448 | **BAÑOS** | 2026-10-23 → 2026-10-29 (+6d) | 2026-11-13 → 2026-11-20 (+7d) | 20d → 31d |
| 449 | Azulejo Mod. Ornamenta 60x30 | 2026-11-02 → 2026-11-06 (+4d) | 2026-11-07 → 2026-11-12 (+5d) | 20d → 31d |
| 450 | Impermeabilización en regadera | 2026-10-31 → 2026-11-05 (+5d) | 2026-11-03 → 2026-11-07 (+4d) | 20d → 31d |
| 451 | Piso Mod. Valparaiso 20x20 | 2026-11-07 → 2026-11-12 (+5d) | 2026-11-12 → 2026-11-19 (+7d) | 20d → 31d |
| 452 | Zoclo Adhara 44X89 | 2026-11-11 → 2026-11-18 (+7d) | 2026-11-13 → 2026-11-20 (+7d) | 50d → 61d |
| 453 | Piso Adhara 44X89 | 2026-11-07 → 2026-11-12 (+5d) | 2026-11-11 → 2026-11-18 (+7d) | 52d → 63d |
| 454 | Fabricacion de nicho decorativo en baños | 2026-10-23 → 2026-10-29 (+6d) | 2026-10-30 → 2026-11-05 (+6d) | 20d → 31d |
| 455 | Sardinel en regadera | 2026-11-07 → 2026-11-12 (+5d) | 2026-11-12 → 2026-11-19 (+7d) | 51d → 62d |
| 456 | **ESCALERA** | 2026-11-10 → 2026-11-17 (+7d) | 2026-11-23 → 2026-11-27 (+4d) | 9d → 20d |
| 457 | Piso Adhara 44X89 | 2026-11-10 → 2026-11-17 (+7d) | 2026-11-20 → 2026-11-25 (+5d) | 9d → 20d |
| 458 | Zoclo Adhara 44X89 | 2026-11-18 → 2026-11-23 (+5d) | 2026-11-23 → 2026-11-27 (+4d) | 9d → 20d |
| 459 | **EXTERIOR** | 2026-10-07 → 2026-10-13 (+6d) | 2026-10-12 → 2026-10-16 (+4d) | 14d → 25d |
| 460 | Rastrilleo, afine y nivelado de tierra | 2026-10-07 → 2026-10-13 (+6d) | 2026-10-12 → 2026-10-16 (+4d) | 14d → 25d |
| 461 | **SEGUNDA LIMPIEZA DE OBRA** | 2026-11-23 → 2026-11-27 (+4d) | 2026-11-27 → 2026-12-02 (+5d) | 33d → 44d |
| 462 | Segunda limpieza de obra | 2026-11-23 → 2026-11-27 (+4d) | 2026-11-25 → 2026-11-30 (+5d) | 33d → 44d |
| 463 | Segunda carga y acarreo de escombro | 2026-11-25 → 2026-11-30 (+5d) | 2026-11-27 → 2026-12-02 (+5d) | 33d → 44d |
| 464 | **CANCELERIA PUERTAS Y VENTANAS DE ALUMINIO** | 2026-11-10 → 2026-11-17 (+7d) | 2026-12-02 → 2026-12-08 (+6d) | 10d → 21d |
| 465 | Fijo medidas 0.30x4.90m | 2026-11-12 → 2026-11-19 (+7d) | 2026-11-23 → 2026-11-27 (+4d) | 18d → 29d |
| 466 | Ventana Corrediza 1.80x1.60m | 2026-11-10 → 2026-11-17 (+7d) | 2026-11-17 → 2026-11-21 (+4d) | 23d → 34d |
| 467 | Ventana Corrediza 0.60x0.40m | 2026-11-12 → 2026-11-19 (+7d) | 2026-11-19 → 2026-11-24 (+5d) | 21d → 32d |
| 468 | Ventana Corrediza 1.54x0.50m | 2026-11-12 → 2026-11-19 (+7d) | 2026-11-19 → 2026-11-24 (+5d) | 21d → 32d |
| 469 | Fijo medidas 1.40x2.50m | 2026-11-18 → 2026-11-23 (+5d) | 2026-11-23 → 2026-11-27 (+4d) | 12d → 23d |
| 470 | Ventana Corrediza 1.80x1.50m | 2026-11-20 → 2026-11-25 (+5d) | 2026-11-25 → 2026-11-30 (+5d) | 10d → 21d |
| 471 | Ventana Corrediza 1.40x1.60m | 2026-11-20 → 2026-11-25 (+5d) | 2026-11-25 → 2026-11-30 (+5d) | 10d → 21d |
| 472 | Ventana Corrediza 0.95x0.40m | 2026-11-20 → 2026-11-25 (+5d) | 2026-11-25 → 2026-11-30 (+5d) | 10d → 21d |
| 473 | Puerta corrediza 3.85x2.10m | 2026-11-23 → 2026-11-27 (+4d) | 2026-11-30 → 2026-12-04 (+4d) | 12d → 23d |
| 474 | Barandal de Cristal Templado | 2026-11-25 → 2026-11-30 (+5d) | 2026-12-02 → 2026-12-08 (+6d) | 10d → 21d |
| 475 | **CARPINTERIA, PUERTAS EXTERIORES E INTERIORES** | 2026-11-23 → 2026-11-27 (+4d) | 2026-12-03 → 2026-12-09 (+6d) | 9d → 20d |
| 476 | Puerta P-01 de seguridad | 2026-11-23 → 2026-11-27 (+4d) | 2026-11-28 → 2026-12-03 (+5d) | 13d → 24d |
| 477 | Puerta P-01 interior | 2026-11-23 → 2026-11-27 (+4d) | 2026-12-02 → 2026-12-08 (+6d) | 10d → 21d |
| 478 | Puerta P-02 interior | 2026-11-23 → 2026-11-27 (+4d) | 2026-12-02 → 2026-12-08 (+6d) | 10d → 21d |
| 479 | Puerta P-03 interior | 2026-11-28 → 2026-12-03 (+5d) | 2026-12-03 → 2026-12-09 (+6d) | 9d → 20d |
| 480 | Puerta P-04 interior | 2026-11-28 → 2026-12-03 (+5d) | 2026-12-03 → 2026-12-09 (+6d) | 9d → 20d |
| 481 | **VOLADOS, BARANDAL Y ESCALERA** | 2026-10-16 → 2026-10-21 (+5d) | 2026-11-27 → 2026-12-02 (+5d) | 17d → 28d |
| 482 | Barandal de Herreria en escalera | 2026-11-03 → 2026-11-07 (+4d) | 2026-11-07 → 2026-11-12 (+5d) | 32d → 43d |
| 483 | Escalera de herreria | 2026-10-16 → 2026-10-21 (+5d) | 2026-11-07 → 2026-11-12 (+5d) | 17d → 28d |
| 484 | Techumbre en acceso Principal | 2026-11-02 → 2026-11-06 (+4d) | 2026-11-20 → 2026-11-25 (+5d) | 23d → 34d |
| 485 | Techumbre en 1.80x0.50m | 2026-11-02 → 2026-11-06 (+4d) | 2026-11-10 → 2026-11-17 (+7d) | 17d → 28d |
| 486 | Techumbre en 1.40x0.50m | 2026-11-10 → 2026-11-17 (+7d) | 2026-11-20 → 2026-11-25 (+5d) | 17d → 28d |
| 487 | Imper con manto prefabricado | 2026-11-13 → 2026-11-20 (+7d) | 2026-11-21 → 2026-11-26 (+5d) | 17d → 28d |
| 488 | Plafon hoja tablaroca std | 2026-11-21 → 2026-11-26 (+5d) | 2026-11-27 → 2026-12-02 (+5d) | 17d → 28d |
| 489 | Acabado Woodstock en parte inf. Cubierta | 2026-11-21 → 2026-11-26 (+5d) | 2026-11-27 → 2026-12-02 (+5d) | 17d → 28d |
| 490 | **INSTALACION ELECTRICA** | 2026-10-23 → 2026-10-29 (+6d) | 2026-11-12 → 2026-11-19 (+7d) | 38d → 49d |
| 491 | Alimentación eléctrica base a centro de carga | 2026-10-29 → 2026-11-03 (+5d) | 2026-11-04 → 2026-11-09 (+5d) | 42d → 53d |
| 492 | Interruptor termomagnético 1x20 A | 2026-11-04 → 2026-11-09 (+5d) | 2026-11-05 → 2026-11-10 (+5d) | 42d → 53d |
| 493 | Interruptor termomagnético 2x20 A | 2026-11-04 → 2026-11-09 (+5d) | 2026-11-05 → 2026-11-10 (+5d) | 42d → 53d |
| 494 | Salida para apagador 3 vías | 2026-10-23 → 2026-10-29 (+6d) | 2026-10-28 → 2026-11-03 (+6d) | 38d → 49d |
| 495 | Salida para apagador doble | 2026-10-29 → 2026-11-03 (+5d) | 2026-11-02 → 2026-11-06 (+4d) | 40d → 51d |
| 496 | Salida para apagador sencillo | 2026-10-29 → 2026-11-03 (+5d) | 2026-11-02 → 2026-11-06 (+4d) | 40d → 51d |
| 497 | Salida de alumbrado en losa | 2026-10-29 → 2026-11-03 (+5d) | 2026-11-04 → 2026-11-09 (+5d) | 38d → 49d |

| ID | Task | Start | Finish | Total float |
| --- | --- | --- | --- | --- |
| 498 | Salida para contacto exterior doble | 2026-10-29 → 2026-11-03 (+5d) | 2026-10-30 → 2026-11-05 (+6d) | 41d → 52d |
| 499 | Salida para contacto 220 V | 2026-10-31 → 2026-11-05 (+5d) | 2026-11-04 → 2026-11-09 (+5d) | 38d → 49d |
| 500 | Salida para contacto doble | 2026-10-31 → 2026-11-05 (+5d) | 2026-11-06 → 2026-11-11 (+5d) | 41d → 52d |
| 501 | Salida para contacto doble área húmeda | 2026-11-04 → 2026-11-09 (+5d) | 2026-11-06 → 2026-11-11 (+5d) | 41d → 52d |
| 502 | Salida TV / telefonía / intercom | 2026-11-04 → 2026-11-09 (+5d) | 2026-11-09 → 2026-11-13 (+4d) | 39d → 50d |
| 503 | Extractor 4 baño | 2026-11-04 → 2026-11-09 (+5d) | 2026-11-10 → 2026-11-17 (+7d) | 38d → 49d |
| 504 | Prueba eléctrica | 2026-11-10 → 2026-11-17 (+7d) | 2026-11-12 → 2026-11-19 (+7d) | 38d → 49d |
| 505 | **INSTALACIÓN HIDRO-SANITARIA** | 2026-10-07 → 2026-10-13 (+6d) | 2026-10-21 → 2026-10-26 (+5d) | 9d → 20d |
| 506 | Tubería condensados PVC 1 | 2026-10-07 → 2026-10-13 (+6d) | 2026-10-14 → 2026-10-19 (+5d) | 9d → 20d |
| 507 | Tubería sanitaria PVC 4 | 2026-10-07 → 2026-10-13 (+6d) | 2026-10-14 → 2026-10-19 (+5d) | 17d → 28d |
| 508 | Coladera H-444 | 2026-10-14 → 2026-10-19 (+5d) | 2026-10-15 → 2026-10-20 (+5d) | 17d → 28d |
| 509 | Caja PVC para lavadora | 2026-10-07 → 2026-10-13 (+6d) | 2026-10-12 → 2026-10-16 (+4d) | 9d → 20d |
| 510 | Salida para secadora PVC 4 | 2026-10-07 → 2026-10-13 (+6d) | 2026-10-12 → 2026-10-16 (+4d) | 9d → 20d |
| 511 | Salida hidráulica para boiler | 2026-10-07 → 2026-10-13 (+6d) | 2026-10-09 → 2026-10-15 (+6d) | 10d → 21d |
| 512 | Salida hidráulica para llave de jardín | 2026-10-07 → 2026-10-13 (+6d) | 2026-10-12 → 2026-10-16 (+4d) | 9d → 20d |
| 513 | Salida hidráulica para lavabo | 2026-10-07 → 2026-10-13 (+6d) | 2026-10-13 → 2026-10-17 (+4d) | 9d → 20d |
| 514 | Salida hidráulica para purificación | 2026-10-07 → 2026-10-13 (+6d) | 2026-10-13 → 2026-10-17 (+4d) | 9d → 20d |
| 515 | Salida sanitaria para lavabo | 2026-10-09 → 2026-10-15 (+6d) | 2026-10-13 → 2026-10-17 (+4d) | 9d → 20d |
| 516 | Salida hidráulica para lavadero | 2026-10-09 → 2026-10-15 (+6d) | 2026-10-13 → 2026-10-17 (+4d) | 9d → 20d |
| 517 | Salida sanitaria para lavadero | 2026-10-12 → 2026-10-16 (+4d) | 2026-10-14 → 2026-10-19 (+5d) | 9d → 20d |
| 518 | Salida hidráulica para lavadora | 2026-10-12 → 2026-10-16 (+4d) | 2026-10-14 → 2026-10-19 (+5d) | 9d → 20d |
| 519 | Salida sanitaria para lavadora | 2026-10-13 → 2026-10-17 (+4d) | 2026-10-15 → 2026-10-20 (+5d) | 9d → 20d |
| 520 | Salida hidráulica para regadera | 2026-10-13 → 2026-10-17 (+4d) | 2026-10-19 → 2026-10-23 (+4d) | 14d → 25d |
| 521 | Salida sanitaria para regadera | 2026-10-13 → 2026-10-17 (+4d) | 2026-10-17 → 2026-10-22 (+5d) | 15d → 26d |
| 522 | Salida hidráulica para WC | 2026-10-09 → 2026-10-15 (+6d) | 2026-10-13 → 2026-10-17 (+4d) | 9d → 20d |
| 523 | Salida sanitaria para WC | 2026-10-13 → 2026-10-17 (+4d) | 2026-10-17 → 2026-10-22 (+5d) | 9d → 20d |
| 524 | Salida hidráulica para zinc | 2026-10-13 → 2026-10-17 (+4d) | 2026-10-17 → 2026-10-22 (+5d) | 9d → 20d |
| 525 | Salida sanitaria para zinc | 2026-10-15 → 2026-10-20 (+5d) | 2026-10-19 → 2026-10-23 (+4d) | 9d → 20d |
| 526 | Tubo para ventila de baño 2 | 2026-10-07 → 2026-10-13 (+6d) | 2026-10-14 → 2026-10-19 (+5d) | 9d → 20d |
| 527 | Tubo para minisplit PVC 3 | 2026-10-14 → 2026-10-19 (+5d) | 2026-10-20 → 2026-10-24 (+4d) | 9d → 20d |
| 528 | Cuadro de medición | 2026-10-12 → 2026-10-16 (+4d) | 2026-10-17 → 2026-10-22 (+5d) | 14d → 25d |
| 529 | Pozo de absorción 0.50x0.50x0.50 | 2026-10-12 → 2026-10-16 (+4d) | 2026-10-15 → 2026-10-20 (+5d) | 17d → 28d |
| 530 | Prueba sanitaria final | 2026-10-20 → 2026-10-26 (+6d) | 2026-10-21 → 2026-10-26 (+5d) | 13d → 24d |
| 531 | Prueba hidrostática final | 2026-10-19 → 2026-10-23 (+4d) | 2026-10-20 → 2026-10-24 (+4d) | 14d → 25d |
| 532 | Salida válvula control 19 mm | 2026-10-17 → 2026-10-22 (+5d) | 2026-10-19 → 2026-10-23 (+4d) | 14d → 25d |
| 533 | Salida válvula control 13 mm | 2026-10-17 → 2026-10-22 (+5d) | 2026-10-19 → 2026-10-23 (+4d) | 14d → 25d |
| 534 | Salida hidráulica para tanque hidroneumático | 2026-10-12 → 2026-10-16 (+4d) | 2026-10-15 → 2026-10-20 (+5d) | 17d → 28d |
| 535 | Salida hidráulica para Active Driver | 2026-10-12 → 2026-10-16 (+4d) | 2026-10-15 → 2026-10-20 (+5d) | 17d → 28d |
| 536 | **INSTALACION DE GAS** | 2026-10-05 → 2026-10-09 (+4d) | 2026-10-15 → 2026-10-20 (+5d) | 42d → 53d |
| 537 | Ramaleo para gas 1/2 | 2026-10-08 → 2026-10-14 (+6d) | 2026-10-15 → 2026-10-20 (+5d) | 42d → 53d |
| 538 | Excavación a mano material tipo B | 2026-10-05 → 2026-10-09 (+4d) | 2026-10-08 → 2026-10-14 (+6d) | 42d → 53d |
| 539 | **MUEBLES SANITARIOS** | 2026-11-12 → 2026-11-19 (+7d) | 2026-12-19 → 2026-12-28 (+9d) | 21d → 32d |
| 540 | WC completo Austral | 2026-11-12 → 2026-11-19 (+7d) | 2026-11-17 → 2026-11-21 (+4d) | 23d → 34d |
| 541 | Lavabo Senna con pedestal | 2026-11-12 → 2026-11-19 (+7d) | 2026-11-19 → 2026-11-24 (+5d) | 21d → 32d |
| 542 | Tarja / lavabo combo Guinea 80x45 | 2026-11-12 → 2026-11-19 (+7d) | 2026-11-17 → 2026-11-21 (+4d) | 49d → 60d |
| 543 | Regadera con monomando | 2026-11-17 → 2026-11-21 (+4d) | 2026-11-20 → 2026-11-25 (+5d) | 20d → 31d |
| 544 | Coladera inserto cerámico | 2026-11-18 → 2026-11-23 (+5d) | 2026-11-20 → 2026-11-25 (+5d) | 20d → 31d |
| 545 | Toallero sencillo | 2026-12-18 → 2026-12-26 (+8d) | 2026-12-19 → 2026-12-28 (+9d) | 9d → 20d |
| 546 | Toallero barra | 2026-12-18 → 2026-12-26 (+8d) | 2026-12-19 → 2026-12-28 (+9d) | 9d → 20d |
| 547 | Portapapel | 2026-12-18 → 2026-12-26 (+8d) | 2026-12-19 → 2026-12-28 (+9d) | 9d → 20d |
| 548 | Gancho baño | 2026-12-18 → 2026-12-26 (+8d) | 2026-12-19 → 2026-12-28 (+9d) | 9d → 20d |
| 549 | **EQUIPAMIENTO** | 2026-09-29 → 2026-10-03 (+4d) | 2026-10-06 → 2026-10-12 (+6d) | 68d → 79d |
| 550 | Electronivel Rotoplas 5 m | 2026-09-30 → 2026-10-05 (+5d) | 2026-10-02 → 2026-10-07 (+5d) | 71d → 82d |
| 551 | Manómetro | 2026-09-30 → 2026-10-05 (+5d) | 2026-10-01 → 2026-10-06 (+5d) | 72d → 83d |
| 552 | Interruptor de presión 30-50 PSI | 2026-09-30 → 2026-10-05 (+5d) | 2026-10-01 → 2026-10-06 (+5d) | 72d → 83d |
| 553 | Tanque hidroneumático FPS-24LX | 2026-09-30 → 2026-10-05 (+5d) | 2026-10-03 → 2026-10-08 (+5d) | 68d → 79d |
| 554 | Bomba sumergible Dominator 1.2 HP | 2026-10-03 → 2026-10-08 (+5d) | 2026-10-06 → 2026-10-12 (+6d) | 68d → 79d |
| 555 | Cisterna prefabricada 2800 L | 2026-09-29 → 2026-10-03 (+4d) | 2026-09-30 → 2026-10-05 (+5d) | 68d → 79d |
| 556 | **LUMINARIAS** | 2026-11-04 → 2026-11-09 (+5d) | 2026-11-10 → 2026-11-17 (+7d) | 38d → 49d |
| 557 | Roseta cerámica | 2026-11-04 → 2026-11-09 (+5d) | 2026-11-07 → 2026-11-12 (+5d) | 40d → 51d |
| 558 | Luminaria lagartijera LED | 2026-11-04 → 2026-11-09 (+5d) | 2026-11-07 → 2026-11-12 (+5d) | 40d → 51d |
| 559 | Spot 6W Tecnolite | 2026-11-04 → 2026-11-09 (+5d) | 2026-11-07 → 2026-11-12 (+5d) | 40d → 51d |
| 560 | Spot 7W Tecnolite | 2026-11-04 → 2026-11-09 (+5d) | 2026-11-07 → 2026-11-12 (+5d) | 40d → 51d |
| 561 | Arbotante exterior | 2026-11-04 → 2026-11-09 (+5d) | 2026-11-06 → 2026-11-11 (+5d) | 38d → 49d |
| 562 | Estaca LED exterior | 2026-11-06 → 2026-11-11 (+5d) | 2026-11-10 → 2026-11-17 (+7d) | 38d → 49d |
| 563 | Tira LED | 2026-11-06 → 2026-11-11 (+5d) | 2026-11-10 → 2026-11-17 (+7d) | 38d → 49d |
| 564 | Spot exterior 50W | 2026-11-04 → 2026-11-09 (+5d) | 2026-11-06 → 2026-11-11 (+5d) | 41d → 52d |
| 565 | **TIMBRE** | 2026-11-05 → 2026-11-10 (+5d) | 2026-11-07 → 2026-11-12 (+5d) | 40d → 51d |
| 566 | Timbre inalámbrico con bocina | 2026-11-05 → 2026-11-10 (+5d) | 2026-11-07 → 2026-11-12 (+5d) | 40d → 51d |
| 567 | **OBRA EXTERIOR - BARDA** | 2026-10-12 → 2026-10-16 (+4d) | 2026-11-03 → 2026-11-07 (+4d) | 46d → 57d |

| ID | Task | Start | Finish | Duration | Complete | Total float | Predecessors |
| --- | --- | --- | --- | --- | --- | --- | --- |
| 568 | Murete convencional | 2026-10-17 → 2026-10-22 (+5d) | 2026-10-23 → 2026-10-28 (+5d) |  |  | 52d → 63d |  |
| 569 | Barda de block aparente | 2026-10-12 → 2026-10-16 (+4d) | 2026-11-03 → 2026-11-07 (+4d) |  |  | 46d → 57d |  |
| 570 | **TERCER LIMPIEZA DE OBRA** | 2026-12-21 → 2026-12-28 (+7d) | 2027-01-11 → 2027-01-15 (+4d) |  |  | 9d → 20d |  |
| 571 | Limpieza fina para entrega | 2026-12-21 → 2026-12-28 (+7d) | 2026-12-30 → 2027-01-06 (+7d) |  |  | 9d → 20d |  |
| 572 | Tercera limpieza de obra | 2026-12-30 → 2027-01-06 (+7d) | 2027-01-06 → 2027-01-12 (+6d) |  |  | 9d → 20d |  |
| 573 | Tercera carga y acarreo de escombro | 2027-01-06 → 2027-01-12 (+6d) | 2027-01-11 → 2027-01-15 (+4d) |  |  | 9d → 20d |  |
| 574 | **LOTE 03 M-661 CORSAC-A** |  | 2027-01-14 → 2027-02-08 (+25d) | 186d → 206d | 6% → 1% | 6d → 1d |  |
| 575 | **HITOS IMPORTANTES DEL LOTE** |  | 2027-01-14 → 2027-02-08 (+25d) | 186d → 206d |  | 6d → 1d |  |
| 577 | Colado de Losa de Cimentación | 2026-06-16 A → 2026-07-10 (+24d) | 2026-06-16 A → 2026-07-10 (+24d) |  | 100% → 0% | none → 165d |  |
| 578 | Colado de Losa de Entrepiso | 2026-07-23 → 2026-08-18 (+26d) | 2026-07-23 → 2026-08-18 (+26d) |  |  | 140d → 135d |  |
| 579 | Colado de Losa de Azotea | 2026-08-29 → 2026-09-25 (+27d) | 2026-08-29 → 2026-09-25 (+27d) |  |  | 110d → 105d |  |
| 580 | Entrega de vivienda | 2027-01-14 → 2027-02-08 (+25d) | 2027-01-14 → 2027-02-08 (+25d) |  |  | 6d → 1d |  |
| 586 | **CIMENTACION** | 2026-05-26 A → 2026-06-19 A (+24d) | 2026-06-17 A → 2026-07-13 (+26d) |  | 100% → 7% | none → 1d |  |
| 587 | Cimbra perimetral losa de cimentación | 2026-05-26 A → 2026-06-19 A (+24d) | 2026-05-29 A → 2026-06-24 (+26d) |  | 100% → 58% | none → 1d | 584, 585 → 584FS+20d, 585 |
| 588 | Sistema antitermitas PVC | 2026-05-26 A → 2026-06-19 A (+24d) | 2026-05-29 A → 2026-06-24 (+26d) |  | 100% → 58% | none → 7d | 584, 585 → 584FS+20d, 585 |
| 589 | Hule negro en cimentación | 2026-05-29 A → 2026-06-24 (+26d) | 2026-06-01 A → 2026-06-25 (+24d) |  | 100% → 0% | none → 7d |  |
| 590 | Ramaleo poliducto eléctrico cimentación | 2026-06-01 A → 2026-06-25 (+24d) | 2026-06-03 A → 2026-06-27 (+24d) |  | 100% → 0% | none → 10d |  |
| 591 | Ramaleo eléctrico base-medición a centro de carga | 2026-06-01 A → 2026-06-25 (+24d) | 2026-06-02 A → 2026-06-26 (+24d) |  | 100% → 0% | none → 11d |  |
| 592 | Ramaleo eléctrico exterior | 2026-06-03 A → 2026-06-27 (+24d) | 2026-06-04 A → 2026-06-29 (+25d) |  | 100% → 0% | none → 10d |  |
| 593 | Ramaleo para cable poliducto 3/4 | 2026-06-03 A → 2026-06-27 (+24d) | 2026-06-04 A → 2026-06-29 (+25d) |  | 100% → 0% | none → 10d |  |
| 594 | Ramaleo para TV poliducto 3/4 | 2026-06-03 A → 2026-06-27 (+24d) | 2026-06-04 A → 2026-06-29 (+25d) |  | 100% → 0% | none → 10d |  |
| 595 | Ramaleo hidráulico CPVC 1-1/4" cimentación | 2026-06-01 A → 2026-06-25 (+24d) | 2026-06-02 A → 2026-06-26 (+24d) |  | 100% → 0% | none → 7d |  |
| 596 | Ramaleo hidráulico CPVC 1 cimentación | 2026-06-01 A → 2026-06-25 (+24d) | 2026-06-02 A → 2026-06-26 (+24d) |  | 100% → 0% | none → 7d |  |
| 597 | Ramaleo hidráulico CPVC 3/4 cimentación | 2026-06-02 A → 2026-06-26 (+24d) | 2026-06-04 A → 2026-06-29 (+25d) |  | 100% → 0% | none → 7d |  |
| 598 | Ramaleo hidráulico CPVC 1/2 cimentación | 2026-06-04 A → 2026-06-29 (+25d) | 2026-06-06 A → 2026-07-01 (+25d) |  | 100% → 0% | none → 7d |  |
| 599 | Prueba hidráulica | 2026-06-06 A → 2026-07-01 (+25d) | 2026-06-08 A → 2026-07-02 (+24d) |  | 100% → 0% | none → 7d |  |
| 600 | Ramaleo sanitario PVC 4 cimentación | 2026-06-02 A → 2026-06-26 (+24d) | 2026-06-04 A → 2026-06-29 (+25d) |  | 100% → 0% | none → 8d |  |
| 601 | Ramaleo sanitario PVC 2 cimentación | 2026-06-04 A → 2026-06-29 (+25d) | 2026-06-05 A → 2026-06-30 (+25d) |  | 100% → 0% | none → 8d |  |
| 602 | Prueba sanitaria | 2026-06-05 A → 2026-06-30 (+25d) | 2026-06-06 A → 2026-07-01 (+25d) |  | 100% → 0% | none → 8d |  |
| 603 | Acero contratrabe CT-1 | 2026-06-05 A → 2026-06-30 (+25d) | 2026-06-10 A → 2026-07-04 (+24d) |  | 100% → 0% | none → 1d |  |
| 604 | Acero contratrabe CT-2 | 2026-06-05 A → 2026-06-30 (+25d) | 2026-06-10 A → 2026-07-04 (+24d) |  | 100% → 0% | none → 1d |  |
| 605 | Malla electrosoldada 6-6/8-8 | 2026-06-12 A → 2026-07-08 (+26d) | 2026-06-15 A → 2026-07-09 (+24d) |  | 100% → 0% | none → 1d |  |
| 606 | Bastón de refuerzo LS | 2026-06-10 A → 2026-07-06 (+26d) | 2026-06-12 A → 2026-07-07 (+25d) |  | 100% → 0% | none → 1d |  |
| 607 | Bastón de refuerzo LI | 2026-06-10 A → 2026-07-06 (+26d) | 2026-06-12 A → 2026-07-07 (+25d) |  | 100% → 0% | none → 1d |  |
| 608 | Colado losa de cimentación f’c=200 | 2026-06-15 A → 2026-07-10 (+25d) | 2026-06-16 A → 2026-07-10 (+24d) |  | 100% → 0% | none → 1d |  |
| 609 | Curado de concreto | 2026-06-16 A → 2026-07-11 (+25d) | 2026-06-17 A → 2026-07-13 (+26d) |  | 100% → 0% | none → 1d |  |
| 610 | Acero zapata ZT-1 | 2026-06-10 A → 2026-07-06 (+26d) | 2026-06-15 A → 2026-07-09 (+24d) |  | 100% → 0% | none → 1d |  |
| 611 | Acero zapata ZT-2 | 2026-06-10 A → 2026-07-06 (+26d) | 2026-06-15 A → 2026-07-09 (+24d) |  | 100% → 0% | none → 1d |  |
| 612 | **MUROS, PLANTA BAJA. CASTILLOS Y CERRAMIENTOS** | 2026-06-11 A → 2026-07-07 (+26d) | 2026-07-06 → 2026-07-31 (+25d) |  | 18% → 0% | 154d → 6d |  |
| 613 | Anclaje de castillos y Columnas PB | 2026-06-11 A → 2026-07-07 (+26d) | 2026-06-17 A → 2026-07-13 (+26d) |  | 100% → 0% | none → 152d |  |
| 614 | Castillo K1 | 2026-06-17 A → 2026-07-13 (+26d) | 2026-06-23 → 2026-07-17 (+24d) |  | 69% → 0% | 0.75d → 152d |  |
| 615 | Castillo K3 | 2026-06-19 A → 2026-07-15 (+26d) | 2026-06-24 → 2026-07-18 (+24d) |  | 25% → 0% | 157d → 152d |  |
| 616 | Castillo K4 | 2026-06-19 A → 2026-07-15 (+26d) | 2026-06-24 → 2026-07-18 (+24d) |  | 25% → 0% | 157d → 152d |  |
| 617 | Castillo K5 | 2026-06-23 → 2026-07-17 (+24d) | 2026-06-26 → 2026-07-21 (+25d) |  |  | 157d → 152d |  |
| 618 | Refuerzo de muro K6 | 2026-06-24 → 2026-07-18 (+24d) | 2026-06-27 → 2026-07-22 (+25d) |  |  | 157d → 152d |  |
| 619 | Dala de cerramiento CR-1 | 2026-06-24 → 2026-07-18 (+24d) | 2026-06-29 → 2026-07-23 (+24d) |  |  | 160d → 155d |  |
| 620 | Dala de cerramiento CR-2 | 2026-06-24 → 2026-07-18 (+24d) | 2026-06-27 → 2026-07-22 (+25d) |  |  | 161d → 156d |  |
| 621 | Cadena block dala | 2026-06-27 → 2026-07-22 (+25d) | 2026-07-02 → 2026-07-28 (+26d) |  |  | 157d → 152d |  |
| 622 | Muro de ladrillo aparente | 2026-06-17 A → 2026-07-13 (+26d) | 2026-07-06 → 2026-07-31 (+25d) |  | 18% → 0% | 6d → 1d |  |
| 623 | Muro de block planta baja | 2026-06-19 A → 2026-07-15 (+26d) | 2026-07-06 → 2026-07-31 (+25d) |  | 6% → 0% | 6d → 1d |  |
| 624 | Ramaleo electrico en Muros Planta Baja | 2026-06-24 → 2026-07-18 (+24d) | 2026-06-29 → 2026-07-23 (+24d) |  |  | 9d → 4d |  |
| 625 | Ramaleo para cable poliducto 3/4 | 2026-06-29 → 2026-07-23 (+24d) | 2026-07-01 → 2026-07-27 (+26d) |  |  | 9d → 4d |  |
| 626 | Ramaleo para TV poliducto 3/4 | 2026-07-01 → 2026-07-27 (+26d) | 2026-07-04 → 2026-07-30 (+26d) |  |  | 9d → 4d |  |
| 627 | **ESCALERA** | 2026-07-23 → 2026-08-18 (+26d) | 2026-08-05 → 2026-08-29 (+24d) |  |  | 83d → 78d |  |
| 628 | Escalera de concreto armado | 2026-07-23 → 2026-08-18 (+26d) | 2026-08-05 → 2026-08-29 (+24d) |  |  | 83d → 78d |  |
| 629 | **LOSA DE ENTREPISO (viegueta y caseton)** | 2026-07-03 → 2026-07-29 (+26d) | 2026-07-24 → 2026-08-19 (+26d) |  |  | 9d → 4d |  |
| 630 | Dala de coronamiento 10cm | 2026-07-13 → 2026-08-06 (+24d) | 2026-07-16 → 2026-08-10 (+25d) |  |  | 9d → 4d |  |
| 631 | Dala de coronamiento 12cm | 2026-07-14 → 2026-08-07 (+24d) | 2026-07-17 → 2026-08-11 (+25d) |  |  | 8d → 3d |  |
| 632 | Trabe TR-1 | 2026-07-03 → 2026-07-29 (+26d) | 2026-07-07 → 2026-08-01 (+25d) |  |  | 10d → 5d |  |
| 633 | Trabe TR-2 | 2026-07-06 → 2026-07-30 (+24d) | 2026-07-09 → 2026-08-04 (+26d) |  |  | 8d → 3d |  |
| 634 | Nervadura NR-1 | 2026-07-07 → 2026-07-31 (+24d) | 2026-07-10 → 2026-08-05 (+26d) |  |  | 7d → 2d |  |
| 635 | Nervadura NR-2 | 2026-07-08 → 2026-08-01 (+24d) | 2026-07-13 → 2026-08-06 (+24d) |  |  | 6d → 1d |  |
| 636 | Nervadura NR-3 | 2026-07-08 → 2026-08-01 (+24d) | 2026-07-13 → 2026-08-06 (+24d) |  |  | 6d → 1d |  |
| 637 | Nervadura NR-4 | 2026-07-08 → 2026-08-01 (+24d) | 2026-07-13 → 2026-08-06 (+24d) |  |  | 6d → 1d |  |
| 638 | Acero de refuerzo en nervios #3 | 2026-07-13 → 2026-08-06 (+24d) | 2026-07-15 → 2026-08-08 (+24d) |  |  | 6d → 1d |  |
| 639 | Acero de refuerzo long. #3 | 2026-07-14 → 2026-08-07 (+24d) | 2026-07-17 → 2026-08-11 (+25d) |  |  | 7d → 2d |  |
| 640 | Acero de refuerzo long. #4 | 2026-07-14 → 2026-08-07 (+24d) | 2026-07-17 → 2026-08-11 (+25d) |  |  | 7d → 2d |  |
| 641 | Malla 66-10/10 losa de compresión | 2026-07-20 → 2026-08-13 (+24d) | 2026-07-22 → 2026-08-17 (+26d) |  |  | 6d → 1d |  |
| 642 | Acero de Losa Maciza | 2026-07-13 → 2026-08-06 (+24d) | 2026-07-16 → 2026-08-10 (+25d) |  |  | 11d → 6d |  |
| 643 | Caseton de 60x60x20cm | 2026-07-13 → 2026-08-06 (+24d) | 2026-07-15 → 2026-08-08 (+24d) |  |  | 10d → 5d |  |

| ID | Task | Start | Finish | Total float |
| --- | --- | --- | --- | --- |
| 644 | Concreto losa de entrepiso f’c=200 | 2026-07-22 → 2026-08-17 (+26d) | 2026-07-23 → 2026-08-18 (+26d) | 6d → 1d |
| 645 | Curado de concreto | 2026-07-23 → 2026-08-18 (+26d) | 2026-07-24 → 2026-08-19 (+26d) | 6d → 1d |
| 646 | Cimbra losa de azotea | 2026-07-08 → 2026-08-01 (+24d) | 2026-07-14 → 2026-08-07 (+24d) | 7d → 2d |
| 647 | Cimbra exterior corta losa | 2026-07-16 → 2026-08-10 (+25d) | 2026-07-20 → 2026-08-13 (+24d) | 8d → 3d |
| 648 | Ramaleo poliducto eléctrico entrepiso | 2026-07-15 → 2026-08-08 (+24d) | 2026-07-17 → 2026-08-11 (+25d) | 145d → 140d |
| 649 | Ramaleo hidráulico CPVC 3/4" | 2026-07-16 → 2026-08-10 (+25d) | 2026-07-18 → 2026-08-12 (+25d) | 6d → 1d |
| 650 | Ramaleo hidráulico CPVC 1/2" | 2026-07-18 → 2026-08-12 (+25d) | 2026-07-20 → 2026-08-13 (+24d) | 6d → 1d |
| 651 | Prueba hidráulica | 2026-07-18 → 2026-08-12 (+25d) | 2026-07-20 → 2026-08-13 (+24d) | 6d → 1d |
| 652 | Ramaleo sanitario PVC 4" | 2026-07-16 → 2026-08-10 (+25d) | 2026-07-18 → 2026-08-12 (+25d) | 6d → 1d |
| 653 | Ramaleo sanitario PVC 2" | 2026-07-18 → 2026-08-12 (+25d) | 2026-07-20 → 2026-08-13 (+24d) | 6d → 1d |
| 654 | Prueba sanitaria | 2026-07-18 → 2026-08-12 (+25d) | 2026-07-20 → 2026-08-13 (+24d) | 6d → 1d |
| 655 | **MUROS EN PLANTA ALTA, CASTILLOS Y CERRM.** | 2026-07-16 → 2026-08-10 (+25d) | 2026-08-12 → 2026-09-07 (+26d) | 7d → 2d |
| 656 | Anclaje de castillos y Columnas PA | 2026-07-16 → 2026-08-10 (+25d) | 2026-07-21 → 2026-08-14 (+24d) | 7d → 2d |
| 657 | Castillo K1 | 2026-07-24 → 2026-08-19 (+26d) | 2026-07-30 → 2026-08-24 (+25d) | 10d → 5d |
| 658 | Castillo K2 | 2026-07-27 → 2026-08-20 (+24d) | 2026-07-31 → 2026-08-25 (+25d) | 9d → 4d |
| 659 | Castillo K4 | 2026-07-30 → 2026-08-24 (+25d) | 2026-08-03 → 2026-08-27 (+24d) | 10d → 5d |
| 660 | Castillo K5 | 2026-07-30 → 2026-08-24 (+25d) | 2026-08-03 → 2026-08-27 (+24d) | 10d → 5d |
| 661 | Castillo K6 | 2026-07-30 → 2026-08-24 (+25d) | 2026-08-03 → 2026-08-27 (+24d) | 10d → 5d |
| 662 | Refuerzo de muro | 2026-07-31 → 2026-08-25 (+25d) | 2026-08-04 → 2026-08-28 (+24d) | 9d → 4d |
| 663 | Dala de cerramiento CR-1 | 2026-08-04 → 2026-08-28 (+24d) | 2026-08-08 → 2026-09-02 (+25d) | 9d → 4d |
| 664 | Dala de cerramiento CR-2 | 2026-08-04 → 2026-08-28 (+24d) | 2026-08-08 → 2026-09-02 (+25d) | 9d → 4d |
| 665 | Cadena block dala | 2026-08-08 → 2026-09-03 (+26d) | 2026-08-12 → 2026-09-07 (+26d) | 9d → 4d |
| 666 | Muro de ladrillo aparente | 2026-07-24 → 2026-08-19 (+26d) | 2026-08-12 → 2026-09-07 (+26d) | 6d → 1d |
| 667 | Muro de block planta alta | 2026-07-27 → 2026-08-20 (+24d) | 2026-08-12 → 2026-09-07 (+26d) | 6d → 1d |
| 668 | Ramaleo electrico en Muros Planta Alta | 2026-08-04 → 2026-08-28 (+24d) | 2026-08-08 → 2026-09-02 (+25d) | 17d → 12d |
| 669 | **LOSA AZOTEA** | 2026-08-12 → 2026-09-07 (+26d) | 2026-08-31 → 2026-09-26 (+26d) | 6d → 1d |
| 670 | Cortalosa CL-1 | 2026-08-26 → 2026-09-22 (+27d) | 2026-08-28 → 2026-09-24 (+27d) | 6d → 1d |
| 671 | Cortalosa CL-2 | 2026-08-26 → 2026-09-22 (+27d) | 2026-08-28 → 2026-09-24 (+27d) | 6d → 1d |
| 672 | Vigueta pretensada V11-30 125 | 2026-08-12 → 2026-09-07 (+26d) | 2026-08-19 → 2026-09-12 (+24d) | 9d → 4d |
| 673 | Vigueta pretensada V11-30 185 | 2026-08-12 → 2026-09-07 (+26d) | 2026-08-19 → 2026-09-12 (+24d) | 9d → 4d |
| 674 | Vigueta pretensada V11-30 190 | 2026-08-12 → 2026-09-07 (+26d) | 2026-08-19 → 2026-09-12 (+24d) | 9d → 4d |
| 675 | Vigueta pretensada V11-30 205 | 2026-08-14 → 2026-09-09 (+26d) | 2026-08-21 → 2026-09-15 (+25d) | 7d → 2d |
| 676 | Vigueta pretensada V11-30 215 | 2026-08-14 → 2026-09-09 (+26d) | 2026-08-21 → 2026-09-15 (+25d) | 7d → 2d |
| 677 | Vigueta pretensada V11-30 260 | 2026-08-17 → 2026-09-10 (+24d) | 2026-08-22 → 2026-09-17 (+26d) | 6d → 1d |
| 678 | Vigueta pretensada V11-30 285 | 2026-08-17 → 2026-09-10 (+24d) | 2026-08-22 → 2026-09-17 (+26d) | 6d → 1d |
| 679 | Vigueta pretensada V11-40 330 | 2026-08-17 → 2026-09-10 (+24d) | 2026-08-22 → 2026-09-17 (+26d) | 6d → 1d |
| 680 | Vigueta pretensada V11-40 335 | 2026-08-17 → 2026-09-10 (+24d) | 2026-08-22 → 2026-09-17 (+26d) | 6d → 1d |
| 681 | Vigueta pretensada V11-40 505 | 2026-08-17 → 2026-09-10 (+24d) | 2026-08-22 → 2026-09-17 (+26d) | 6d → 1d |
| 682 | Bovedilla poliestireno azotea | 2026-08-22 → 2026-09-17 (+26d) | 2026-08-26 → 2026-09-22 (+27d) | 6d → 1d |
| 683 | Malla 66-10/10 losa de compresión | 2026-08-26 → 2026-09-22 (+27d) | 2026-08-28 → 2026-09-24 (+27d) | 6d → 1d |
| 684 | Concreto losa de azotea f’c=200 | 2026-08-28 → 2026-09-24 (+27d) | 2026-08-29 → 2026-09-25 (+27d) | 6d → 1d |
| 685 | Curado de concreto | 2026-08-31 → 2026-09-25 (+25d) | 2026-08-31 → 2026-09-26 (+26d) | 6d → 1d |
| 686 | Cimbra losa de azotea | 2026-08-12 → 2026-09-07 (+26d) | 2026-08-19 → 2026-09-12 (+24d) | 14d → 9d |
| 687 | Ramaleo de poliducto para inst. electrica en azotea | 2026-08-26 → 2026-09-22 (+27d) | 2026-08-28 → 2026-09-24 (+27d) | 6d → 1d |
| 688 | **PRETIL Y ACABADOS DE AZOTEA** | 2026-09-01 → 2026-09-26 (+25d) | 2026-09-25 → 2026-10-20 (+25d) | 6d → 1d |
| 689 | Castillo K1 | 2026-09-03 → 2026-09-29 (+26d) | 2026-09-09 → 2026-10-05 (+26d) | 6d → 1d |
| 690 | Dala de cerramiento en pretil | 2026-09-07 → 2026-10-02 (+25d) | 2026-09-11 → 2026-10-07 (+26d) | 6d → 1d |
| 691 | Muro de block 12x15x40 | 2026-09-01 → 2026-09-26 (+25d) | 2026-09-07 → 2026-10-02 (+25d) | 6d → 1d |
| 692 | Chaflán en azotea | 2026-09-09 → 2026-10-05 (+26d) | 2026-09-14 → 2026-10-09 (+25d) | 6d → 1d |
| 693 | Diamante de entortado | 2026-09-09 → 2026-10-05 (+26d) | 2026-09-14 → 2026-10-09 (+25d) | 6d → 1d |
| 694 | Aplanado exterior Mortermax fino | 2026-09-11 → 2026-10-07 (+26d) | 2026-09-18 → 2026-10-14 (+26d) | 6d → 1d |
| 695 | Entortado de Losa | 2026-09-21 → 2026-10-15 (+24d) | 2026-09-25 → 2026-10-20 (+25d) | 6d → 1d |
| 696 | Curado de concreto | 2026-09-18 → 2026-10-14 (+26d) | 2026-09-21 → 2026-10-15 (+24d) | 6d → 1d |
| 697 | **PRIMERA LIMPIEZA DE OBRA** | 2026-09-01 → 2026-09-26 (+25d) | 2026-09-04 → 2026-10-01 (+27d) | 66d → 61d |
| 698 | Primera limpieza de obra | 2026-09-01 → 2026-09-26 (+25d) | 2026-09-02 → 2026-09-29 (+27d) | 66d → 61d |
| 699 | Primera carga y acarreo de escombro | 2026-09-03 → 2026-09-29 (+26d) | 2026-09-04 → 2026-10-01 (+27d) | 66d → 61d |
| 700 | **IMPERMEABILIZACION** | 2026-09-25 → 2026-10-20 (+25d) | 2026-10-01 → 2026-10-26 (+25d) | 6d → 1d |
| 701 | Impermeabilización de pretil Kover 5 años | 2026-09-25 → 2026-10-20 (+25d) | 2026-09-30 → 2026-10-24 (+24d) | 7d → 2d |
| 702 | Impermeabilización de losa Kover 5 años | 2026-09-25 → 2026-10-20 (+25d) | 2026-10-01 → 2026-10-26 (+25d) | 6d → 1d |
| 703 | **ALBAÑILERIA** | 2026-09-07 → 2026-10-02 (+25d) | 2026-11-25 → 2026-12-19 (+24d) | 25d → 20d |
| 704 | Lavadero de granito | 2026-10-21 → 2026-11-17 (+27d) | 2026-10-26 → 2026-11-21 (+26d) | 65d → 60d |
| 705 | Ranurado y resane general inst. en muros | 2026-09-29 → 2026-10-23 (+24d) | 2026-10-02 → 2026-10-27 (+25d) | 8d → 3d |
| 706 | Ranurado y resane eléctrico 1/2 a 3/4 | 2026-09-29 → 2026-10-23 (+24d) | 2026-10-02 → 2026-10-27 (+25d) | 8d → 3d |
| 707 | Ranurado y resane hidráulico 1/2 a 1 | 2026-10-01 → 2026-10-27 (+26d) | 2026-10-03 → 2026-10-28 (+25d) | 7d → 2d |
| 708 | Resane sanitario tubería 2 | 2026-10-01 → 2026-10-27 (+26d) | 2026-10-03 → 2026-10-28 (+25d) | 7d → 2d |
| 709 | Resane sanitario tubería 4 | 2026-10-01 → 2026-10-27 (+26d) | 2026-10-03 → 2026-10-28 (+25d) | 7d → 2d |
| 710 | Resane minisplit tubería 3 | 2026-10-01 → 2026-10-27 (+26d) | 2026-10-03 → 2026-10-28 (+25d) | 7d → 2d |
| 711 | Ramaleo hidráulico exterior CPVC 1 1/4 | 2026-10-01 → 2026-10-27 (+26d) | 2026-10-05 → 2026-10-29 (+24d) | 6d → 1d |
| 712 | Ramaleo hidráulico exterior CPVC 1 | 2026-10-01 → 2026-10-27 (+26d) | 2026-10-03 → 2026-10-28 (+25d) | 6d → 1d |
| 713 | Ramaleo hidráulico exterior CPVC 3/4 | 2026-10-03 → 2026-10-29 (+26d) | 2026-10-06 → 2026-10-30 (+24d) | 6d → 1d |

| ID | Task | Start | Finish | Total float |
| --- | --- | --- | --- | --- |
| 714 | Ramaleo hidráulico exterior CPVC 1/2 | 2026-10-03 → 2026-10-29 (+26d) | 2026-10-06 → 2026-10-30 (+24d) | 6d → 1d |
| 715 | Prueba hidráulica | 2026-10-06 → 2026-10-31 (+25d) | 2026-10-07 → 2026-11-02 (+26d) | 6d → 1d |
| 716 | Ramaleo sanitario exterior PVC 4 | 2026-10-01 → 2026-10-27 (+26d) | 2026-10-06 → 2026-10-30 (+24d) | 6d → 1d |
| 717 | Ramaleo sanitario exterior PVC 2 | 2026-10-02 → 2026-10-28 (+26d) | 2026-10-06 → 2026-10-30 (+24d) | 6d → 1d |
| 718 | Prueba sanitaria | 2026-10-06 → 2026-10-31 (+25d) | 2026-10-07 → 2026-11-02 (+26d) | 6d → 1d |
| 719 | Centro de carga muros PB | 2026-10-05 → 2026-10-30 (+25d) | 2026-10-09 → 2026-11-04 (+26d) | 8d → 3d |
| 720 | Firme de concreto 8 cm | 2026-10-07 → 2026-11-02 (+26d) | 2026-10-13 → 2026-11-06 (+24d) | 59d → 54d |
| 721 | Curado de concreto | 2026-10-13 → 2026-11-06 (+24d) | 2026-10-14 → 2026-11-07 (+24d) | 59d → 54d |
| 722 | Cisterna 2800 L con instalación | 2026-09-07 → 2026-10-02 (+25d) | 2026-09-30 → 2026-10-24 (+24d) | 65d → 60d |
| 723 | Banqueta y huellas de concreto | 2026-10-15 → 2026-11-09 (+25d) | 2026-10-24 → 2026-11-20 (+27d) | 42d → 37d |
| 724 | Curado de concreto | 2026-10-26 → 2026-11-20 (+25d) | 2026-10-26 → 2026-11-21 (+26d) | 42d → 37d |
| 725 | Número oficial | 2026-11-24 → 2026-12-18 (+24d) | 2026-11-25 → 2026-12-19 (+24d) | 42d → 37d |
| 726 | Detallado de rodapié exterior | 2026-10-09 → 2026-11-04 (+26d) | 2026-10-15 → 2026-11-09 (+25d) | 74d → 69d |
| 727 | Detalle de losas y volados acabado fino | 2026-10-01 → 2026-10-27 (+26d) | 2026-10-06 → 2026-10-30 (+24d) | 10d → 5d |
| 728 | Detalle fino en muros interiores | 2026-10-03 → 2026-10-29 (+26d) | 2026-10-09 → 2026-11-04 (+26d) | 7d → 2d |
| 729 | Jardín interior bajo escalera con pozo de absorción | 2026-10-01 → 2026-10-27 (+26d) | 2026-10-16 → 2026-11-10 (+25d) | 10d → 5d |
| 730 | **ACABADOS EN FACHADA A** | 2026-09-25 → 2026-10-20 (+25d) | 2026-11-24 → 2026-12-18 (+24d) | 42d → 37d |
| 731 | Aplanado grueso fachada | 2026-09-25 → 2026-10-20 (+25d) | 2026-10-09 → 2026-11-04 (+26d) | 48d → 43d |
| 732 | Aplanado fino estuco fachada | 2026-10-03 → 2026-10-29 (+26d) | 2026-10-16 → 2026-11-10 (+25d) | 48d → 43d |
| 733 | Pintura acrílica 1-0102P | 2026-11-10 → 2026-12-07 (+27d) | 2026-11-21 → 2026-12-16 (+25d) | 44d → 39d |
| 734 | Pintura acrílica 1-1404D | 2026-11-10 → 2026-12-07 (+27d) | 2026-11-24 → 2026-12-18 (+24d) | 42d → 37d |
| 735 | Cantera 40x60cm | 2026-10-16 → 2026-11-10 (+25d) | 2026-11-03 → 2026-11-28 (+25d) | 48d → 43d |
| 736 | Lambrin de permabase 1 cara | 2026-10-09 → 2026-11-04 (+26d) | 2026-10-14 → 2026-11-07 (+24d) | 55d → 50d |
| 737 | Enchapado de Permabase | 2026-10-14 → 2026-11-07 (+24d) | 2026-10-19 → 2026-11-12 (+24d) | 55d → 50d |
| 738 | Cubierta de Permabase | 2026-10-19 → 2026-11-12 (+24d) | 2026-10-24 → 2026-11-20 (+27d) | 55d → 50d |
| 739 | **APLANADOS Y PINTURA** | 2026-10-01 → 2026-10-27 (+26d) | 2026-12-19 → 2027-01-19 (+31d) | 8d → 3d |
| 740 | Yeso pulido en muros | 2026-10-12 → 2026-11-05 (+24d) | 2026-10-28 → 2026-11-24 (+27d) | 6d → 1d |
| 741 | Aplanado en muros enjarre grueso | 2026-10-01 → 2026-10-27 (+26d) | 2026-10-07 → 2026-11-02 (+26d) | 9d → 4d |
| 742 | Pintura vinílica OR-W13 SHOELACE | 2026-12-03 → 2027-01-02 (+30d) | 2026-12-19 → 2027-01-19 (+31d) | 6d → 1d |
| 743 | Pintura vinílica PPUI5-13 Creamy M. | 2026-11-27 → 2026-12-23 (+26d) | 2026-12-10 → 2027-01-08 (+29d) | 14d → 9d |
| 744 | Pintura vinílica MD-06 Nano White | 2026-11-27 → 2026-12-23 (+26d) | 2026-12-08 → 2027-01-06 (+29d) | 16d → 11d |
| 745 | Yeso pulido en plafones | 2026-10-01 → 2026-10-27 (+26d) | 2026-10-14 → 2026-11-07 (+24d) | 8d → 3d |
| 746 | Perfilado de puertas y ventanas | 2026-10-16 → 2026-11-10 (+25d) | 2026-10-21 → 2026-11-17 (+27d) | 69d → 64d |
| 747 | **PISOS Y AZULEJOS** | 2026-10-22 → 2026-11-18 (+27d) | 2026-11-23 → 2026-12-17 (+24d) | 6d → 1d |
| 748 | **AREA SOCIAL** | 2026-10-27 → 2026-11-21 (+25d) | 2026-11-13 → 2026-12-10 (+27d) | 6d → 1d |
| 749 | Piso Adhara 44X89 | 2026-10-27 → 2026-11-21 (+25d) | 2026-11-12 → 2026-12-09 (+27d) | 6d → 1d |
| 750 | Zoclo Adhara 44X89 | 2026-11-07 → 2026-12-03 (+26d) | 2026-11-13 → 2026-12-10 (+27d) | 23d → 18d |
| 751 | **RECAMARAS** | 2026-10-22 → 2026-11-18 (+27d) | 2026-11-02 → 2026-11-27 (+25d) | 6d → 1d |
| 752 | Acabado aparente de pisos - pulido | 2026-10-22 → 2026-11-18 (+27d) | 2026-11-02 → 2026-11-27 (+25d) | 6d → 1d |
| 753 | **BAÑOS** | 2026-10-23 → 2026-11-19 (+27d) | 2026-11-13 → 2026-12-10 (+27d) | 17d → 12d |
| 754 | Azulejo Mod. Ornamenta 60x30 | 2026-11-02 → 2026-11-27 (+25d) | 2026-11-07 → 2026-12-03 (+26d) | 17d → 12d |
| 755 | Impermeabilización en regadera | 2026-10-31 → 2026-11-26 (+26d) | 2026-11-03 → 2026-11-28 (+25d) | 17d → 12d |
| 756 | Piso Mod. Valparaiso 20x20 | 2026-11-07 → 2026-12-03 (+26d) | 2026-11-12 → 2026-12-09 (+27d) | 17d → 12d |
| 757 | Zoclo Adhara 44X89 | 2026-11-11 → 2026-12-08 (+27d) | 2026-11-13 → 2026-12-10 (+27d) | 50d → 45d |
| 758 | Piso Adhara 44X89 | 2026-11-07 → 2026-12-03 (+26d) | 2026-11-11 → 2026-12-08 (+27d) | 52d → 47d |
| 759 | Fabricacion de nicho decorativo en baños | 2026-10-23 → 2026-11-19 (+27d) | 2026-10-30 → 2026-11-26 (+27d) | 17d → 12d |
| 760 | Sardinel en regadera | 2026-11-07 → 2026-12-03 (+26d) | 2026-11-12 → 2026-12-09 (+27d) | 51d → 46d |
| 761 | **ESCALERA** | 2026-11-10 → 2026-12-07 (+27d) | 2026-11-23 → 2026-12-17 (+24d) | 6d → 1d |
| 762 | Piso Adhara 44X89 | 2026-11-10 → 2026-12-07 (+27d) | 2026-11-20 → 2026-12-15 (+25d) | 6d → 1d |
| 763 | Zoclo Adhara 44X89 | 2026-11-18 → 2026-12-12 (+24d) | 2026-11-23 → 2026-12-17 (+24d) | 6d → 1d |
| 764 | **EXTERIOR** | 2026-10-07 → 2026-11-02 (+26d) | 2026-10-12 → 2026-11-05 (+24d) | 11d → 6d |
| 765 | Rastrilleo, afine y nivelado de tierra | 2026-10-07 → 2026-11-02 (+26d) | 2026-10-12 → 2026-11-05 (+24d) | 11d → 6d |
| 766 | **SEGUNDA LIMPIEZA DE OBRA** | 2026-11-23 → 2026-12-17 (+24d) | 2026-11-27 → 2026-12-22 (+25d) | 29d → 24d |
| 767 | Segunda limpieza de obra | 2026-11-23 → 2026-12-17 (+24d) | 2026-11-25 → 2026-12-19 (+24d) | 29d → 24d |
| 768 | Segunda carga y acarreo de escombro | 2026-11-25 → 2026-12-21 (+26d) | 2026-11-27 → 2026-12-22 (+25d) | 29d → 24d |
| 769 | **CANCELERIA PUERTAS Y VENTANAS DE ALUMINIO** | 2026-11-10 → 2026-12-07 (+27d) | 2026-12-02 → 2026-12-30 (+28d) | 7d → 2d |
| 770 | Fijo medidas 0.30x4.90m | 2026-11-12 → 2026-12-09 (+27d) | 2026-11-23 → 2026-12-17 (+24d) | 15d → 10d |
| 771 | Ventana Corrediza 1.80x1.60m | 2026-11-10 → 2026-12-07 (+27d) | 2026-11-17 → 2026-12-11 (+24d) | 20d → 15d |
| 772 | Ventana Corrediza 0.60x0.40m | 2026-11-12 → 2026-12-09 (+27d) | 2026-11-19 → 2026-12-14 (+25d) | 18d → 13d |
| 773 | Ventana Corrediza 1.54x0.50m | 2026-11-12 → 2026-12-09 (+27d) | 2026-11-19 → 2026-12-14 (+25d) | 18d → 13d |
| 774 | Fijo medidas 1.40x2.50m | 2026-11-18 → 2026-12-12 (+24d) | 2026-11-23 → 2026-12-17 (+24d) | 9d → 4d |
| 775 | Ventana Corrediza 1.80x1.50m | 2026-11-20 → 2026-12-15 (+25d) | 2026-11-25 → 2026-12-19 (+24d) | 7d → 2d |
| 776 | Ventana Corrediza 1.40x1.60m | 2026-11-20 → 2026-12-15 (+25d) | 2026-11-25 → 2026-12-19 (+24d) | 7d → 2d |
| 777 | Ventana Corrediza 0.95x0.40m | 2026-11-20 → 2026-12-15 (+25d) | 2026-11-25 → 2026-12-19 (+24d) | 7d → 2d |
| 778 | Puerta corrediza 3.85x2.10m | 2026-11-23 → 2026-12-17 (+24d) | 2026-11-30 → 2026-12-28 (+28d) | 9d → 4d |
| 779 | Barandal de Cristal Templado | 2026-11-25 → 2026-12-21 (+26d) | 2026-12-02 → 2026-12-30 (+28d) | 7d → 2d |
| 780 | **CARPINTERIA, PUERTAS EXTERIORES E INTERIORES** | 2026-11-23 → 2026-12-17 (+24d) | 2026-12-03 → 2027-01-02 (+30d) | 6d → 1d |
| 781 | Puerta P-01 de seguridad | 2026-11-23 → 2026-12-17 (+24d) | 2026-11-28 → 2026-12-23 (+25d) | 10d → 5d |
| 782 | Puerta P-01 interior | 2026-11-23 → 2026-12-17 (+24d) | 2026-12-02 → 2026-12-30 (+28d) | 7d → 2d |
| 783 | Puerta P-02 interior | 2026-11-23 → 2026-12-17 (+24d) | 2026-12-02 → 2026-12-30 (+28d) | 7d → 2d |

| ID | Task | Start | Finish | Total float |
| --- | --- | --- | --- | --- |
| 784 | Puerta P-03 interior | 2026-11-28 → 2026-12-26 (+28d) | 2026-12-03 → 2027-01-02 (+30d) | 6d → 1d |
| 785 | Puerta P-04 interior | 2026-11-28 → 2026-12-26 (+28d) | 2026-12-03 → 2027-01-02 (+30d) | 6d → 1d |
| 786 | **VOLADOS, BARANDAL Y ESCALERA** | 2026-10-16 → 2026-11-10 (+25d) | 2026-11-27 → 2026-12-22 (+25d) | 14d → 9d |
| 787 | Barandal de Herreria en escalera | 2026-11-03 → 2026-11-28 (+25d) | 2026-11-07 → 2026-12-03 (+26d) | 29d → 24d |
| 788 | Escalera de herreria | 2026-10-16 → 2026-11-10 (+25d) | 2026-11-07 → 2026-12-03 (+26d) | 14d → 9d |
| 789 | Techumbre en acceso Principal | 2026-11-02 → 2026-11-27 (+25d) | 2026-11-20 → 2026-12-15 (+25d) | 20d → 15d |
| 790 | Techumbre en 1.80x0.50m | 2026-11-02 → 2026-11-27 (+25d) | 2026-11-10 → 2026-12-07 (+27d) | 14d → 9d |
| 791 | Techumbre en 1.40x0.50m | 2026-11-10 → 2026-12-07 (+27d) | 2026-11-20 → 2026-12-15 (+25d) | 14d → 9d |
| 792 | Imper con manto prefabricado | 2026-11-13 → 2026-12-10 (+27d) | 2026-11-21 → 2026-12-16 (+25d) | 14d → 9d |
| 793 | Plafon hoja tablaroca std | 2026-11-21 → 2026-12-16 (+25d) | 2026-11-27 → 2026-12-22 (+25d) | 14d → 9d |
| 794 | Acabado Woodstock en parte inf. Cubierta | 2026-11-21 → 2026-12-16 (+25d) | 2026-11-27 → 2026-12-22 (+25d) | 14d → 9d |
| 795 | **INSTALACION ELECTRICA** | 2026-10-23 → 2026-11-19 (+27d) | 2026-11-12 → 2026-12-09 (+27d) | 35d → 30d |
| 796 | Alimentación eléctrica base a centro de carga | 2026-10-29 → 2026-11-24 (+26d) | 2026-11-04 → 2026-11-30 (+26d) | 39d → 34d |
| 797 | Interruptor termomagnético 1x20 A | 2026-11-04 → 2026-11-30 (+26d) | 2026-11-05 → 2026-12-01 (+26d) | 39d → 34d |
| 798 | Interruptor termomagnético 2x20 A | 2026-11-04 → 2026-11-30 (+26d) | 2026-11-05 → 2026-12-01 (+26d) | 39d → 34d |
| 799 | Salida para apagador 3 vías | 2026-10-23 → 2026-11-19 (+27d) | 2026-10-28 → 2026-11-24 (+27d) | 35d → 30d |
| 800 | Salida para apagador doble | 2026-10-29 → 2026-11-24 (+26d) | 2026-11-02 → 2026-11-27 (+25d) | 37d → 32d |
| 801 | Salida para apagador sencillo | 2026-10-29 → 2026-11-24 (+26d) | 2026-11-02 → 2026-11-27 (+25d) | 37d → 32d |
| 802 | Salida de alumbrado en losa | 2026-10-29 → 2026-11-24 (+26d) | 2026-11-04 → 2026-11-30 (+26d) | 35d → 30d |
| 803 | Salida para contacto exterior doble | 2026-10-29 → 2026-11-24 (+26d) | 2026-10-30 → 2026-11-26 (+27d) | 38d → 33d |
| 804 | Salida para contacto 220 V | 2026-10-31 → 2026-11-26 (+26d) | 2026-11-04 → 2026-11-30 (+26d) | 35d → 30d |
| 805 | Salida para contacto doble | 2026-10-31 → 2026-11-26 (+26d) | 2026-11-06 → 2026-12-02 (+26d) | 38d → 33d |
| 806 | Salida para contacto doble área húmeda | 2026-11-04 → 2026-11-30 (+26d) | 2026-11-06 → 2026-12-02 (+26d) | 38d → 33d |
| 807 | Salida TV / telefonía / intercom | 2026-11-04 → 2026-11-30 (+26d) | 2026-11-09 → 2026-12-04 (+25d) | 36d → 31d |
| 808 | Extractor 4 baño | 2026-11-04 → 2026-11-30 (+26d) | 2026-11-10 → 2026-12-07 (+27d) | 35d → 30d |
| 809 | Prueba eléctrica | 2026-11-10 → 2026-12-07 (+27d) | 2026-11-12 → 2026-12-09 (+27d) | 35d → 30d |
| 810 | **INSTALACIÓN HIDRO-SANITARIA** | 2026-10-07 → 2026-11-02 (+26d) | 2026-10-21 → 2026-11-17 (+27d) | 6d → 1d |
| 811 | Tubería condensados PVC 1 | 2026-10-07 → 2026-11-02 (+26d) | 2026-10-14 → 2026-11-07 (+24d) | 6d → 1d |
| 812 | Tubería sanitaria PVC 4 | 2026-10-07 → 2026-11-02 (+26d) | 2026-10-14 → 2026-11-07 (+24d) | 14d → 9d |
| 813 | Coladera H-444 | 2026-10-14 → 2026-11-07 (+24d) | 2026-10-15 → 2026-11-09 (+25d) | 14d → 9d |
| 814 | Caja PVC para lavadora | 2026-10-07 → 2026-11-02 (+26d) | 2026-10-12 → 2026-11-05 (+24d) | 6d → 1d |
| 815 | Salida para secadora PVC 4 | 2026-10-07 → 2026-11-02 (+26d) | 2026-10-12 → 2026-11-05 (+24d) | 6d → 1d |
| 816 | Salida hidráulica para boiler | 2026-10-07 → 2026-11-02 (+26d) | 2026-10-09 → 2026-11-04 (+26d) | 7d → 2d |
| 817 | Salida hidráulica para llave de jardín | 2026-10-07 → 2026-11-02 (+26d) | 2026-10-12 → 2026-11-05 (+24d) | 6d → 1d |
| 818 | Salida hidráulica para lavabo | 2026-10-07 → 2026-11-02 (+26d) | 2026-10-13 → 2026-11-06 (+24d) | 6d → 1d |
| 819 | Salida hidráulica para purificación | 2026-10-07 → 2026-11-02 (+26d) | 2026-10-13 → 2026-11-06 (+24d) | 6d → 1d |
| 820 | Salida sanitaria para lavabo | 2026-10-09 → 2026-11-04 (+26d) | 2026-10-13 → 2026-11-06 (+24d) | 6d → 1d |
| 821 | Salida hidráulica para lavadero | 2026-10-09 → 2026-11-04 (+26d) | 2026-10-13 → 2026-11-06 (+24d) | 6d → 1d |
| 822 | Salida sanitaria para lavadero | 2026-10-12 → 2026-11-05 (+24d) | 2026-10-14 → 2026-11-07 (+24d) | 6d → 1d |
| 823 | Salida hidráulica para lavadora | 2026-10-12 → 2026-11-05 (+24d) | 2026-10-14 → 2026-11-07 (+24d) | 6d → 1d |
| 824 | Salida sanitaria para lavadora | 2026-10-13 → 2026-11-06 (+24d) | 2026-10-15 → 2026-11-09 (+25d) | 6d → 1d |
| 825 | Salida hidráulica para regadera | 2026-10-13 → 2026-11-06 (+24d) | 2026-10-19 → 2026-11-12 (+24d) | 11d → 6d |
| 826 | Salida sanitaria para regadera | 2026-10-13 → 2026-11-06 (+24d) | 2026-10-17 → 2026-11-11 (+25d) | 12d → 7d |
| 827 | Salida hidráulica para WC | 2026-10-09 → 2026-11-04 (+26d) | 2026-10-13 → 2026-11-06 (+24d) | 6d → 1d |
| 828 | Salida sanitaria para WC | 2026-10-13 → 2026-11-06 (+24d) | 2026-10-17 → 2026-11-11 (+25d) | 6d → 1d |
| 829 | Salida hidráulica para zinc | 2026-10-13 → 2026-11-06 (+24d) | 2026-10-17 → 2026-11-11 (+25d) | 6d → 1d |
| 830 | Salida sanitaria para zinc | 2026-10-15 → 2026-11-09 (+25d) | 2026-10-19 → 2026-11-12 (+24d) | 6d → 1d |
| 831 | Tubo para ventila de baño 2 | 2026-10-07 → 2026-11-02 (+26d) | 2026-10-14 → 2026-11-07 (+24d) | 6d → 1d |
| 832 | Tubo para minisplit PVC 3 | 2026-10-14 → 2026-11-07 (+24d) | 2026-10-20 → 2026-11-13 (+24d) | 6d → 1d |
| 833 | Cuadro de medición | 2026-10-12 → 2026-11-05 (+24d) | 2026-10-17 → 2026-11-11 (+25d) | 11d → 6d |
| 834 | Pozo de absorción 0.50x0.50x0.50 | 2026-10-12 → 2026-11-05 (+24d) | 2026-10-15 → 2026-11-09 (+25d) | 14d → 9d |
| 835 | Prueba sanitaria final | 2026-10-20 → 2026-11-13 (+24d) | 2026-10-21 → 2026-11-17 (+27d) | 10d → 5d |
| 836 | Prueba hidrostática final | 2026-10-19 → 2026-11-12 (+24d) | 2026-10-20 → 2026-11-13 (+24d) | 11d → 6d |
| 837 | Salida válvula control 19 mm | 2026-10-17 → 2026-11-11 (+25d) | 2026-10-19 → 2026-11-12 (+24d) | 11d → 6d |
| 838 | Salida válvula control 13 mm | 2026-10-17 → 2026-11-11 (+25d) | 2026-10-19 → 2026-11-12 (+24d) | 11d → 6d |
| 839 | Salida hidráulica para tanque hidroneumático | 2026-10-12 → 2026-11-05 (+24d) | 2026-10-15 → 2026-11-09 (+25d) | 14d → 9d |
| 840 | Salida hidráulica para Active Driver | 2026-10-12 → 2026-11-05 (+24d) | 2026-10-15 → 2026-11-09 (+25d) | 14d → 9d |
| 841 | **INSTALACION DE GAS** | 2026-10-05 → 2026-10-30 (+25d) | 2026-10-15 → 2026-11-09 (+25d) | 42d → 37d |
| 842 | Ramaleo para gas 1/2 | 2026-10-08 → 2026-11-03 (+26d) | 2026-10-15 → 2026-11-09 (+25d) | 42d → 37d |
| 843 | Excavación a mano material tipo B | 2026-10-05 → 2026-10-30 (+25d) | 2026-10-08 → 2026-11-03 (+26d) | 42d → 37d |
| 844 | **MUEBLES SANITARIOS** | 2026-11-12 → 2026-12-09 (+27d) | 2026-12-19 → 2027-01-19 (+31d) | 18d → 13d |
| 845 | WC completo Austral | 2026-11-12 → 2026-12-09 (+27d) | 2026-11-17 → 2026-12-11 (+24d) | 20d → 15d |
| 846 | Lavabo Senna con pedestal | 2026-11-12 → 2026-12-09 (+27d) | 2026-11-19 → 2026-12-14 (+25d) | 18d → 13d |
| 847 | Tarja / lavabo combo Guinea 80x45 | 2026-11-12 → 2026-12-09 (+27d) | 2026-11-17 → 2026-12-11 (+24d) | 49d → 44d |
| 848 | Regadera con monomando | 2026-11-17 → 2026-12-11 (+24d) | 2026-11-20 → 2026-12-15 (+25d) | 17d → 12d |
| 849 | Coladera inserto cerámico | 2026-11-18 → 2026-12-12 (+24d) | 2026-11-20 → 2026-12-15 (+25d) | 17d → 12d |
| 850 | Toallero sencillo | 2026-12-18 → 2027-01-18 (+31d) | 2026-12-19 → 2027-01-19 (+31d) | 6d → 1d |
| 851 | Toallero barra | 2026-12-18 → 2027-01-18 (+31d) | 2026-12-19 → 2027-01-19 (+31d) | 6d → 1d |
| 852 | Portapapel | 2026-12-18 → 2027-01-18 (+31d) | 2026-12-19 → 2027-01-19 (+31d) | 6d → 1d |
| 853 | Gancho baño | 2026-12-18 → 2027-01-18 (+31d) | 2026-12-19 → 2027-01-19 (+31d) | 6d → 1d |

| ID | Task | Start | Finish | Duration | Complete | Total float | Predecessors |
| --- | --- | --- | --- | --- | --- | --- | --- |
| 854 | **EQUIPAMIENTO** | 2026-09-29 → 2026-10-23 (+24d) | 2026-10-06 → 2026-10-30 (+24d) |  |  | 65d → 60d |  |
| 855 | Electronivel Rotoplas 5 m | 2026-09-30 → 2026-10-26 (+26d) | 2026-10-02 → 2026-10-27 (+25d) |  |  | 68d → 63d |  |
| 856 | Manómetro | 2026-09-30 → 2026-10-26 (+26d) | 2026-10-01 → 2026-10-26 (+25d) |  |  | 69d → 64d |  |
| 857 | Interruptor de presión 30-50 PSI | 2026-09-30 → 2026-10-26 (+26d) | 2026-10-01 → 2026-10-26 (+25d) |  |  | 69d → 64d |  |
| 858 | Tanque hidroneumático FPS-24LX | 2026-09-30 → 2026-10-26 (+26d) | 2026-10-03 → 2026-10-28 (+25d) |  |  | 65d → 60d |  |
| 859 | Bomba sumergible Dominator 1.2 HP | 2026-10-03 → 2026-10-29 (+26d) | 2026-10-06 → 2026-10-30 (+24d) |  |  | 65d → 60d |  |
| 860 | Cisterna prefabricada 2800 L | 2026-09-29 → 2026-10-23 (+24d) | 2026-09-30 → 2026-10-24 (+24d) |  |  | 65d → 60d |  |
| 861 | **LUMINARIAS** | 2026-11-04 → 2026-11-30 (+26d) | 2026-11-10 → 2026-12-07 (+27d) |  |  | 35d → 30d |  |
| 862 | Roseta cerámica | 2026-11-04 → 2026-11-30 (+26d) | 2026-11-07 → 2026-12-03 (+26d) |  |  | 37d → 32d |  |
| 863 | Luminaria lagartijera LED | 2026-11-04 → 2026-11-30 (+26d) | 2026-11-07 → 2026-12-03 (+26d) |  |  | 37d → 32d |  |
| 864 | Spot 6W Tecnolite | 2026-11-04 → 2026-11-30 (+26d) | 2026-11-07 → 2026-12-03 (+26d) |  |  | 37d → 32d |  |
| 865 | Spot 7W Tecnolite | 2026-11-04 → 2026-11-30 (+26d) | 2026-11-07 → 2026-12-03 (+26d) |  |  | 37d → 32d |  |
| 866 | Arbotante exterior | 2026-11-04 → 2026-11-30 (+26d) | 2026-11-06 → 2026-12-02 (+26d) |  |  | 35d → 30d |  |
| 867 | Estaca LED exterior | 2026-11-06 → 2026-12-02 (+26d) | 2026-11-10 → 2026-12-07 (+27d) |  |  | 35d → 30d |  |
| 868 | Tira LED | 2026-11-06 → 2026-12-02 (+26d) | 2026-11-10 → 2026-12-07 (+27d) |  |  | 35d → 30d |  |
| 869 | Spot exterior 50W | 2026-11-04 → 2026-11-30 (+26d) | 2026-11-06 → 2026-12-02 (+26d) |  |  | 38d → 33d |  |
| 870 | **TIMBRE** | 2026-11-05 → 2026-12-01 (+26d) | 2026-11-07 → 2026-12-03 (+26d) |  |  | 37d → 32d |  |
| 871 | Timbre inalámbrico con bocina | 2026-11-05 → 2026-12-01 (+26d) | 2026-11-07 → 2026-12-03 (+26d) |  |  | 37d → 32d |  |
| 872 | **OBRA EXTERIOR - BARDA** | 2026-10-12 → 2026-11-05 (+24d) | 2026-11-03 → 2026-11-28 (+25d) |  |  | 43d → 38d |  |
| 873 | Murete convencional | 2026-10-17 → 2026-11-11 (+25d) | 2026-10-23 → 2026-11-19 (+27d) |  |  | 49d → 44d |  |
| 874 | Barda de block aparente | 2026-10-12 → 2026-11-05 (+24d) | 2026-11-03 → 2026-11-28 (+25d) |  |  | 43d → 38d |  |
| 875 | **TERCER LIMPIEZA DE OBRA** | 2026-12-21 → 2027-01-19 (+29d) | 2027-01-14 → 2027-02-08 (+25d) |  |  | 6d → 1d |  |
| 876 | Limpieza fina para entrega | 2026-12-21 → 2027-01-19 (+29d) | 2026-12-29 → 2027-01-25 (+27d) |  |  | 6d → 1d |  |
| 877 | Tercera limpieza de obra | 2026-12-29 → 2027-01-25 (+27d) | 2027-01-06 → 2027-02-01 (+26d) |  |  | 6d → 1d |  |
| 878 | Tercera carga y acarreo de escombro | 2027-01-06 → 2027-02-01 (+26d) | 2027-01-14 → 2027-02-08 (+25d) |  |  | 6d → 1d |  |
| 879 | **LOTE 20 M-663 ARTICO-A** |  | 2027-01-21 → 2027-02-03 (+13d) | 184d → 194d | 5% → 1% | 0d → 5d |  |
| 880 | **HITOS IMPORTANTES DEL LOTE** |  | 2027-01-21 → 2027-02-03 (+13d) | 184d → 194d |  | 0d → 5d |  |
| 882 | Colado de Losa de Cimentación | 2026-06-24 → 2026-07-06 (+12d) | 2026-06-24 → 2026-07-06 (+12d) |  |  | 164d → 169d |  |
| 883 | Colado de Losa de Entrepiso | 2026-07-31 → 2026-08-12 (+12d) | 2026-07-31 → 2026-08-12 (+12d) |  |  | 134d → 139d |  |
| 884 | Colado de Losa de Azotea | 2026-09-07 → 2026-09-21 (+14d) | 2026-09-07 → 2026-09-21 (+14d) |  |  | 104d → 109d |  |
| 885 | Entrega de vivienda | 2027-01-21 → 2027-02-03 (+13d) | 2027-01-21 → 2027-02-03 (+13d) |  |  | 0d → 5d |  |
| 891 | **CIMENTACION** | 2026-06-09 A → 2026-06-22 A (+13d) | 2026-06-25 → 2026-07-07 (+12d) |  | 88% → 3% | 0d → 5d |  |
| 892 | Cimbra perimetral losa de cimentación | 2026-06-09 A → 2026-06-22 A (+13d) | 2026-06-12 A → 2026-06-25 (+13d) |  | 100% → 25% | none → 5d | 889, 890 → 889FS+10d, 890 |
| 893 | Sistema antitermitas PVC | 2026-06-09 A → 2026-06-22 A (+13d) | 2026-06-12 A → 2026-06-25 (+13d) |  | 100% → 25% | none → 6d | 889, 890 → 889FS+10d, 890 |
| 894 | Hule negro en cimentación | 2026-06-12 A → 2026-06-25 (+13d) | 2026-06-13 A → 2026-06-26 (+13d) |  | 100% → 0% | none → 6d |  |
| 895 | Ramaleo poliducto eléctrico cimentación | 2026-06-13 A → 2026-06-26 (+13d) | 2026-06-16 A → 2026-06-29 (+13d) |  | 100% → 0% | none → 9d |  |
| 896 | Ramaleo eléctrico base-medición a centro de carga | 2026-06-13 A → 2026-06-26 (+13d) | 2026-06-15 A → 2026-06-27 (+12d) |  | 100% → 0% | none → 10d |  |
| 897 | Ramaleo eléctrico exterior | 2026-06-16 A → 2026-06-29 (+13d) | 2026-06-17 A → 2026-06-30 (+13d) |  | 100% → 0% | none → 9d |  |
| 898 | Ramaleo para cable poliducto 3/4 | 2026-06-16 A → 2026-06-29 (+13d) | 2026-06-17 A → 2026-06-30 (+13d) |  | 100% → 0% | none → 9d |  |
| 899 | Ramaleo para TV poliducto 3/4 | 2026-06-16 A → 2026-06-29 (+13d) | 2026-06-17 A → 2026-06-30 (+13d) |  | 100% → 0% | none → 9d |  |
| 900 | Ramaleo hidráulico CPVC 1-1/4" cimentación | 2026-06-13 A → 2026-06-26 (+13d) | 2026-06-15 A → 2026-06-27 (+12d) |  | 100% → 0% | none → 6d |  |
| 901 | Ramaleo hidráulico CPVC 1 cimentación | 2026-06-13 A → 2026-06-26 (+13d) | 2026-06-15 A → 2026-06-27 (+12d) |  | 100% → 0% | none → 6d |  |
| 902 | Ramaleo hidráulico CPVC 3/4 cimentación | 2026-06-15 A → 2026-06-27 (+12d) | 2026-06-17 A → 2026-06-30 (+13d) |  | 100% → 0% | none → 6d |  |
| 903 | Ramaleo hidráulico CPVC 1/2 cimentación | 2026-06-17 A → 2026-06-30 (+13d) | 2026-06-19 A → 2026-07-02 (+13d) |  | 100% → 0% | none → 6d |  |
| 904 | Prueba hidráulica | 2026-06-19 A → 2026-07-02 (+13d) | 2026-06-22 → 2026-07-03 (+11d) |  | 75% → 0% | 1d → 6d |  |
| 905 | Ramaleo sanitario PVC 4 cimentación | 2026-06-15 A → 2026-06-27 (+12d) | 2026-06-17 A → 2026-06-30 (+13d) |  | 100% → 0% | none → 7d |  |
| 906 | Ramaleo sanitario PVC 2 cimentación | 2026-06-17 A → 2026-06-30 (+13d) | 2026-06-18 A → 2026-07-01 (+13d) |  | 100% → 0% | none → 7d |  |
| 907 | Prueba sanitaria | 2026-06-18 A → 2026-07-01 (+13d) | 2026-06-19 A → 2026-07-02 (+13d) |  | 100% → 0% | none → 7d |  |
| 908 | Acero contratrabe CT-1 | 2026-06-12 A → 2026-06-25 (+13d) | 2026-06-17 A → 2026-06-30 (+13d) |  | 100% → 0% | none → 5d |  |
| 909 | Acero contratrabe CT-2 | 2026-06-12 A → 2026-06-25 (+13d) | 2026-06-17 A → 2026-06-30 (+13d) |  | 100% → 0% | none → 5d |  |
| 910 | Malla electrosoldada 6-6/8-8 | 2026-06-19 A → 2026-07-02 (+13d) | 2026-06-23 → 2026-07-04 (+11d) |  | 38% → 0% | 0d → 5d |  |
| 911 | Bastón de refuerzo LS | 2026-06-17 A → 2026-06-30 (+13d) | 2026-06-19 A → 2026-07-02 (+13d) |  | 100% → 0% | none → 5d |  |
| 912 | Bastón de refuerzo LI | 2026-06-17 A → 2026-06-30 (+13d) | 2026-06-19 A → 2026-07-02 (+13d) |  | 100% → 0% | none → 5d |  |
| 913 | Colado losa de cimentación f’c=200 | 2026-06-23 → 2026-07-06 (+13d) | 2026-06-24 → 2026-07-06 (+12d) |  |  | 0d → 5d |  |
| 914 | Curado de concreto | 2026-06-24 → 2026-07-07 (+13d) | 2026-06-25 → 2026-07-07 (+12d) |  |  | 0d → 5d |  |
| 915 | Acero zapata ZT-1 | 2026-06-17 A → 2026-06-30 (+13d) | 2026-06-23 → 2026-07-04 (+11d) |  | 69% → 0% | 0d → 5d |  |
| 916 | Acero zapata ZT-2 | 2026-06-17 A → 2026-06-30 (+13d) | 2026-06-23 → 2026-07-04 (+11d) |  | 69% → 0% | 0d → 5d |  |
| 917 | **MUROS, PLANTA BAJA. CASTILLOS Y CERRAMIENTOS** | 2026-06-18 A → 2026-07-01 (+13d) | 2026-07-14 → 2026-07-27 (+13d) |  | 3% → 0% | 148d → 10d |  |
| 918 | Anclaje de castillos y Columnas PB | 2026-06-18 A → 2026-07-01 (+13d) | 2026-06-25 → 2026-07-07 (+12d) |  | 35% → 0% | 151d → 156d |  |
| 919 | Castillo K1 | 2026-06-25 → 2026-07-08 (+13d) | 2026-06-30 → 2026-07-13 (+13d) |  |  | 151d → 156d |  |
| 920 | Castillo K3 | 2026-06-27 → 2026-07-10 (+13d) | 2026-07-01 → 2026-07-14 (+13d) |  |  | 151d → 156d |  |
| 921 | Castillo K4 | 2026-06-27 → 2026-07-10 (+13d) | 2026-07-01 → 2026-07-14 (+13d) |  |  | 151d → 156d |  |
| 922 | Castillo K5 | 2026-06-30 → 2026-07-13 (+13d) | 2026-07-03 → 2026-07-16 (+13d) |  |  | 151d → 156d |  |
| 923 | Refuerzo de muro K6 | 2026-07-01 → 2026-07-14 (+13d) | 2026-07-04 → 2026-07-17 (+13d) |  |  | 151d → 156d |  |
| 924 | Dala de cerramiento CR-1 | 2026-07-01 → 2026-07-14 (+13d) | 2026-07-06 → 2026-07-18 (+12d) |  |  | 154d → 159d |  |
| 925 | Dala de cerramiento CR-2 | 2026-07-01 → 2026-07-14 (+13d) | 2026-07-04 → 2026-07-17 (+13d) |  |  | 155d → 160d |  |
| 926 | Cadena block dala | 2026-07-06 → 2026-07-17 (+11d) | 2026-07-09 → 2026-07-22 (+13d) |  |  | 151d → 156d |  |
| 927 | Muro de ladrillo aparente | 2026-06-25 → 2026-07-08 (+13d) | 2026-07-14 → 2026-07-27 (+13d) |  |  | 0d → 5d |  |
| 928 | Muro de block planta baja | 2026-06-27 → 2026-07-10 (+13d) | 2026-07-14 → 2026-07-27 (+13d) |  |  | 0d → 5d |  |
| 929 | Ramaleo electrico en Muros Planta Baja | 2026-07-01 → 2026-07-14 (+13d) | 2026-07-06 → 2026-07-18 (+12d) |  |  | 3d → 8d |  |

| ID | Task | Start | Finish | Total float |
| --- | --- | --- | --- | --- |
| 930 | Ramaleo para cable poliducto 3/4 | 2026-07-07 → 2026-07-18 (+11d) | 2026-07-08 → 2026-07-21 (+13d) | 3d → 8d |
| 931 | Ramaleo para TV poliducto 3/4 | 2026-07-09 → 2026-07-21 (+12d) | 2026-07-13 → 2026-07-24 (+11d) | 3d → 8d |
| 932 | **ESCALERA** | 2026-07-31 → 2026-08-12 (+12d) | 2026-08-12 → 2026-08-25 (+13d) | 77d → 82d |
| 933 | Escalera de concreto armado | 2026-07-31 → 2026-08-12 (+12d) | 2026-08-12 → 2026-08-25 (+13d) | 77d → 82d |
| 934 | **LOSA DE ENTREPISO (viegueta y caseton)** | 2026-07-11 → 2026-07-23 (+12d) | 2026-08-01 → 2026-08-13 (+12d) | 3d → 8d |
| 935 | Dala de coronamiento 10cm | 2026-07-20 → 2026-08-01 (+12d) | 2026-07-23 → 2026-08-05 (+13d) | 3d → 8d |
| 936 | Dala de coronamiento 12cm | 2026-07-21 → 2026-08-03 (+13d) | 2026-07-24 → 2026-08-06 (+13d) | 2d → 7d |
| 937 | Trabe TR-1 | 2026-07-11 → 2026-07-23 (+12d) | 2026-07-15 → 2026-07-28 (+13d) | 4d → 9d |
| 938 | Trabe TR-2 | 2026-07-13 → 2026-07-24 (+11d) | 2026-07-17 → 2026-07-30 (+13d) | 2d → 7d |
| 939 | Nervadura NR-1 | 2026-07-14 → 2026-07-27 (+13d) | 2026-07-18 → 2026-07-31 (+13d) | 1d → 6d |
| 940 | Nervadura NR-2 | 2026-07-15 → 2026-07-28 (+13d) | 2026-07-20 → 2026-08-01 (+12d) | 0d → 5d |
| 941 | Nervadura NR-3 | 2026-07-15 → 2026-07-28 (+13d) | 2026-07-20 → 2026-08-01 (+12d) | 0d → 5d |
| 942 | Nervadura NR-4 | 2026-07-15 → 2026-07-28 (+13d) | 2026-07-20 → 2026-08-01 (+12d) | 0d → 5d |
| 943 | Acero de refuerzo en nervios #3 | 2026-07-20 → 2026-08-01 (+12d) | 2026-07-22 → 2026-08-04 (+13d) | 0d → 5d |
| 944 | Acero de refuerzo long. #3 | 2026-07-21 → 2026-08-03 (+13d) | 2026-07-24 → 2026-08-06 (+13d) | 1d → 6d |
| 945 | Acero de refuerzo long. #4 | 2026-07-21 → 2026-08-03 (+13d) | 2026-07-24 → 2026-08-06 (+13d) | 1d → 6d |
| 946 | Malla 66-10/10 losa de compresión | 2026-07-28 → 2026-08-08 (+11d) | 2026-07-30 → 2026-08-11 (+12d) | 0d → 5d |
| 947 | Acero de Losa Maciza | 2026-07-20 → 2026-08-01 (+12d) | 2026-07-23 → 2026-08-05 (+13d) | 5d → 10d |
| 948 | Caseton de 60x60x20cm | 2026-07-20 → 2026-08-01 (+12d) | 2026-07-22 → 2026-08-04 (+13d) | 4d → 9d |
| 949 | Concreto losa de entrepiso f’c=200 | 2026-07-30 → 2026-08-11 (+12d) | 2026-07-31 → 2026-08-12 (+12d) | 0d → 5d |
| 950 | Curado de concreto | 2026-07-31 → 2026-08-12 (+12d) | 2026-08-01 → 2026-08-13 (+12d) | 0d → 5d |
| 951 | Cimbra losa de azotea | 2026-07-15 → 2026-07-28 (+13d) | 2026-07-21 → 2026-08-03 (+13d) | 1d → 6d |
| 952 | Cimbra exterior corta losa | 2026-07-23 → 2026-08-05 (+13d) | 2026-07-28 → 2026-08-08 (+11d) | 2d → 7d |
| 953 | Ramaleo poliducto eléctrico entrepiso | 2026-07-22 → 2026-08-04 (+13d) | 2026-07-24 → 2026-08-06 (+13d) | 139d → 144d |
| 954 | Ramaleo hidráulico CPVC 3/4" | 2026-07-23 → 2026-08-05 (+13d) | 2026-07-27 → 2026-08-07 (+11d) | 0d → 5d |
| 955 | Ramaleo hidráulico CPVC 1/2" | 2026-07-27 → 2026-08-07 (+11d) | 2026-07-28 → 2026-08-08 (+11d) | 0d → 5d |
| 956 | Prueba hidráulica | 2026-07-27 → 2026-08-07 (+11d) | 2026-07-28 → 2026-08-08 (+11d) | 0d → 5d |
| 957 | Ramaleo sanitario PVC 4" | 2026-07-23 → 2026-08-05 (+13d) | 2026-07-27 → 2026-08-07 (+11d) | 0d → 5d |
| 958 | Ramaleo sanitario PVC 2" | 2026-07-27 → 2026-08-07 (+11d) | 2026-07-28 → 2026-08-08 (+11d) | 0d → 5d |
| 959 | Prueba sanitaria | 2026-07-27 → 2026-08-07 (+11d) | 2026-07-28 → 2026-08-08 (+11d) | 0d → 5d |
| 960 | **MUROS EN PLANTA ALTA, CASTILLOS Y CERRM.** | 2026-07-23 → 2026-08-05 (+13d) | 2026-08-20 → 2026-09-01 (+12d) | 1d → 6d |
| 961 | Anclaje de castillos y Columnas PA | 2026-07-23 → 2026-08-05 (+13d) | 2026-07-29 → 2026-08-10 (+12d) | 1d → 6d |
| 962 | Castillo K1 | 2026-08-01 → 2026-08-13 (+12d) | 2026-08-06 → 2026-08-19 (+13d) | 4d → 9d |
| 963 | Castillo K2 | 2026-08-03 → 2026-08-14 (+11d) | 2026-08-07 → 2026-08-20 (+13d) | 3d → 8d |
| 964 | Castillo K4 | 2026-08-06 → 2026-08-19 (+13d) | 2026-08-10 → 2026-08-22 (+12d) | 4d → 9d |
| 965 | Castillo K5 | 2026-08-06 → 2026-08-19 (+13d) | 2026-08-10 → 2026-08-22 (+12d) | 4d → 9d |
| 966 | Castillo K6 | 2026-08-06 → 2026-08-19 (+13d) | 2026-08-10 → 2026-08-22 (+12d) | 4d → 9d |
| 967 | Refuerzo de muro | 2026-08-07 → 2026-08-20 (+13d) | 2026-08-11 → 2026-08-24 (+13d) | 3d → 8d |
| 968 | Dala de cerramiento CR-1 | 2026-08-11 → 2026-08-24 (+13d) | 2026-08-17 → 2026-08-28 (+11d) | 3d → 8d |
| 969 | Dala de cerramiento CR-2 | 2026-08-11 → 2026-08-24 (+13d) | 2026-08-17 → 2026-08-28 (+11d) | 3d → 8d |
| 970 | Cadena block dala | 2026-08-17 → 2026-08-28 (+11d) | 2026-08-20 → 2026-09-01 (+12d) | 3d → 8d |
| 971 | Muro de ladrillo aparente | 2026-08-01 → 2026-08-13 (+12d) | 2026-08-20 → 2026-09-01 (+12d) | 0d → 5d |
| 972 | Muro de block planta alta | 2026-08-03 → 2026-08-14 (+11d) | 2026-08-20 → 2026-09-01 (+12d) | 0d → 5d |
| 973 | Ramaleo electrico en Muros Planta Alta | 2026-08-11 → 2026-08-24 (+13d) | 2026-08-17 → 2026-08-28 (+11d) | 11d → 16d |
| 974 | **LOSA AZOTEA** | 2026-08-20 → 2026-09-02 (+13d) | 2026-09-08 → 2026-09-22 (+14d) | 0d → 5d |
| 975 | Cortalosa CL-1 | 2026-09-03 → 2026-09-15 (+12d) | 2026-09-04 → 2026-09-18 (+14d) | 0d → 5d |
| 976 | Cortalosa CL-2 | 2026-09-03 → 2026-09-15 (+12d) | 2026-09-04 → 2026-09-18 (+14d) | 0d → 5d |
| 977 | Vigueta pretensada V11-30 125 | 2026-08-20 → 2026-09-02 (+13d) | 2026-08-26 → 2026-09-08 (+13d) | 3d → 8d |
| 978 | Vigueta pretensada V11-30 185 | 2026-08-20 → 2026-09-02 (+13d) | 2026-08-26 → 2026-09-08 (+13d) | 3d → 8d |
| 979 | Vigueta pretensada V11-30 190 | 2026-08-20 → 2026-09-02 (+13d) | 2026-08-26 → 2026-09-08 (+13d) | 3d → 8d |
| 980 | Vigueta pretensada V11-30 205 | 2026-08-22 → 2026-09-04 (+13d) | 2026-08-28 → 2026-09-10 (+13d) | 1d → 6d |
| 981 | Vigueta pretensada V11-30 215 | 2026-08-22 → 2026-09-04 (+13d) | 2026-08-28 → 2026-09-10 (+13d) | 1d → 6d |
| 982 | Vigueta pretensada V11-30 260 | 2026-08-24 → 2026-09-05 (+12d) | 2026-08-29 → 2026-09-11 (+13d) | 0d → 5d |
| 983 | Vigueta pretensada V11-30 285 | 2026-08-24 → 2026-09-05 (+12d) | 2026-08-29 → 2026-09-11 (+13d) | 0d → 5d |
| 984 | Vigueta pretensada V11-40 330 | 2026-08-24 → 2026-09-05 (+12d) | 2026-08-29 → 2026-09-11 (+13d) | 0d → 5d |
| 985 | Vigueta pretensada V11-40 335 | 2026-08-24 → 2026-09-05 (+12d) | 2026-08-29 → 2026-09-11 (+13d) | 0d → 5d |
| 986 | Vigueta pretensada V11-40 505 | 2026-08-24 → 2026-09-05 (+12d) | 2026-08-29 → 2026-09-11 (+13d) | 0d → 5d |
| 987 | Bovedilla poliestireno azotea | 2026-08-31 → 2026-09-11 (+11d) | 2026-09-02 → 2026-09-15 (+13d) | 0d → 5d |
| 988 | Malla 66-10/10 losa de compresión | 2026-09-03 → 2026-09-15 (+12d) | 2026-09-04 → 2026-09-18 (+14d) | 0d → 5d |
| 989 | Concreto losa de azotea f’c=200 | 2026-09-05 → 2026-09-18 (+13d) | 2026-09-07 → 2026-09-21 (+14d) | 0d → 5d |
| 990 | Curado de concreto | 2026-09-07 → 2026-09-21 (+14d) | 2026-09-08 → 2026-09-22 (+14d) | 0d → 5d |
| 991 | Cimbra losa de azotea | 2026-08-20 → 2026-09-02 (+13d) | 2026-08-26 → 2026-09-08 (+13d) | 8d → 13d |
| 992 | Ramaleo de poliducto para inst. electrica en azotea | 2026-09-03 → 2026-09-15 (+12d) | 2026-09-04 → 2026-09-18 (+14d) | 0d → 5d |
| 993 | **PRETIL Y ACABADOS DE AZOTEA** | 2026-09-08 → 2026-09-22 (+14d) | 2026-10-02 → 2026-10-15 (+13d) | 0d → 5d |
| 994 | Castillo K1 | 2026-09-10 → 2026-09-24 (+14d) | 2026-09-17 → 2026-09-30 (+13d) | 0d → 5d |
| 995 | Dala de cerramiento en pretil | 2026-09-14 → 2026-09-28 (+14d) | 2026-09-21 → 2026-10-02 (+11d) | 0d → 5d |
| 996 | Muro de block 12x15x40 | 2026-09-08 → 2026-09-22 (+14d) | 2026-09-14 → 2026-09-28 (+14d) | 0d → 5d |
| 997 | Chaflán en azotea | 2026-09-17 → 2026-09-30 (+13d) | 2026-09-23 → 2026-10-05 (+12d) | 0d → 5d |
| 998 | Diamante de entortado | 2026-09-17 → 2026-09-30 (+13d) | 2026-09-23 → 2026-10-05 (+12d) | 0d → 5d |
| 999 | Aplanado exterior Mortermax fino | 2026-09-21 → 2026-10-02 (+11d) | 2026-09-26 → 2026-10-08 (+12d) | 0d → 5d |

| ID | Task | Start | Finish | Total float |
| --- | --- | --- | --- | --- |
| 1000 | Entortado de Losa | 2026-09-28 → 2026-10-09 (+11d) | 2026-10-02 → 2026-10-15 (+13d) | 0d → 5d |
| 1001 | Curado de concreto | 2026-09-26 → 2026-10-08 (+12d) | 2026-09-28 → 2026-10-09 (+11d) | 0d → 5d |
| 1002 | **PRIMERA LIMPIEZA DE OBRA** | 2026-09-08 → 2026-09-22 (+14d) | 2026-09-12 → 2026-09-26 (+14d) | 60d → 65d |
| 1003 | Primera limpieza de obra | 2026-09-08 → 2026-09-22 (+14d) | 2026-09-10 → 2026-09-24 (+14d) | 60d → 65d |
| 1004 | Primera carga y acarreo de escombro | 2026-09-10 → 2026-09-24 (+14d) | 2026-09-12 → 2026-09-26 (+14d) | 60d → 65d |
| 1005 | **IMPERMEABILIZACION** | 2026-10-02 → 2026-10-15 (+13d) | 2026-10-08 → 2026-10-21 (+13d) | 0d → 5d |
| 1006 | Impermeabilización de pretil Kover 5 años | 2026-10-02 → 2026-10-15 (+13d) | 2026-10-07 → 2026-10-20 (+13d) | 1d → 6d |
| 1007 | Impermeabilización de losa Kover 5 años | 2026-10-02 → 2026-10-15 (+13d) | 2026-10-08 → 2026-10-21 (+13d) | 0d → 5d |
| 1008 | **ALBAÑILERIA** | 2026-09-14 → 2026-09-28 (+14d) | 2026-12-02 → 2026-12-15 (+13d) | 19d → 24d |
| 1009 | Lavadero de granito | 2026-10-29 → 2026-11-10 (+12d) | 2026-11-03 → 2026-11-17 (+14d) | 59d → 64d |
| 1010 | Ranurado y resane general inst. en muros | 2026-10-06 → 2026-10-19 (+13d) | 2026-10-09 → 2026-10-22 (+13d) | 2d → 7d |
| 1011 | Ranurado y resane eléctrico 1/2 a 3/4 | 2026-10-06 → 2026-10-19 (+13d) | 2026-10-09 → 2026-10-22 (+13d) | 2d → 7d |
| 1012 | Ranurado y resane hidráulico 1/2 a 1 | 2026-10-08 → 2026-10-21 (+13d) | 2026-10-12 → 2026-10-23 (+11d) | 1d → 6d |
| 1013 | Resane sanitario tubería 2 | 2026-10-08 → 2026-10-21 (+13d) | 2026-10-12 → 2026-10-23 (+11d) | 1d → 6d |
| 1014 | Resane sanitario tubería 4 | 2026-10-08 → 2026-10-21 (+13d) | 2026-10-12 → 2026-10-23 (+11d) | 1d → 6d |
| 1015 | Resane minisplit tubería 3 | 2026-10-08 → 2026-10-21 (+13d) | 2026-10-12 → 2026-10-23 (+11d) | 1d → 6d |
| 1016 | Ramaleo hidráulico exterior CPVC 1 1/4 | 2026-10-08 → 2026-10-21 (+13d) | 2026-10-13 → 2026-10-24 (+11d) | 0d → 5d |
| 1017 | Ramaleo hidráulico exterior CPVC 1 | 2026-10-08 → 2026-10-21 (+13d) | 2026-10-12 → 2026-10-23 (+11d) | 0d → 5d |
| 1018 | Ramaleo hidráulico exterior CPVC 3/4 | 2026-10-12 → 2026-10-23 (+11d) | 2026-10-14 → 2026-10-26 (+12d) | 0d → 5d |
| 1019 | Ramaleo hidráulico exterior CPVC 1/2 | 2026-10-12 → 2026-10-23 (+11d) | 2026-10-14 → 2026-10-26 (+12d) | 0d → 5d |
| 1020 | Prueba hidráulica | 2026-10-14 → 2026-10-27 (+13d) | 2026-10-15 → 2026-10-27 (+12d) | 0d → 5d |
| 1021 | Ramaleo sanitario exterior PVC 4 | 2026-10-08 → 2026-10-21 (+13d) | 2026-10-14 → 2026-10-26 (+12d) | 0d → 5d |
| 1022 | Ramaleo sanitario exterior PVC 2 | 2026-10-09 → 2026-10-22 (+13d) | 2026-10-14 → 2026-10-26 (+12d) | 0d → 5d |
| 1023 | Prueba sanitaria | 2026-10-14 → 2026-10-27 (+13d) | 2026-10-15 → 2026-10-27 (+12d) | 0d → 5d |
| 1024 | Centro de carga muros PB | 2026-10-13 → 2026-10-26 (+13d) | 2026-10-17 → 2026-10-29 (+12d) | 2d → 7d |
| 1025 | Firme de concreto 8 cm | 2026-10-15 → 2026-10-28 (+13d) | 2026-10-20 → 2026-11-02 (+13d) | 53d → 58d |
| 1026 | Curado de concreto | 2026-10-20 → 2026-11-02 (+13d) | 2026-10-21 → 2026-11-03 (+13d) | 53d → 58d |
| 1027 | Cisterna 2800 L con instalación | 2026-09-14 → 2026-09-28 (+14d) | 2026-10-07 → 2026-10-20 (+13d) | 59d → 64d |
| 1028 | Banqueta y huellas de concreto | 2026-10-22 → 2026-11-04 (+13d) | 2026-11-02 → 2026-11-13 (+11d) | 36d → 41d |
| 1029 | Curado de concreto | 2026-11-02 → 2026-11-13 (+11d) | 2026-11-03 → 2026-11-17 (+14d) | 36d → 41d |
| 1030 | Número oficial | 2026-12-01 → 2026-12-14 (+13d) | 2026-12-02 → 2026-12-15 (+13d) | 36d → 41d |
| 1031 | Detallado de rodapié exterior | 2026-10-17 → 2026-10-30 (+13d) | 2026-10-22 → 2026-11-04 (+13d) | 68d → 73d |
| 1032 | Detalle de losas y volados acabado fino | 2026-10-08 → 2026-10-21 (+13d) | 2026-10-14 → 2026-10-26 (+12d) | 4d → 9d |
| 1033 | Detalle fino en muros interiores | 2026-10-12 → 2026-10-23 (+11d) | 2026-10-17 → 2026-10-29 (+12d) | 1d → 6d |
| 1034 | Jardín interior bajo escalera con pozo de absorción | 2026-10-08 → 2026-10-21 (+13d) | 2026-10-23 → 2026-11-05 (+13d) | 4d → 9d |
| 1035 | **ACABADOS EN FACHADA A** | 2026-10-02 → 2026-10-15 (+13d) | 2026-12-01 → 2026-12-14 (+13d) | 36d → 41d |
| 1036 | Aplanado grueso fachada | 2026-10-02 → 2026-10-15 (+13d) | 2026-10-17 → 2026-10-29 (+12d) | 42d → 47d |
| 1037 | Aplanado fino estuco fachada | 2026-10-12 → 2026-10-23 (+11d) | 2026-10-23 → 2026-11-05 (+13d) | 42d → 47d |
| 1038 | Pintura acrílica 1-0102P | 2026-11-19 → 2026-12-01 (+12d) | 2026-11-28 → 2026-12-11 (+13d) | 38d → 43d |
| 1039 | Pintura acrílica 1-1404D | 2026-11-19 → 2026-12-01 (+12d) | 2026-12-01 → 2026-12-14 (+13d) | 36d → 41d |
| 1040 | Cantera 40x60cm | 2026-10-23 → 2026-11-05 (+13d) | 2026-11-10 → 2026-11-24 (+14d) | 42d → 47d |
| 1041 | Lambrin de permabase 1 cara | 2026-10-17 → 2026-10-30 (+13d) | 2026-10-21 → 2026-11-03 (+13d) | 49d → 54d |
| 1042 | Enchapado de Permabase | 2026-10-21 → 2026-11-03 (+13d) | 2026-10-26 → 2026-11-07 (+12d) | 49d → 54d |
| 1043 | Cubierta de Permabase | 2026-10-27 → 2026-11-07 (+11d) | 2026-11-02 → 2026-11-13 (+11d) | 49d → 54d |
| 1044 | **APLANADOS Y PINTURA** | 2026-10-08 → 2026-10-21 (+13d) | 2026-12-30 → 2027-01-14 (+15d) | 2d → 7d |
| 1045 | Yeso pulido en muros | 2026-10-19 → 2026-10-31 (+12d) | 2026-11-05 → 2026-11-19 (+14d) | 0d → 5d |
| 1046 | Aplanado en muros enjarre grueso | 2026-10-08 → 2026-10-21 (+13d) | 2026-10-15 → 2026-10-27 (+12d) | 3d → 8d |
| 1047 | Pintura vinílica OR-W13 SHOELACE | 2026-12-11 → 2026-12-26 (+15d) | 2026-12-30 → 2027-01-14 (+15d) | 0d → 5d |
| 1048 | Pintura vinílica PPUI5-13 Creamy M. | 2026-12-04 → 2026-12-17 (+13d) | 2026-12-17 → 2027-01-04 (+18d) | 8d → 13d |
| 1049 | Pintura vinílica MD-06 Nano White | 2026-12-04 → 2026-12-17 (+13d) | 2026-12-15 → 2026-12-30 (+15d) | 10d → 15d |
| 1050 | Yeso pulido en plafones | 2026-10-08 → 2026-10-21 (+13d) | 2026-10-21 → 2026-11-03 (+13d) | 2d → 7d |
| 1051 | Perfilado de puertas y ventanas | 2026-10-23 → 2026-11-05 (+13d) | 2026-10-28 → 2026-11-10 (+13d) | 63d → 68d |
| 1052 | **PISOS Y AZULEJOS** | 2026-10-30 → 2026-11-11 (+12d) | 2026-11-30 → 2026-12-12 (+12d) | 0d → 5d |
| 1053 | **AREA SOCIAL** | 2026-11-03 → 2026-11-17 (+14d) | 2026-11-23 → 2026-12-04 (+11d) | 0d → 5d |
| 1054 | Piso Adhara 44X89 | 2026-11-03 → 2026-11-17 (+14d) | 2026-11-21 → 2026-12-03 (+12d) | 0d → 5d |
| 1055 | Zoclo Adhara 44X89 | 2026-11-17 → 2026-11-28 (+11d) | 2026-11-23 → 2026-12-04 (+11d) | 17d → 22d |
| 1056 | **RECAMARAS** | 2026-10-30 → 2026-11-11 (+12d) | 2026-11-09 → 2026-11-23 (+14d) | 0d → 5d |
| 1057 | Acabado aparente de pisos - pulido | 2026-10-30 → 2026-11-11 (+12d) | 2026-11-09 → 2026-11-23 (+14d) | 0d → 5d |
| 1058 | **BAÑOS** | 2026-10-31 → 2026-11-12 (+12d) | 2026-11-23 → 2026-12-04 (+11d) | 11d → 16d |
| 1059 | Azulejo Mod. Ornamenta 60x30 | 2026-11-09 → 2026-11-23 (+14d) | 2026-11-17 → 2026-11-28 (+11d) | 11d → 16d |
| 1060 | Impermeabilización en regadera | 2026-11-07 → 2026-11-21 (+14d) | 2026-11-10 → 2026-11-24 (+14d) | 11d → 16d |
| 1061 | Piso Mod. Valparaiso 20x20 | 2026-11-17 → 2026-11-28 (+11d) | 2026-11-21 → 2026-12-03 (+12d) | 11d → 16d |
| 1062 | Zoclo Adhara 44X89 | 2026-11-20 → 2026-12-02 (+12d) | 2026-11-23 → 2026-12-04 (+11d) | 44d → 49d |
| 1063 | Piso Adhara 44X89 | 2026-11-17 → 2026-11-28 (+11d) | 2026-11-20 → 2026-12-02 (+12d) | 46d → 51d |
| 1064 | Fabricacion de nicho decorativo en baños | 2026-10-31 → 2026-11-12 (+12d) | 2026-11-07 → 2026-11-21 (+14d) | 11d → 16d |
| 1065 | Sardinel en regadera | 2026-11-17 → 2026-11-28 (+11d) | 2026-11-21 → 2026-12-03 (+12d) | 45d → 50d |
| 1066 | **ESCALERA** | 2026-11-19 → 2026-12-01 (+12d) | 2026-11-30 → 2026-12-12 (+12d) | 0d → 5d |
| 1067 | Piso Adhara 44X89 | 2026-11-19 → 2026-12-01 (+12d) | 2026-11-27 → 2026-12-10 (+13d) | 0d → 5d |
| 1068 | Zoclo Adhara 44X89 | 2026-11-25 → 2026-12-08 (+13d) | 2026-11-30 → 2026-12-12 (+12d) | 0d → 5d |
| 1069 | **EXTERIOR** | 2026-10-15 → 2026-10-28 (+13d) | 2026-10-19 → 2026-10-30 (+11d) | 5d → 10d |

| ID | Task | Start | Finish | Total float |
| --- | --- | --- | --- | --- |
| 1070 | Rastrilleo, afine y nivelado de tierra | 2026-10-15 → 2026-10-28 (+13d) | 2026-10-19 → 2026-10-30 (+11d) | 5d → 10d |
| 1071 | **SEGUNDA LIMPIEZA DE OBRA** | 2026-11-30 → 2026-12-12 (+12d) | 2026-12-04 → 2026-12-17 (+13d) | 23d → 28d |
| 1072 | Segunda limpieza de obra | 2026-11-30 → 2026-12-12 (+12d) | 2026-12-02 → 2026-12-15 (+13d) | 23d → 28d |
| 1073 | Segunda carga y acarreo de escombro | 2026-12-02 → 2026-12-15 (+13d) | 2026-12-04 → 2026-12-17 (+13d) | 23d → 28d |
| 1074 | **CANCELERIA PUERTAS Y VENTANAS DE ALUMINIO** | 2026-11-19 → 2026-12-01 (+12d) | 2026-12-10 → 2026-12-22 (+12d) | 1d → 6d |
| 1075 | Fijo medidas 0.30x4.90m | 2026-11-21 → 2026-12-03 (+12d) | 2026-11-30 → 2026-12-12 (+12d) | 9d → 14d |
| 1076 | Ventana Corrediza 1.80x1.60m | 2026-11-19 → 2026-12-01 (+12d) | 2026-11-24 → 2026-12-07 (+13d) | 14d → 19d |
| 1077 | Ventana Corrediza 0.60x0.40m | 2026-11-21 → 2026-12-03 (+12d) | 2026-11-26 → 2026-12-09 (+13d) | 12d → 17d |
| 1078 | Ventana Corrediza 1.54x0.50m | 2026-11-21 → 2026-12-03 (+12d) | 2026-11-26 → 2026-12-09 (+13d) | 12d → 17d |
| 1079 | Fijo medidas 1.40x2.50m | 2026-11-25 → 2026-12-08 (+13d) | 2026-11-30 → 2026-12-12 (+12d) | 3d → 8d |
| 1080 | Ventana Corrediza 1.80x1.50m | 2026-11-27 → 2026-12-10 (+13d) | 2026-12-02 → 2026-12-15 (+13d) | 1d → 6d |
| 1081 | Ventana Corrediza 1.40x1.60m | 2026-11-27 → 2026-12-10 (+13d) | 2026-12-02 → 2026-12-15 (+13d) | 1d → 6d |
| 1082 | Ventana Corrediza 0.95x0.40m | 2026-11-27 → 2026-12-10 (+13d) | 2026-12-02 → 2026-12-15 (+13d) | 1d → 6d |
| 1083 | Puerta corrediza 3.85x2.10m | 2026-11-30 → 2026-12-12 (+12d) | 2026-12-08 → 2026-12-19 (+11d) | 3d → 8d |
| 1084 | Barandal de Cristal Templado | 2026-12-02 → 2026-12-15 (+13d) | 2026-12-10 → 2026-12-22 (+12d) | 1d → 6d |
| 1085 | **CARPINTERIA, PUERTAS EXTERIORES E INTERIORES** | 2026-11-30 → 2026-12-12 (+12d) | 2026-12-11 → 2026-12-23 (+12d) | 0d → 5d |
| 1086 | Puerta P-01 de seguridad | 2026-11-30 → 2026-12-12 (+12d) | 2026-12-07 → 2026-12-18 (+11d) | 4d → 9d |
| 1087 | Puerta P-01 interior | 2026-11-30 → 2026-12-12 (+12d) | 2026-12-10 → 2026-12-22 (+12d) | 1d → 6d |
| 1088 | Puerta P-02 interior | 2026-11-30 → 2026-12-12 (+12d) | 2026-12-10 → 2026-12-22 (+12d) | 1d → 6d |
| 1089 | Puerta P-03 interior | 2026-12-07 → 2026-12-18 (+11d) | 2026-12-11 → 2026-12-23 (+12d) | 0d → 5d |
| 1090 | Puerta P-04 interior | 2026-12-07 → 2026-12-18 (+11d) | 2026-12-11 → 2026-12-23 (+12d) | 0d → 5d |
| 1091 | **VOLADOS, BARANDAL Y ESCALERA** | 2026-10-23 → 2026-11-05 (+13d) | 2026-12-04 → 2026-12-17 (+13d) | 8d → 13d |
| 1092 | Barandal de Herreria en escalera | 2026-11-10 → 2026-11-24 (+14d) | 2026-11-17 → 2026-11-28 (+11d) | 23d → 28d |
| 1093 | Escalera de herreria | 2026-10-23 → 2026-11-05 (+13d) | 2026-11-17 → 2026-11-28 (+11d) | 8d → 13d |
| 1094 | Techumbre en acceso Principal | 2026-11-09 → 2026-11-23 (+14d) | 2026-11-27 → 2026-12-10 (+13d) | 14d → 19d |
| 1095 | Techumbre en 1.80x0.50m | 2026-11-09 → 2026-11-23 (+14d) | 2026-11-19 → 2026-12-01 (+12d) | 8d → 13d |
| 1096 | Techumbre en 1.40x0.50m | 2026-11-19 → 2026-12-01 (+12d) | 2026-11-27 → 2026-12-10 (+13d) | 8d → 13d |
| 1097 | Imper con manto prefabricado | 2026-11-23 → 2026-12-04 (+11d) | 2026-11-28 → 2026-12-11 (+13d) | 8d → 13d |
| 1098 | Plafon hoja tablaroca std | 2026-11-28 → 2026-12-11 (+13d) | 2026-12-04 → 2026-12-17 (+13d) | 8d → 13d |
| 1099 | Acabado Woodstock en parte inf. Cubierta | 2026-11-28 → 2026-12-11 (+13d) | 2026-12-04 → 2026-12-17 (+13d) | 8d → 13d |
| 1100 | **INSTALACION ELECTRICA** | 2026-10-31 → 2026-11-12 (+12d) | 2026-11-21 → 2026-12-03 (+12d) | 29d → 34d |
| 1101 | Alimentación eléctrica base a centro de carga | 2026-11-05 → 2026-11-19 (+14d) | 2026-11-11 → 2026-11-25 (+14d) | 33d → 38d |
| 1102 | Interruptor termomagnético 1x20 A | 2026-11-11 → 2026-11-25 (+14d) | 2026-11-12 → 2026-11-26 (+14d) | 33d → 38d |
| 1103 | Interruptor termomagnético 2x20 A | 2026-11-11 → 2026-11-25 (+14d) | 2026-11-12 → 2026-11-26 (+14d) | 33d → 38d |
| 1104 | Salida para apagador 3 vías | 2026-10-31 → 2026-11-12 (+12d) | 2026-11-05 → 2026-11-19 (+14d) | 29d → 34d |
| 1105 | Salida para apagador doble | 2026-11-05 → 2026-11-19 (+14d) | 2026-11-09 → 2026-11-23 (+14d) | 31d → 36d |
| 1106 | Salida para apagador sencillo | 2026-11-05 → 2026-11-19 (+14d) | 2026-11-09 → 2026-11-23 (+14d) | 31d → 36d |
| 1107 | Salida de alumbrado en losa | 2026-11-05 → 2026-11-19 (+14d) | 2026-11-11 → 2026-11-25 (+14d) | 29d → 34d |
| 1108 | Salida para contacto exterior doble | 2026-11-05 → 2026-11-19 (+14d) | 2026-11-07 → 2026-11-21 (+14d) | 32d → 37d |
| 1109 | Salida para contacto 220 V | 2026-11-07 → 2026-11-21 (+14d) | 2026-11-11 → 2026-11-25 (+14d) | 29d → 34d |
| 1110 | Salida para contacto doble | 2026-11-07 → 2026-11-21 (+14d) | 2026-11-13 → 2026-11-27 (+14d) | 32d → 37d |
| 1111 | Salida para contacto doble área húmeda | 2026-11-11 → 2026-11-25 (+14d) | 2026-11-13 → 2026-11-27 (+14d) | 32d → 37d |
| 1112 | Salida TV / telefonía / intercom | 2026-11-11 → 2026-11-25 (+14d) | 2026-11-18 → 2026-11-30 (+12d) | 30d → 35d |
| 1113 | Extractor 4 baño | 2026-11-11 → 2026-11-25 (+14d) | 2026-11-19 → 2026-12-01 (+12d) | 29d → 34d |
| 1114 | Prueba eléctrica | 2026-11-19 → 2026-12-01 (+12d) | 2026-11-21 → 2026-12-03 (+12d) | 29d → 34d |
| 1115 | **INSTALACIÓN HIDRO-SANITARIA** | 2026-10-15 → 2026-10-28 (+13d) | 2026-10-28 → 2026-11-10 (+13d) | 0d → 5d |
| 1116 | Tubería condensados PVC 1 | 2026-10-15 → 2026-10-28 (+13d) | 2026-10-21 → 2026-11-03 (+13d) | 0d → 5d |
| 1117 | Tubería sanitaria PVC 4 | 2026-10-15 → 2026-10-28 (+13d) | 2026-10-21 → 2026-11-03 (+13d) | 8d → 13d |
| 1118 | Coladera H-444 | 2026-10-21 → 2026-11-03 (+13d) | 2026-10-22 → 2026-11-04 (+13d) | 8d → 13d |
| 1119 | Caja PVC para lavadora | 2026-10-15 → 2026-10-28 (+13d) | 2026-10-19 → 2026-10-30 (+11d) | 0d → 5d |
| 1120 | Salida para secadora PVC 4 | 2026-10-15 → 2026-10-28 (+13d) | 2026-10-19 → 2026-10-30 (+11d) | 0d → 5d |
| 1121 | Salida hidráulica para boiler | 2026-10-15 → 2026-10-28 (+13d) | 2026-10-17 → 2026-10-29 (+12d) | 1d → 6d |
| 1122 | Salida hidráulica para llave de jardín | 2026-10-15 → 2026-10-28 (+13d) | 2026-10-19 → 2026-10-30 (+11d) | 0d → 5d |
| 1123 | Salida hidráulica para lavabo | 2026-10-15 → 2026-10-28 (+13d) | 2026-10-20 → 2026-11-02 (+13d) | 0d → 5d |
| 1124 | Salida hidráulica para purificación | 2026-10-15 → 2026-10-28 (+13d) | 2026-10-20 → 2026-11-02 (+13d) | 0d → 5d |
| 1125 | Salida sanitaria para lavabo | 2026-10-17 → 2026-10-30 (+13d) | 2026-10-20 → 2026-11-02 (+13d) | 0d → 5d |
| 1126 | Salida hidráulica para lavadero | 2026-10-17 → 2026-10-30 (+13d) | 2026-10-20 → 2026-11-02 (+13d) | 0d → 5d |
| 1127 | Salida sanitaria para lavadero | 2026-10-19 → 2026-10-31 (+12d) | 2026-10-21 → 2026-11-03 (+13d) | 0d → 5d |
| 1128 | Salida hidráulica para lavadora | 2026-10-19 → 2026-10-31 (+12d) | 2026-10-21 → 2026-11-03 (+13d) | 0d → 5d |
| 1129 | Salida sanitaria para lavadora | 2026-10-20 → 2026-11-02 (+13d) | 2026-10-22 → 2026-11-04 (+13d) | 0d → 5d |
| 1130 | Salida hidráulica para regadera | 2026-10-20 → 2026-11-02 (+13d) | 2026-10-26 → 2026-11-07 (+12d) | 5d → 10d |
| 1131 | Salida sanitaria para regadera | 2026-10-20 → 2026-11-02 (+13d) | 2026-10-24 → 2026-11-06 (+13d) | 6d → 11d |
| 1132 | Salida hidráulica para WC | 2026-10-17 → 2026-10-30 (+13d) | 2026-10-20 → 2026-11-02 (+13d) | 0d → 5d |
| 1133 | Salida sanitaria para WC | 2026-10-20 → 2026-11-02 (+13d) | 2026-10-24 → 2026-11-06 (+13d) | 0d → 5d |
| 1134 | Salida hidráulica para zinc | 2026-10-20 → 2026-11-02 (+13d) | 2026-10-24 → 2026-11-06 (+13d) | 0d → 5d |
| 1135 | Salida sanitaria para zinc | 2026-10-22 → 2026-11-04 (+13d) | 2026-10-26 → 2026-11-07 (+12d) | 0d → 5d |
| 1136 | Tubo para ventila de baño 2 | 2026-10-15 → 2026-10-28 (+13d) | 2026-10-21 → 2026-11-03 (+13d) | 0d → 5d |
| 1137 | Tubo para minisplit PVC 3 | 2026-10-21 → 2026-11-03 (+13d) | 2026-10-27 → 2026-11-09 (+13d) | 0d → 5d |
| 1138 | Cuadro de medición | 2026-10-19 → 2026-10-31 (+12d) | 2026-10-24 → 2026-11-06 (+13d) | 5d → 10d |
| 1139 | Pozo de absorción 0.50x0.50x0.50 | 2026-10-19 → 2026-10-31 (+12d) | 2026-10-22 → 2026-11-04 (+13d) | 8d → 13d |

| ID | Task | Start | Finish | Duration | Complete | Total float | Predecessors |
| --- | --- | --- | --- | --- | --- | --- | --- |
| 1140 | Prueba sanitaria final | 2026-10-28 → 2026-11-09 (+12d) | 2026-10-28 → 2026-11-10 (+13d) |  |  | 4d → 9d |  |
| 1141 | Prueba hidrostática final | 2026-10-27 → 2026-11-07 (+11d) | 2026-10-27 → 2026-11-09 (+13d) |  |  | 5d → 10d |  |
| 1142 | Salida válvula control 19 mm | 2026-10-26 → 2026-11-06 (+11d) | 2026-10-26 → 2026-11-07 (+12d) |  |  | 5d → 10d |  |
| 1143 | Salida válvula control 13 mm | 2026-10-26 → 2026-11-06 (+11d) | 2026-10-26 → 2026-11-07 (+12d) |  |  | 5d → 10d |  |
| 1144 | Salida hidráulica para tanque hidroneumático | 2026-10-19 → 2026-10-31 (+12d) | 2026-10-22 → 2026-11-04 (+13d) |  |  | 8d → 13d |  |
| 1145 | Salida hidráulica para Active Driver | 2026-10-19 → 2026-10-31 (+12d) | 2026-10-22 → 2026-11-04 (+13d) |  |  | 8d → 13d |  |
| 1146 | **INSTALACION DE GAS** | 2026-10-13 → 2026-10-26 (+13d) | 2026-10-22 → 2026-11-04 (+13d) |  |  | 36d → 41d |  |
| 1147 | Ramaleo para gas 1/2 | 2026-10-16 → 2026-10-29 (+13d) | 2026-10-22 → 2026-11-04 (+13d) |  |  | 36d → 41d |  |
| 1148 | Excavación a mano material tipo B | 2026-10-13 → 2026-10-26 (+13d) | 2026-10-16 → 2026-10-28 (+12d) |  |  | 36d → 41d |  |
| 1149 | **MUEBLES SANITARIOS** | 2026-11-21 → 2026-12-03 (+12d) | 2026-12-30 → 2027-01-14 (+15d) |  |  | 12d → 17d |  |
| 1150 | WC completo Austral | 2026-11-21 → 2026-12-03 (+12d) | 2026-11-24 → 2026-12-07 (+13d) |  |  | 14d → 19d |  |
| 1151 | Lavabo Senna con pedestal | 2026-11-21 → 2026-12-03 (+12d) | 2026-11-26 → 2026-12-09 (+13d) |  |  | 12d → 17d |  |
| 1152 | Tarja / lavabo combo Guinea 80x45 | 2026-11-21 → 2026-12-03 (+12d) | 2026-11-24 → 2026-12-07 (+13d) |  |  | 43d → 48d |  |
| 1153 | Regadera con monomando | 2026-11-24 → 2026-12-07 (+13d) | 2026-11-27 → 2026-12-10 (+13d) |  |  | 11d → 16d |  |
| 1154 | Coladera inserto cerámico | 2026-11-25 → 2026-12-08 (+13d) | 2026-11-27 → 2026-12-10 (+13d) |  |  | 11d → 16d |  |
| 1155 | Toallero sencillo | 2026-12-29 → 2027-01-13 (+15d) | 2026-12-30 → 2027-01-14 (+15d) |  |  | 0d → 5d |  |
| 1156 | Toallero barra | 2026-12-29 → 2027-01-13 (+15d) | 2026-12-30 → 2027-01-14 (+15d) |  |  | 0d → 5d |  |
| 1157 | Portapapel | 2026-12-29 → 2027-01-13 (+15d) | 2026-12-30 → 2027-01-14 (+15d) |  |  | 0d → 5d |  |
| 1158 | Gancho baño | 2026-12-29 → 2027-01-13 (+15d) | 2026-12-30 → 2027-01-14 (+15d) |  |  | 0d → 5d |  |
| 1159 | **EQUIPAMIENTO** | 2026-10-06 → 2026-10-19 (+13d) | 2026-10-14 → 2026-10-26 (+12d) |  |  | 59d → 64d |  |
| 1160 | Electronivel Rotoplas 5 m | 2026-10-07 → 2026-10-20 (+13d) | 2026-10-09 → 2026-10-22 (+13d) |  |  | 62d → 67d |  |
| 1161 | Manómetro | 2026-10-07 → 2026-10-20 (+13d) | 2026-10-08 → 2026-10-21 (+13d) |  |  | 63d → 68d |  |
| 1162 | Interruptor de presión 30-50 PSI | 2026-10-07 → 2026-10-20 (+13d) | 2026-10-08 → 2026-10-21 (+13d) |  |  | 63d → 68d |  |
| 1163 | Tanque hidroneumático FPS-24LX | 2026-10-07 → 2026-10-20 (+13d) | 2026-10-12 → 2026-10-23 (+11d) |  |  | 59d → 64d |  |
| 1164 | Bomba sumergible Dominator 1.2 HP | 2026-10-12 → 2026-10-23 (+11d) | 2026-10-14 → 2026-10-26 (+12d) |  |  | 59d → 64d |  |
| 1165 | Cisterna prefabricada 2800 L | 2026-10-06 → 2026-10-19 (+13d) | 2026-10-07 → 2026-10-20 (+13d) |  |  | 59d → 64d |  |
| 1166 | **LUMINARIAS** | 2026-11-11 → 2026-11-25 (+14d) | 2026-11-19 → 2026-12-01 (+12d) |  |  | 29d → 34d |  |
| 1167 | Roseta cerámica | 2026-11-11 → 2026-11-25 (+14d) | 2026-11-17 → 2026-11-28 (+11d) |  |  | 31d → 36d |  |
| 1168 | Luminaria lagartijera LED | 2026-11-11 → 2026-11-25 (+14d) | 2026-11-17 → 2026-11-28 (+11d) |  |  | 31d → 36d |  |
| 1169 | Spot 6W Tecnolite | 2026-11-11 → 2026-11-25 (+14d) | 2026-11-17 → 2026-11-28 (+11d) |  |  | 31d → 36d |  |
| 1170 | Spot 7W Tecnolite | 2026-11-11 → 2026-11-25 (+14d) | 2026-11-17 → 2026-11-28 (+11d) |  |  | 31d → 36d |  |
| 1171 | Arbotante exterior | 2026-11-11 → 2026-11-25 (+14d) | 2026-11-13 → 2026-11-27 (+14d) |  |  | 29d → 34d |  |
| 1172 | Estaca LED exterior | 2026-11-13 → 2026-11-27 (+14d) | 2026-11-19 → 2026-12-01 (+12d) |  |  | 29d → 34d |  |
| 1173 | Tira LED | 2026-11-13 → 2026-11-27 (+14d) | 2026-11-19 → 2026-12-01 (+12d) |  |  | 29d → 34d |  |
| 1174 | Spot exterior 50W | 2026-11-11 → 2026-11-25 (+14d) | 2026-11-13 → 2026-11-27 (+14d) |  |  | 32d → 37d |  |
| 1175 | **TIMBRE** | 2026-11-12 → 2026-11-26 (+14d) | 2026-11-17 → 2026-11-28 (+11d) |  |  | 31d → 36d |  |
| 1176 | Timbre inalámbrico con bocina | 2026-11-12 → 2026-11-26 (+14d) | 2026-11-17 → 2026-11-28 (+11d) |  |  | 31d → 36d |  |
| 1177 | **OBRA EXTERIOR - BARDA** | 2026-10-19 → 2026-10-31 (+12d) | 2026-11-10 → 2026-11-24 (+14d) |  |  | 37d → 42d |  |
| 1178 | Murete convencional | 2026-10-26 → 2026-11-06 (+11d) | 2026-10-30 → 2026-11-12 (+13d) |  |  | 43d → 48d |  |
| 1179 | Barda de block aparente | 2026-10-19 → 2026-10-31 (+12d) | 2026-11-10 → 2026-11-24 (+14d) |  |  | 37d → 42d |  |
| 1180 | **TERCER LIMPIEZA DE OBRA** | 2026-12-30 → 2027-01-14 (+15d) | 2027-01-21 → 2027-02-03 (+13d) |  |  | 0d → 5d |  |
| 1181 | Limpieza fina para entrega | 2026-12-30 → 2027-01-14 (+15d) | 2027-01-07 → 2027-01-20 (+13d) |  |  | 0d → 5d |  |
| 1182 | Tercera limpieza de obra | 2027-01-07 → 2027-01-20 (+13d) | 2027-01-14 → 2027-01-26 (+12d) |  |  | 0d → 5d |  |
| 1183 | Tercera carga y acarreo de escombro | 2027-01-14 → 2027-01-26 (+12d) | 2027-01-21 → 2027-02-03 (+13d) |  |  | 0d → 5d |  |
| 1184 | **LOTE 21 M-663 CORSAC-A** |  | 2027-01-21 → 2027-02-09 (+19d) | 184d → 199d | 5% → 1% |  |  |
| 1185 | **HITOS IMPORTANTES DEL LOTE** |  | 2027-01-21 → 2027-02-09 (+19d) | 184d → 199d |  |  |  |
| 1187 | Colado de Losa de Cimentación | 2026-06-24 → 2026-07-13 (+19d) | 2026-06-24 → 2026-07-13 (+19d) |  |  |  |  |
| 1188 | Colado de Losa de Entrepiso | 2026-07-31 → 2026-08-19 (+19d) | 2026-07-31 → 2026-08-19 (+19d) |  |  |  |  |
| 1189 | Colado de Losa de Azotea | 2026-09-07 → 2026-09-26 (+19d) | 2026-09-07 → 2026-09-26 (+19d) |  |  |  |  |
| 1190 | Entrega de vivienda | 2027-01-21 → 2027-02-09 (+19d) | 2027-01-21 → 2027-02-09 (+19d) |  |  |  |  |
| 1196 | **CIMENTACION** | 2026-06-09 A → 2026-06-27 (+18d) | 2026-06-25 → 2026-07-14 (+19d) |  | 88% → 0% |  |  |
| 1197 | Cimbra perimetral losa de cimentación | 2026-06-09 A → 2026-06-27 (+18d) | 2026-06-12 A → 2026-07-01 (+19d) |  | 100% → 0% | none → 0d | 1194, 1195 → 1194FS+15d, 1195 |
| 1198 | Sistema antitermitas PVC | 2026-06-09 A → 2026-06-27 (+18d) | 2026-06-12 A → 2026-07-01 (+19d) |  | 100% → 0% | none → 1d | 1194, 1195 → 1194FS+15d, 1195 |
| 1199 | Hule negro en cimentación | 2026-06-12 A → 2026-07-01 (+19d) | 2026-06-13 A → 2026-07-02 (+19d) |  | 100% → 0% | none → 1d |  |
| 1200 | Ramaleo poliducto eléctrico cimentación | 2026-06-13 A → 2026-07-02 (+19d) | 2026-06-16 A → 2026-07-04 (+18d) |  | 100% → 0% | none → 4d |  |
| 1201 | Ramaleo eléctrico base-medición a centro de carga | 2026-06-13 A → 2026-07-02 (+19d) | 2026-06-15 A → 2026-07-03 (+18d) |  | 100% → 0% | none → 5d |  |
| 1202 | Ramaleo eléctrico exterior | 2026-06-16 A → 2026-07-06 (+20d) | 2026-06-17 A → 2026-07-06 (+19d) |  | 100% → 0% | none → 4d |  |
| 1203 | Ramaleo para cable poliducto 3/4 | 2026-06-16 A → 2026-07-06 (+20d) | 2026-06-17 A → 2026-07-06 (+19d) |  | 100% → 0% | none → 4d |  |
| 1204 | Ramaleo para TV poliducto 3/4 | 2026-06-16 A → 2026-07-06 (+20d) | 2026-06-17 A → 2026-07-06 (+19d) |  | 100% → 0% | none → 4d |  |
| 1205 | Ramaleo hidráulico CPVC 1-1/4" cimentación | 2026-06-13 A → 2026-07-02 (+19d) | 2026-06-15 A → 2026-07-03 (+18d) |  | 100% → 0% | none → 1d |  |
| 1206 | Ramaleo hidráulico CPVC 1 cimentación | 2026-06-13 A → 2026-07-02 (+19d) | 2026-06-15 A → 2026-07-03 (+18d) |  | 100% → 0% | none → 1d |  |
| 1207 | Ramaleo hidráulico CPVC 3/4 cimentación | 2026-06-15 A → 2026-07-03 (+18d) | 2026-06-17 A → 2026-07-06 (+19d) |  | 100% → 0% | none → 1d |  |
| 1208 | Ramaleo hidráulico CPVC 1/2 cimentación | 2026-06-17 A → 2026-07-07 (+20d) | 2026-06-19 A → 2026-07-08 (+19d) |  | 100% → 0% | none → 1d |  |
| 1209 | Prueba hidráulica | 2026-06-19 A → 2026-07-09 (+20d) | 2026-06-22 → 2026-07-09 (+17d) |  | 75% → 0% |  |  |
| 1210 | Ramaleo sanitario PVC 4 cimentación | 2026-06-15 A → 2026-07-03 (+18d) | 2026-06-17 A → 2026-07-06 (+19d) |  | 100% → 0% | none → 2d |  |
| 1211 | Ramaleo sanitario PVC 2 cimentación | 2026-06-17 A → 2026-07-07 (+20d) | 2026-06-18 A → 2026-07-07 (+19d) |  | 100% → 0% | none → 2d |  |
| 1212 | Prueba sanitaria | 2026-06-18 A → 2026-07-08 (+20d) | 2026-06-19 A → 2026-07-08 (+19d) |  | 100% → 0% | none → 2d |  |
| 1213 | Acero contratrabe CT-1 | 2026-06-12 A → 2026-07-01 (+19d) | 2026-06-17 A → 2026-07-06 (+19d) |  | 100% → 0% | none → 0d |  |
| 1214 | Acero contratrabe CT-2 | 2026-06-12 A → 2026-07-01 (+19d) | 2026-06-17 A → 2026-07-06 (+19d) |  | 100% → 0% | none → 0d |  |
| 1215 | Malla electrosoldada 6-6/8-8 | 2026-06-19 A → 2026-07-09 (+20d) | 2026-06-23 → 2026-07-10 (+17d) |  | 38% → 0% |  |  |

| ID | Task | Start | Finish | Complete | Total float |
| --- | --- | --- | --- | --- | --- |
| 1216 | Bastón de refuerzo LS | 2026-06-17 A → 2026-07-07 (+20d) | 2026-06-19 A → 2026-07-08 (+19d) | 100% → 0% | none → 0d |
| 1217 | Bastón de refuerzo LI | 2026-06-17 A → 2026-07-07 (+20d) | 2026-06-19 A → 2026-07-08 (+19d) | 100% → 0% | none → 0d |
| 1218 | Colado losa de cimentación f’c=200 | 2026-06-23 → 2026-07-11 (+18d) | 2026-06-24 → 2026-07-13 (+19d) |  |  |
| 1219 | Curado de concreto | 2026-06-24 → 2026-07-13 (+19d) | 2026-06-25 → 2026-07-14 (+19d) |  |  |
| 1220 | Acero zapata ZT-1 | 2026-06-17 A → 2026-07-07 (+20d) | 2026-06-23 → 2026-07-10 (+17d) | 69% → 0% |  |
| 1221 | Acero zapata ZT-2 | 2026-06-17 A → 2026-07-07 (+20d) | 2026-06-23 → 2026-07-10 (+17d) | 69% → 0% |  |
| 1222 | **MUROS, PLANTA BAJA. CASTILLOS Y CERRAMIENTOS** | 2026-06-18 A → 2026-07-08 (+20d) | 2026-07-14 → 2026-08-01 (+18d) | 3% → 0% | 148d → 5d |
| 1223 | Anclaje de castillos y Columnas PB | 2026-06-18 A → 2026-07-08 (+20d) | 2026-06-25 → 2026-07-14 (+19d) | 35% → 0% |  |
| 1224 | Castillo K1 | 2026-06-25 → 2026-07-14 (+19d) | 2026-06-30 → 2026-07-18 (+18d) |  |  |
| 1225 | Castillo K3 | 2026-06-27 → 2026-07-16 (+19d) | 2026-07-01 → 2026-07-20 (+19d) |  |  |
| 1226 | Castillo K4 | 2026-06-27 → 2026-07-16 (+19d) | 2026-07-01 → 2026-07-20 (+19d) |  |  |
| 1227 | Castillo K5 | 2026-06-30 → 2026-07-18 (+18d) | 2026-07-03 → 2026-07-22 (+19d) |  |  |
| 1228 | Refuerzo de muro K6 | 2026-07-01 → 2026-07-20 (+19d) | 2026-07-04 → 2026-07-23 (+19d) |  |  |
| 1229 | Dala de cerramiento CR-1 | 2026-07-01 → 2026-07-20 (+19d) | 2026-07-06 → 2026-07-24 (+18d) |  |  |
| 1230 | Dala de cerramiento CR-2 | 2026-07-01 → 2026-07-20 (+19d) | 2026-07-04 → 2026-07-23 (+19d) |  |  |
| 1231 | Cadena block dala | 2026-07-06 → 2026-07-23 (+17d) | 2026-07-09 → 2026-07-29 (+20d) |  |  |
| 1232 | Muro de ladrillo aparente | 2026-06-25 → 2026-07-14 (+19d) | 2026-07-14 → 2026-08-01 (+18d) |  |  |
| 1233 | Muro de block planta baja | 2026-06-27 → 2026-07-16 (+19d) | 2026-07-14 → 2026-08-01 (+18d) |  |  |
| 1234 | Ramaleo electrico en Muros Planta Baja | 2026-07-01 → 2026-07-20 (+19d) | 2026-07-06 → 2026-07-24 (+18d) |  |  |
| 1235 | Ramaleo para cable poliducto 3/4 | 2026-07-07 → 2026-07-24 (+17d) | 2026-07-08 → 2026-07-28 (+20d) |  |  |
| 1236 | Ramaleo para TV poliducto 3/4 | 2026-07-09 → 2026-07-28 (+19d) | 2026-07-13 → 2026-07-31 (+18d) |  |  |
| 1237 | **ESCALERA** | 2026-07-31 → 2026-08-19 (+19d) | 2026-08-12 → 2026-08-31 (+19d) |  |  |
| 1238 | Escalera de concreto armado | 2026-07-31 → 2026-08-19 (+19d) | 2026-08-12 → 2026-08-31 (+19d) |  |  |
| 1239 | **LOSA DE ENTREPISO (viegueta y caseton)** | 2026-07-11 → 2026-07-30 (+19d) | 2026-08-01 → 2026-08-20 (+19d) |  |  |
| 1240 | Dala de coronamiento 10cm | 2026-07-20 → 2026-08-07 (+18d) | 2026-07-23 → 2026-08-11 (+19d) |  |  |
| 1241 | Dala de coronamiento 12cm | 2026-07-21 → 2026-08-08 (+18d) | 2026-07-24 → 2026-08-12 (+19d) |  |  |
| 1242 | Trabe TR-1 | 2026-07-11 → 2026-07-30 (+19d) | 2026-07-15 → 2026-08-03 (+19d) |  |  |
| 1243 | Trabe TR-2 | 2026-07-13 → 2026-07-31 (+18d) | 2026-07-17 → 2026-08-05 (+19d) |  |  |
| 1244 | Nervadura NR-1 | 2026-07-14 → 2026-08-01 (+18d) | 2026-07-18 → 2026-08-06 (+19d) |  |  |
| 1245 | Nervadura NR-2 | 2026-07-15 → 2026-08-03 (+19d) | 2026-07-20 → 2026-08-07 (+18d) |  |  |
| 1246 | Nervadura NR-3 | 2026-07-15 → 2026-08-03 (+19d) | 2026-07-20 → 2026-08-07 (+18d) |  |  |
| 1247 | Nervadura NR-4 | 2026-07-15 → 2026-08-03 (+19d) | 2026-07-20 → 2026-08-07 (+18d) |  |  |
| 1248 | Acero de refuerzo en nervios #3 | 2026-07-20 → 2026-08-07 (+18d) | 2026-07-22 → 2026-08-10 (+19d) |  |  |
| 1249 | Acero de refuerzo long. #3 | 2026-07-21 → 2026-08-08 (+18d) | 2026-07-24 → 2026-08-12 (+19d) |  |  |
| 1250 | Acero de refuerzo long. #4 | 2026-07-21 → 2026-08-08 (+18d) | 2026-07-24 → 2026-08-12 (+19d) |  |  |
| 1251 | Malla 66-10/10 losa de compresión | 2026-07-28 → 2026-08-14 (+17d) | 2026-07-30 → 2026-08-18 (+19d) |  |  |
| 1252 | Acero de Losa Maciza | 2026-07-20 → 2026-08-07 (+18d) | 2026-07-23 → 2026-08-11 (+19d) |  |  |
| 1253 | Caseton de 60x60x20cm | 2026-07-20 → 2026-08-07 (+18d) | 2026-07-22 → 2026-08-10 (+19d) |  |  |
| 1254 | Concreto losa de entrepiso f’c=200 | 2026-07-30 → 2026-08-18 (+19d) | 2026-07-31 → 2026-08-19 (+19d) |  |  |
| 1255 | Curado de concreto | 2026-07-31 → 2026-08-19 (+19d) | 2026-08-01 → 2026-08-20 (+19d) |  |  |
| 1256 | Cimbra losa de azotea | 2026-07-15 → 2026-08-03 (+19d) | 2026-07-21 → 2026-08-08 (+18d) |  |  |
| 1257 | Cimbra exterior corta losa | 2026-07-23 → 2026-08-11 (+19d) | 2026-07-28 → 2026-08-14 (+17d) |  |  |
| 1258 | Ramaleo poliducto eléctrico entrepiso | 2026-07-22 → 2026-08-10 (+19d) | 2026-07-24 → 2026-08-12 (+19d) |  |  |
| 1259 | Ramaleo hidráulico CPVC 3/4" | 2026-07-23 → 2026-08-11 (+19d) | 2026-07-27 → 2026-08-13 (+17d) |  |  |
| 1260 | Ramaleo hidráulico CPVC 1/2" | 2026-07-27 → 2026-08-13 (+17d) | 2026-07-28 → 2026-08-14 (+17d) |  |  |
| 1261 | Prueba hidráulica | 2026-07-27 → 2026-08-13 (+17d) | 2026-07-28 → 2026-08-14 (+17d) |  |  |
| 1262 | Ramaleo sanitario PVC 4" | 2026-07-23 → 2026-08-11 (+19d) | 2026-07-27 → 2026-08-13 (+17d) |  |  |
| 1263 | Ramaleo sanitario PVC 2" | 2026-07-27 → 2026-08-13 (+17d) | 2026-07-28 → 2026-08-14 (+17d) |  |  |
| 1264 | Prueba sanitaria | 2026-07-27 → 2026-08-13 (+17d) | 2026-07-28 → 2026-08-14 (+17d) |  |  |
| 1265 | **MUROS EN PLANTA ALTA, CASTILLOS Y CERRM.** | 2026-07-23 → 2026-08-11 (+19d) | 2026-08-20 → 2026-09-08 (+19d) |  |  |
| 1266 | Anclaje de castillos y Columnas PA | 2026-07-23 → 2026-08-11 (+19d) | 2026-07-29 → 2026-08-17 (+19d) |  |  |
| 1267 | Castillo K1 | 2026-08-01 → 2026-08-20 (+19d) | 2026-08-06 → 2026-08-25 (+19d) |  |  |
| 1268 | Castillo K2 | 2026-08-03 → 2026-08-21 (+18d) | 2026-08-07 → 2026-08-26 (+19d) |  |  |
| 1269 | Castillo K4 | 2026-08-06 → 2026-08-25 (+19d) | 2026-08-10 → 2026-08-28 (+18d) |  |  |
| 1270 | Castillo K5 | 2026-08-06 → 2026-08-25 (+19d) | 2026-08-10 → 2026-08-28 (+18d) |  |  |
| 1271 | Castillo K6 | 2026-08-06 → 2026-08-25 (+19d) | 2026-08-10 → 2026-08-28 (+18d) |  |  |
| 1272 | Refuerzo de muro | 2026-08-07 → 2026-08-26 (+19d) | 2026-08-11 → 2026-08-29 (+18d) |  |  |
| 1273 | Dala de cerramiento CR-1 | 2026-08-11 → 2026-08-31 (+20d) | 2026-08-17 → 2026-09-03 (+17d) |  |  |
| 1274 | Dala de cerramiento CR-2 | 2026-08-11 → 2026-08-31 (+20d) | 2026-08-17 → 2026-09-03 (+17d) |  |  |
| 1275 | Cadena block dala | 2026-08-17 → 2026-09-04 (+18d) | 2026-08-20 → 2026-09-08 (+19d) |  |  |
| 1276 | Muro de ladrillo aparente | 2026-08-01 → 2026-08-20 (+19d) | 2026-08-20 → 2026-09-08 (+19d) |  |  |
| 1277 | Muro de block planta alta | 2026-08-03 → 2026-08-21 (+18d) | 2026-08-20 → 2026-09-08 (+19d) |  |  |
| 1278 | Ramaleo electrico en Muros Planta Alta | 2026-08-11 → 2026-08-31 (+20d) | 2026-08-17 → 2026-09-03 (+17d) |  |  |
| 1279 | **LOSA AZOTEA** | 2026-08-20 → 2026-09-08 (+19d) | 2026-09-08 → 2026-09-28 (+20d) |  |  |
| 1280 | Cortalosa CL-1 | 2026-09-03 → 2026-09-23 (+20d) | 2026-09-04 → 2026-09-25 (+21d) |  |  |
| 1281 | Cortalosa CL-2 | 2026-09-03 → 2026-09-23 (+20d) | 2026-09-04 → 2026-09-25 (+21d) |  |  |
| 1282 | Vigueta pretensada V11-30 125 | 2026-08-20 → 2026-09-08 (+19d) | 2026-08-26 → 2026-09-14 (+19d) |  |  |
| 1283 | Vigueta pretensada V11-30 185 | 2026-08-20 → 2026-09-08 (+19d) | 2026-08-26 → 2026-09-14 (+19d) |  |  |
| 1284 | Vigueta pretensada V11-30 190 | 2026-08-20 → 2026-09-08 (+19d) | 2026-08-26 → 2026-09-14 (+19d) |  |  |
| 1285 | Vigueta pretensada V11-30 205 | 2026-08-22 → 2026-09-10 (+19d) | 2026-08-28 → 2026-09-17 (+20d) |  |  |

| ID | Task | Start | Finish |
| --- | --- | --- | --- |
| 1286 | Vigueta pretensada V11-30 215 | 2026-08-22 → 2026-09-10 (+19d) | 2026-08-28 → 2026-09-17 (+20d) |
| 1287 | Vigueta pretensada V11-30 260 | 2026-08-24 → 2026-09-11 (+18d) | 2026-08-29 → 2026-09-18 (+20d) |
| 1288 | Vigueta pretensada V11-30 285 | 2026-08-24 → 2026-09-11 (+18d) | 2026-08-29 → 2026-09-18 (+20d) |
| 1289 | Vigueta pretensada V11-40 330 | 2026-08-24 → 2026-09-11 (+18d) | 2026-08-29 → 2026-09-18 (+20d) |
| 1290 | Vigueta pretensada V11-40 335 | 2026-08-24 → 2026-09-11 (+18d) | 2026-08-29 → 2026-09-18 (+20d) |
| 1291 | Vigueta pretensada V11-40 505 | 2026-08-24 → 2026-09-11 (+18d) | 2026-08-29 → 2026-09-18 (+20d) |
| 1292 | Bovedilla poliestireno azotea | 2026-08-31 → 2026-09-18 (+18d) | 2026-09-02 → 2026-09-23 (+21d) |
| 1293 | Malla 66-10/10 losa de compresión | 2026-09-03 → 2026-09-23 (+20d) | 2026-09-04 → 2026-09-25 (+21d) |
| 1294 | Concreto losa de azotea f’c=200 | 2026-09-05 → 2026-09-25 (+20d) | 2026-09-07 → 2026-09-26 (+19d) |
| 1295 | Curado de concreto | 2026-09-07 → 2026-09-26 (+19d) | 2026-09-08 → 2026-09-28 (+20d) |
| 1296 | Cimbra losa de azotea | 2026-08-20 → 2026-09-08 (+19d) | 2026-08-26 → 2026-09-14 (+19d) |
| 1297 | Ramaleo de poliducto para inst. electrica en azotea | 2026-09-03 → 2026-09-23 (+20d) | 2026-09-04 → 2026-09-25 (+21d) |
| 1298 | **PRETIL Y ACABADOS DE AZOTEA** | 2026-09-08 → 2026-09-28 (+20d) | 2026-10-02 → 2026-10-21 (+19d) |
| 1299 | Castillo K1 | 2026-09-10 → 2026-09-30 (+20d) | 2026-09-17 → 2026-10-06 (+19d) |
| 1300 | Dala de cerramiento en pretil | 2026-09-14 → 2026-10-03 (+19d) | 2026-09-21 → 2026-10-08 (+17d) |
| 1301 | Muro de block 12x15x40 | 2026-09-08 → 2026-09-28 (+20d) | 2026-09-14 → 2026-10-03 (+19d) |
| 1302 | Chaflán en azotea | 2026-09-17 → 2026-10-06 (+19d) | 2026-09-23 → 2026-10-12 (+19d) |
| 1303 | Diamante de entortado | 2026-09-17 → 2026-10-06 (+19d) | 2026-09-23 → 2026-10-12 (+19d) |
| 1304 | Aplanado exterior Mortermax fino | 2026-09-21 → 2026-10-08 (+17d) | 2026-09-26 → 2026-10-15 (+19d) |
| 1305 | Entortado de Losa | 2026-09-28 → 2026-10-16 (+18d) | 2026-10-02 → 2026-10-21 (+19d) |
| 1306 | Curado de concreto | 2026-09-26 → 2026-10-15 (+19d) | 2026-09-28 → 2026-10-16 (+18d) |
| 1307 | **PRIMERA LIMPIEZA DE OBRA** | 2026-09-08 → 2026-09-28 (+20d) | 2026-09-12 → 2026-10-02 (+20d) |
| 1308 | Primera limpieza de obra | 2026-09-08 → 2026-09-28 (+20d) | 2026-09-10 → 2026-09-30 (+20d) |
| 1309 | Primera carga y acarreo de escombro | 2026-09-10 → 2026-09-30 (+20d) | 2026-09-12 → 2026-10-02 (+20d) |
| 1310 | **IMPERMEABILIZACION** | 2026-10-02 → 2026-10-21 (+19d) | 2026-10-08 → 2026-10-27 (+19d) |
| 1311 | Impermeabilización de pretil Kover 5 años | 2026-10-02 → 2026-10-21 (+19d) | 2026-10-07 → 2026-10-26 (+19d) |
| 1312 | Impermeabilización de losa Kover 5 años | 2026-10-02 → 2026-10-21 (+19d) | 2026-10-08 → 2026-10-27 (+19d) |
| 1313 | **ALBAÑILERIA** | 2026-09-14 → 2026-10-03 (+19d) | 2026-12-02 → 2026-12-21 (+19d) |
| 1314 | Lavadero de granito | 2026-10-29 → 2026-11-18 (+20d) | 2026-11-03 → 2026-11-23 (+20d) |
| 1315 | Ranurado y resane general inst. en muros | 2026-10-06 → 2026-10-26 (+20d) | 2026-10-09 → 2026-10-28 (+19d) |
| 1316 | Ranurado y resane eléctrico 1/2 a 3/4 | 2026-10-06 → 2026-10-26 (+20d) | 2026-10-09 → 2026-10-28 (+19d) |
| 1317 | Ranurado y resane hidráulico 1/2 a 1 | 2026-10-08 → 2026-10-28 (+20d) | 2026-10-12 → 2026-10-29 (+17d) |
| 1318 | Resane sanitario tubería 2 | 2026-10-08 → 2026-10-28 (+20d) | 2026-10-12 → 2026-10-29 (+17d) |
| 1319 | Resane sanitario tubería 4 | 2026-10-08 → 2026-10-28 (+20d) | 2026-10-12 → 2026-10-29 (+17d) |
| 1320 | Resane minisplit tubería 3 | 2026-10-08 → 2026-10-28 (+20d) | 2026-10-12 → 2026-10-29 (+17d) |
| 1321 | Ramaleo hidráulico exterior CPVC 1 1/4 | 2026-10-08 → 2026-10-28 (+20d) | 2026-10-13 → 2026-10-30 (+17d) |
| 1322 | Ramaleo hidráulico exterior CPVC 1 | 2026-10-08 → 2026-10-28 (+20d) | 2026-10-12 → 2026-10-29 (+17d) |
| 1323 | Ramaleo hidráulico exterior CPVC 3/4 | 2026-10-12 → 2026-10-30 (+18d) | 2026-10-14 → 2026-11-02 (+19d) |
| 1324 | Ramaleo hidráulico exterior CPVC 1/2 | 2026-10-12 → 2026-10-30 (+18d) | 2026-10-14 → 2026-11-02 (+19d) |
| 1325 | Prueba hidráulica | 2026-10-14 → 2026-11-02 (+19d) | 2026-10-15 → 2026-11-03 (+19d) |
| 1326 | Ramaleo sanitario exterior PVC 4 | 2026-10-08 → 2026-10-28 (+20d) | 2026-10-14 → 2026-11-02 (+19d) |
| 1327 | Ramaleo sanitario exterior PVC 2 | 2026-10-09 → 2026-10-29 (+20d) | 2026-10-14 → 2026-11-02 (+19d) |
| 1328 | Prueba sanitaria | 2026-10-14 → 2026-11-02 (+19d) | 2026-10-15 → 2026-11-03 (+19d) |
| 1329 | Centro de carga muros PB | 2026-10-13 → 2026-10-31 (+18d) | 2026-10-17 → 2026-11-05 (+19d) |
| 1330 | Firme de concreto 8 cm | 2026-10-15 → 2026-11-03 (+19d) | 2026-10-20 → 2026-11-07 (+18d) |
| 1331 | Curado de concreto | 2026-10-20 → 2026-11-07 (+18d) | 2026-10-21 → 2026-11-09 (+19d) |
| 1332 | Cisterna 2800 L con instalación | 2026-09-14 → 2026-10-03 (+19d) | 2026-10-07 → 2026-10-26 (+19d) |
| 1333 | Banqueta y huellas de concreto | 2026-10-22 → 2026-11-10 (+19d) | 2026-11-02 → 2026-11-21 (+19d) |
| 1334 | Curado de concreto | 2026-11-02 → 2026-11-21 (+19d) | 2026-11-03 → 2026-11-23 (+20d) |
| 1335 | Número oficial | 2026-12-01 → 2026-12-21 (+20d) | 2026-12-02 → 2026-12-21 (+19d) |
| 1336 | Detallado de rodapié exterior | 2026-10-17 → 2026-11-05 (+19d) | 2026-10-22 → 2026-11-10 (+19d) |
| 1337 | Detalle de losas y volados acabado fino | 2026-10-08 → 2026-10-28 (+20d) | 2026-10-14 → 2026-11-02 (+19d) |
| 1338 | Detalle fino en muros interiores | 2026-10-12 → 2026-10-30 (+18d) | 2026-10-17 → 2026-11-05 (+19d) |
| 1339 | Jardín interior bajo escalera con pozo de absorción | 2026-10-08 → 2026-10-28 (+20d) | 2026-10-23 → 2026-11-11 (+19d) |
| 1340 | **ACABADOS EN FACHADA A** | 2026-10-02 → 2026-10-21 (+19d) | 2026-12-01 → 2026-12-19 (+18d) |
| 1341 | Aplanado grueso fachada | 2026-10-02 → 2026-10-21 (+19d) | 2026-10-17 → 2026-11-05 (+19d) |
| 1342 | Aplanado fino estuco fachada | 2026-10-12 → 2026-10-30 (+18d) | 2026-10-23 → 2026-11-11 (+19d) |
| 1343 | Pintura acrílica 1-0102P | 2026-11-19 → 2026-12-08 (+19d) | 2026-11-28 → 2026-12-17 (+19d) |
| 1344 | Pintura acrílica 1-1404D | 2026-11-19 → 2026-12-08 (+19d) | 2026-12-01 → 2026-12-19 (+18d) |
| 1345 | Cantera 40x60cm | 2026-10-23 → 2026-11-11 (+19d) | 2026-11-10 → 2026-11-30 (+20d) |
| 1346 | Lambrin de permabase 1 cara | 2026-10-17 → 2026-11-05 (+19d) | 2026-10-21 → 2026-11-09 (+19d) |
| 1347 | Enchapado de Permabase | 2026-10-21 → 2026-11-09 (+19d) | 2026-10-26 → 2026-11-13 (+18d) |
| 1348 | Cubierta de Permabase | 2026-10-27 → 2026-11-13 (+17d) | 2026-11-02 → 2026-11-21 (+19d) |
| 1349 | **APLANADOS Y PINTURA** | 2026-10-08 → 2026-10-28 (+20d) | 2026-12-30 → 2027-01-20 (+21d) |
| 1350 | Yeso pulido en muros | 2026-10-19 → 2026-11-06 (+18d) | 2026-11-05 → 2026-11-25 (+20d) |
| 1351 | Aplanado en muros enjarre grueso | 2026-10-08 → 2026-10-28 (+20d) | 2026-10-15 → 2026-11-03 (+19d) |
| 1352 | Pintura vinílica OR-W13 SHOELACE | 2026-12-11 → 2027-01-04 (+24d) | 2026-12-30 → 2027-01-20 (+21d) |
| 1353 | Pintura vinílica PPUI5-13 Creamy M. | 2026-12-04 → 2026-12-26 (+22d) | 2026-12-17 → 2027-01-11 (+25d) |
| 1354 | Pintura vinílica MD-06 Nano White | 2026-12-04 → 2026-12-26 (+22d) | 2026-12-15 → 2027-01-07 (+23d) |
| 1355 | Yeso pulido en plafones | 2026-10-08 → 2026-10-28 (+20d) | 2026-10-21 → 2026-11-09 (+19d) |

| ID | Task | Start | Finish |
| --- | --- | --- | --- |
| 1356 | Perfilado de puertas y ventanas | 2026-10-23 → 2026-11-11 (+19d) | 2026-10-28 → 2026-11-18 (+21d) |
| 1357 | **PISOS Y AZULEJOS** | 2026-10-30 → 2026-11-19 (+20d) | 2026-11-30 → 2026-12-18 (+18d) |
| 1358 | **AREA SOCIAL** | 2026-11-03 → 2026-11-23 (+20d) | 2026-11-23 → 2026-12-11 (+18d) |
| 1359 | Piso Adhara 44X89 | 2026-11-03 → 2026-11-23 (+20d) | 2026-11-21 → 2026-12-10 (+19d) |
| 1360 | Zoclo Adhara 44X89 | 2026-11-17 → 2026-12-04 (+17d) | 2026-11-23 → 2026-12-11 (+18d) |
| 1361 | **RECAMARAS** | 2026-10-30 → 2026-11-19 (+20d) | 2026-11-09 → 2026-11-28 (+19d) |
| 1362 | Acabado aparente de pisos - pulido | 2026-10-30 → 2026-11-19 (+20d) | 2026-11-09 → 2026-11-28 (+19d) |
| 1363 | **BAÑOS** | 2026-10-31 → 2026-11-20 (+20d) | 2026-11-23 → 2026-12-11 (+18d) |
| 1364 | Azulejo Mod. Ornamenta 60x30 | 2026-11-09 → 2026-11-28 (+19d) | 2026-11-17 → 2026-12-04 (+17d) |
| 1365 | Impermeabilización en regadera | 2026-11-07 → 2026-11-27 (+20d) | 2026-11-10 → 2026-11-30 (+20d) |
| 1366 | Piso Mod. Valparaiso 20x20 | 2026-11-17 → 2026-12-04 (+17d) | 2026-11-21 → 2026-12-10 (+19d) |
| 1367 | Zoclo Adhara 44X89 | 2026-11-20 → 2026-12-09 (+19d) | 2026-11-23 → 2026-12-11 (+18d) |
| 1368 | Piso Adhara 44X89 | 2026-11-17 → 2026-12-04 (+17d) | 2026-11-20 → 2026-12-09 (+19d) |
| 1369 | Fabricacion de nicho decorativo en baños | 2026-10-31 → 2026-11-20 (+20d) | 2026-11-07 → 2026-11-27 (+20d) |
| 1370 | Sardinel en regadera | 2026-11-17 → 2026-12-04 (+17d) | 2026-11-21 → 2026-12-10 (+19d) |
| 1371 | **ESCALERA** | 2026-11-19 → 2026-12-08 (+19d) | 2026-11-30 → 2026-12-18 (+18d) |
| 1372 | Piso Adhara 44X89 | 2026-11-19 → 2026-12-08 (+19d) | 2026-11-27 → 2026-12-16 (+19d) |
| 1373 | Zoclo Adhara 44X89 | 2026-11-25 → 2026-12-14 (+19d) | 2026-11-30 → 2026-12-18 (+18d) |
| 1374 | **EXTERIOR** | 2026-10-15 → 2026-11-03 (+19d) | 2026-10-19 → 2026-11-06 (+18d) |
| 1375 | Rastrilleo, afine y nivelado de tierra | 2026-10-15 → 2026-11-03 (+19d) | 2026-10-19 → 2026-11-06 (+18d) |
| 1376 | **SEGUNDA LIMPIEZA DE OBRA** | 2026-11-30 → 2026-12-18 (+18d) | 2026-12-04 → 2026-12-23 (+19d) |
| 1377 | Segunda limpieza de obra | 2026-11-30 → 2026-12-18 (+18d) | 2026-12-02 → 2026-12-21 (+19d) |
| 1378 | Segunda carga y acarreo de escombro | 2026-12-02 → 2026-12-22 (+20d) | 2026-12-04 → 2026-12-23 (+19d) |
| 1379 | **CANCELERIA PUERTAS Y VENTANAS DE ALUMINIO** | 2026-11-19 → 2026-12-08 (+19d) | 2026-12-10 → 2027-01-02 (+23d) |
| 1380 | Fijo medidas 0.30x4.90m | 2026-11-21 → 2026-12-10 (+19d) | 2026-11-30 → 2026-12-18 (+18d) |
| 1381 | Ventana Corrediza 1.80x1.60m | 2026-11-19 → 2026-12-08 (+19d) | 2026-11-24 → 2026-12-12 (+18d) |
| 1382 | Ventana Corrediza 0.60x0.40m | 2026-11-21 → 2026-12-10 (+19d) | 2026-11-26 → 2026-12-15 (+19d) |
| 1383 | Ventana Corrediza 1.54x0.50m | 2026-11-21 → 2026-12-10 (+19d) | 2026-11-26 → 2026-12-15 (+19d) |
| 1384 | Fijo medidas 1.40x2.50m | 2026-11-25 → 2026-12-14 (+19d) | 2026-11-30 → 2026-12-18 (+18d) |
| 1385 | Ventana Corrediza 1.80x1.50m | 2026-11-27 → 2026-12-16 (+19d) | 2026-12-02 → 2026-12-21 (+19d) |
| 1386 | Ventana Corrediza 1.40x1.60m | 2026-11-27 → 2026-12-16 (+19d) | 2026-12-02 → 2026-12-21 (+19d) |
| 1387 | Ventana Corrediza 0.95x0.40m | 2026-11-27 → 2026-12-16 (+19d) | 2026-12-02 → 2026-12-21 (+19d) |
| 1388 | Puerta corrediza 3.85x2.10m | 2026-11-30 → 2026-12-18 (+18d) | 2026-12-08 → 2026-12-29 (+21d) |
| 1389 | Barandal de Cristal Templado | 2026-12-02 → 2026-12-22 (+20d) | 2026-12-10 → 2027-01-02 (+23d) |
| 1390 | **CARPINTERIA, PUERTAS EXTERIORES E INTERIORES** | 2026-11-30 → 2026-12-18 (+18d) | 2026-12-11 → 2027-01-04 (+24d) |
| 1391 | Puerta P-01 de seguridad | 2026-11-30 → 2026-12-18 (+18d) | 2026-12-07 → 2026-12-28 (+21d) |
| 1392 | Puerta P-01 interior | 2026-11-30 → 2026-12-18 (+18d) | 2026-12-10 → 2027-01-02 (+23d) |
| 1393 | Puerta P-02 interior | 2026-11-30 → 2026-12-18 (+18d) | 2026-12-10 → 2027-01-02 (+23d) |
| 1394 | Puerta P-03 interior | 2026-12-07 → 2026-12-28 (+21d) | 2026-12-11 → 2027-01-04 (+24d) |
| 1395 | Puerta P-04 interior | 2026-12-07 → 2026-12-28 (+21d) | 2026-12-11 → 2027-01-04 (+24d) |
| 1396 | **VOLADOS, BARANDAL Y ESCALERA** | 2026-10-23 → 2026-11-11 (+19d) | 2026-12-04 → 2026-12-23 (+19d) |
| 1397 | Barandal de Herreria en escalera | 2026-11-10 → 2026-11-30 (+20d) | 2026-11-17 → 2026-12-04 (+17d) |
| 1398 | Escalera de herreria | 2026-10-23 → 2026-11-11 (+19d) | 2026-11-17 → 2026-12-04 (+17d) |
| 1399 | Techumbre en acceso Principal | 2026-11-09 → 2026-11-28 (+19d) | 2026-11-27 → 2026-12-16 (+19d) |
| 1400 | Techumbre en 1.80x0.50m | 2026-11-09 → 2026-11-28 (+19d) | 2026-11-19 → 2026-12-08 (+19d) |
| 1401 | Techumbre en 1.40x0.50m | 2026-11-19 → 2026-12-08 (+19d) | 2026-11-27 → 2026-12-16 (+19d) |
| 1402 | Imper con manto prefabricado | 2026-11-23 → 2026-12-11 (+18d) | 2026-11-28 → 2026-12-17 (+19d) |
| 1403 | Plafon hoja tablaroca std | 2026-11-28 → 2026-12-17 (+19d) | 2026-12-04 → 2026-12-23 (+19d) |
| 1404 | Acabado Woodstock en parte inf. Cubierta | 2026-11-28 → 2026-12-17 (+19d) | 2026-12-04 → 2026-12-23 (+19d) |
| 1405 | **INSTALACION ELECTRICA** | 2026-10-31 → 2026-11-20 (+20d) | 2026-11-21 → 2026-12-10 (+19d) |
| 1406 | Alimentación eléctrica base a centro de carga | 2026-11-05 → 2026-11-25 (+20d) | 2026-11-11 → 2026-12-01 (+20d) |
| 1407 | Interruptor termomagnético 1x20 A | 2026-11-11 → 2026-12-01 (+20d) | 2026-11-12 → 2026-12-02 (+20d) |
| 1408 | Interruptor termomagnético 2x20 A | 2026-11-11 → 2026-12-01 (+20d) | 2026-11-12 → 2026-12-02 (+20d) |
| 1409 | Salida para apagador 3 vías | 2026-10-31 → 2026-11-20 (+20d) | 2026-11-05 → 2026-11-25 (+20d) |
| 1410 | Salida para apagador doble | 2026-11-05 → 2026-11-25 (+20d) | 2026-11-09 → 2026-11-28 (+19d) |
| 1411 | Salida para apagador sencillo | 2026-11-05 → 2026-11-25 (+20d) | 2026-11-09 → 2026-11-28 (+19d) |
| 1412 | Salida de alumbrado en losa | 2026-11-05 → 2026-11-25 (+20d) | 2026-11-11 → 2026-12-01 (+20d) |
| 1413 | Salida para contacto exterior doble | 2026-11-05 → 2026-11-25 (+20d) | 2026-11-07 → 2026-11-27 (+20d) |
| 1414 | Salida para contacto 220 V | 2026-11-07 → 2026-11-27 (+20d) | 2026-11-11 → 2026-12-01 (+20d) |
| 1415 | Salida para contacto doble | 2026-11-07 → 2026-11-27 (+20d) | 2026-11-13 → 2026-12-03 (+20d) |
| 1416 | Salida para contacto doble área húmeda | 2026-11-11 → 2026-12-01 (+20d) | 2026-11-13 → 2026-12-03 (+20d) |
| 1417 | Salida TV / telefonía / intercom | 2026-11-11 → 2026-12-01 (+20d) | 2026-11-18 → 2026-12-07 (+19d) |
| 1418 | Extractor 4 baño | 2026-11-11 → 2026-12-01 (+20d) | 2026-11-19 → 2026-12-08 (+19d) |
| 1419 | Prueba eléctrica | 2026-11-19 → 2026-12-08 (+19d) | 2026-11-21 → 2026-12-10 (+19d) |
| 1420 | **INSTALACIÓN HIDRO-SANITARIA** | 2026-10-15 → 2026-11-03 (+19d) | 2026-10-28 → 2026-11-18 (+21d) |
| 1421 | Tubería condensados PVC 1 | 2026-10-15 → 2026-11-03 (+19d) | 2026-10-21 → 2026-11-09 (+19d) |
| 1422 | Tubería sanitaria PVC 4 | 2026-10-15 → 2026-11-03 (+19d) | 2026-10-21 → 2026-11-09 (+19d) |
| 1423 | Coladera H-444 | 2026-10-21 → 2026-11-09 (+19d) | 2026-10-22 → 2026-11-10 (+19d) |
| 1424 | Caja PVC para lavadora | 2026-10-15 → 2026-11-03 (+19d) | 2026-10-19 → 2026-11-06 (+18d) |
| 1425 | Salida para secadora PVC 4 | 2026-10-15 → 2026-11-03 (+19d) | 2026-10-19 → 2026-11-06 (+18d) |

| ID | Task | Start | Finish | Duration | Complete | Total float |
| --- | --- | --- | --- | --- | --- | --- |
| 1426 | Salida hidráulica para boiler | 2026-10-15 → 2026-11-03 (+19d) | 2026-10-17 → 2026-11-05 (+19d) |  |  |  |
| 1427 | Salida hidráulica para llave de jardín | 2026-10-15 → 2026-11-03 (+19d) | 2026-10-19 → 2026-11-06 (+18d) |  |  |  |
| 1428 | Salida hidráulica para lavabo | 2026-10-15 → 2026-11-03 (+19d) | 2026-10-20 → 2026-11-07 (+18d) |  |  |  |
| 1429 | Salida hidráulica para purificación | 2026-10-15 → 2026-11-03 (+19d) | 2026-10-20 → 2026-11-07 (+18d) |  |  |  |
| 1430 | Salida sanitaria para lavabo | 2026-10-17 → 2026-11-05 (+19d) | 2026-10-20 → 2026-11-07 (+18d) |  |  |  |
| 1431 | Salida hidráulica para lavadero | 2026-10-17 → 2026-11-05 (+19d) | 2026-10-20 → 2026-11-07 (+18d) |  |  |  |
| 1432 | Salida sanitaria para lavadero | 2026-10-19 → 2026-11-06 (+18d) | 2026-10-21 → 2026-11-09 (+19d) |  |  |  |
| 1433 | Salida hidráulica para lavadora | 2026-10-19 → 2026-11-06 (+18d) | 2026-10-21 → 2026-11-09 (+19d) |  |  |  |
| 1434 | Salida sanitaria para lavadora | 2026-10-20 → 2026-11-07 (+18d) | 2026-10-22 → 2026-11-10 (+19d) |  |  |  |
| 1435 | Salida hidráulica para regadera | 2026-10-20 → 2026-11-07 (+18d) | 2026-10-26 → 2026-11-13 (+18d) |  |  |  |
| 1436 | Salida sanitaria para regadera | 2026-10-20 → 2026-11-07 (+18d) | 2026-10-24 → 2026-11-12 (+19d) |  |  |  |
| 1437 | Salida hidráulica para WC | 2026-10-17 → 2026-11-05 (+19d) | 2026-10-20 → 2026-11-07 (+18d) |  |  |  |
| 1438 | Salida sanitaria para WC | 2026-10-20 → 2026-11-07 (+18d) | 2026-10-24 → 2026-11-12 (+19d) |  |  |  |
| 1439 | Salida hidráulica para zinc | 2026-10-20 → 2026-11-07 (+18d) | 2026-10-24 → 2026-11-12 (+19d) |  |  |  |
| 1440 | Salida sanitaria para zinc | 2026-10-22 → 2026-11-10 (+19d) | 2026-10-26 → 2026-11-13 (+18d) |  |  |  |
| 1441 | Tubo para ventila de baño 2 | 2026-10-15 → 2026-11-03 (+19d) | 2026-10-21 → 2026-11-09 (+19d) |  |  |  |
| 1442 | Tubo para minisplit PVC 3 | 2026-10-21 → 2026-11-09 (+19d) | 2026-10-27 → 2026-11-17 (+21d) |  |  |  |
| 1443 | Cuadro de medición | 2026-10-19 → 2026-11-06 (+18d) | 2026-10-24 → 2026-11-12 (+19d) |  |  |  |
| 1444 | Pozo de absorción 0.50x0.50x0.50 | 2026-10-19 → 2026-11-06 (+18d) | 2026-10-22 → 2026-11-10 (+19d) |  |  |  |
| 1445 | Prueba sanitaria final | 2026-10-28 → 2026-11-17 (+20d) | 2026-10-28 → 2026-11-18 (+21d) |  |  |  |
| 1446 | Prueba hidrostática final | 2026-10-27 → 2026-11-13 (+17d) | 2026-10-27 → 2026-11-17 (+21d) |  |  |  |
| 1447 | Salida válvula control 19 mm | 2026-10-26 → 2026-11-12 (+17d) | 2026-10-26 → 2026-11-13 (+18d) |  |  |  |
| 1448 | Salida válvula control 13 mm | 2026-10-26 → 2026-11-12 (+17d) | 2026-10-26 → 2026-11-13 (+18d) |  |  |  |
| 1449 | Salida hidráulica para tanque hidroneumático | 2026-10-19 → 2026-11-06 (+18d) | 2026-10-22 → 2026-11-10 (+19d) |  |  |  |
| 1450 | Salida hidráulica para Active Driver | 2026-10-19 → 2026-11-06 (+18d) | 2026-10-22 → 2026-11-10 (+19d) |  |  |  |
| 1451 | **INSTALACION DE GAS** | 2026-10-13 → 2026-10-31 (+18d) | 2026-10-22 → 2026-11-10 (+19d) |  |  |  |
| 1452 | Ramaleo para gas 1/2 | 2026-10-16 → 2026-11-04 (+19d) | 2026-10-22 → 2026-11-10 (+19d) |  |  |  |
| 1453 | Excavación a mano material tipo B | 2026-10-13 → 2026-10-31 (+18d) | 2026-10-16 → 2026-11-04 (+19d) |  |  |  |
| 1454 | **MUEBLES SANITARIOS** | 2026-11-21 → 2026-12-10 (+19d) | 2026-12-30 → 2027-01-20 (+21d) |  |  |  |
| 1455 | WC completo Austral | 2026-11-21 → 2026-12-10 (+19d) | 2026-11-24 → 2026-12-12 (+18d) |  |  |  |
| 1456 | Lavabo Senna con pedestal | 2026-11-21 → 2026-12-10 (+19d) | 2026-11-26 → 2026-12-15 (+19d) |  |  |  |
| 1457 | Tarja / lavabo combo Guinea 80x45 | 2026-11-21 → 2026-12-10 (+19d) | 2026-11-24 → 2026-12-12 (+18d) |  |  |  |
| 1458 | Regadera con monomando | 2026-11-24 → 2026-12-12 (+18d) | 2026-11-27 → 2026-12-16 (+19d) |  |  |  |
| 1459 | Coladera inserto cerámico | 2026-11-25 → 2026-12-14 (+19d) | 2026-11-27 → 2026-12-16 (+19d) |  |  |  |
| 1460 | Toallero sencillo | 2026-12-29 → 2027-01-19 (+21d) | 2026-12-30 → 2027-01-20 (+21d) |  |  |  |
| 1461 | Toallero barra | 2026-12-29 → 2027-01-19 (+21d) | 2026-12-30 → 2027-01-20 (+21d) |  |  |  |
| 1462 | Portapapel | 2026-12-29 → 2027-01-19 (+21d) | 2026-12-30 → 2027-01-20 (+21d) |  |  |  |
| 1463 | Gancho baño | 2026-12-29 → 2027-01-19 (+21d) | 2026-12-30 → 2027-01-20 (+21d) |  |  |  |
| 1464 | **EQUIPAMIENTO** | 2026-10-06 → 2026-10-26 (+20d) | 2026-10-14 → 2026-11-02 (+19d) |  |  |  |
| 1465 | Electronivel Rotoplas 5 m | 2026-10-07 → 2026-10-27 (+20d) | 2026-10-09 → 2026-10-28 (+19d) |  |  |  |
| 1466 | Manómetro | 2026-10-07 → 2026-10-27 (+20d) | 2026-10-08 → 2026-10-27 (+19d) |  |  |  |
| 1467 | Interruptor de presión 30-50 PSI | 2026-10-07 → 2026-10-27 (+20d) | 2026-10-08 → 2026-10-27 (+19d) |  |  |  |
| 1468 | Tanque hidroneumático FPS-24LX | 2026-10-07 → 2026-10-27 (+20d) | 2026-10-12 → 2026-10-29 (+17d) |  |  |  |
| 1469 | Bomba sumergible Dominator 1.2 HP | 2026-10-12 → 2026-10-30 (+18d) | 2026-10-14 → 2026-11-02 (+19d) |  |  |  |
| 1470 | Cisterna prefabricada 2800 L | 2026-10-06 → 2026-10-26 (+20d) | 2026-10-07 → 2026-10-26 (+19d) |  |  |  |
| 1471 | **LUMINARIAS** | 2026-11-11 → 2026-12-01 (+20d) | 2026-11-19 → 2026-12-08 (+19d) |  |  |  |
| 1472 | Roseta cerámica | 2026-11-11 → 2026-12-01 (+20d) | 2026-11-17 → 2026-12-04 (+17d) |  |  |  |
| 1473 | Luminaria lagartijera LED | 2026-11-11 → 2026-12-01 (+20d) | 2026-11-17 → 2026-12-04 (+17d) |  |  |  |
| 1474 | Spot 6W Tecnolite | 2026-11-11 → 2026-12-01 (+20d) | 2026-11-17 → 2026-12-04 (+17d) |  |  |  |
| 1475 | Spot 7W Tecnolite | 2026-11-11 → 2026-12-01 (+20d) | 2026-11-17 → 2026-12-04 (+17d) |  |  |  |
| 1476 | Arbotante exterior | 2026-11-11 → 2026-12-01 (+20d) | 2026-11-13 → 2026-12-03 (+20d) |  |  |  |
| 1477 | Estaca LED exterior | 2026-11-13 → 2026-12-03 (+20d) | 2026-11-19 → 2026-12-08 (+19d) |  |  |  |
| 1478 | Tira LED | 2026-11-13 → 2026-12-03 (+20d) | 2026-11-19 → 2026-12-08 (+19d) |  |  |  |
| 1479 | Spot exterior 50W | 2026-11-11 → 2026-12-01 (+20d) | 2026-11-13 → 2026-12-03 (+20d) |  |  |  |
| 1480 | **TIMBRE** | 2026-11-12 → 2026-12-02 (+20d) | 2026-11-17 → 2026-12-04 (+17d) |  |  |  |
| 1481 | Timbre inalámbrico con bocina | 2026-11-12 → 2026-12-02 (+20d) | 2026-11-17 → 2026-12-04 (+17d) |  |  |  |
| 1482 | **OBRA EXTERIOR - BARDA** | 2026-10-19 → 2026-11-06 (+18d) | 2026-11-10 → 2026-11-30 (+20d) |  |  |  |
| 1483 | Murete convencional | 2026-10-26 → 2026-11-12 (+17d) | 2026-10-30 → 2026-11-20 (+21d) |  |  |  |
| 1484 | Barda de block aparente | 2026-10-19 → 2026-11-06 (+18d) | 2026-11-10 → 2026-11-30 (+20d) |  |  |  |
| 1485 | **TERCER LIMPIEZA DE OBRA** | 2026-12-30 → 2027-01-20 (+21d) | 2027-01-21 → 2027-02-09 (+19d) |  |  |  |
| 1486 | Limpieza fina para entrega | 2026-12-30 → 2027-01-20 (+21d) | 2027-01-07 → 2027-01-26 (+19d) |  |  |  |
| 1487 | Tercera limpieza de obra | 2027-01-07 → 2027-01-26 (+19d) | 2027-01-14 → 2027-02-02 (+19d) |  |  |  |
| 1488 | Tercera carga y acarreo de escombro | 2027-01-14 → 2027-02-02 (+19d) | 2027-01-21 → 2027-02-09 (+19d) |  |  |  |
| 1489 | **LOTE 22 M-663 CORSAC-B** |  | 2027-01-20 → 2027-01-29 (+9d) | 174d → 182d |  | 1d → 8d |
| 1490 | **HITOS IMPORTANTES DEL LOTE** |  | 2027-01-20 → 2027-01-29 (+9d) | 174d → 182d |  | 1d → 8d |
| 1492 | Colado de Losa de Cimentación | 2026-07-01 → 2026-07-10 (+9d) | 2026-07-01 → 2026-07-10 (+9d) |  |  | 158d → 165d |
| 1493 | Colado de Losa de Entrepiso | 2026-08-08 → 2026-08-19 (+11d) | 2026-08-08 → 2026-08-19 (+11d) |  |  | 127d → 134d |
| 1494 | Colado de Losa de Azotea | 2026-09-15 → 2026-09-26 (+11d) | 2026-09-15 → 2026-09-26 (+11d) |  |  | 97d → 104d |
| 1495 | Entrega de vivienda | 2027-01-20 → 2027-01-29 (+9d) | 2027-01-20 → 2027-01-29 (+9d) |  |  | 1d → 8d |
| 1498 | **EXCAVACIONES** |  | 2026-06-16 A → 2026-06-26 (+10d) | 3d → 11d | 100% → 73% | none → 8d |

| ID | Task | Start | Finish | Duration | Complete | Total float |
| --- | --- | --- | --- | --- | --- | --- |
| 1499 | Excavación a mano material tipo B |  | 2026-06-16 A → 2026-06-25 (+9d) | 3d → 10d | 100% → 78% | none → 9d |
| 1500 | Acarreo en carretilla 20 m |  | 2026-06-16 A → 2026-06-26 (+10d) | 2d → 10d | 100% → 68% | none → 8d |
| 1501 | **CIMENTACION** | 2026-06-16 A → 2026-06-26 (+10d) | 2026-07-02 → 2026-07-13 (+11d) |  | 16% → 0% | 157d → 8d |
| 1502 | Cimbra perimetral losa de cimentación | 2026-06-16 A → 2026-06-26 (+10d) | 2026-06-19 A → 2026-06-30 (+11d) |  | 100% → 0% | none → 8d |
| 1503 | Sistema antitermitas PVC | 2026-06-16 A → 2026-06-26 (+10d) | 2026-06-19 A → 2026-06-30 (+11d) |  | 100% → 0% | none → 9d |
| 1504 | Hule negro en cimentación | 2026-06-19 A → 2026-06-30 (+11d) | 2026-06-22 → 2026-07-01 (+9d) |  | 75% → 0% | 2d → 9d |
| 1505 | Ramaleo poliducto eléctrico cimentación | 2026-06-22 → 2026-07-01 (+9d) | 2026-06-24 → 2026-07-03 (+9d) |  |  | 5d → 12d |
| 1506 | Ramaleo eléctrico base-medición a centro de carga | 2026-06-22 → 2026-07-01 (+9d) | 2026-06-23 → 2026-07-02 (+9d) |  |  | 6d → 13d |
| 1507 | Ramaleo eléctrico exterior | 2026-06-24 → 2026-07-03 (+9d) | 2026-06-25 → 2026-07-04 (+9d) |  |  | 5d → 12d |
| 1508 | Ramaleo para cable poliducto 3/4 | 2026-06-24 → 2026-07-03 (+9d) | 2026-06-25 → 2026-07-04 (+9d) |  |  | 5d → 12d |
| 1509 | Ramaleo para TV poliducto 3/4 | 2026-06-24 → 2026-07-03 (+9d) | 2026-06-25 → 2026-07-04 (+9d) |  |  | 5d → 12d |
| 1510 | Ramaleo hidráulico CPVC 1 cimentación | 2026-06-22 → 2026-07-01 (+9d) | 2026-06-23 → 2026-07-02 (+9d) |  |  | 2d → 9d |
| 1511 | Ramaleo hidráulico CPVC 3/4 cimentación | 2026-06-23 → 2026-07-02 (+9d) | 2026-06-25 → 2026-07-04 (+9d) |  |  | 2d → 9d |
| 1512 | Ramaleo hidráulico CPVC 1/2 cimentación | 2026-06-25 → 2026-07-06 (+11d) | 2026-06-27 → 2026-07-07 (+10d) |  |  | 2d → 9d |
| 1513 | Prueba hidráulica | 2026-06-27 → 2026-07-08 (+11d) | 2026-06-29 → 2026-07-08 (+9d) |  |  | 2d → 9d |
| 1514 | Ramaleo sanitario PVC 4 cimentación | 2026-06-23 → 2026-07-02 (+9d) | 2026-06-25 → 2026-07-04 (+9d) |  |  | 3d → 10d |
| 1515 | Ramaleo sanitario PVC 2 cimentación | 2026-06-25 → 2026-07-06 (+11d) | 2026-06-26 → 2026-07-06 (+10d) |  |  | 3d → 10d |
| 1516 | Prueba sanitaria | 2026-06-26 → 2026-07-07 (+11d) | 2026-06-27 → 2026-07-07 (+10d) |  |  | 3d → 10d |
| 1517 | Acero contratrabe CT-1 | 2026-06-19 A → 2026-06-30 (+11d) | 2026-06-25 → 2026-07-04 (+9d) |  | 19% → 0% | 1d → 8d |
| 1518 | Acero contratrabe CT-2 | 2026-06-19 A → 2026-06-30 (+11d) | 2026-06-25 → 2026-07-04 (+9d) |  | 19% → 0% | 1d → 8d |
| 1519 | Malla electrosoldada 6-6/8-8 | 2026-06-27 → 2026-07-08 (+11d) | 2026-06-30 → 2026-07-09 (+9d) |  |  | 1d → 8d |
| 1520 | Bastón de refuerzo LS | 2026-06-25 → 2026-07-06 (+11d) | 2026-06-27 → 2026-07-07 (+10d) |  |  | 1d → 8d |
| 1521 | Bastón de refuerzo LI | 2026-06-25 → 2026-07-06 (+11d) | 2026-06-27 → 2026-07-07 (+10d) |  |  | 1d → 8d |
| 1522 | Colado losa de cimentación f’c=200 | 2026-06-30 → 2026-07-10 (+10d) | 2026-07-01 → 2026-07-10 (+9d) |  |  | 1d → 8d |
| 1523 | Curado de concreto | 2026-07-01 → 2026-07-11 (+10d) | 2026-07-02 → 2026-07-13 (+11d) |  |  | 1d → 8d |
| 1524 | Acero zapata ZT-1 | 2026-06-25 → 2026-07-06 (+11d) | 2026-06-30 → 2026-07-09 (+9d) |  |  | 157d → 164d |
| 1525 | Acero zapata ZT-2 | 2026-06-25 → 2026-07-06 (+11d) | 2026-06-30 → 2026-07-09 (+9d) |  |  | 157d → 164d |
| 1526 | Colado zapatas aisladas f’c=200 | 2026-07-01 → 2026-07-11 (+10d) | 2026-07-02 → 2026-07-13 (+11d) |  |  | 157d → 164d |
| 1527 | Cimbra frontera zapatas | 2026-06-27 → 2026-07-08 (+11d) | 2026-07-01 → 2026-07-10 (+9d) |  |  | 157d → 164d |
| 1528 | **MUROS, PLANTA BAJA. CASTILLOS Y CERRAMIENTOS** | 2026-06-26 → 2026-07-07 (+11d) | 2026-07-21 → 2026-07-31 (+10d) |  |  | 6d → 13d |
| 1529 | Anclaje de castillos y Columnas PB | 2026-06-26 → 2026-07-07 (+11d) | 2026-07-02 → 2026-07-13 (+11d) |  |  | 145d → 152d |
| 1530 | Castillo K1 | 2026-07-02 → 2026-07-13 (+11d) | 2026-07-07 → 2026-07-17 (+10d) |  |  | 145d → 152d |
| 1531 | Castillo K2 | 2026-07-02 → 2026-07-13 (+11d) | 2026-07-07 → 2026-07-17 (+10d) |  |  | 149d → 156d |
| 1532 | Castillo K3 | 2026-07-06 → 2026-07-15 (+9d) | 2026-07-08 → 2026-07-18 (+10d) |  |  | 145d → 152d |
| 1533 | Castillo K4 | 2026-07-06 → 2026-07-15 (+9d) | 2026-07-08 → 2026-07-18 (+10d) |  |  | 145d → 152d |
| 1534 | Castillo K5 | 2026-07-08 → 2026-07-17 (+9d) | 2026-07-10 → 2026-07-21 (+11d) |  |  | 145d → 152d |
| 1535 | Refuerzo de muro K6 | 2026-07-09 → 2026-07-18 (+9d) | 2026-07-13 → 2026-07-22 (+9d) |  |  | 145d → 152d |
| 1536 | Columna C1 | 2026-07-02 → 2026-07-13 (+11d) | 2026-07-07 → 2026-07-17 (+10d) |  |  | 149d → 156d |
| 1537 | Columna C2 | 2026-07-08 → 2026-07-17 (+9d) | 2026-07-13 → 2026-07-22 (+9d) |  |  | 149d → 156d |
| 1538 | Dala de cerramiento CR-1 | 2026-07-09 → 2026-07-18 (+9d) | 2026-07-14 → 2026-07-23 (+9d) |  |  | 148d → 155d |
| 1539 | Dala de cerramiento CR-2 | 2026-07-09 → 2026-07-18 (+9d) | 2026-07-13 → 2026-07-22 (+9d) |  |  | 149d → 156d |
| 1540 | Cadena block dala | 2026-07-13 → 2026-07-22 (+9d) | 2026-07-17 → 2026-07-28 (+11d) |  |  | 145d → 152d |
| 1541 | Muro de ladrillo aparente | 2026-07-02 → 2026-07-13 (+11d) | 2026-07-21 → 2026-07-31 (+10d) |  |  | 1d → 8d |
| 1542 | Muro de block planta baja | 2026-07-06 → 2026-07-15 (+9d) | 2026-07-21 → 2026-07-31 (+10d) |  |  | 1d → 8d |
| 1543 | **ESCALERA** | 2026-08-08 → 2026-08-19 (+11d) | 2026-08-26 → 2026-09-04 (+9d) |  |  | 113d → 120d |
| 1544 | Escalera de concreto armado | 2026-08-08 → 2026-08-19 (+11d) | 2026-08-26 → 2026-09-04 (+9d) |  |  | 113d → 120d |
| 1545 | **LOSA DE ENTREPISO (viegueta y caseton)** | 2026-07-18 → 2026-07-29 (+11d) | 2026-08-10 → 2026-08-20 (+10d) |  |  | 4d → 11d |
| 1546 | Vigueta pretensada 1.40 m | 2026-07-18 → 2026-07-29 (+11d) | 2026-07-22 → 2026-08-01 (+10d) |  |  | 6d → 13d |
| 1547 | Vigueta pretensada 1.95 m | 2026-07-20 → 2026-07-30 (+10d) | 2026-07-24 → 2026-08-04 (+11d) |  |  | 4d → 11d |
| 1548 | Vigueta pretensada 3.35 m | 2026-07-21 → 2026-07-31 (+10d) | 2026-07-27 → 2026-08-05 (+9d) |  |  | 3d → 10d |
| 1549 | Vigueta pretensada 3.50 m | 2026-07-22 → 2026-08-01 (+10d) | 2026-07-28 → 2026-08-06 (+9d) |  |  | 2d → 9d |
| 1550 | Vigueta pretensada 3.75 m | 2026-07-22 → 2026-08-01 (+10d) | 2026-07-28 → 2026-08-06 (+9d) |  |  | 2d → 9d |
| 1551 | Vigueta pretensada 3.90 m | 2026-07-22 → 2026-08-01 (+10d) | 2026-07-28 → 2026-08-06 (+9d) |  |  | 2d → 9d |
| 1552 | Bovedilla poliestireno entrepiso | 2026-07-28 → 2026-08-06 (+9d) | 2026-07-30 → 2026-08-08 (+9d) |  |  | 2d → 9d |
| 1553 | Dala de coronamiento | 2026-07-28 → 2026-08-06 (+9d) | 2026-07-31 → 2026-08-10 (+10d) |  |  | 5d → 12d |
| 1554 | Nervadura NR-1 | 2026-07-29 → 2026-08-07 (+9d) | 2026-08-01 → 2026-08-11 (+10d) |  |  | 1d → 8d |
| 1555 | Nervadura NR-2 | 2026-07-29 → 2026-08-07 (+9d) | 2026-08-01 → 2026-08-11 (+10d) |  |  | 3d → 10d |
| 1556 | Trabe TR-1 | 2026-07-29 → 2026-08-07 (+9d) | 2026-08-04 → 2026-08-13 (+9d) |  |  | 1d → 8d |
| 1557 | Malla 66-10/10 losa de compresión | 2026-08-04 → 2026-08-13 (+9d) | 2026-08-06 → 2026-08-17 (+11d) |  |  | 2d → 9d |
| 1558 | Cimbra losa de azotea | 2026-07-22 → 2026-08-01 (+10d) | 2026-07-29 → 2026-08-07 (+9d) |  |  | 1d → 8d |
| 1559 | Concreto losa de entrepiso f’c=200 | 2026-08-07 → 2026-08-18 (+11d) | 2026-08-08 → 2026-08-19 (+11d) |  |  | 1d → 8d |
| 1560 | Curado de concreto | 2026-08-08 → 2026-08-19 (+11d) | 2026-08-10 → 2026-08-20 (+10d) |  |  | 1d → 8d |
| 1561 | Cimbra exterior corta losa | 2026-07-31 → 2026-08-10 (+10d) | 2026-08-04 → 2026-08-13 (+9d) |  |  | 4d → 11d |
| 1562 | Ramaleo poliducto eléctrico entrepiso | 2026-07-30 → 2026-08-08 (+9d) | 2026-08-01 → 2026-08-11 (+10d) |  |  | 5d → 12d |
| 1563 | Ramaleo para cable poliducto 3/4 | 2026-07-30 → 2026-08-08 (+9d) | 2026-07-31 → 2026-08-10 (+10d) |  |  | 134d → 141d |
| 1564 | Ramaleo para TV poliducto 3/4 | 2026-08-01 → 2026-08-11 (+10d) | 2026-08-03 → 2026-08-12 (+9d) |  |  | 5d → 12d |
| 1565 | Ramaleo hidráulico CPVC 3/4 | 2026-07-31 → 2026-08-10 (+10d) | 2026-08-03 → 2026-08-12 (+9d) |  |  | 2d → 9d |
| 1566 | Ramaleo hidráulico CPVC 1/2 | 2026-08-03 → 2026-08-12 (+9d) | 2026-08-04 → 2026-08-13 (+9d) |  |  | 2d → 9d |
| 1567 | Prueba hidráulica | 2026-08-03 → 2026-08-12 (+9d) | 2026-08-04 → 2026-08-13 (+9d) |  |  | 2d → 9d |
| 1568 | Ramaleo sanitario PVC 4 | 2026-07-31 → 2026-08-10 (+10d) | 2026-08-03 → 2026-08-12 (+9d) |  |  | 2d → 9d |

| ID | Task | Start | Finish | Total float |
| --- | --- | --- | --- | --- |
| 1569 | Ramaleo sanitario PVC 2 | 2026-08-03 → 2026-08-12 (+9d) | 2026-08-04 → 2026-08-13 (+9d) | 2d → 9d |
| 1570 | Prueba sanitaria | 2026-08-03 → 2026-08-12 (+9d) | 2026-08-04 → 2026-08-13 (+9d) | 2d → 9d |
| 1571 | **MUROS EN PLANTA ALTA, CASTILLOS Y CERRM.** | 2026-08-03 → 2026-08-12 (+9d) | 2026-08-28 → 2026-09-08 (+11d) | 1d → 8d |
| 1572 | Anclaje de castillos y Columnas PA | 2026-08-03 → 2026-08-12 (+9d) | 2026-08-07 → 2026-08-18 (+11d) | 1d → 8d |
| 1573 | Castillo K1 | 2026-08-10 → 2026-08-20 (+10d) | 2026-08-14 → 2026-08-25 (+11d) | 5d → 12d |
| 1574 | Castillo K2 | 2026-08-11 → 2026-08-21 (+10d) | 2026-08-17 → 2026-08-26 (+9d) | 4d → 11d |
| 1575 | Castillo K3 | 2026-08-12 → 2026-08-22 (+10d) | 2026-08-17 → 2026-08-26 (+9d) | 4d → 11d |
| 1576 | Castillo K4 | 2026-08-14 → 2026-08-25 (+11d) | 2026-08-19 → 2026-08-28 (+9d) | 5d → 12d |
| 1577 | Castillo K5 | 2026-08-14 → 2026-08-25 (+11d) | 2026-08-19 → 2026-08-28 (+9d) | 5d → 12d |
| 1578 | Refuerzo de muro K6 | 2026-08-17 → 2026-08-26 (+9d) | 2026-08-20 → 2026-08-29 (+9d) | 4d → 11d |
| 1579 | Dala de cerramiento CR-1 | 2026-08-20 → 2026-08-31 (+11d) | 2026-08-25 → 2026-09-03 (+9d) | 4d → 11d |
| 1580 | Cadena block dala | 2026-08-25 → 2026-09-04 (+10d) | 2026-08-28 → 2026-09-08 (+11d) | 4d → 11d |
| 1581 | Muro de ladrillo aparente | 2026-08-10 → 2026-08-20 (+10d) | 2026-08-28 → 2026-09-08 (+11d) | 1d → 8d |
| 1582 | Muro de block planta alta | 2026-08-11 → 2026-08-21 (+10d) | 2026-08-28 → 2026-09-08 (+11d) | 1d → 8d |
| 1583 | **LOSA AZOTEA** | 2026-08-28 → 2026-09-08 (+11d) | 2026-09-17 → 2026-09-28 (+11d) | 1d → 8d |
| 1584 | Cortalosa CL-1 | 2026-09-11 → 2026-09-23 (+12d) | 2026-09-14 → 2026-09-25 (+11d) | 1d → 8d |
| 1585 | Vigueta pretensada V11-40 390 | 2026-08-28 → 2026-09-08 (+11d) | 2026-09-03 → 2026-09-14 (+11d) | 4d → 11d |
| 1586 | Vigueta pretensada V11-30 280 | 2026-08-28 → 2026-09-08 (+11d) | 2026-09-03 → 2026-09-14 (+11d) | 4d → 11d |
| 1587 | Vigueta pretensada V11-30 285 | 2026-08-28 → 2026-09-08 (+11d) | 2026-09-03 → 2026-09-14 (+11d) | 4d → 11d |
| 1588 | Vigueta pretensada V11-30 220 | 2026-09-01 → 2026-09-10 (+9d) | 2026-09-07 → 2026-09-17 (+10d) | 2d → 9d |
| 1589 | Vigueta pretensada V11-40 75 | 2026-09-01 → 2026-09-10 (+9d) | 2026-09-07 → 2026-09-17 (+10d) | 2d → 9d |
| 1590 | Vigueta pretensada V11-40 195 | 2026-09-02 → 2026-09-11 (+9d) | 2026-09-08 → 2026-09-18 (+10d) | 1d → 8d |
| 1591 | Vigueta pretensada V11-50 450 | 2026-09-02 → 2026-09-11 (+9d) | 2026-09-08 → 2026-09-18 (+10d) | 1d → 8d |
| 1592 | Bovedilla poliestireno azotea | 2026-09-08 → 2026-09-18 (+10d) | 2026-09-11 → 2026-09-23 (+12d) | 1d → 8d |
| 1593 | Malla 66-10/10 losa de compresión | 2026-09-11 → 2026-09-23 (+12d) | 2026-09-14 → 2026-09-25 (+11d) | 1d → 8d |
| 1594 | Concreto losa de azotea f’c=200 | 2026-09-14 → 2026-09-25 (+11d) | 2026-09-15 → 2026-09-26 (+11d) | 1d → 8d |
| 1595 | Curado de concreto | 2026-09-15 → 2026-09-26 (+11d) | 2026-09-17 → 2026-09-28 (+11d) | 1d → 8d |
| 1596 | Cimbra losa de azotea | 2026-08-28 → 2026-09-08 (+11d) | 2026-09-03 → 2026-09-14 (+11d) | 9d → 16d |
| 1597 | Ramaleo de poliducto para inst. electrica en azotea | 2026-09-11 → 2026-09-23 (+12d) | 2026-09-14 → 2026-09-25 (+11d) | 1d → 8d |
| 1598 | **PRETIL Y ACABADOS DE AZOTEA** | 2026-09-17 → 2026-09-28 (+11d) | 2026-10-12 → 2026-10-21 (+9d) | 1d → 8d |
| 1599 | Castillo K1 | 2026-09-21 → 2026-09-30 (+9d) | 2026-09-26 → 2026-10-06 (+10d) | 1d → 8d |
| 1600 | Dala de cerramiento en pretil | 2026-09-24 → 2026-10-03 (+9d) | 2026-09-29 → 2026-10-08 (+9d) | 1d → 8d |
| 1601 | Muro de block 12x15x40 | 2026-09-17 → 2026-09-28 (+11d) | 2026-09-24 → 2026-10-03 (+9d) | 1d → 8d |
| 1602 | Chaflán en azotea | 2026-09-26 → 2026-10-06 (+10d) | 2026-10-01 → 2026-10-12 (+11d) | 1d → 8d |
| 1603 | Aplanado exterior Mortermax fino | 2026-09-29 → 2026-10-08 (+9d) | 2026-10-05 → 2026-10-15 (+10d) | 1d → 8d |
| 1604 | Acabado de azotea para impermeabilizar | 2026-10-06 → 2026-10-16 (+10d) | 2026-10-12 → 2026-10-21 (+9d) | 1d → 8d |
| 1605 | Curado de concreto | 2026-10-05 → 2026-10-15 (+10d) | 2026-10-06 → 2026-10-16 (+10d) | 1d → 8d |
| 1606 | **PRIMERA LIMPIEZA DE OBRA** | 2026-09-17 → 2026-09-28 (+11d) | 2026-09-23 → 2026-10-02 (+9d) | 53d → 60d |
| 1607 | Primera limpieza de obra | 2026-09-17 → 2026-09-28 (+11d) | 2026-09-21 → 2026-09-30 (+9d) | 53d → 60d |
| 1608 | Primera carga y acarreo de escombro | 2026-09-21 → 2026-09-30 (+9d) | 2026-09-23 → 2026-10-02 (+9d) | 53d → 60d |
| 1609 | **IMPERMEABILIZACION** | 2026-10-12 → 2026-10-21 (+9d) | 2026-10-17 → 2026-10-27 (+10d) | 1d → 8d |
| 1610 | Impermeabilización de pretil Kover 5 años | 2026-10-12 → 2026-10-21 (+9d) | 2026-10-16 → 2026-10-26 (+10d) | 2d → 9d |
| 1611 | Impermeabilización de losa Kover 5 años | 2026-10-12 → 2026-10-21 (+9d) | 2026-10-17 → 2026-10-27 (+10d) | 1d → 8d |
| 1612 | **ALBAÑILERIA** | 2026-09-24 → 2026-10-03 (+9d) | 2026-12-11 → 2026-12-21 (+10d) | 20d → 27d |
| 1613 | Lavadero de granito | 2026-11-06 → 2026-11-18 (+12d) | 2026-11-11 → 2026-11-23 (+12d) | 52d → 59d |
| 1614 | Ramaleo hidráulico exterior CPVC 1 1/4 | 2026-10-17 → 2026-10-28 (+11d) | 2026-10-21 → 2026-10-30 (+9d) | 1d → 8d |
| 1615 | Ramaleo hidráulico exterior CPVC 1 | 2026-10-17 → 2026-10-28 (+11d) | 2026-10-20 → 2026-10-29 (+9d) | 1d → 8d |
| 1616 | Ramaleo hidráulico exterior CPVC 3/4 | 2026-10-20 → 2026-10-30 (+10d) | 2026-10-22 → 2026-11-02 (+11d) | 1d → 8d |
| 1617 | Ramaleo hidráulico exterior CPVC 1/2 | 2026-10-20 → 2026-10-30 (+10d) | 2026-10-22 → 2026-11-02 (+11d) | 1d → 8d |
| 1618 | Prueba hidráulica | 2026-10-22 → 2026-11-02 (+11d) | 2026-10-23 → 2026-11-03 (+11d) | 1d → 8d |
| 1619 | Ramaleo sanitario exterior PVC 4 | 2026-10-17 → 2026-10-28 (+11d) | 2026-10-22 → 2026-11-02 (+11d) | 1d → 8d |
| 1620 | Ramaleo sanitario exterior PVC 2 | 2026-10-19 → 2026-10-29 (+10d) | 2026-10-22 → 2026-11-02 (+11d) | 1d → 8d |
| 1621 | Prueba sanitaria | 2026-10-22 → 2026-11-02 (+11d) | 2026-10-23 → 2026-11-03 (+11d) | 1d → 8d |
| 1622 | Centro de carga muros PB | 2026-10-21 → 2026-10-31 (+10d) | 2026-10-26 → 2026-11-05 (+10d) | 3d → 10d |
| 1623 | Firme de concreto 8 cm | 2026-10-23 → 2026-11-03 (+11d) | 2026-10-28 → 2026-11-07 (+10d) | 46d → 53d |
| 1624 | Curado de concreto | 2026-10-29 → 2026-11-07 (+9d) | 2026-10-29 → 2026-11-09 (+11d) | 46d → 53d |
| 1625 | Cisterna 2800 L con instalación | 2026-09-24 → 2026-10-03 (+9d) | 2026-10-16 → 2026-10-26 (+10d) | 52d → 59d |
| 1626 | Banqueta y huellas de concreto | 2026-10-31 → 2026-11-10 (+10d) | 2026-11-10 → 2026-11-21 (+11d) | 29d → 36d |
| 1627 | Curado de concreto | 2026-11-10 → 2026-11-21 (+11d) | 2026-11-11 → 2026-11-23 (+12d) | 29d → 36d |
| 1628 | Número oficial | 2026-12-10 → 2026-12-21 (+11d) | 2026-12-11 → 2026-12-21 (+10d) | 29d → 36d |
| 1629 | Detallado de rodapié exterior | 2026-10-27 → 2026-11-05 (+9d) | 2026-10-30 → 2026-11-10 (+11d) | 61d → 68d |
| 1630 | Detallado de muros interiores | 2026-10-17 → 2026-10-28 (+11d) | 2026-10-22 → 2026-11-02 (+11d) | 5d → 12d |
| 1631 | **ACABADOS EN FACHADA A** | 2026-10-12 → 2026-10-21 (+9d) | 2026-12-10 → 2026-12-19 (+9d) | 30d → 37d |
| 1632 | Aplanado grueso fachada | 2026-10-12 → 2026-10-21 (+9d) | 2026-10-26 → 2026-11-05 (+10d) | 60d → 67d |
| 1633 | Aplanado fino estuco fachada | 2026-10-20 → 2026-10-30 (+10d) | 2026-11-02 → 2026-11-11 (+9d) | 60d → 67d |
| 1634 | Pintura acrílica 1-0102P | 2026-11-27 → 2026-12-08 (+11d) | 2026-12-08 → 2026-12-17 (+9d) | 31d → 38d |
| 1635 | Pintura acrílica 1-1404D | 2026-11-27 → 2026-12-08 (+11d) | 2026-12-10 → 2026-12-19 (+9d) | 29d → 36d |
| 1636 | **APLANADOS Y PINTURA** | 2026-10-17 → 2026-10-28 (+11d) | 2027-01-11 → 2027-01-20 (+9d) | 3d → 10d |
| 1637 | Yeso pulido en muros | 2026-10-28 → 2026-11-06 (+9d) | 2026-11-13 → 2026-11-25 (+12d) | 1d → 8d |
| 1638 | Pintura vinílica 699 Cottage White | 2026-12-21 → 2027-01-04 (+14d) | 2027-01-11 → 2027-01-20 (+9d) | 1d → 8d |

| ID | Task | Start | Finish | Total float |
| --- | --- | --- | --- | --- |
| 1639 | Pintura vinílica 691 Pacific Bungalow | 2026-12-09 → 2026-12-18 (+9d) | 2026-12-21 → 2027-01-05 (+15d) | 21d → 28d |
| 1640 | Yeso pulido en plafones | 2026-10-17 → 2026-10-28 (+11d) | 2026-10-29 → 2026-11-09 (+11d) | 3d → 10d |
| 1641 | Pintura vinílica Nano White | 2026-12-12 → 2026-12-23 (+11d) | 2026-12-21 → 2027-01-05 (+15d) | 21d → 28d |
| 1642 | Perfilado de puertas y ventanas | 2026-11-02 → 2026-11-11 (+9d) | 2026-11-06 → 2026-11-18 (+12d) | 56d → 63d |
| 1643 | **PISOS Y AZULEJOS** | 2026-11-09 → 2026-11-20 (+11d) | 2026-12-09 → 2026-12-18 (+9d) | 3d → 10d |
| 1644 | **AREA SOCIAL** | 2026-11-11 → 2026-11-23 (+12d) | 2026-12-01 → 2026-12-11 (+10d) | 1d → 8d |
| 1645 | Piso Moonside Crema 60x60 | 2026-11-11 → 2026-11-23 (+12d) | 2026-11-30 → 2026-12-10 (+10d) | 1d → 8d |
| 1646 | Zoclo piso 60x60 Moonside Crema | 2026-11-25 → 2026-12-04 (+9d) | 2026-12-01 → 2026-12-11 (+10d) | 18d → 25d |
| 1647 | **BAÑOS** | 2026-11-09 → 2026-11-20 (+11d) | 2026-12-01 → 2026-12-11 (+10d) | 12d → 19d |
| 1648 | Piso Moonside Crema 60x60 | 2026-11-25 → 2026-12-04 (+9d) | 2026-11-30 → 2026-12-10 (+10d) | 12d → 19d |
| 1649 | Zoclo piso 60x60 Moonside Crema | 2026-11-28 → 2026-12-09 (+11d) | 2026-12-01 → 2026-12-11 (+10d) | 37d → 44d |
| 1650 | Piso porcelánico Acali 20x20 beige | 2026-11-25 → 2026-12-04 (+9d) | 2026-11-28 → 2026-12-09 (+11d) | 39d → 46d |
| 1651 | Impermeabilización en regadera | 2026-11-18 → 2026-11-27 (+9d) | 2026-11-20 → 2026-11-30 (+10d) | 12d → 19d |
| 1652 | Azulejo Moonside Crema 60x60 | 2026-11-19 → 2026-11-28 (+9d) | 2026-11-25 → 2026-12-04 (+9d) | 12d → 19d |
| 1653 | Fabricacion de nicho decorativo en baños | 2026-11-09 → 2026-11-20 (+11d) | 2026-11-18 → 2026-11-27 (+9d) | 12d → 19d |
| 1654 | Sardinel en regadera | 2026-11-25 → 2026-12-04 (+9d) | 2026-11-30 → 2026-12-10 (+10d) | 38d → 45d |
| 1655 | **ESCALERA** | 2026-11-27 → 2026-12-08 (+11d) | 2026-12-09 → 2026-12-18 (+9d) | 1d → 8d |
| 1656 | Piso Moonside Crema 60x60 | 2026-11-27 → 2026-12-08 (+11d) | 2026-12-07 → 2026-12-16 (+9d) | 1d → 8d |
| 1657 | Zoclo piso 60x60 Moonside Crema | 2026-12-03 → 2026-12-14 (+11d) | 2026-12-09 → 2026-12-18 (+9d) | 1d → 8d |
| 1658 | **EXTERIOR** | 2026-10-23 → 2026-11-03 (+11d) | 2026-10-27 → 2026-11-06 (+10d) | 7d → 14d |
| 1659 | Rastrilleo, afine y nivelado de tierra | 2026-10-23 → 2026-11-03 (+11d) | 2026-10-27 → 2026-11-06 (+10d) | 7d → 14d |
| 1660 | **SEGUNDA LIMPIEZA DE OBRA** | 2026-12-09 → 2026-12-18 (+9d) | 2026-12-14 → 2026-12-23 (+9d) | 19d → 26d |
| 1661 | Segunda limpieza de obra | 2026-12-09 → 2026-12-18 (+9d) | 2026-12-11 → 2026-12-21 (+10d) | 19d → 26d |
| 1662 | Segunda carga y acarreo de escombro | 2026-12-11 → 2026-12-22 (+11d) | 2026-12-14 → 2026-12-23 (+9d) | 19d → 26d |
| 1663 | **CANCELERIA PUERTAS Y VENTANAS DE ALUMINIO** | 2026-11-27 → 2026-12-08 (+11d) | 2026-12-14 → 2026-12-23 (+9d) | 6d → 13d |
| 1664 | Puerta ventana P-05 corrediza | 2026-11-30 → 2026-12-10 (+10d) | 2026-12-09 → 2026-12-18 (+9d) | 10d → 17d |
| 1665 | Ventana corrediza V-01 | 2026-11-27 → 2026-12-08 (+11d) | 2026-12-02 → 2026-12-12 (+10d) | 15d → 22d |
| 1666 | Ventana corrediza V-03 | 2026-11-30 → 2026-12-10 (+10d) | 2026-12-04 → 2026-12-15 (+11d) | 13d → 20d |
| 1667 | Ventana corrediza V-05 | 2026-11-30 → 2026-12-10 (+10d) | 2026-12-04 → 2026-12-15 (+11d) | 13d → 20d |
| 1668 | Ventana corrediza tipo XO | 2026-12-03 → 2026-12-14 (+11d) | 2026-12-09 → 2026-12-18 (+9d) | 10d → 17d |
| 1669 | Ventana fija escalera | 2026-12-07 → 2026-12-16 (+9d) | 2026-12-14 → 2026-12-23 (+9d) | 6d → 13d |
| 1670 | **CARPINTERIA, PUERTAS EXTERIORES E INTERIORES** | 2026-12-09 → 2026-12-18 (+9d) | 2026-12-19 → 2027-01-04 (+16d) | 1d → 8d |
| 1671 | Puerta P-01 de seguridad | 2026-12-09 → 2026-12-18 (+9d) | 2026-12-15 → 2026-12-28 (+13d) | 5d → 12d |
| 1672 | Puerta P-03 interior | 2026-12-09 → 2026-12-18 (+9d) | 2026-12-18 → 2027-01-02 (+15d) | 2d → 9d |
| 1673 | Puerta P-02 interior | 2026-12-09 → 2026-12-18 (+9d) | 2026-12-18 → 2027-01-02 (+15d) | 2d → 9d |
| 1674 | Puerta exterior lavandería | 2026-12-15 → 2026-12-28 (+13d) | 2026-12-19 → 2027-01-04 (+16d) | 1d → 8d |
| 1675 | **INSTALACION ELECTRICA** | 2026-11-05 → 2026-11-17 (+12d) | 2026-11-30 → 2026-12-10 (+10d) | 30d → 37d |
| 1676 | Alimentación eléctrica base a centro de carga | 2026-11-13 → 2026-11-25 (+12d) | 2026-11-21 → 2026-12-01 (+10d) | 34d → 41d |
| 1677 | Interruptor termomagnético 1x15 A | 2026-11-21 → 2026-12-01 (+10d) | 2026-11-23 → 2026-12-02 (+9d) | 34d → 41d |
| 1678 | Interruptor termomagnético 1x20 A | 2026-11-21 → 2026-12-01 (+10d) | 2026-11-23 → 2026-12-02 (+9d) | 34d → 41d |
| 1679 | Interruptor termomagnético 2x20 A | 2026-11-21 → 2026-12-01 (+10d) | 2026-11-23 → 2026-12-02 (+9d) | 34d → 41d |
| 1680 | Salida para apagador 3 vías | 2026-11-09 → 2026-11-20 (+11d) | 2026-11-13 → 2026-11-25 (+12d) | 30d → 37d |
| 1681 | Salida para apagador triple | 2026-11-13 → 2026-11-25 (+12d) | 2026-11-19 → 2026-11-28 (+9d) | 34d → 41d |
| 1682 | Salida para apagador doble | 2026-11-19 → 2026-11-28 (+9d) | 2026-11-23 → 2026-12-02 (+9d) | 34d → 41d |
| 1683 | Salida para apagador sencillo | 2026-11-13 → 2026-11-25 (+12d) | 2026-11-19 → 2026-11-28 (+9d) | 37d → 44d |
| 1684 | Salida de alumbrado en losa | 2026-11-13 → 2026-11-25 (+12d) | 2026-11-21 → 2026-12-01 (+10d) | 32d → 39d |
| 1685 | Salida de alumbrado en muro | 2026-11-13 → 2026-11-25 (+12d) | 2026-11-20 → 2026-11-30 (+10d) | 36d → 43d |
| 1686 | Salida para contacto 220 V | 2026-11-18 → 2026-11-27 (+9d) | 2026-11-21 → 2026-12-01 (+10d) | 30d → 37d |
| 1687 | Salida para contacto doble | 2026-11-18 → 2026-11-27 (+9d) | 2026-11-24 → 2026-12-03 (+9d) | 33d → 40d |
| 1688 | Salida para contacto doble área húmeda | 2026-11-21 → 2026-12-01 (+10d) | 2026-11-24 → 2026-12-03 (+9d) | 33d → 40d |
| 1689 | Salida TV / telefonía / intercom | 2026-11-21 → 2026-12-01 (+10d) | 2026-11-26 → 2026-12-07 (+11d) | 31d → 38d |
| 1690 | Extractor 4 baño | 2026-11-21 → 2026-12-01 (+10d) | 2026-11-27 → 2026-12-08 (+11d) | 30d → 37d |
| 1691 | Prueba eléctrica | 2026-11-27 → 2026-12-08 (+11d) | 2026-11-30 → 2026-12-10 (+10d) | 30d → 37d |
| 1692 | Murete convencional | 2026-11-05 → 2026-11-17 (+12d) | 2026-11-10 → 2026-11-21 (+11d) | 43d → 50d |
| 1693 | **INSTALACIÓN HIDRO-SANITARIA** | 2026-10-23 → 2026-11-03 (+11d) | 2026-11-06 → 2026-11-18 (+12d) | 1d → 8d |
| 1694 | Tubo PVC 3/4 red de condensados | 2026-10-23 → 2026-11-03 (+11d) | 2026-10-29 → 2026-11-09 (+11d) | 1d → 8d |
| 1695 | Caja PVC para lavadora | 2026-10-23 → 2026-11-03 (+11d) | 2026-10-27 → 2026-11-06 (+10d) | 1d → 8d |
| 1696 | Salida para secadora PVC 4 | 2026-10-23 → 2026-11-03 (+11d) | 2026-10-27 → 2026-11-06 (+10d) | 1d → 8d |
| 1697 | Salida hidráulica para boiler | 2026-10-23 → 2026-11-03 (+11d) | 2026-10-26 → 2026-11-05 (+10d) | 2d → 9d |
| 1698 | Salida hidráulica para llave de jardín | 2026-10-23 → 2026-11-03 (+11d) | 2026-10-27 → 2026-11-06 (+10d) | 1d → 8d |
| 1699 | Salida hidráulica para lavabo | 2026-10-23 → 2026-11-03 (+11d) | 2026-10-28 → 2026-11-07 (+10d) | 1d → 8d |
| 1700 | Salida hidráulica para purificación | 2026-10-23 → 2026-11-03 (+11d) | 2026-10-28 → 2026-11-07 (+10d) | 1d → 8d |
| 1701 | Salida sanitaria para lavabo | 2026-10-27 → 2026-11-05 (+9d) | 2026-10-28 → 2026-11-07 (+10d) | 1d → 8d |
| 1702 | Salida hidráulica para lavadero | 2026-10-27 → 2026-11-05 (+9d) | 2026-10-28 → 2026-11-07 (+10d) | 1d → 8d |
| 1703 | Salida sanitaria para lavadero | 2026-10-28 → 2026-11-06 (+9d) | 2026-10-29 → 2026-11-09 (+11d) | 1d → 8d |
| 1704 | Salida hidráulica para lavadora | 2026-10-28 → 2026-11-06 (+9d) | 2026-10-29 → 2026-11-09 (+11d) | 1d → 8d |
| 1705 | Salida sanitaria para lavadora | 2026-10-29 → 2026-11-07 (+9d) | 2026-10-30 → 2026-11-10 (+11d) | 1d → 8d |
| 1706 | Salida hidráulica para regadera | 2026-10-29 → 2026-11-07 (+9d) | 2026-11-04 → 2026-11-13 (+9d) | 6d → 13d |
| 1707 | Salida sanitaria para regadera | 2026-10-29 → 2026-11-07 (+9d) | 2026-11-03 → 2026-11-12 (+9d) | 7d → 14d |
| 1708 | Salida hidráulica para WC | 2026-10-27 → 2026-11-05 (+9d) | 2026-10-28 → 2026-11-07 (+10d) | 1d → 8d |

| ID | Task | Start | Finish | Total float |
| --- | --- | --- | --- | --- |
| 1709 | Salida sanitaria para WC | 2026-10-29 → 2026-11-07 (+9d) | 2026-11-03 → 2026-11-12 (+9d) | 1d → 8d |
| 1710 | Salida hidráulica para zinc | 2026-10-29 → 2026-11-07 (+9d) | 2026-11-03 → 2026-11-12 (+9d) | 1d → 8d |
| 1711 | Salida sanitaria para zinc | 2026-10-31 → 2026-11-10 (+10d) | 2026-11-04 → 2026-11-13 (+9d) | 1d → 8d |
| 1712 | Tubo para ventila de baño 2 | 2026-10-23 → 2026-11-03 (+11d) | 2026-10-29 → 2026-11-09 (+11d) | 1d → 8d |
| 1713 | Tubo para minisplit PVC 3 | 2026-10-30 → 2026-11-09 (+10d) | 2026-11-05 → 2026-11-17 (+12d) | 1d → 8d |
| 1714 | Cuadro de medición | 2026-10-28 → 2026-11-06 (+9d) | 2026-11-03 → 2026-11-12 (+9d) | 7d → 14d |
| 1715 | Prueba sanitaria | 2026-11-05 → 2026-11-17 (+12d) | 2026-11-06 → 2026-11-18 (+12d) | 5d → 12d |
| 1716 | Prueba hidráulica | 2026-11-04 → 2026-11-13 (+9d) | 2026-11-05 → 2026-11-17 (+12d) | 6d → 13d |
| 1717 | Salida hidráulica para tanque hidroneumático | 2026-10-28 → 2026-11-06 (+9d) | 2026-10-30 → 2026-11-10 (+11d) | 9d → 16d |
| 1718 | Salida hidráulica para Active Driver | 2026-10-28 → 2026-11-06 (+9d) | 2026-10-30 → 2026-11-10 (+11d) | 9d → 16d |
| 1719 | **INSTALACION DE GAS** | 2026-10-21 → 2026-10-31 (+10d) | 2026-10-30 → 2026-11-10 (+11d) | 29d → 36d |
| 1720 | Ramaleo para gas 1/2 | 2026-10-26 → 2026-11-04 (+9d) | 2026-10-30 → 2026-11-10 (+11d) | 29d → 36d |
| 1721 | Excavación a mano material tipo B | 2026-10-21 → 2026-10-31 (+10d) | 2026-10-24 → 2026-11-04 (+11d) | 29d → 36d |
| 1722 | **MUEBLES SANITARIOS** | 2026-11-30 → 2026-12-10 (+10d) | 2027-01-11 → 2027-01-20 (+9d) | 1d → 8d |
| 1723 | WC one piece Smart Corona | 2026-11-30 → 2026-12-10 (+10d) | 2026-12-02 → 2026-12-12 (+10d) | 15d → 22d |
| 1724 | Lavabo Tarento Vanity | 2026-11-30 → 2026-12-10 (+10d) | 2026-12-04 → 2026-12-15 (+11d) | 13d → 20d |
| 1725 | Regadera y monomando Thames | 2026-12-02 → 2026-12-12 (+10d) | 2026-12-07 → 2026-12-16 (+9d) | 12d → 19d |
| 1726 | Coladera cuadrada para inserto cerámico | 2026-12-03 → 2026-12-14 (+11d) | 2026-12-07 → 2026-12-16 (+9d) | 12d → 19d |
| 1727 | Toallero argolla Thames | 2027-01-08 → 2027-01-19 (+11d) | 2027-01-11 → 2027-01-20 (+9d) | 1d → 8d |
| 1728 | Toallero barra Thames | 2027-01-08 → 2027-01-19 (+11d) | 2027-01-11 → 2027-01-20 (+9d) | 1d → 8d |
| 1729 | Portapapel Thames | 2027-01-08 → 2027-01-19 (+11d) | 2027-01-11 → 2027-01-20 (+9d) | 1d → 8d |
| 1730 | Gancho percha Thames | 2027-01-08 → 2027-01-19 (+11d) | 2027-01-11 → 2027-01-20 (+9d) | 1d → 8d |
| 1731 | **EQUIPAMIENTO** | 2026-10-15 → 2026-10-26 (+11d) | 2026-10-22 → 2026-11-02 (+11d) | 60d → 67d |
| 1732 | Electronivel Rotoplas 5 m | 2026-10-16 → 2026-10-27 (+11d) | 2026-10-19 → 2026-10-28 (+9d) | 63d → 70d |
| 1733 | Manómetro | 2026-10-16 → 2026-10-27 (+11d) | 2026-10-17 → 2026-10-27 (+10d) | 64d → 71d |
| 1734 | Interruptor de presión 30-50 PSI | 2026-10-16 → 2026-10-27 (+11d) | 2026-10-17 → 2026-10-27 (+10d) | 64d → 71d |
| 1735 | Tanque hidroneumático FPS-24LX | 2026-10-16 → 2026-10-27 (+11d) | 2026-10-20 → 2026-10-29 (+9d) | 60d → 67d |
| 1736 | Bomba sumergible Dominator 1.2 HP | 2026-10-20 → 2026-10-30 (+10d) | 2026-10-22 → 2026-11-02 (+11d) | 60d → 67d |
| 1737 | Cisterna prefabricada 2800 L | 2026-10-15 → 2026-10-26 (+11d) | 2026-10-16 → 2026-10-26 (+10d) | 60d → 67d |
| 1738 | **LUMINARIAS** | 2026-11-21 → 2026-12-01 (+10d) | 2026-11-25 → 2026-12-04 (+9d) | 32d → 39d |
| 1739 | Roseta de cerámica para luminaria | 2026-11-21 → 2026-12-01 (+10d) | 2026-11-25 → 2026-12-04 (+9d) | 32d → 39d |
| 1740 | Spot Brighton | 2026-11-21 → 2026-12-01 (+10d) | 2026-11-25 → 2026-12-04 (+9d) | 32d → 39d |
| 1741 | Arbotante bidireccional 12W | 2026-11-21 → 2026-12-01 (+10d) | 2026-11-24 → 2026-12-03 (+9d) | 33d → 40d |
| 1742 | **TERCER LIMPIEZA DE OBRA** | 2027-01-11 → 2027-01-20 (+9d) | 2027-01-20 → 2027-01-29 (+9d) | 1d → 8d |
| 1743 | Limpieza fina para entrega | 2027-01-11 → 2027-01-20 (+9d) | 2027-01-16 → 2027-01-26 (+10d) | 1d → 8d |
| 1744 | Tercera limpieza de obra | 2027-01-13 → 2027-01-22 (+9d) | 2027-01-18 → 2027-01-27 (+9d) | 1d → 8d |
| 1745 | Tercera carga y acarreo de escombro | 2027-01-15 → 2027-01-25 (+10d) | 2027-01-20 → 2027-01-29 (+9d) | 1d → 8d |
| 1746 | **OBRA EXTERIOR - BARDA** | 2026-10-28 → 2026-11-06 (+9d) | 2026-11-20 → 2026-11-30 (+10d) | 38d → 45d |
| 1747 | Barda de block aparente | 2026-10-28 → 2026-11-06 (+9d) | 2026-11-20 → 2026-11-30 (+10d) | 38d → 45d |

## Version 10 (data date 2026-07-11, saved 2026-07-08)

Note of the change: data(programa): reprograma Gantt — término 2027-02-09 → 2027-02-10

Last finish 2027-02-09 → 2027-02-10 (+1d). Complete tasks 90 → 160.

Changed:

| ID | Task | Start | Finish | Duration | Complete | Total float | Predecessors |
| --- | --- | --- | --- | --- | --- | --- | --- |
| 1 | **ALTOZANO - METTA - 6 CASAS** |  | 2027-02-09 → 2027-02-10 (+1d) | 215d → 216d | 4% → 9% |  |  |
| 7 | INICIO LOTE-22 M-663 CORSAC-B | 2026-06-10 A → 2026-05-29 A (-12d) | 2026-06-10 A → 2026-05-29 A (-12d) |  |  |  | 3FS+25d → 3FS+16d |
| 8 | INICIO LOTE-21 M-663 CORSAC-A | 2026-05-29 A → 2026-06-10 A (+12d) | 2026-05-29 A → 2026-06-10 A (+12d) |  |  |  | 3FS+16d → 3FS+25d |
| 9 | INICIO LOTE-20 M-663 ARTICO-A | 2026-05-29 A → 2026-06-10 A (+12d) | 2026-05-29 A → 2026-06-10 A (+12d) |  |  |  | 3FS+16d → 3FS+25d |
| 10 | **LOTE 04 M-661 ARTICO-A** |  | 2026-12-22 → 2027-01-07 (+16d) | 180d → 189d | 16% → 22% | 35d → 27d |  |
| 11 | **HITOS IMPORTANTES DEL LOTE** |  | 2026-12-22 → 2027-01-07 (+16d) | 180d → 189d |  | 35d → 27d |  |
| 14 | Colado de Losa de Entrepiso | 2026-07-15 → 2026-07-27 (+12d) | 2026-07-15 → 2026-07-27 (+12d) |  |  | 162d → 154d |  |
| 15 | Colado de Losa de Azotea | 2026-08-21 → 2026-09-01 (+11d) | 2026-08-21 → 2026-09-01 (+11d) |  |  | 132d → 124d |  |
| 16 | Entrega de vivienda | 2026-12-22 → 2027-01-07 (+16d) | 2026-12-22 → 2027-01-07 (+16d) |  |  | 35d → 27d |  |
| 49 | **MUROS, PLANTA BAJA. CASTILLOS Y CERRAMIENTOS** |  | 2026-06-27 → 2026-07-04 A (+7d) | 26d → 32d | 83% → 100% | 176d → none |  |
| 55 | Castillo K5 |  | 2026-06-23 A |  | 92% → 100% | 1.75d → none |  |
| 56 | Refuerzo de muro K6 |  | 2026-06-24 A |  | 58% → 100% | 1.75d → none |  |
| 59 | Dala de cerramiento CR-1 | 2026-06-23 A | 2026-06-27 → 2026-06-30 A (+3d) | 4d → 6d | 0% → 100% | 176d → none |  |
| 60 | Dala de cerramiento CR-2 | 2026-06-23 A | 2026-06-26 → 2026-07-02 A (+6d) | 3d → 8d | 0% → 100% | 177d → none |  |
| 61 | Cadena block dala |  | 2026-06-25 → 2026-06-30 A (+5d) | 4d → 8d | 44% → 100% | 178d → none |  |
| 62 | Muro de ladrillo aparente |  | 2026-06-26 → 2026-07-04 A (+8d) | 15d → 22d | 78% → 100% | 35d → none |  |
| 63 | Muro de block planta baja |  | 2026-06-26 → 2026-07-04 A (+8d) | 13d → 20d | 75% → 100% | 35d → none |  |
| 64 | **ESCALERA** | 2026-07-15 → 2026-07-27 (+12d) | 2026-08-01 → 2026-08-12 (+11d) |  |  | 148d → 140d |  |
| 65 | Escalera de concreto armado | 2026-07-15 → 2026-07-27 (+12d) | 2026-08-01 → 2026-08-12 (+11d) |  |  | 148d → 140d |  |
| 66 | **LOSA DE ENTREPISO (viegueta y caseton)** | 2026-06-26 → 2026-07-07 A (+11d) | 2026-07-16 → 2026-07-28 (+12d) | 16d → 17d | 0% → 23% | 36d → 153d |  |
| 67 | Vigueta pretensada 1.40 m | 2026-06-26 → 2026-07-10 A (+14d) | 2026-06-30 → 2026-07-14 (+14d) |  | 0% → 54% | 38d → 28d | 62, 63 → 62FS+4d, 63 |
| 68 | Vigueta pretensada 1.95 m | 2026-06-26 → 2026-07-10 A (+14d) | 2026-07-01 → 2026-07-15 (+14d) |  | 0% → 41% | 37d → 27d | 62, 63 → 62FS+4d, 63 |
| 69 | Vigueta pretensada 3.35 m | 2026-06-26 → 2026-07-10 A (+14d) | 2026-07-01 → 2026-07-15 (+14d) |  | 0% → 41% | 37d → 27d | 62, 63 → 62FS+4d, 63 |
| 70 | Vigueta pretensada 3.50 m | 2026-06-27 → 2026-07-10 A (+13d) | 2026-07-02 → 2026-07-15 (+13d) |  | 0% → 41% | 36d → 27d | 62FS+1d, 63FS+1d → 62FS+4d, 63FS+1d |
| 71 | Vigueta pretensada 3.75 m | 2026-06-27 → 2026-07-10 A (+13d) | 2026-07-02 → 2026-07-15 (+13d) |  | 0% → 41% | 36d → 27d | 62FS+1d, 63FS+1d → 62FS+4d, 63FS+1d |
| 72 | Vigueta pretensada 3.90 m | 2026-06-27 → 2026-07-10 A (+13d) | 2026-07-02 → 2026-07-15 (+13d) |  | 0% → 41% | 36d → 27d | 62FS+1d, 63FS+1d → 62FS+4d, 63FS+1d |
| 73 | Bovedilla poliestireno entrepiso | 2026-07-02 → 2026-07-15 (+13d) | 2026-07-04 → 2026-07-17 (+13d) |  |  | 36d → 27d |  |
| 74 | Dala de coronamiento | 2026-07-02 → 2026-07-15 (+13d) | 2026-07-06 → 2026-07-18 (+12d) |  |  | 39d → 30d |  |
| 75 | Nervadura NR-1 | 2026-07-03 → 2026-07-15 (+12d) | 2026-07-07 → 2026-07-18 (+11d) |  |  | 35d → 27d |  |
| 76 | Nervadura NR-2 | 2026-07-03 → 2026-07-15 (+12d) | 2026-07-07 → 2026-07-18 (+11d) |  |  | 37d → 29d |  |
| 77 | Trabe TR-1 | 2026-07-03 → 2026-07-15 (+12d) | 2026-07-09 → 2026-07-21 (+12d) |  |  | 35d → 27d |  |
| 78 | Malla 66-10/10 losa de compresión | 2026-07-10 → 2026-07-22 (+12d) | 2026-07-13 → 2026-07-24 (+11d) |  |  | 36d → 27d |  |
| 79 | Cimbra losa de azotea | 2026-06-27 → 2026-07-07 A (+10d) | 2026-07-03 → 2026-07-13 (+10d) |  | 0% → 93% | 35d → 29d |  |
| 80 | Concreto losa de entrepiso f’c=200 | 2026-07-14 → 2026-07-24 (+10d) | 2026-07-15 → 2026-07-27 (+12d) |  |  | 35d → 27d |  |
| 81 | Curado de concreto | 2026-07-15 → 2026-07-27 (+12d) | 2026-07-16 → 2026-07-28 (+12d) |  |  | 35d → 27d |  |
| 82 | Cimbra exterior corta losa | 2026-07-07 → 2026-07-17 (+10d) | 2026-07-09 → 2026-07-21 (+12d) |  |  | 38d → 30d |  |
| 83 | Ramaleo poliducto eléctrico entrepiso | 2026-07-06 → 2026-07-17 (+11d) | 2026-07-07 → 2026-07-20 (+13d) |  |  | 39d → 30d |  |
| 84 | Ramaleo para cable poliducto 3/4 | 2026-07-06 → 2026-07-17 (+11d) | 2026-07-06 → 2026-07-18 (+12d) |  |  | 169d → 160d |  |
| 85 | Ramaleo para TV poliducto 3/4 | 2026-07-08 → 2026-07-20 (+12d) | 2026-07-08 → 2026-07-21 (+13d) |  |  | 39d → 30d |  |
| 86 | Ramaleo hidráulico CPVC 3/4 | 2026-07-07 → 2026-07-18 (+11d) | 2026-07-08 → 2026-07-21 (+13d) |  |  | 36d → 27d |  |
| 87 | Ramaleo hidráulico CPVC 1/2 | 2026-07-09 → 2026-07-21 (+12d) | 2026-07-09 → 2026-07-22 (+13d) |  |  | 36d → 27d |  |
| 88 | Prueba hidráulica | 2026-07-09 → 2026-07-21 (+12d) | 2026-07-09 → 2026-07-22 (+13d) |  |  | 36d → 27d |  |
| 89 | Ramaleo sanitario PVC 4 | 2026-07-07 → 2026-07-18 (+11d) | 2026-07-08 → 2026-07-21 (+13d) |  |  | 36d → 27d |  |
| 90 | Ramaleo sanitario PVC 2 | 2026-07-09 → 2026-07-21 (+12d) | 2026-07-09 → 2026-07-22 (+13d) |  |  | 36d → 27d |  |
| 91 | Prueba sanitaria | 2026-07-09 → 2026-07-21 (+12d) | 2026-07-09 → 2026-07-22 (+13d) |  |  | 36d → 27d |  |
| 92 | **MUROS EN PLANTA ALTA, CASTILLOS Y CERRM.** | 2026-07-09 → 2026-07-20 (+11d) | 2026-08-04 → 2026-08-14 (+10d) |  |  | 35d → 27d |  |
| 93 | Anclaje de castillos y Columnas PA | 2026-07-09 → 2026-07-20 (+11d) | 2026-07-14 → 2026-07-24 (+10d) |  |  | 35d → 27d |  |
| 94 | Castillo K1 | 2026-07-16 → 2026-07-28 (+12d) | 2026-07-21 → 2026-08-01 (+11d) |  |  | 39d → 31d |  |
| 95 | Castillo K2 | 2026-07-17 → 2026-07-29 (+12d) | 2026-07-22 → 2026-08-03 (+12d) |  |  | 38d → 30d |  |
| 96 | Castillo K3 | 2026-07-18 → 2026-07-30 (+12d) | 2026-07-22 → 2026-08-03 (+12d) |  |  | 38d → 30d |  |
| 97 | Castillo K4 | 2026-07-21 → 2026-08-01 (+11d) | 2026-07-24 → 2026-08-05 (+12d) |  |  | 39d → 31d |  |
| 98 | Castillo K5 | 2026-07-21 → 2026-08-01 (+11d) | 2026-07-24 → 2026-08-05 (+12d) |  |  | 39d → 31d |  |
| 99 | Refuerzo de muro K6 | 2026-07-22 → 2026-08-03 (+12d) | 2026-07-27 → 2026-08-06 (+10d) |  |  | 38d → 30d |  |
| 100 | Dala de cerramiento CR-1 | 2026-07-27 → 2026-08-06 (+10d) | 2026-07-31 → 2026-08-11 (+11d) |  |  | 38d → 30d |  |
| 101 | Cadena block dala | 2026-07-31 → 2026-08-11 (+11d) | 2026-08-04 → 2026-08-14 (+10d) |  |  | 38d → 30d |  |
| 102 | Muro de ladrillo aparente | 2026-07-16 → 2026-07-28 (+12d) | 2026-08-04 → 2026-08-14 (+10d) |  |  | 35d → 27d |  |
| 103 | Muro de block planta alta | 2026-07-17 → 2026-07-29 (+12d) | 2026-08-04 → 2026-08-14 (+10d) |  |  | 35d → 27d |  |
| 104 | **LOSA AZOTEA** | 2026-08-04 → 2026-08-14 (+10d) | 2026-08-22 → 2026-09-02 (+11d) |  |  | 35d → 27d |  |
| 105 | Cortalosa CL-1 | 2026-08-18 → 2026-08-28 (+10d) | 2026-08-20 → 2026-08-31 (+11d) |  |  | 35d → 27d |  |
| 106 | Vigueta pretensada V11-40 390 | 2026-08-04 → 2026-08-14 (+10d) | 2026-08-10 → 2026-08-21 (+11d) |  |  | 38d → 30d |  |
| 107 | Vigueta pretensada V11-30 280 | 2026-08-04 → 2026-08-14 (+10d) | 2026-08-10 → 2026-08-21 (+11d) |  |  | 38d → 30d |  |
| 108 | Vigueta pretensada V11-30 285 | 2026-08-04 → 2026-08-14 (+10d) | 2026-08-10 → 2026-08-21 (+11d) |  |  | 38d → 30d |  |
| 109 | Vigueta pretensada V11-30 220 | 2026-08-06 → 2026-08-18 (+12d) | 2026-08-12 → 2026-08-24 (+12d) |  |  | 36d → 28d |  |
| 110 | Vigueta pretensada V11-40 75 | 2026-08-06 → 2026-08-18 (+12d) | 2026-08-12 → 2026-08-24 (+12d) |  |  | 36d → 28d |  |
| 111 | Vigueta pretensada V11-40 195 | 2026-08-07 → 2026-08-19 (+12d) | 2026-08-13 → 2026-08-25 (+12d) |  |  | 35d → 27d |  |
| 112 | Vigueta pretensada V11-50 450 | 2026-08-07 → 2026-08-19 (+12d) | 2026-08-13 → 2026-08-25 (+12d) |  |  | 35d → 27d |  |
| 113 | Bovedilla poliestireno azotea | 2026-08-13 → 2026-08-25 (+12d) | 2026-08-18 → 2026-08-28 (+10d) |  |  | 35d → 27d |  |
| 114 | Malla 66-10/10 losa de compresión | 2026-08-18 → 2026-08-28 (+10d) | 2026-08-20 → 2026-08-31 (+11d) |  |  | 35d → 27d |  |
| 115 | Concreto losa de azotea f’c=200 | 2026-08-20 → 2026-09-01 (+12d) | 2026-08-21 → 2026-09-01 (+11d) |  |  | 35d → 27d |  |
| 116 | Curado de concreto | 2026-08-21 → 2026-09-02 (+12d) | 2026-08-22 → 2026-09-02 (+11d) |  |  | 35d → 27d |  |

| ID | Task | Start | Finish | Total float |
| --- | --- | --- | --- | --- |
| 117 | Cimbra losa de azotea | 2026-08-04 → 2026-08-14 (+10d) | 2026-08-10 → 2026-08-21 (+11d) | 43d → 35d |
| 118 | Ramaleo de poliducto para inst. electrica en azotea | 2026-08-18 → 2026-08-28 (+10d) | 2026-08-20 → 2026-08-31 (+11d) | 35d → 27d |
| 119 | **PRETIL Y ACABADOS DE AZOTEA** | 2026-08-22 → 2026-09-03 (+12d) | 2026-09-15 → 2026-09-28 (+13d) | 35d → 27d |
| 120 | Castillo K1 | 2026-08-25 → 2026-09-05 (+11d) | 2026-08-31 → 2026-09-11 (+11d) | 35d → 27d |
| 121 | Dala de cerramiento en pretil | 2026-08-28 → 2026-09-09 (+12d) | 2026-09-02 → 2026-09-14 (+12d) | 35d → 27d |
| 122 | Muro de block 12x15x40 | 2026-08-22 → 2026-09-03 (+12d) | 2026-08-28 → 2026-09-09 (+12d) | 35d → 27d |
| 123 | Chaflán en azotea | 2026-09-01 → 2026-09-11 (+10d) | 2026-09-04 → 2026-09-17 (+13d) | 35d → 27d |
| 124 | Aplanado exterior Mortermax fino | 2026-09-03 → 2026-09-14 (+11d) | 2026-09-09 → 2026-09-22 (+13d) | 35d → 27d |
| 125 | Acabado de azotea para impermeabilizar | 2026-09-10 → 2026-09-23 (+13d) | 2026-09-15 → 2026-09-28 (+13d) | 35d → 27d |
| 126 | Curado de concreto | 2026-09-09 → 2026-09-22 (+13d) | 2026-09-10 → 2026-09-23 (+13d) | 35d → 27d |
| 127 | **PRIMERA LIMPIEZA DE OBRA** | 2026-08-22 → 2026-09-03 (+12d) | 2026-08-27 → 2026-09-08 (+12d) | 88d → 80d |
| 128 | Primera limpieza de obra | 2026-08-22 → 2026-09-03 (+12d) | 2026-08-25 → 2026-09-04 (+10d) | 88d → 80d |
| 129 | Primera carga y acarreo de escombro | 2026-08-25 → 2026-09-05 (+11d) | 2026-08-27 → 2026-09-08 (+12d) | 88d → 80d |
| 130 | **IMPERMEABILIZACION** | 2026-09-15 → 2026-09-28 (+13d) | 2026-09-23 → 2026-10-03 (+10d) | 35d → 27d |
| 131 | Impermeabilización de pretil Kover 5 años | 2026-09-15 → 2026-09-28 (+13d) | 2026-09-22 → 2026-10-02 (+10d) | 36d → 28d |
| 132 | Impermeabilización de losa Kover 5 años | 2026-09-15 → 2026-09-28 (+13d) | 2026-09-23 → 2026-10-03 (+10d) | 35d → 27d |
| 133 | **ALBAÑILERIA** | 2026-08-28 → 2026-09-09 (+12d) | 2026-11-17 → 2026-11-27 (+10d) | 54d → 46d |
| 134 | Lavadero de granito | 2026-10-13 → 2026-10-23 (+10d) | 2026-10-17 → 2026-10-28 (+11d) | 87d → 79d |
| 135 | Ramaleo hidráulico exterior CPVC 1 1/4 | 2026-09-23 → 2026-10-03 (+10d) | 2026-09-26 → 2026-10-07 (+11d) | 35d → 27d |
| 136 | Ramaleo hidráulico exterior CPVC 1 | 2026-09-23 → 2026-10-03 (+10d) | 2026-09-25 → 2026-10-06 (+11d) | 35d → 27d |
| 137 | Ramaleo hidráulico exterior CPVC 3/4 | 2026-09-25 → 2026-10-06 (+11d) | 2026-09-28 → 2026-10-08 (+10d) | 35d → 27d |
| 138 | Ramaleo hidráulico exterior CPVC 1/2 | 2026-09-25 → 2026-10-06 (+11d) | 2026-09-28 → 2026-10-08 (+10d) | 35d → 27d |
| 139 | Prueba hidráulica | 2026-09-28 → 2026-10-08 (+10d) | 2026-09-29 → 2026-10-09 (+10d) | 35d → 27d |
| 140 | Ramaleo sanitario exterior PVC 4 | 2026-09-23 → 2026-10-03 (+10d) | 2026-09-28 → 2026-10-08 (+10d) | 35d → 27d |
| 141 | Ramaleo sanitario exterior PVC 2 | 2026-09-24 → 2026-10-05 (+11d) | 2026-09-28 → 2026-10-08 (+10d) | 35d → 27d |
| 142 | Prueba sanitaria | 2026-09-28 → 2026-10-08 (+10d) | 2026-09-29 → 2026-10-09 (+10d) | 35d → 27d |
| 143 | Centro de carga muros PB | 2026-09-26 → 2026-10-07 (+11d) | 2026-10-01 → 2026-10-13 (+12d) | 37d → 29d |
| 144 | Firme de concreto 8 cm | 2026-09-29 → 2026-10-09 (+10d) | 2026-10-03 → 2026-10-15 (+12d) | 81d → 73d |
| 145 | Curado de concreto | 2026-10-03 → 2026-10-15 (+12d) | 2026-10-05 → 2026-10-16 (+11d) | 81d → 73d |
| 146 | Cisterna 2800 L con instalación | 2026-08-28 → 2026-09-09 (+12d) | 2026-09-22 → 2026-10-02 (+10d) | 87d → 79d |
| 147 | Banqueta y huellas de concreto | 2026-10-06 → 2026-10-17 (+11d) | 2026-10-16 → 2026-10-27 (+11d) | 64d → 56d |
| 148 | Curado de concreto | 2026-10-16 → 2026-10-28 (+12d) | 2026-10-17 → 2026-10-28 (+11d) | 64d → 56d |
| 149 | Número oficial | 2026-11-13 → 2026-11-26 (+13d) | 2026-11-17 → 2026-11-27 (+10d) | 64d → 56d |
| 150 | Detallado de rodapié exterior | 2026-10-01 → 2026-10-13 (+12d) | 2026-10-06 → 2026-10-17 (+11d) | 96d → 88d |
| 151 | Detallado de muros interiores | 2026-09-23 → 2026-10-03 (+10d) | 2026-09-28 → 2026-10-08 (+10d) | 39d → 31d |
| 152 | **ACABADOS EN FACHADA A** | 2026-09-15 → 2026-09-28 (+13d) | 2026-11-13 → 2026-11-26 (+13d) | 65d → 57d |
| 153 | Aplanado grueso fachada | 2026-09-15 → 2026-09-28 (+13d) | 2026-10-01 → 2026-10-13 (+12d) | 95d → 87d |
| 154 | Aplanado fino estuco fachada | 2026-09-25 → 2026-10-06 (+11d) | 2026-10-07 → 2026-10-19 (+12d) | 95d → 87d |
| 155 | Pintura acrílica 1-0102P | 2026-11-02 → 2026-11-12 (+10d) | 2026-11-11 → 2026-11-24 (+13d) | 66d → 58d |
| 156 | Pintura acrílica 1-1404D | 2026-11-02 → 2026-11-12 (+10d) | 2026-11-13 → 2026-11-26 (+13d) | 64d → 56d |
| 157 | **APLANADOS Y PINTURA** | 2026-09-23 → 2026-10-03 (+10d) | 2026-12-11 → 2026-12-22 (+11d) | 37d → 29d |
| 158 | Yeso pulido en muros | 2026-10-02 → 2026-10-14 (+12d) | 2026-10-20 → 2026-10-30 (+10d) | 35d → 27d |
| 159 | Pintura vinílica 699 Cottage White | 2026-11-25 → 2026-12-07 (+12d) | 2026-12-11 → 2026-12-22 (+11d) | 35d → 27d |
| 160 | Pintura vinílica 691 Pacific Bungalow | 2026-11-12 → 2026-11-25 (+13d) | 2026-11-26 → 2026-12-08 (+12d) | 56d → 48d |
| 161 | Yeso pulido en plafones | 2026-09-23 → 2026-10-03 (+10d) | 2026-10-05 → 2026-10-16 (+11d) | 37d → 29d |
| 162 | Pintura vinílica Nano White | 2026-11-18 → 2026-11-28 (+10d) | 2026-11-26 → 2026-12-08 (+12d) | 56d → 48d |
| 163 | Perfilado de puertas y ventanas | 2026-10-07 → 2026-10-19 (+12d) | 2026-10-13 → 2026-10-23 (+10d) | 91d → 83d |
| 164 | **PISOS Y AZULEJOS** | 2026-10-15 → 2026-10-27 (+12d) | 2026-11-12 → 2026-11-25 (+13d) | 37d → 29d |
| 165 | **AREA SOCIAL** | 2026-10-17 → 2026-10-29 (+12d) | 2026-11-05 → 2026-11-18 (+13d) | 35d → 27d |
| 166 | Piso Moonside Crema 60x60 | 2026-10-17 → 2026-10-29 (+12d) | 2026-11-04 → 2026-11-17 (+13d) | 35d → 27d |
| 167 | Zoclo piso 60x60 Moonside Crema | 2026-10-30 → 2026-11-10 (+11d) | 2026-11-05 → 2026-11-18 (+13d) | 52d → 44d |
| 168 | **BAÑOS** | 2026-10-15 → 2026-10-27 (+12d) | 2026-11-05 → 2026-11-18 (+13d) | 46d → 38d |
| 169 | Piso Moonside Crema 60x60 | 2026-10-30 → 2026-11-10 (+11d) | 2026-11-04 → 2026-11-17 (+13d) | 46d → 38d |
| 170 | Zoclo piso 60x60 Moonside Crema | 2026-11-03 → 2026-11-13 (+10d) | 2026-11-05 → 2026-11-18 (+13d) | 72d → 64d |
| 171 | Piso porcelánico Acali 20x20 beige | 2026-10-30 → 2026-11-10 (+11d) | 2026-11-03 → 2026-11-13 (+10d) | 74d → 66d |
| 172 | Impermeabilización en regadera | 2026-10-22 → 2026-11-03 (+12d) | 2026-10-24 → 2026-11-05 (+12d) | 46d → 38d |
| 173 | Azulejo Moonside Crema 60x60 | 2026-10-23 → 2026-11-04 (+12d) | 2026-10-29 → 2026-11-10 (+12d) | 46d → 38d |
| 174 | Fabricacion de nicho decorativo en baños | 2026-10-15 → 2026-10-27 (+12d) | 2026-10-22 → 2026-11-03 (+12d) | 46d → 38d |
| 175 | Sardinel en regadera | 2026-10-30 → 2026-11-10 (+11d) | 2026-11-04 → 2026-11-17 (+13d) | 73d → 65d |
| 176 | **ESCALERA** | 2026-11-02 → 2026-11-12 (+10d) | 2026-11-12 → 2026-11-25 (+13d) | 35d → 27d |
| 177 | Piso Moonside Crema 60x60 | 2026-11-02 → 2026-11-12 (+10d) | 2026-11-10 → 2026-11-23 (+13d) | 35d → 27d |
| 178 | Zoclo piso 60x60 Moonside Crema | 2026-11-07 → 2026-11-20 (+13d) | 2026-11-12 → 2026-11-25 (+13d) | 35d → 27d |
| 179 | **EXTERIOR** | 2026-09-29 → 2026-10-09 (+10d) | 2026-10-02 → 2026-10-14 (+12d) | 41d → 33d |
| 180 | Rastrilleo, afine y nivelado de tierra | 2026-09-29 → 2026-10-09 (+10d) | 2026-10-02 → 2026-10-14 (+12d) | 41d → 33d |
| 181 | **SEGUNDA LIMPIEZA DE OBRA** | 2026-11-12 → 2026-11-25 (+13d) | 2026-11-19 → 2026-11-30 (+11d) | 53d → 45d |
| 182 | Segunda limpieza de obra | 2026-11-12 → 2026-11-25 (+13d) | 2026-11-17 → 2026-11-27 (+10d) | 53d → 45d |
| 183 | Segunda carga y acarreo de escombro | 2026-11-17 → 2026-11-27 (+10d) | 2026-11-19 → 2026-11-30 (+11d) | 53d → 45d |
| 184 | **CANCELERIA PUERTAS Y VENTANAS DE ALUMINIO** | 2026-11-02 → 2026-11-12 (+10d) | 2026-11-19 → 2026-11-30 (+11d) | 40d → 32d |
| 185 | Puerta ventana P-05 corrediza | 2026-11-04 → 2026-11-17 (+13d) | 2026-11-12 → 2026-11-25 (+13d) | 44d → 36d |
| 186 | Ventana corrediza V-01 | 2026-11-02 → 2026-11-12 (+10d) | 2026-11-06 → 2026-11-19 (+13d) | 49d → 41d |

| ID | Task | Start | Finish | Total float |
| --- | --- | --- | --- | --- |
| 187 | Ventana corrediza V-03 | 2026-11-04 → 2026-11-17 (+13d) | 2026-11-09 → 2026-11-21 (+12d) | 47d → 39d |
| 188 | Ventana corrediza V-05 | 2026-11-04 → 2026-11-17 (+13d) | 2026-11-09 → 2026-11-21 (+12d) | 47d → 39d |
| 189 | Ventana corrediza tipo XO | 2026-11-07 → 2026-11-20 (+13d) | 2026-11-12 → 2026-11-25 (+13d) | 44d → 36d |
| 190 | Ventana fija escalera | 2026-11-10 → 2026-11-23 (+13d) | 2026-11-19 → 2026-11-30 (+11d) | 40d → 32d |
| 191 | **CARPINTERIA, PUERTAS EXTERIORES E INTERIORES** | 2026-11-12 → 2026-11-25 (+13d) | 2026-11-25 → 2026-12-07 (+12d) | 35d → 27d |
| 192 | Puerta P-01 de seguridad | 2026-11-12 → 2026-11-25 (+13d) | 2026-11-20 → 2026-12-01 (+11d) | 39d → 31d |
| 193 | Puerta P-03 interior | 2026-11-12 → 2026-11-25 (+13d) | 2026-11-24 → 2026-12-04 (+10d) | 36d → 28d |
| 194 | Puerta P-02 interior | 2026-11-12 → 2026-11-25 (+13d) | 2026-11-24 → 2026-12-04 (+10d) | 36d → 28d |
| 195 | Puerta exterior lavandería | 2026-11-20 → 2026-12-01 (+11d) | 2026-11-25 → 2026-12-07 (+12d) | 35d → 27d |
| 196 | **INSTALACION ELECTRICA** | 2026-10-12 → 2026-10-22 (+10d) | 2026-11-04 → 2026-11-17 (+13d) | 64d → 56d |
| 197 | Alimentación eléctrica base a centro de carga | 2026-10-20 → 2026-10-31 (+11d) | 2026-10-26 → 2026-11-06 (+11d) | 68d → 60d |
| 198 | Interruptor termomagnético 1x15 A | 2026-10-27 → 2026-11-06 (+10d) | 2026-10-27 → 2026-11-07 (+11d) | 68d → 60d |
| 199 | Interruptor termomagnético 1x20 A | 2026-10-27 → 2026-11-06 (+10d) | 2026-10-27 → 2026-11-07 (+11d) | 68d → 60d |
| 200 | Interruptor termomagnético 2x20 A | 2026-10-27 → 2026-11-06 (+10d) | 2026-10-27 → 2026-11-07 (+11d) | 68d → 60d |
| 201 | Salida para apagador 3 vías | 2026-10-15 → 2026-10-27 (+12d) | 2026-10-20 → 2026-10-30 (+10d) | 64d → 56d |
| 202 | Salida para apagador triple | 2026-10-20 → 2026-10-31 (+11d) | 2026-10-23 → 2026-11-04 (+12d) | 68d → 60d |
| 203 | Salida para apagador doble | 2026-10-23 → 2026-11-04 (+12d) | 2026-10-27 → 2026-11-07 (+11d) | 68d → 60d |
| 204 | Salida para apagador sencillo | 2026-10-20 → 2026-10-31 (+11d) | 2026-10-23 → 2026-11-04 (+12d) | 71d → 63d |
| 205 | Salida de alumbrado en losa | 2026-10-20 → 2026-10-31 (+11d) | 2026-10-26 → 2026-11-06 (+11d) | 66d → 58d |
| 206 | Salida de alumbrado en muro | 2026-10-20 → 2026-10-31 (+11d) | 2026-10-24 → 2026-11-05 (+12d) | 70d → 62d |
| 207 | Salida para contacto 220 V | 2026-10-22 → 2026-11-03 (+12d) | 2026-10-26 → 2026-11-06 (+11d) | 64d → 56d |
| 208 | Salida para contacto doble | 2026-10-22 → 2026-11-03 (+12d) | 2026-10-28 → 2026-11-09 (+12d) | 67d → 59d |
| 209 | Salida para contacto doble área húmeda | 2026-10-27 → 2026-11-06 (+10d) | 2026-10-28 → 2026-11-09 (+12d) | 67d → 59d |
| 210 | Salida TV / telefonía / intercom | 2026-10-27 → 2026-11-06 (+10d) | 2026-10-30 → 2026-11-11 (+12d) | 65d → 57d |
| 211 | Extractor 4 baño | 2026-10-27 → 2026-11-06 (+10d) | 2026-11-02 → 2026-11-12 (+10d) | 64d → 56d |
| 212 | Prueba eléctrica | 2026-11-02 → 2026-11-12 (+10d) | 2026-11-04 → 2026-11-17 (+13d) | 64d → 56d |
| 213 | Murete convencional | 2026-10-12 → 2026-10-22 (+10d) | 2026-10-16 → 2026-10-27 (+11d) | 77d → 69d |
| 214 | **INSTALACIÓN HIDRO-SANITARIA** | 2026-09-29 → 2026-10-09 (+10d) | 2026-10-13 → 2026-10-23 (+10d) | 35d → 27d |
| 215 | Tubo PVC 3/4 red de condensados | 2026-09-29 → 2026-10-09 (+10d) | 2026-10-05 → 2026-10-16 (+11d) | 35d → 27d |
| 216 | Caja PVC para lavadora | 2026-09-29 → 2026-10-09 (+10d) | 2026-10-02 → 2026-10-14 (+12d) | 35d → 27d |
| 217 | Salida para secadora PVC 4 | 2026-09-29 → 2026-10-09 (+10d) | 2026-10-02 → 2026-10-14 (+12d) | 35d → 27d |
| 218 | Salida hidráulica para boiler | 2026-09-29 → 2026-10-09 (+10d) | 2026-10-01 → 2026-10-13 (+12d) | 36d → 28d |
| 219 | Salida hidráulica para llave de jardín | 2026-09-29 → 2026-10-09 (+10d) | 2026-10-02 → 2026-10-14 (+12d) | 35d → 27d |
| 220 | Salida hidráulica para lavabo | 2026-09-29 → 2026-10-09 (+10d) | 2026-10-03 → 2026-10-15 (+12d) | 35d → 27d |
| 221 | Salida hidráulica para purificación | 2026-09-29 → 2026-10-09 (+10d) | 2026-10-03 → 2026-10-15 (+12d) | 35d → 27d |
| 222 | Salida sanitaria para lavabo | 2026-10-01 → 2026-10-13 (+12d) | 2026-10-03 → 2026-10-15 (+12d) | 35d → 27d |
| 223 | Salida hidráulica para lavadero | 2026-10-01 → 2026-10-13 (+12d) | 2026-10-03 → 2026-10-15 (+12d) | 35d → 27d |
| 224 | Salida sanitaria para lavadero | 2026-10-02 → 2026-10-14 (+12d) | 2026-10-05 → 2026-10-16 (+11d) | 35d → 27d |
| 225 | Salida hidráulica para lavadora | 2026-10-02 → 2026-10-14 (+12d) | 2026-10-05 → 2026-10-16 (+11d) | 35d → 27d |
| 226 | Salida sanitaria para lavadora | 2026-10-03 → 2026-10-15 (+12d) | 2026-10-06 → 2026-10-17 (+11d) | 35d → 27d |
| 227 | Salida hidráulica para regadera | 2026-10-03 → 2026-10-15 (+12d) | 2026-10-09 → 2026-10-21 (+12d) | 40d → 32d |
| 228 | Salida sanitaria para regadera | 2026-10-03 → 2026-10-15 (+12d) | 2026-10-08 → 2026-10-20 (+12d) | 41d → 33d |
| 229 | Salida hidráulica para WC | 2026-10-01 → 2026-10-13 (+12d) | 2026-10-03 → 2026-10-15 (+12d) | 35d → 27d |
| 230 | Salida sanitaria para WC | 2026-10-03 → 2026-10-15 (+12d) | 2026-10-08 → 2026-10-20 (+12d) | 35d → 27d |
| 231 | Salida hidráulica para zinc | 2026-10-03 → 2026-10-15 (+12d) | 2026-10-08 → 2026-10-20 (+12d) | 35d → 27d |
| 232 | Salida sanitaria para zinc | 2026-10-06 → 2026-10-17 (+11d) | 2026-10-09 → 2026-10-21 (+12d) | 35d → 27d |
| 233 | Tubo para ventila de baño 2 | 2026-09-29 → 2026-10-09 (+10d) | 2026-10-05 → 2026-10-16 (+11d) | 35d → 27d |
| 234 | Tubo para minisplit PVC 3 | 2026-10-05 → 2026-10-16 (+11d) | 2026-10-12 → 2026-10-22 (+10d) | 35d → 27d |
| 235 | Cuadro de medición | 2026-10-02 → 2026-10-14 (+12d) | 2026-10-08 → 2026-10-20 (+12d) | 41d → 33d |
| 236 | Prueba sanitaria | 2026-10-12 → 2026-10-22 (+10d) | 2026-10-13 → 2026-10-23 (+10d) | 39d → 31d |
| 237 | Prueba hidráulica | 2026-10-09 → 2026-10-21 (+12d) | 2026-10-12 → 2026-10-22 (+10d) | 40d → 32d |
| 238 | Salida hidráulica para tanque hidroneumático | 2026-10-02 → 2026-10-14 (+12d) | 2026-10-06 → 2026-10-17 (+11d) | 43d → 35d |
| 239 | Salida hidráulica para Active Driver | 2026-10-02 → 2026-10-14 (+12d) | 2026-10-06 → 2026-10-17 (+11d) | 43d → 35d |
| 240 | **INSTALACION DE GAS** | 2026-09-26 → 2026-10-07 (+11d) | 2026-10-06 → 2026-10-17 (+11d) | 64d → 56d |
| 241 | Ramaleo para gas 1/2 | 2026-09-30 → 2026-10-12 (+12d) | 2026-10-06 → 2026-10-17 (+11d) | 64d → 56d |
| 242 | Excavación a mano material tipo B | 2026-09-26 → 2026-10-07 (+11d) | 2026-09-30 → 2026-10-12 (+12d) | 64d → 56d |
| 243 | **MUEBLES SANITARIOS** | 2026-11-04 → 2026-11-17 (+13d) | 2026-12-11 → 2026-12-22 (+11d) | 35d → 27d |
| 244 | WC one piece Smart Corona | 2026-11-04 → 2026-11-17 (+13d) | 2026-11-06 → 2026-11-19 (+13d) | 49d → 41d |
| 245 | Lavabo Tarento Vanity | 2026-11-04 → 2026-11-17 (+13d) | 2026-11-09 → 2026-11-21 (+12d) | 47d → 39d |
| 246 | Regadera y monomando Thames | 2026-11-06 → 2026-11-19 (+13d) | 2026-11-10 → 2026-11-23 (+13d) | 46d → 38d |
| 247 | Coladera cuadrada para inserto cerámico | 2026-11-07 → 2026-11-20 (+13d) | 2026-11-10 → 2026-11-23 (+13d) | 46d → 38d |
| 248 | Toallero argolla Thames | 2026-12-10 → 2026-12-22 (+12d) | 2026-12-11 → 2026-12-22 (+11d) | 35d → 27d |
| 249 | Toallero barra Thames | 2026-12-10 → 2026-12-22 (+12d) | 2026-12-11 → 2026-12-22 (+11d) | 35d → 27d |
| 250 | Portapapel Thames | 2026-12-10 → 2026-12-22 (+12d) | 2026-12-11 → 2026-12-22 (+11d) | 35d → 27d |
| 251 | Gancho percha Thames | 2026-12-10 → 2026-12-22 (+12d) | 2026-12-11 → 2026-12-22 (+11d) | 35d → 27d |
| 252 | **EQUIPAMIENTO** | 2026-09-21 → 2026-10-01 (+10d) | 2026-09-28 → 2026-10-08 (+10d) | 94d → 86d |
| 253 | Electronivel Rotoplas 5 m | 2026-09-22 → 2026-10-02 (+10d) | 2026-09-24 → 2026-10-05 (+11d) | 97d → 89d |
| 254 | Manómetro | 2026-09-22 → 2026-10-02 (+10d) | 2026-09-23 → 2026-10-03 (+10d) | 98d → 90d |
| 255 | Interruptor de presión 30-50 PSI | 2026-09-22 → 2026-10-02 (+10d) | 2026-09-23 → 2026-10-03 (+10d) | 98d → 90d |
| 256 | Tanque hidroneumático FPS-24LX | 2026-09-22 → 2026-10-02 (+10d) | 2026-09-25 → 2026-10-06 (+11d) | 94d → 86d |

| ID | Task | Start | Finish | Duration | Complete | Total float | Predecessors |
| --- | --- | --- | --- | --- | --- | --- | --- |
| 257 | Bomba sumergible Dominator 1.2 HP | 2026-09-25 → 2026-10-06 (+11d) | 2026-09-28 → 2026-10-08 (+10d) |  |  | 94d → 86d |  |
| 258 | Cisterna prefabricada 2800 L | 2026-09-21 → 2026-10-01 (+10d) | 2026-09-22 → 2026-10-02 (+10d) |  |  | 94d → 86d |  |
| 259 | **LUMINARIAS** | 2026-10-27 → 2026-11-06 (+10d) | 2026-10-29 → 2026-11-10 (+12d) |  |  | 66d → 58d |  |
| 260 | Roseta de cerámica para luminaria | 2026-10-27 → 2026-11-06 (+10d) | 2026-10-29 → 2026-11-10 (+12d) |  |  | 66d → 58d |  |
| 261 | Spot Brighton | 2026-10-27 → 2026-11-06 (+10d) | 2026-10-29 → 2026-11-10 (+12d) |  |  | 66d → 58d |  |
| 262 | Arbotante bidireccional 12W | 2026-10-27 → 2026-11-06 (+10d) | 2026-10-28 → 2026-11-09 (+12d) |  |  | 67d → 59d |  |
| 263 | **TERCER LIMPIEZA DE OBRA** | 2026-12-11 → 2026-12-23 (+12d) | 2026-12-22 → 2027-01-07 (+16d) |  |  | 35d → 27d |  |
| 264 | Limpieza fina para entrega | 2026-12-11 → 2026-12-23 (+12d) | 2026-12-17 → 2027-01-02 (+16d) |  |  | 35d → 27d |  |
| 265 | Tercera limpieza de obra | 2026-12-14 → 2026-12-28 (+14d) | 2026-12-18 → 2027-01-04 (+17d) |  |  | 35d → 27d |  |
| 266 | Tercera carga y acarreo de escombro | 2026-12-18 → 2027-01-04 (+17d) | 2026-12-22 → 2027-01-07 (+16d) |  |  | 35d → 27d |  |
| 267 | **OBRA EXTERIOR - BARDA** | 2026-10-02 → 2026-10-14 (+12d) | 2026-10-24 → 2026-11-05 (+12d) |  |  | 72d → 64d |  |
| 268 | Barda de block aparente | 2026-10-02 → 2026-10-14 (+12d) | 2026-10-24 → 2026-11-05 (+12d) |  |  | 72d → 64d |  |
| 269 | **LOTE 02 M-661 CORSAC-B** |  | 2027-01-15 → 2027-01-25 (+10d) | 187d → 195d | 6% → 10% | 20d → 13d |  |
| 270 | **HITOS IMPORTANTES DEL LOTE** |  | 2027-01-15 → 2027-01-25 (+10d) | 187d → 195d |  | 20d → 13d |  |
| 272 | Colado de Losa de Cimentación | 2026-06-16 A → 2026-06-30 A (+14d) | 2026-06-16 A → 2026-06-30 A (+14d) |  |  |  |  |
| 273 | Colado de Losa de Entrepiso | 2026-07-29 → 2026-08-07 (+9d) | 2026-07-29 → 2026-08-07 (+9d) |  |  | 151d → 144d |  |
| 274 | Colado de Losa de Azotea | 2026-09-03 → 2026-09-14 (+11d) | 2026-09-03 → 2026-09-14 (+11d) |  |  | 121d → 114d |  |
| 275 | Entrega de vivienda | 2027-01-15 → 2027-01-25 (+10d) | 2027-01-15 → 2027-01-25 (+10d) |  |  | 20d → 13d |  |
| 281 | **CIMENTACION** | 2026-05-26 A → 2026-06-02 A (+7d) | 2026-06-17 A → 2026-07-01 A (+14d) | 18d → 24d |  |  |  |
| 282 | Cimbra perimetral losa de cimentación | 2026-05-26 A → 2026-06-02 A (+7d) | 2026-05-29 A → 2026-06-05 A (+7d) |  |  |  | 279, 280 → 279FS+5d, 280 |
| 283 | Sistema antitermitas PVC | 2026-05-26 A → 2026-06-02 A (+7d) | 2026-05-29 A → 2026-06-05 A (+7d) |  |  |  | 279, 280 → 279FS+5d, 280 |
| 284 | Hule negro en cimentación | 2026-05-29 A → 2026-06-05 A (+7d) | 2026-06-01 A → 2026-06-06 A (+5d) |  |  |  |  |
| 285 | Ramaleo poliducto eléctrico cimentación | 2026-06-01 A → 2026-06-06 A (+5d) | 2026-06-03 A → 2026-06-09 A (+6d) |  |  |  |  |
| 286 | Ramaleo eléctrico base-medición a centro de carga | 2026-06-01 A → 2026-06-06 A (+5d) | 2026-06-02 A → 2026-06-08 A (+6d) |  |  |  |  |
| 287 | Ramaleo eléctrico exterior | 2026-06-03 A → 2026-06-09 A (+6d) | 2026-06-04 A → 2026-06-10 A (+6d) |  |  |  |  |
| 288 | Ramaleo para cable poliducto 3/4 | 2026-06-03 A → 2026-06-09 A (+6d) | 2026-06-04 A → 2026-06-10 A (+6d) |  |  |  |  |
| 289 | Ramaleo para TV poliducto 3/4 | 2026-06-03 A → 2026-06-09 A (+6d) | 2026-06-04 A → 2026-06-10 A (+6d) |  |  |  |  |
| 290 | Ramaleo hidráulico CPVC 1-1/4" cimentación | 2026-06-01 A → 2026-06-06 A (+5d) | 2026-06-02 A → 2026-06-08 A (+6d) |  |  |  |  |
| 291 | Ramaleo hidráulico CPVC 1 cimentación | 2026-06-01 A → 2026-06-06 A (+5d) | 2026-06-02 A → 2026-06-08 A (+6d) |  |  |  |  |
| 292 | Ramaleo hidráulico CPVC 3/4 cimentación | 2026-06-02 A → 2026-06-08 A (+6d) | 2026-06-04 A → 2026-06-10 A (+6d) |  |  |  |  |
| 293 | Ramaleo hidráulico CPVC 1/2 cimentación | 2026-06-04 A → 2026-06-10 A (+6d) | 2026-06-06 A → 2026-06-12 A (+6d) |  |  |  |  |
| 294 | Prueba hidráulica | 2026-06-06 A → 2026-06-12 A (+6d) | 2026-06-08 A → 2026-06-13 A (+5d) |  |  |  |  |
| 295 | Ramaleo sanitario PVC 4 cimentación | 2026-06-02 A → 2026-06-08 A (+6d) | 2026-06-04 A → 2026-06-10 A (+6d) |  |  |  |  |
| 296 | Ramaleo sanitario PVC 2 cimentación | 2026-06-04 A → 2026-06-10 A (+6d) | 2026-06-05 A → 2026-06-11 A (+6d) |  |  |  |  |
| 297 | Prueba sanitaria | 2026-06-05 A → 2026-06-11 A (+6d) | 2026-06-06 A → 2026-06-12 A (+6d) |  |  |  |  |
| 298 | Acero contratrabe CT-1 | 2026-06-05 A → 2026-06-11 A (+6d) | 2026-06-10 A → 2026-06-22 A (+12d) | 4d → 8d |  |  |  |
| 299 | Acero contratrabe CT-2 | 2026-06-05 A → 2026-06-11 A (+6d) | 2026-06-10 A → 2026-06-22 A (+12d) | 4d → 8d |  |  |  |
| 300 | Malla electrosoldada 6-6/8-8 | 2026-06-12 A → 2026-06-24 A (+12d) | 2026-06-15 A → 2026-06-26 A (+11d) |  |  |  |  |
| 301 | Bastón de refuerzo LS | 2026-06-10 A → 2026-06-22 A (+12d) | 2026-06-12 A → 2026-06-24 A (+12d) |  |  |  |  |
| 302 | Bastón de refuerzo LI | 2026-06-10 A → 2026-06-22 A (+12d) | 2026-06-12 A → 2026-06-24 A (+12d) |  |  |  |  |
| 303 | Colado losa de cimentación f’c=200 | 2026-06-15 A → 2026-06-29 A (+14d) | 2026-06-16 A → 2026-06-30 A (+14d) |  |  |  | 282, 284, 287, 288, 289, 294, 297, 298, 299, 300, 301, 302, 305, 306 → 282, 284, 287, 288, 289, 294, 297, 298, 299, 300FS+2d, 301, 302, 305, 306 |
| 304 | Curado de concreto | 2026-06-16 A → 2026-06-30 A (+14d) | 2026-06-17 A → 2026-07-01 A (+14d) |  |  |  |  |
| 305 | Acero zapata ZT-1 | 2026-06-10 A → 2026-06-22 A (+12d) | 2026-06-15 A → 2026-06-26 A (+11d) |  |  |  |  |
| 306 | Acero zapata ZT-2 | 2026-06-10 A → 2026-06-22 A (+12d) | 2026-06-15 A → 2026-06-26 A (+11d) |  |  |  |  |
| 307 | **MUROS, PLANTA BAJA. CASTILLOS Y CERRAMIENTOS** | 2026-06-11 A → 2026-06-23 A (+12d) | 2026-07-10 → 2026-07-21 (+11d) | 24d → 23d | 10% → 56% | 165d → 158d |  |
| 308 | Anclaje de castillos y Columnas PB | 2026-06-11 A → 2026-06-23 A (+12d) | 2026-06-17 A → 2026-06-29 A (+12d) |  |  |  |  |
| 309 | Castillo K1 | 2026-06-19 A → 2026-07-01 A (+12d) | 2026-06-25 → 2026-07-07 A (+12d) | 4d → 5d | 44% → 100% | 170d → none | 304FS+2d, 308 → 304, 308 |
| 310 | Castillo K3 | 2026-06-23 → 2026-07-06 A (+13d) | 2026-06-26 → 2026-07-09 A (+13d) | 3d → 4d | 0% → 100% | 170d → none |  |
| 311 | Castillo K4 | 2026-06-23 → 2026-07-06 A (+13d) | 2026-06-26 → 2026-07-09 A (+13d) | 3d → 4d | 0% → 100% | 170d → none |  |
| 312 | Castillo K5 | 2026-06-25 → 2026-07-09 A (+14d) | 2026-06-29 → 2026-07-13 (+14d) |  | 0% → 88% | 170d → 1.62d |  |
| 313 | Refuerzo de muro K6 | 2026-06-26 → 2026-07-10 A (+14d) | 2026-06-30 → 2026-07-14 (+14d) |  | 0% → 54% | 170d → 160d |  |
| 314 | Dala de cerramiento CR-1 | 2026-06-26 → 2026-07-10 A (+14d) | 2026-07-01 → 2026-07-15 (+14d) |  | 0% → 41% | 173d → 163d |  |
| 315 | Dala de cerramiento CR-2 | 2026-06-26 → 2026-07-10 A (+14d) | 2026-06-30 → 2026-07-14 (+14d) |  | 0% → 54% | 174d → 164d |  |
| 316 | Cadena block dala | 2026-06-30 → 2026-07-14 (+14d) | 2026-07-04 → 2026-07-18 (+14d) |  |  | 170d → 160d |  |
| 317 | Muro de ladrillo aparente | 2026-06-23 → 2026-07-03 A (+10d) | 2026-07-10 → 2026-07-18 (+8d) | 15d → 12d | 0% → 55% | 20d → 15d | 304FS+4d → 304FS+2d |
| 318 | Muro de block planta baja | 2026-06-24 → 2026-07-08 A (+14d) | 2026-07-09 → 2026-07-21 (+12d) | 13d → 11d | 0% → 33% | 21d → 13d |  |
| 319 | Ramaleo electrico en Muros Planta Baja | 2026-06-29 → 2026-07-10 A (+11d) | 2026-07-03 → 2026-07-15 (+12d) |  | 0% → 41% | 23d → 15d |  |
| 320 | Ramaleo para cable poliducto 3/4 | 2026-07-03 → 2026-07-15 (+12d) | 2026-07-06 → 2026-07-17 (+11d) |  |  | 23d → 15d |  |
| 321 | Ramaleo para TV poliducto 3/4 | 2026-07-07 → 2026-07-17 (+10d) | 2026-07-09 → 2026-07-21 (+12d) |  |  | 23d → 15d |  |
| 322 | **ESCALERA** | 2026-07-29 → 2026-08-07 (+9d) | 2026-08-10 → 2026-08-20 (+10d) |  |  | 97d → 90d |  |
| 323 | Escalera de concreto armado | 2026-07-29 → 2026-08-07 (+9d) | 2026-08-10 → 2026-08-20 (+10d) |  |  | 97d → 90d |  |
| 324 | **LOSA DE ENTREPISO (viegueta y caseton)** | 2026-07-09 → 2026-07-18 (+9d) | 2026-07-30 → 2026-08-08 (+9d) |  |  | 23d → 16d |  |
| 325 | Dala de coronamiento 10cm | 2026-07-17 → 2026-07-28 (+11d) | 2026-07-21 → 2026-07-31 (+10d) |  |  | 23d → 16d |  |
| 326 | Dala de coronamiento 12cm | 2026-07-18 → 2026-07-29 (+11d) | 2026-07-22 → 2026-08-01 (+10d) |  |  | 22d → 15d |  |
| 327 | Trabe TR-1 | 2026-07-09 → 2026-07-18 (+9d) | 2026-07-13 → 2026-07-22 (+9d) |  |  | 24d → 17d |  |
| 328 | Trabe TR-2 | 2026-07-10 → 2026-07-20 (+10d) | 2026-07-15 → 2026-07-24 (+9d) |  |  | 22d → 15d |  |
| 329 | Nervadura NR-1 | 2026-07-11 → 2026-07-21 (+10d) | 2026-07-16 → 2026-07-27 (+11d) |  |  | 21d → 14d |  |
| 330 | Nervadura NR-2 | 2026-07-13 → 2026-07-22 (+9d) | 2026-07-17 → 2026-07-28 (+11d) |  |  | 20d → 13d |  |
| 331 | Nervadura NR-3 | 2026-07-13 → 2026-07-22 (+9d) | 2026-07-17 → 2026-07-28 (+11d) |  |  | 20d → 13d |  |
| 332 | Nervadura NR-4 | 2026-07-13 → 2026-07-22 (+9d) | 2026-07-17 → 2026-07-28 (+11d) |  |  | 20d → 13d |  |

| ID | Task | Start | Finish | Total float |
| --- | --- | --- | --- | --- |
| 333 | Acero de refuerzo en nervios #3 | 2026-07-17 → 2026-07-28 (+11d) | 2026-07-20 → 2026-07-30 (+10d) | 20d → 13d |
| 334 | Acero de refuerzo long. #3 | 2026-07-18 → 2026-07-29 (+11d) | 2026-07-22 → 2026-08-01 (+10d) | 21d → 14d |
| 335 | Acero de refuerzo long. #4 | 2026-07-18 → 2026-07-29 (+11d) | 2026-07-22 → 2026-08-01 (+10d) | 21d → 14d |
| 336 | Malla 66-10/10 losa de compresión | 2026-07-24 → 2026-08-04 (+11d) | 2026-07-28 → 2026-08-06 (+9d) | 20d → 13d |
| 337 | Acero de Losa Maciza | 2026-07-17 → 2026-07-28 (+11d) | 2026-07-21 → 2026-07-31 (+10d) | 25d → 18d |
| 338 | Caseton de 60x60x20cm | 2026-07-17 → 2026-07-28 (+11d) | 2026-07-20 → 2026-07-30 (+10d) | 24d → 17d |
| 339 | Concreto losa de entrepiso f’c=200 | 2026-07-28 → 2026-08-06 (+9d) | 2026-07-29 → 2026-08-07 (+9d) | 20d → 13d |
| 340 | Curado de concreto | 2026-07-29 → 2026-08-07 (+9d) | 2026-07-30 → 2026-08-08 (+9d) | 20d → 13d |
| 341 | Cimbra losa de azotea | 2026-07-13 → 2026-07-22 (+9d) | 2026-07-18 → 2026-07-29 (+11d) | 21d → 14d |
| 342 | Cimbra exterior corta losa | 2026-07-21 → 2026-07-31 (+10d) | 2026-07-24 → 2026-08-04 (+11d) | 22d → 15d |
| 343 | Ramaleo poliducto eléctrico entrepiso | 2026-07-20 → 2026-07-30 (+10d) | 2026-07-22 → 2026-08-01 (+10d) | 156d → 149d |
| 344 | Ramaleo hidráulico CPVC 3/4" | 2026-07-21 → 2026-07-31 (+10d) | 2026-07-23 → 2026-08-03 (+11d) | 20d → 13d |
| 345 | Ramaleo hidráulico CPVC 1/2" | 2026-07-23 → 2026-08-03 (+11d) | 2026-07-24 → 2026-08-04 (+11d) | 20d → 13d |
| 346 | Prueba hidráulica | 2026-07-23 → 2026-08-03 (+11d) | 2026-07-24 → 2026-08-04 (+11d) | 20d → 13d |
| 347 | Ramaleo sanitario PVC 4" | 2026-07-21 → 2026-07-31 (+10d) | 2026-07-23 → 2026-08-03 (+11d) | 20d → 13d |
| 348 | Ramaleo sanitario PVC 2" | 2026-07-23 → 2026-08-03 (+11d) | 2026-07-24 → 2026-08-04 (+11d) | 20d → 13d |
| 349 | Prueba sanitaria | 2026-07-23 → 2026-08-03 (+11d) | 2026-07-24 → 2026-08-04 (+11d) | 20d → 13d |
| 350 | **MUROS EN PLANTA ALTA, CASTILLOS Y CERRM.** | 2026-07-21 → 2026-07-31 (+10d) | 2026-08-18 → 2026-08-27 (+9d) | 21d → 14d |
| 351 | Anclaje de castillos y Columnas PA | 2026-07-21 → 2026-07-31 (+10d) | 2026-07-27 → 2026-08-05 (+9d) | 21d → 14d |
| 352 | Castillo K1 | 2026-07-30 → 2026-08-08 (+9d) | 2026-08-04 → 2026-08-13 (+9d) | 24d → 17d |
| 353 | Castillo K2 | 2026-07-31 → 2026-08-10 (+10d) | 2026-08-05 → 2026-08-14 (+9d) | 23d → 16d |
| 354 | Castillo K4 | 2026-08-04 → 2026-08-13 (+9d) | 2026-08-07 → 2026-08-18 (+11d) | 24d → 17d |
| 355 | Castillo K5 | 2026-08-04 → 2026-08-13 (+9d) | 2026-08-07 → 2026-08-18 (+11d) | 24d → 17d |
| 356 | Castillo K6 | 2026-08-04 → 2026-08-13 (+9d) | 2026-08-07 → 2026-08-18 (+11d) | 24d → 17d |
| 357 | Refuerzo de muro | 2026-08-05 → 2026-08-14 (+9d) | 2026-08-08 → 2026-08-19 (+11d) | 23d → 16d |
| 358 | Dala de cerramiento CR-1 | 2026-08-08 → 2026-08-19 (+11d) | 2026-08-13 → 2026-08-24 (+11d) | 23d → 16d |
| 359 | Dala de cerramiento CR-2 | 2026-08-08 → 2026-08-19 (+11d) | 2026-08-13 → 2026-08-24 (+11d) | 23d → 16d |
| 360 | Cadena block dala | 2026-08-13 → 2026-08-24 (+11d) | 2026-08-18 → 2026-08-27 (+9d) | 23d → 16d |
| 361 | Muro de ladrillo aparente | 2026-07-30 → 2026-08-08 (+9d) | 2026-08-18 → 2026-08-27 (+9d) | 20d → 13d |
| 362 | Muro de block planta alta | 2026-07-31 → 2026-08-10 (+10d) | 2026-08-18 → 2026-08-27 (+9d) | 20d → 13d |
| 363 | Ramaleo electrico en Muros Planta Alta | 2026-08-08 → 2026-08-19 (+11d) | 2026-08-13 → 2026-08-24 (+11d) | 31d → 24d |
| 364 | **LOSA AZOTEA** | 2026-08-18 → 2026-08-27 (+9d) | 2026-09-04 → 2026-09-15 (+11d) | 20d → 13d |
| 365 | Cortalosa CL-1 | 2026-09-01 → 2026-09-10 (+9d) | 2026-09-02 → 2026-09-12 (+10d) | 20d → 13d |
| 366 | Cortalosa CL-2 | 2026-09-01 → 2026-09-10 (+9d) | 2026-09-02 → 2026-09-12 (+10d) | 20d → 13d |
| 367 | Vigueta pretensada V11-30 125 | 2026-08-18 → 2026-08-27 (+9d) | 2026-08-24 → 2026-09-02 (+9d) | 23d → 16d |
| 368 | Vigueta pretensada V11-30 185 | 2026-08-18 → 2026-08-27 (+9d) | 2026-08-24 → 2026-09-02 (+9d) | 23d → 16d |
| 369 | Vigueta pretensada V11-30 190 | 2026-08-18 → 2026-08-27 (+9d) | 2026-08-24 → 2026-09-02 (+9d) | 23d → 16d |
| 370 | Vigueta pretensada V11-30 205 | 2026-08-20 → 2026-08-31 (+11d) | 2026-08-26 → 2026-09-04 (+9d) | 21d → 14d |
| 371 | Vigueta pretensada V11-30 215 | 2026-08-20 → 2026-08-31 (+11d) | 2026-08-26 → 2026-09-04 (+9d) | 21d → 14d |
| 372 | Vigueta pretensada V11-30 260 | 2026-08-21 → 2026-09-01 (+11d) | 2026-08-27 → 2026-09-07 (+11d) | 20d → 13d |
| 373 | Vigueta pretensada V11-30 285 | 2026-08-21 → 2026-09-01 (+11d) | 2026-08-27 → 2026-09-07 (+11d) | 20d → 13d |
| 374 | Vigueta pretensada V11-40 330 | 2026-08-21 → 2026-09-01 (+11d) | 2026-08-27 → 2026-09-07 (+11d) | 20d → 13d |
| 375 | Vigueta pretensada V11-40 335 | 2026-08-21 → 2026-09-01 (+11d) | 2026-08-27 → 2026-09-07 (+11d) | 20d → 13d |
| 376 | Vigueta pretensada V11-40 505 | 2026-08-21 → 2026-09-01 (+11d) | 2026-08-27 → 2026-09-07 (+11d) | 20d → 13d |
| 377 | Bovedilla poliestireno azotea | 2026-08-27 → 2026-09-07 (+11d) | 2026-08-31 → 2026-09-10 (+10d) | 20d → 13d |
| 378 | Malla 66-10/10 losa de compresión | 2026-09-01 → 2026-09-10 (+9d) | 2026-09-02 → 2026-09-12 (+10d) | 20d → 13d |
| 379 | Concreto losa de azotea f’c=200 | 2026-09-03 → 2026-09-12 (+9d) | 2026-09-03 → 2026-09-14 (+11d) | 20d → 13d |
| 380 | Curado de concreto | 2026-09-04 → 2026-09-14 (+10d) | 2026-09-04 → 2026-09-15 (+11d) | 20d → 13d |
| 381 | Cimbra losa de azotea | 2026-08-18 → 2026-08-27 (+9d) | 2026-08-24 → 2026-09-02 (+9d) | 28d → 21d |
| 382 | Ramaleo de poliducto para inst. electrica en azotea | 2026-09-01 → 2026-09-10 (+9d) | 2026-09-02 → 2026-09-12 (+10d) | 20d → 13d |
| 383 | **PRETIL Y ACABADOS DE AZOTEA** | 2026-09-05 → 2026-09-15 (+10d) | 2026-09-30 → 2026-10-09 (+9d) | 20d → 13d |
| 384 | Castillo K1 | 2026-09-08 → 2026-09-18 (+10d) | 2026-09-14 → 2026-09-25 (+11d) | 20d → 13d |
| 385 | Dala de cerramiento en pretil | 2026-09-11 → 2026-09-23 (+12d) | 2026-09-17 → 2026-09-28 (+11d) | 20d → 13d |
| 386 | Muro de block 12x15x40 | 2026-09-05 → 2026-09-15 (+10d) | 2026-09-11 → 2026-09-23 (+12d) | 20d → 13d |
| 387 | Chaflán en azotea | 2026-09-14 → 2026-09-25 (+11d) | 2026-09-21 → 2026-09-30 (+9d) | 20d → 13d |
| 388 | Diamante de entortado | 2026-09-14 → 2026-09-25 (+11d) | 2026-09-21 → 2026-09-30 (+9d) | 20d → 13d |
| 389 | Aplanado exterior Mortermax fino | 2026-09-17 → 2026-09-28 (+11d) | 2026-09-24 → 2026-10-03 (+9d) | 20d → 13d |
| 390 | Entortado de Losa | 2026-09-25 → 2026-10-05 (+10d) | 2026-09-30 → 2026-10-09 (+9d) | 20d → 13d |
| 391 | Curado de concreto | 2026-09-24 → 2026-10-03 (+9d) | 2026-09-25 → 2026-10-05 (+10d) | 20d → 13d |
| 392 | **PRIMERA LIMPIEZA DE OBRA** | 2026-09-05 → 2026-09-15 (+10d) | 2026-09-10 → 2026-09-22 (+12d) | 77d → 70d |
| 393 | Primera limpieza de obra | 2026-09-05 → 2026-09-15 (+10d) | 2026-09-08 → 2026-09-18 (+10d) | 77d → 70d |
| 394 | Primera carga y acarreo de escombro | 2026-09-08 → 2026-09-18 (+10d) | 2026-09-10 → 2026-09-22 (+12d) | 77d → 70d |
| 395 | **IMPERMEABILIZACION** | 2026-09-30 → 2026-10-09 (+9d) | 2026-10-06 → 2026-10-16 (+10d) | 20d → 13d |
| 396 | Impermeabilización de pretil Kover 5 años | 2026-09-30 → 2026-10-09 (+9d) | 2026-10-05 → 2026-10-15 (+10d) | 21d → 14d |
| 397 | Impermeabilización de losa Kover 5 años | 2026-09-30 → 2026-10-09 (+9d) | 2026-10-06 → 2026-10-16 (+10d) | 20d → 13d |
| 398 | **ALBAÑILERIA** | 2026-09-11 → 2026-09-23 (+12d) | 2026-11-30 → 2026-12-10 (+10d) | 39d → 32d |
| 399 | Lavadero de granito | 2026-10-27 → 2026-11-05 (+9d) | 2026-10-30 → 2026-11-10 (+11d) | 76d → 69d |
| 400 | Ranurado y resane general inst. en muros | 2026-10-03 → 2026-10-14 (+11d) | 2026-10-07 → 2026-10-17 (+10d) | 22d → 15d |
| 401 | Ranurado y resane eléctrico 1/2 a 3/4 | 2026-10-03 → 2026-10-14 (+11d) | 2026-10-07 → 2026-10-17 (+10d) | 22d → 15d |
| 402 | Ranurado y resane hidráulico 1/2 a 1 | 2026-10-06 → 2026-10-16 (+10d) | 2026-10-08 → 2026-10-19 (+11d) | 21d → 14d |

| ID | Task | Start | Finish | Total float |
| --- | --- | --- | --- | --- |
| 403 | Resane sanitario tubería 2 | 2026-10-06 → 2026-10-16 (+10d) | 2026-10-08 → 2026-10-19 (+11d) | 21d → 14d |
| 404 | Resane sanitario tubería 4 | 2026-10-06 → 2026-10-16 (+10d) | 2026-10-08 → 2026-10-19 (+11d) | 21d → 14d |
| 405 | Resane minisplit tubería 3 | 2026-10-06 → 2026-10-16 (+10d) | 2026-10-08 → 2026-10-19 (+11d) | 21d → 14d |
| 406 | Ramaleo hidráulico exterior CPVC 1 1/4 | 2026-10-06 → 2026-10-16 (+10d) | 2026-10-09 → 2026-10-20 (+11d) | 20d → 13d |
| 407 | Ramaleo hidráulico exterior CPVC 1 | 2026-10-06 → 2026-10-16 (+10d) | 2026-10-08 → 2026-10-19 (+11d) | 20d → 13d |
| 408 | Ramaleo hidráulico exterior CPVC 3/4 | 2026-10-08 → 2026-10-19 (+11d) | 2026-10-12 → 2026-10-21 (+9d) | 20d → 13d |
| 409 | Ramaleo hidráulico exterior CPVC 1/2 | 2026-10-08 → 2026-10-19 (+11d) | 2026-10-12 → 2026-10-21 (+9d) | 20d → 13d |
| 410 | Prueba hidráulica | 2026-10-12 → 2026-10-21 (+9d) | 2026-10-13 → 2026-10-22 (+9d) | 20d → 13d |
| 411 | Ramaleo sanitario exterior PVC 4 | 2026-10-06 → 2026-10-16 (+10d) | 2026-10-12 → 2026-10-21 (+9d) | 20d → 13d |
| 412 | Ramaleo sanitario exterior PVC 2 | 2026-10-07 → 2026-10-17 (+10d) | 2026-10-12 → 2026-10-21 (+9d) | 20d → 13d |
| 413 | Prueba sanitaria | 2026-10-12 → 2026-10-21 (+9d) | 2026-10-13 → 2026-10-22 (+9d) | 20d → 13d |
| 414 | Centro de carga muros PB | 2026-10-09 → 2026-10-20 (+11d) | 2026-10-15 → 2026-10-24 (+9d) | 22d → 15d |
| 415 | Firme de concreto 8 cm | 2026-10-13 → 2026-10-22 (+9d) | 2026-10-17 → 2026-10-27 (+10d) | 70d → 63d |
| 416 | Curado de concreto | 2026-10-17 → 2026-10-28 (+11d) | 2026-10-19 → 2026-10-28 (+9d) | 70d → 63d |
| 417 | Cisterna 2800 L con instalación | 2026-09-11 → 2026-09-23 (+12d) | 2026-10-05 → 2026-10-15 (+10d) | 76d → 69d |
| 418 | Banqueta y huellas de concreto | 2026-10-20 → 2026-10-30 (+10d) | 2026-10-29 → 2026-11-09 (+11d) | 53d → 46d |
| 419 | Curado de concreto | 2026-10-30 → 2026-11-09 (+10d) | 2026-10-30 → 2026-11-10 (+11d) | 53d → 46d |
| 420 | Número oficial | 2026-11-28 → 2026-12-09 (+11d) | 2026-11-30 → 2026-12-10 (+10d) | 53d → 46d |
| 421 | Detallado de rodapié exterior | 2026-10-15 → 2026-10-26 (+11d) | 2026-10-20 → 2026-10-29 (+9d) | 85d → 78d |
| 422 | Detalle de losas y volados acabado fino | 2026-10-06 → 2026-10-16 (+10d) | 2026-10-12 → 2026-10-21 (+9d) | 24d → 17d |
| 423 | Detalle fino en muros interiores | 2026-10-08 → 2026-10-19 (+11d) | 2026-10-15 → 2026-10-24 (+9d) | 21d → 14d |
| 424 | Jardín interior bajo escalera con pozo de absorción | 2026-10-06 → 2026-10-16 (+10d) | 2026-10-21 → 2026-10-30 (+9d) | 24d → 17d |
| 425 | **ACABADOS EN FACHADA A** | 2026-09-30 → 2026-10-09 (+9d) | 2026-11-28 → 2026-12-09 (+11d) | 53d → 46d |
| 426 | Aplanado grueso fachada | 2026-09-30 → 2026-10-09 (+9d) | 2026-10-15 → 2026-10-24 (+9d) | 59d → 52d |
| 427 | Aplanado fino estuco fachada | 2026-10-08 → 2026-10-19 (+11d) | 2026-10-21 → 2026-10-30 (+9d) | 59d → 52d |
| 428 | Pintura acrílica 1-0102P | 2026-11-17 → 2026-11-26 (+9d) | 2026-11-26 → 2026-12-07 (+11d) | 55d → 48d |
| 429 | Pintura acrílica 1-1404D | 2026-11-17 → 2026-11-26 (+9d) | 2026-11-28 → 2026-12-09 (+11d) | 53d → 46d |
| 430 | Cantera 40x60cm | 2026-10-21 → 2026-10-31 (+10d) | 2026-11-07 → 2026-11-19 (+12d) | 59d → 52d |
| 431 | Lambrin de permabase 1 cara | 2026-10-15 → 2026-10-26 (+11d) | 2026-10-19 → 2026-10-28 (+9d) | 66d → 59d |
| 432 | Enchapado de Permabase | 2026-10-19 → 2026-10-29 (+10d) | 2026-10-23 → 2026-11-03 (+11d) | 66d → 59d |
| 433 | Cubierta de Permabase | 2026-10-23 → 2026-11-03 (+11d) | 2026-10-29 → 2026-11-09 (+11d) | 66d → 59d |
| 434 | **APLANADOS Y PINTURA** | 2026-10-06 → 2026-10-16 (+10d) | 2026-12-28 → 2027-01-08 (+11d) | 22d → 15d |
| 435 | Yeso pulido en muros | 2026-10-16 → 2026-10-27 (+11d) | 2026-11-03 → 2026-11-12 (+9d) | 20d → 13d |
| 436 | Aplanado en muros enjarre grueso | 2026-10-06 → 2026-10-16 (+10d) | 2026-10-13 → 2026-10-22 (+9d) | 23d → 16d |
| 437 | Pintura vinílica OR-W13 SHOELACE | 2026-12-09 → 2026-12-18 (+9d) | 2026-12-28 → 2027-01-08 (+11d) | 20d → 13d |
| 438 | Pintura vinílica PPUI5-13 Creamy M. | 2026-12-02 → 2026-12-12 (+10d) | 2026-12-15 → 2026-12-28 (+13d) | 28d → 21d |
| 439 | Pintura vinílica MD-06 Nano White | 2026-12-02 → 2026-12-12 (+10d) | 2026-12-12 → 2026-12-22 (+10d) | 30d → 23d |
| 440 | Yeso pulido en plafones | 2026-10-06 → 2026-10-16 (+10d) | 2026-10-19 → 2026-10-28 (+9d) | 22d → 15d |
| 441 | Perfilado de puertas y ventanas | 2026-10-21 → 2026-10-31 (+10d) | 2026-10-26 → 2026-11-05 (+10d) | 80d → 73d |
| 442 | **PISOS Y AZULEJOS** | 2026-10-28 → 2026-11-06 (+9d) | 2026-11-27 → 2026-12-08 (+11d) | 20d → 13d |
| 443 | **AREA SOCIAL** | 2026-10-31 → 2026-11-10 (+10d) | 2026-11-20 → 2026-11-30 (+10d) | 20d → 13d |
| 444 | Piso Adhara 44X89 | 2026-10-31 → 2026-11-10 (+10d) | 2026-11-19 → 2026-11-28 (+9d) | 20d → 13d |
| 445 | Zoclo Adhara 44X89 | 2026-11-12 → 2026-11-24 (+12d) | 2026-11-20 → 2026-11-30 (+10d) | 37d → 30d |
| 446 | **RECAMARAS** | 2026-10-28 → 2026-11-06 (+9d) | 2026-11-06 → 2026-11-18 (+12d) | 20d → 13d |
| 447 | Acabado aparente de pisos - pulido | 2026-10-28 → 2026-11-06 (+9d) | 2026-11-06 → 2026-11-18 (+12d) | 20d → 13d |
| 448 | **BAÑOS** | 2026-10-29 → 2026-11-07 (+9d) | 2026-11-20 → 2026-11-30 (+10d) | 31d → 24d |
| 449 | Azulejo Mod. Ornamenta 60x30 | 2026-11-06 → 2026-11-18 (+12d) | 2026-11-12 → 2026-11-24 (+12d) | 31d → 24d |
| 450 | Impermeabilización en regadera | 2026-11-05 → 2026-11-17 (+12d) | 2026-11-07 → 2026-11-19 (+12d) | 31d → 24d |
| 451 | Piso Mod. Valparaiso 20x20 | 2026-11-12 → 2026-11-24 (+12d) | 2026-11-19 → 2026-11-28 (+9d) | 31d → 24d |
| 452 | Zoclo Adhara 44X89 | 2026-11-18 → 2026-11-27 (+9d) | 2026-11-20 → 2026-11-30 (+10d) | 61d → 54d |
| 453 | Piso Adhara 44X89 | 2026-11-12 → 2026-11-24 (+12d) | 2026-11-18 → 2026-11-27 (+9d) | 63d → 56d |
| 454 | Fabricacion de nicho decorativo en baños | 2026-10-29 → 2026-11-07 (+9d) | 2026-11-05 → 2026-11-17 (+12d) | 31d → 24d |
| 455 | Sardinel en regadera | 2026-11-12 → 2026-11-24 (+12d) | 2026-11-19 → 2026-11-28 (+9d) | 62d → 55d |
| 456 | **ESCALERA** | 2026-11-17 → 2026-11-26 (+9d) | 2026-11-27 → 2026-12-08 (+11d) | 20d → 13d |
| 457 | Piso Adhara 44X89 | 2026-11-17 → 2026-11-26 (+9d) | 2026-11-25 → 2026-12-04 (+9d) | 20d → 13d |
| 458 | Zoclo Adhara 44X89 | 2026-11-23 → 2026-12-02 (+9d) | 2026-11-27 → 2026-12-08 (+11d) | 20d → 13d |
| 459 | **EXTERIOR** | 2026-10-13 → 2026-10-22 (+9d) | 2026-10-16 → 2026-10-26 (+10d) | 25d → 18d |
| 460 | Rastrilleo, afine y nivelado de tierra | 2026-10-13 → 2026-10-22 (+9d) | 2026-10-16 → 2026-10-26 (+10d) | 25d → 18d |
| 461 | **SEGUNDA LIMPIEZA DE OBRA** | 2026-11-27 → 2026-12-08 (+11d) | 2026-12-02 → 2026-12-12 (+10d) | 44d → 37d |
| 462 | Segunda limpieza de obra | 2026-11-27 → 2026-12-08 (+11d) | 2026-11-30 → 2026-12-10 (+10d) | 44d → 37d |
| 463 | Segunda carga y acarreo de escombro | 2026-11-30 → 2026-12-10 (+10d) | 2026-12-02 → 2026-12-12 (+10d) | 44d → 37d |
| 464 | **CANCELERIA PUERTAS Y VENTANAS DE ALUMINIO** | 2026-11-17 → 2026-11-26 (+9d) | 2026-12-08 → 2026-12-17 (+9d) | 21d → 14d |
| 465 | Fijo medidas 0.30x4.90m | 2026-11-19 → 2026-11-28 (+9d) | 2026-11-27 → 2026-12-08 (+11d) | 29d → 22d |
| 466 | Ventana Corrediza 1.80x1.60m | 2026-11-17 → 2026-11-26 (+9d) | 2026-11-21 → 2026-12-01 (+10d) | 34d → 27d |
| 467 | Ventana Corrediza 0.60x0.40m | 2026-11-19 → 2026-11-28 (+9d) | 2026-11-24 → 2026-12-03 (+9d) | 32d → 25d |
| 468 | Ventana Corrediza 1.54x0.50m | 2026-11-19 → 2026-11-28 (+9d) | 2026-11-24 → 2026-12-03 (+9d) | 32d → 25d |
| 469 | Fijo medidas 1.40x2.50m | 2026-11-23 → 2026-12-02 (+9d) | 2026-11-27 → 2026-12-08 (+11d) | 23d → 16d |
| 470 | Ventana Corrediza 1.80x1.50m | 2026-11-25 → 2026-12-04 (+9d) | 2026-11-30 → 2026-12-10 (+10d) | 21d → 14d |
| 471 | Ventana Corrediza 1.40x1.60m | 2026-11-25 → 2026-12-04 (+9d) | 2026-11-30 → 2026-12-10 (+10d) | 21d → 14d |
| 472 | Ventana Corrediza 0.95x0.40m | 2026-11-25 → 2026-12-04 (+9d) | 2026-11-30 → 2026-12-10 (+10d) | 21d → 14d |

| ID | Task | Start | Finish | Total float |
| --- | --- | --- | --- | --- |
| 473 | Puerta corrediza 3.85x2.10m | 2026-11-27 → 2026-12-08 (+11d) | 2026-12-04 → 2026-12-15 (+11d) | 23d → 16d |
| 474 | Barandal de Cristal Templado | 2026-11-30 → 2026-12-10 (+10d) | 2026-12-08 → 2026-12-17 (+9d) | 21d → 14d |
| 475 | **CARPINTERIA, PUERTAS EXTERIORES E INTERIORES** | 2026-11-27 → 2026-12-08 (+11d) | 2026-12-09 → 2026-12-18 (+9d) | 20d → 13d |
| 476 | Puerta P-01 de seguridad | 2026-11-27 → 2026-12-08 (+11d) | 2026-12-03 → 2026-12-14 (+11d) | 24d → 17d |
| 477 | Puerta P-01 interior | 2026-11-27 → 2026-12-08 (+11d) | 2026-12-08 → 2026-12-17 (+9d) | 21d → 14d |
| 478 | Puerta P-02 interior | 2026-11-27 → 2026-12-08 (+11d) | 2026-12-08 → 2026-12-17 (+9d) | 21d → 14d |
| 479 | Puerta P-03 interior | 2026-12-03 → 2026-12-14 (+11d) | 2026-12-09 → 2026-12-18 (+9d) | 20d → 13d |
| 480 | Puerta P-04 interior | 2026-12-03 → 2026-12-14 (+11d) | 2026-12-09 → 2026-12-18 (+9d) | 20d → 13d |
| 481 | **VOLADOS, BARANDAL Y ESCALERA** | 2026-10-21 → 2026-10-31 (+10d) | 2026-12-02 → 2026-12-12 (+10d) | 28d → 21d |
| 482 | Barandal de Herreria en escalera | 2026-11-07 → 2026-11-19 (+12d) | 2026-11-12 → 2026-11-24 (+12d) | 43d → 36d |
| 483 | Escalera de herreria | 2026-10-21 → 2026-10-31 (+10d) | 2026-11-12 → 2026-11-24 (+12d) | 28d → 21d |
| 484 | Techumbre en acceso Principal | 2026-11-06 → 2026-11-18 (+12d) | 2026-11-25 → 2026-12-04 (+9d) | 34d → 27d |
| 485 | Techumbre en 1.80x0.50m | 2026-11-06 → 2026-11-18 (+12d) | 2026-11-17 → 2026-11-26 (+9d) | 28d → 21d |
| 486 | Techumbre en 1.40x0.50m | 2026-11-17 → 2026-11-26 (+9d) | 2026-11-25 → 2026-12-04 (+9d) | 28d → 21d |
| 487 | Imper con manto prefabricado | 2026-11-20 → 2026-11-30 (+10d) | 2026-11-26 → 2026-12-07 (+11d) | 28d → 21d |
| 488 | Plafon hoja tablaroca std | 2026-11-26 → 2026-12-07 (+11d) | 2026-12-02 → 2026-12-12 (+10d) | 28d → 21d |
| 489 | Acabado Woodstock en parte inf. Cubierta | 2026-11-26 → 2026-12-07 (+11d) | 2026-12-02 → 2026-12-12 (+10d) | 28d → 21d |
| 490 | **INSTALACION ELECTRICA** | 2026-10-29 → 2026-11-07 (+9d) | 2026-11-19 → 2026-11-28 (+9d) | 49d → 42d |
| 491 | Alimentación eléctrica base a centro de carga | 2026-11-03 → 2026-11-12 (+9d) | 2026-11-09 → 2026-11-20 (+11d) | 53d → 46d |
| 492 | Interruptor termomagnético 1x20 A | 2026-11-09 → 2026-11-20 (+11d) | 2026-11-10 → 2026-11-21 (+11d) | 53d → 46d |
| 493 | Interruptor termomagnético 2x20 A | 2026-11-09 → 2026-11-20 (+11d) | 2026-11-10 → 2026-11-21 (+11d) | 53d → 46d |
| 494 | Salida para apagador 3 vías | 2026-10-29 → 2026-11-07 (+9d) | 2026-11-03 → 2026-11-12 (+9d) | 49d → 42d |
| 495 | Salida para apagador doble | 2026-11-03 → 2026-11-12 (+9d) | 2026-11-06 → 2026-11-18 (+12d) | 51d → 44d |
| 496 | Salida para apagador sencillo | 2026-11-03 → 2026-11-12 (+9d) | 2026-11-06 → 2026-11-18 (+12d) | 51d → 44d |
| 497 | Salida de alumbrado en losa | 2026-11-03 → 2026-11-12 (+9d) | 2026-11-09 → 2026-11-20 (+11d) | 49d → 42d |
| 498 | Salida para contacto exterior doble | 2026-11-03 → 2026-11-12 (+9d) | 2026-11-05 → 2026-11-17 (+12d) | 52d → 45d |
| 499 | Salida para contacto 220 V | 2026-11-05 → 2026-11-17 (+12d) | 2026-11-09 → 2026-11-20 (+11d) | 49d → 42d |
| 500 | Salida para contacto doble | 2026-11-05 → 2026-11-17 (+12d) | 2026-11-11 → 2026-11-23 (+12d) | 52d → 45d |
| 501 | Salida para contacto doble área húmeda | 2026-11-09 → 2026-11-20 (+11d) | 2026-11-11 → 2026-11-23 (+12d) | 52d → 45d |
| 502 | Salida TV / telefonía / intercom | 2026-11-09 → 2026-11-20 (+11d) | 2026-11-13 → 2026-11-25 (+12d) | 50d → 43d |
| 503 | Extractor 4 baño | 2026-11-09 → 2026-11-20 (+11d) | 2026-11-17 → 2026-11-26 (+9d) | 49d → 42d |
| 504 | Prueba eléctrica | 2026-11-17 → 2026-11-26 (+9d) | 2026-11-19 → 2026-11-28 (+9d) | 49d → 42d |
| 505 | **INSTALACIÓN HIDRO-SANITARIA** | 2026-10-13 → 2026-10-22 (+9d) | 2026-10-26 → 2026-11-05 (+10d) | 20d → 13d |
| 506 | Tubería condensados PVC 1 | 2026-10-13 → 2026-10-22 (+9d) | 2026-10-19 → 2026-10-28 (+9d) | 20d → 13d |
| 507 | Tubería sanitaria PVC 4 | 2026-10-13 → 2026-10-22 (+9d) | 2026-10-19 → 2026-10-28 (+9d) | 28d → 21d |
| 508 | Coladera H-444 | 2026-10-19 → 2026-10-29 (+10d) | 2026-10-20 → 2026-10-29 (+9d) | 28d → 21d |
| 509 | Caja PVC para lavadora | 2026-10-13 → 2026-10-22 (+9d) | 2026-10-16 → 2026-10-26 (+10d) | 20d → 13d |
| 510 | Salida para secadora PVC 4 | 2026-10-13 → 2026-10-22 (+9d) | 2026-10-16 → 2026-10-26 (+10d) | 20d → 13d |
| 511 | Salida hidráulica para boiler | 2026-10-13 → 2026-10-22 (+9d) | 2026-10-15 → 2026-10-24 (+9d) | 21d → 14d |
| 512 | Salida hidráulica para llave de jardín | 2026-10-13 → 2026-10-22 (+9d) | 2026-10-16 → 2026-10-26 (+10d) | 20d → 13d |
| 513 | Salida hidráulica para lavabo | 2026-10-13 → 2026-10-22 (+9d) | 2026-10-17 → 2026-10-27 (+10d) | 20d → 13d |
| 514 | Salida hidráulica para purificación | 2026-10-13 → 2026-10-22 (+9d) | 2026-10-17 → 2026-10-27 (+10d) | 20d → 13d |
| 515 | Salida sanitaria para lavabo | 2026-10-15 → 2026-10-26 (+11d) | 2026-10-17 → 2026-10-27 (+10d) | 20d → 13d |
| 516 | Salida hidráulica para lavadero | 2026-10-15 → 2026-10-26 (+11d) | 2026-10-17 → 2026-10-27 (+10d) | 20d → 13d |
| 517 | Salida sanitaria para lavadero | 2026-10-16 → 2026-10-27 (+11d) | 2026-10-19 → 2026-10-28 (+9d) | 20d → 13d |
| 518 | Salida hidráulica para lavadora | 2026-10-16 → 2026-10-27 (+11d) | 2026-10-19 → 2026-10-28 (+9d) | 20d → 13d |
| 519 | Salida sanitaria para lavadora | 2026-10-17 → 2026-10-28 (+11d) | 2026-10-20 → 2026-10-29 (+9d) | 20d → 13d |
| 520 | Salida hidráulica para regadera | 2026-10-17 → 2026-10-28 (+11d) | 2026-10-23 → 2026-11-03 (+11d) | 25d → 18d |
| 521 | Salida sanitaria para regadera | 2026-10-17 → 2026-10-28 (+11d) | 2026-10-22 → 2026-11-02 (+11d) | 26d → 19d |
| 522 | Salida hidráulica para WC | 2026-10-15 → 2026-10-26 (+11d) | 2026-10-17 → 2026-10-27 (+10d) | 20d → 13d |
| 523 | Salida sanitaria para WC | 2026-10-17 → 2026-10-28 (+11d) | 2026-10-22 → 2026-11-02 (+11d) | 20d → 13d |
| 524 | Salida hidráulica para zinc | 2026-10-17 → 2026-10-28 (+11d) | 2026-10-22 → 2026-11-02 (+11d) | 20d → 13d |
| 525 | Salida sanitaria para zinc | 2026-10-20 → 2026-10-30 (+10d) | 2026-10-23 → 2026-11-03 (+11d) | 20d → 13d |
| 526 | Tubo para ventila de baño 2 | 2026-10-13 → 2026-10-22 (+9d) | 2026-10-19 → 2026-10-28 (+9d) | 20d → 13d |
| 527 | Tubo para minisplit PVC 3 | 2026-10-19 → 2026-10-29 (+10d) | 2026-10-24 → 2026-11-04 (+11d) | 20d → 13d |
| 528 | Cuadro de medición | 2026-10-16 → 2026-10-27 (+11d) | 2026-10-22 → 2026-11-02 (+11d) | 25d → 18d |
| 529 | Pozo de absorción 0.50x0.50x0.50 | 2026-10-16 → 2026-10-27 (+11d) | 2026-10-20 → 2026-10-29 (+9d) | 28d → 21d |
| 530 | Prueba sanitaria final | 2026-10-26 → 2026-11-04 (+9d) | 2026-10-26 → 2026-11-05 (+10d) | 24d → 17d |
| 531 | Prueba hidrostática final | 2026-10-23 → 2026-11-03 (+11d) | 2026-10-24 → 2026-11-04 (+11d) | 25d → 18d |
| 532 | Salida válvula control 19 mm | 2026-10-22 → 2026-11-02 (+11d) | 2026-10-23 → 2026-11-03 (+11d) | 25d → 18d |
| 533 | Salida válvula control 13 mm | 2026-10-22 → 2026-11-02 (+11d) | 2026-10-23 → 2026-11-03 (+11d) | 25d → 18d |
| 534 | Salida hidráulica para tanque hidroneumático | 2026-10-16 → 2026-10-27 (+11d) | 2026-10-20 → 2026-10-29 (+9d) | 28d → 21d |
| 535 | Salida hidráulica para Active Driver | 2026-10-16 → 2026-10-27 (+11d) | 2026-10-20 → 2026-10-29 (+9d) | 28d → 21d |
| 536 | **INSTALACION DE GAS** | 2026-10-09 → 2026-10-20 (+11d) | 2026-10-20 → 2026-10-29 (+9d) | 53d → 46d |
| 537 | Ramaleo para gas 1/2 | 2026-10-14 → 2026-10-23 (+9d) | 2026-10-20 → 2026-10-29 (+9d) | 53d → 46d |
| 538 | Excavación a mano material tipo B | 2026-10-09 → 2026-10-20 (+11d) | 2026-10-14 → 2026-10-23 (+9d) | 53d → 46d |
| 539 | **MUEBLES SANITARIOS** | 2026-11-19 → 2026-11-28 (+9d) | 2026-12-28 → 2027-01-08 (+11d) | 32d → 25d |
| 540 | WC completo Austral | 2026-11-19 → 2026-11-28 (+9d) | 2026-11-21 → 2026-12-01 (+10d) | 34d → 27d |
| 541 | Lavabo Senna con pedestal | 2026-11-19 → 2026-11-28 (+9d) | 2026-11-24 → 2026-12-03 (+9d) | 32d → 25d |
| 542 | Tarja / lavabo combo Guinea 80x45 | 2026-11-19 → 2026-11-28 (+9d) | 2026-11-21 → 2026-12-01 (+10d) | 60d → 53d |

| ID | Task | Start | Finish | Duration | Complete | Total float | Predecessors |
| --- | --- | --- | --- | --- | --- | --- | --- |
| 543 | Regadera con monomando | 2026-11-21 → 2026-12-01 (+10d) | 2026-11-25 → 2026-12-04 (+9d) |  |  | 31d → 24d |  |
| 544 | Coladera inserto cerámico | 2026-11-23 → 2026-12-02 (+9d) | 2026-11-25 → 2026-12-04 (+9d) |  |  | 31d → 24d |  |
| 545 | Toallero sencillo | 2026-12-26 → 2027-01-07 (+12d) | 2026-12-28 → 2027-01-08 (+11d) |  |  | 20d → 13d |  |
| 546 | Toallero barra | 2026-12-26 → 2027-01-07 (+12d) | 2026-12-28 → 2027-01-08 (+11d) |  |  | 20d → 13d |  |
| 547 | Portapapel | 2026-12-26 → 2027-01-07 (+12d) | 2026-12-28 → 2027-01-08 (+11d) |  |  | 20d → 13d |  |
| 548 | Gancho baño | 2026-12-26 → 2027-01-07 (+12d) | 2026-12-28 → 2027-01-08 (+11d) |  |  | 20d → 13d |  |
| 549 | **EQUIPAMIENTO** | 2026-10-03 → 2026-10-14 (+11d) | 2026-10-12 → 2026-10-21 (+9d) |  |  | 79d → 72d |  |
| 550 | Electronivel Rotoplas 5 m | 2026-10-05 → 2026-10-15 (+10d) | 2026-10-07 → 2026-10-17 (+10d) |  |  | 82d → 75d |  |
| 551 | Manómetro | 2026-10-05 → 2026-10-15 (+10d) | 2026-10-06 → 2026-10-16 (+10d) |  |  | 83d → 76d |  |
| 552 | Interruptor de presión 30-50 PSI | 2026-10-05 → 2026-10-15 (+10d) | 2026-10-06 → 2026-10-16 (+10d) |  |  | 83d → 76d |  |
| 553 | Tanque hidroneumático FPS-24LX | 2026-10-05 → 2026-10-15 (+10d) | 2026-10-08 → 2026-10-19 (+11d) |  |  | 79d → 72d |  |
| 554 | Bomba sumergible Dominator 1.2 HP | 2026-10-08 → 2026-10-19 (+11d) | 2026-10-12 → 2026-10-21 (+9d) |  |  | 79d → 72d |  |
| 555 | Cisterna prefabricada 2800 L | 2026-10-03 → 2026-10-14 (+11d) | 2026-10-05 → 2026-10-15 (+10d) |  |  | 79d → 72d |  |
| 556 | **LUMINARIAS** | 2026-11-09 → 2026-11-20 (+11d) | 2026-11-17 → 2026-11-26 (+9d) |  |  | 49d → 42d |  |
| 557 | Roseta cerámica | 2026-11-09 → 2026-11-20 (+11d) | 2026-11-12 → 2026-11-24 (+12d) |  |  | 51d → 44d |  |
| 558 | Luminaria lagartijera LED | 2026-11-09 → 2026-11-20 (+11d) | 2026-11-12 → 2026-11-24 (+12d) |  |  | 51d → 44d |  |
| 559 | Spot 6W Tecnolite | 2026-11-09 → 2026-11-20 (+11d) | 2026-11-12 → 2026-11-24 (+12d) |  |  | 51d → 44d |  |
| 560 | Spot 7W Tecnolite | 2026-11-09 → 2026-11-20 (+11d) | 2026-11-12 → 2026-11-24 (+12d) |  |  | 51d → 44d |  |
| 561 | Arbotante exterior | 2026-11-09 → 2026-11-20 (+11d) | 2026-11-11 → 2026-11-23 (+12d) |  |  | 49d → 42d |  |
| 562 | Estaca LED exterior | 2026-11-11 → 2026-11-23 (+12d) | 2026-11-17 → 2026-11-26 (+9d) |  |  | 49d → 42d |  |
| 563 | Tira LED | 2026-11-11 → 2026-11-23 (+12d) | 2026-11-17 → 2026-11-26 (+9d) |  |  | 49d → 42d |  |
| 564 | Spot exterior 50W | 2026-11-09 → 2026-11-20 (+11d) | 2026-11-11 → 2026-11-23 (+12d) |  |  | 52d → 45d |  |
| 565 | **TIMBRE** | 2026-11-10 → 2026-11-21 (+11d) | 2026-11-12 → 2026-11-24 (+12d) |  |  | 51d → 44d |  |
| 566 | Timbre inalámbrico con bocina | 2026-11-10 → 2026-11-21 (+11d) | 2026-11-12 → 2026-11-24 (+12d) |  |  | 51d → 44d |  |
| 567 | **OBRA EXTERIOR - BARDA** | 2026-10-16 → 2026-10-27 (+11d) | 2026-11-07 → 2026-11-19 (+12d) |  |  | 57d → 50d |  |
| 568 | Murete convencional | 2026-10-22 → 2026-11-02 (+11d) | 2026-10-28 → 2026-11-07 (+10d) |  |  | 63d → 56d |  |
| 569 | Barda de block aparente | 2026-10-16 → 2026-10-27 (+11d) | 2026-11-07 → 2026-11-19 (+12d) |  |  | 57d → 50d |  |
| 570 | **TERCER LIMPIEZA DE OBRA** | 2026-12-28 → 2027-01-08 (+11d) | 2027-01-15 → 2027-01-25 (+10d) |  |  | 20d → 13d |  |
| 571 | Limpieza fina para entrega | 2026-12-28 → 2027-01-08 (+11d) | 2027-01-06 → 2027-01-16 (+10d) |  |  | 20d → 13d |  |
| 572 | Tercera limpieza de obra | 2027-01-06 → 2027-01-16 (+10d) | 2027-01-12 → 2027-01-21 (+9d) |  |  | 20d → 13d |  |
| 573 | Tercera carga y acarreo de escombro | 2027-01-12 → 2027-01-21 (+9d) | 2027-01-15 → 2027-01-25 (+10d) |  |  | 20d → 13d |  |
| 574 | **LOTE 03 M-661 CORSAC-A** |  | 2027-02-08 → 2027-02-01 (-7d) | 206d → 200d | 1% → 6% | 1d → 8d |  |
| 575 | **HITOS IMPORTANTES DEL LOTE** |  | 2027-02-08 → 2027-02-01 (-7d) | 206d → 200d |  | 1d → 8d |  |
| 577 | Colado de Losa de Cimentación | 2026-07-10 → 2026-07-08 A (-2d) | 2026-07-10 → 2026-07-08 A (-2d) |  | 0% → 100% | 165d → none |  |
| 578 | Colado de Losa de Entrepiso | 2026-08-18 → 2026-08-14 (-4d) | 2026-08-18 → 2026-08-14 (-4d) |  |  | 135d → 138d |  |
| 579 | Colado de Losa de Azotea | 2026-09-25 → 2026-09-23 (-2d) | 2026-09-25 → 2026-09-23 (-2d) |  |  | 105d → 108d |  |
| 580 | Entrega de vivienda | 2027-02-08 → 2027-02-01 (-7d) | 2027-02-08 → 2027-02-01 (-7d) |  |  | 1d → 8d |  |
| 586 | **CIMENTACION** | 2026-06-19 A → 2026-06-17 A (-2d) | 2026-07-13 → 2026-07-09 A (-4d) |  | 7% → 100% | 1d → none |  |
| 587 | Cimbra perimetral losa de cimentación | 2026-06-19 A → 2026-06-17 A (-2d) | 2026-06-24 → 2026-06-22 A (-2d) |  | 58% → 100% | 1d → none | 584FS+20d, 585 → 584FS+18d, 585 |
| 588 | Sistema antitermitas PVC | 2026-06-19 A → 2026-06-17 A (-2d) | 2026-06-24 → 2026-06-22 A (-2d) |  | 58% → 100% | 7d → none | 584FS+20d, 585 → 584FS+18d, 585 |
| 589 | Hule negro en cimentación | 2026-06-24 → 2026-06-22 A (-2d) | 2026-06-25 → 2026-06-23 A (-2d) |  | 0% → 100% | 7d → none |  |
| 590 | Ramaleo poliducto eléctrico cimentación | 2026-06-25 → 2026-06-23 A (-2d) | 2026-06-27 → 2026-06-25 A (-2d) |  | 0% → 100% | 10d → none |  |
| 591 | Ramaleo eléctrico base-medición a centro de carga | 2026-06-25 → 2026-06-23 A (-2d) | 2026-06-26 → 2026-06-24 A (-2d) |  | 0% → 100% | 11d → none |  |
| 592 | Ramaleo eléctrico exterior | 2026-06-27 → 2026-06-25 A (-2d) | 2026-06-29 → 2026-06-26 A (-3d) |  | 0% → 100% | 10d → none |  |
| 593 | Ramaleo para cable poliducto 3/4 | 2026-06-27 → 2026-06-25 A (-2d) | 2026-06-29 → 2026-06-26 A (-3d) |  | 0% → 100% | 10d → none |  |
| 594 | Ramaleo para TV poliducto 3/4 | 2026-06-27 → 2026-06-25 A (-2d) | 2026-06-29 → 2026-06-26 A (-3d) |  | 0% → 100% | 10d → none |  |
| 595 | Ramaleo hidráulico CPVC 1-1/4" cimentación | 2026-06-25 → 2026-06-23 A (-2d) | 2026-06-26 → 2026-06-24 A (-2d) |  | 0% → 100% | 7d → none |  |
| 596 | Ramaleo hidráulico CPVC 1 cimentación | 2026-06-25 → 2026-06-23 A (-2d) | 2026-06-26 → 2026-06-24 A (-2d) |  | 0% → 100% | 7d → none |  |
| 597 | Ramaleo hidráulico CPVC 3/4 cimentación | 2026-06-26 → 2026-06-24 A (-2d) | 2026-06-29 → 2026-06-26 A (-3d) |  | 0% → 100% | 7d → none |  |
| 598 | Ramaleo hidráulico CPVC 1/2 cimentación | 2026-06-29 → 2026-06-26 A (-3d) | 2026-07-01 → 2026-06-29 A (-2d) |  | 0% → 100% | 7d → none |  |
| 599 | Prueba hidráulica | 2026-07-01 → 2026-06-29 A (-2d) | 2026-07-02 → 2026-06-30 A (-2d) |  | 0% → 100% | 7d → none |  |
| 600 | Ramaleo sanitario PVC 4 cimentación | 2026-06-26 → 2026-06-24 A (-2d) | 2026-06-29 → 2026-06-26 A (-3d) |  | 0% → 100% | 8d → none |  |
| 601 | Ramaleo sanitario PVC 2 cimentación | 2026-06-29 → 2026-06-26 A (-3d) | 2026-06-30 → 2026-06-27 A (-3d) |  | 0% → 100% | 8d → none |  |
| 602 | Prueba sanitaria | 2026-06-30 → 2026-06-27 A (-3d) | 2026-07-01 → 2026-06-29 A (-2d) |  | 0% → 100% | 8d → none |  |
| 603 | Acero contratrabe CT-1 | 2026-06-30 → 2026-06-27 A (-3d) | 2026-07-04 → 2026-07-02 A (-2d) |  | 0% → 100% | 1d → none |  |
| 604 | Acero contratrabe CT-2 | 2026-06-30 → 2026-06-27 A (-3d) | 2026-07-04 → 2026-07-02 A (-2d) |  | 0% → 100% | 1d → none |  |
| 605 | Malla electrosoldada 6-6/8-8 | 2026-07-08 → 2026-07-06 A (-2d) | 2026-07-09 → 2026-07-07 A (-2d) |  | 0% → 100% | 1d → none |  |
| 606 | Bastón de refuerzo LS | 2026-07-06 → 2026-07-02 A (-4d) | 2026-07-07 → 2026-07-04 A (-3d) |  | 0% → 100% | 1d → none |  |
| 607 | Bastón de refuerzo LI | 2026-07-06 → 2026-07-02 A (-4d) | 2026-07-07 → 2026-07-04 A (-3d) |  | 0% → 100% | 1d → none |  |
| 608 | Colado losa de cimentación f’c=200 | 2026-07-10 → 2026-07-08 A (-2d) | 2026-07-10 → 2026-07-08 A (-2d) |  | 0% → 100% | 1d → none |  |
| 609 | Curado de concreto | 2026-07-11 → 2026-07-09 A (-2d) | 2026-07-13 → 2026-07-09 A (-4d) |  | 0% → 100% | 1d → none |  |
| 610 | Acero zapata ZT-1 | 2026-07-06 → 2026-07-02 A (-4d) | 2026-07-09 → 2026-07-07 A (-2d) |  | 0% → 100% | 1d → none |  |
| 611 | Acero zapata ZT-2 | 2026-07-06 → 2026-07-02 A (-4d) | 2026-07-09 → 2026-07-07 A (-2d) |  | 0% → 100% | 1d → none |  |
| 612 | **MUROS, PLANTA BAJA. CASTILLOS Y CERRAMIENTOS** | 2026-07-07 → 2026-07-03 A (-4d) | 2026-07-31 → 2026-07-29 (-2d) |  | 0% → 12% | 6d → 152d |  |
| 613 | Anclaje de castillos y Columnas PB | 2026-07-07 → 2026-07-03 A (-4d) | 2026-07-13 → 2026-07-09 A (-4d) |  | 0% → 100% | 152d → none |  |
| 614 | Castillo K1 | 2026-07-13 → 2026-07-10 A (-3d) | 2026-07-17 → 2026-07-15 (-2d) |  | 0% → 41% | 152d → 155d |  |
| 615 | Castillo K3 | 2026-07-15 → 2026-07-13 (-2d) | 2026-07-18 → 2026-07-16 (-2d) |  |  | 152d → 155d |  |
| 616 | Castillo K4 | 2026-07-15 → 2026-07-13 (-2d) | 2026-07-18 → 2026-07-16 (-2d) |  |  | 152d → 155d |  |
| 617 | Castillo K5 | 2026-07-17 → 2026-07-15 (-2d) | 2026-07-21 → 2026-07-18 (-3d) |  |  | 152d → 155d |  |
| 618 | Refuerzo de muro K6 | 2026-07-18 → 2026-07-16 (-2d) | 2026-07-22 → 2026-07-20 (-2d) |  |  | 152d → 155d |  |

| ID | Task | Start | Finish | Complete | Total float |
| --- | --- | --- | --- | --- | --- |
| 619 | Dala de cerramiento CR-1 | 2026-07-18 → 2026-07-16 (-2d) | 2026-07-23 → 2026-07-21 (-2d) |  | 155d → 158d |
| 620 | Dala de cerramiento CR-2 | 2026-07-18 → 2026-07-16 (-2d) | 2026-07-22 → 2026-07-20 (-2d) |  | 156d → 159d |
| 621 | Cadena block dala | 2026-07-22 → 2026-07-20 (-2d) | 2026-07-28 → 2026-07-24 (-4d) |  | 152d → 155d |
| 622 | Muro de ladrillo aparente | 2026-07-13 → 2026-07-10 A (-3d) | 2026-07-31 → 2026-07-29 (-2d) | 0% → 11% | 1d → 8d |
| 623 | Muro de block planta baja | 2026-07-15 → 2026-07-13 (-2d) | 2026-07-31 → 2026-07-29 (-2d) |  | 1d → 8d |
| 624 | Ramaleo electrico en Muros Planta Baja | 2026-07-18 → 2026-07-16 (-2d) | 2026-07-23 → 2026-07-21 (-2d) |  | 4d → 11d |
| 625 | Ramaleo para cable poliducto 3/4 | 2026-07-23 → 2026-07-21 (-2d) | 2026-07-27 → 2026-07-23 (-4d) |  | 4d → 11d |
| 626 | Ramaleo para TV poliducto 3/4 | 2026-07-27 → 2026-07-23 (-4d) | 2026-07-30 → 2026-07-28 (-2d) |  | 4d → 11d |
| 627 | **ESCALERA** | 2026-08-18 → 2026-08-14 (-4d) | 2026-08-29 → 2026-08-27 (-2d) |  | 78d → 85d |
| 628 | Escalera de concreto armado | 2026-08-18 → 2026-08-14 (-4d) | 2026-08-29 → 2026-08-27 (-2d) |  | 78d → 85d |
| 629 | **LOSA DE ENTREPISO (viegueta y caseton)** | 2026-07-29 → 2026-07-27 (-2d) | 2026-08-19 → 2026-08-17 (-2d) |  | 4d → 11d |
| 630 | Dala de coronamiento 10cm | 2026-08-06 → 2026-08-04 (-2d) | 2026-08-10 → 2026-08-07 (-3d) |  | 4d → 11d |
| 631 | Dala de coronamiento 12cm | 2026-08-07 → 2026-08-05 (-2d) | 2026-08-11 → 2026-08-08 (-3d) |  | 3d → 10d |
| 632 | Trabe TR-1 | 2026-07-29 → 2026-07-27 (-2d) | 2026-08-01 → 2026-07-30 (-2d) |  | 5d → 12d |
| 633 | Trabe TR-2 | 2026-07-30 → 2026-07-28 (-2d) | 2026-08-04 → 2026-08-01 (-3d) |  | 3d → 10d |
| 634 | Nervadura NR-1 | 2026-07-31 → 2026-07-29 (-2d) | 2026-08-05 → 2026-08-03 (-2d) |  | 2d → 9d |
| 635 | Nervadura NR-2 | 2026-08-01 → 2026-07-30 (-2d) | 2026-08-06 → 2026-08-04 (-2d) |  | 1d → 8d |
| 636 | Nervadura NR-3 | 2026-08-01 → 2026-07-30 (-2d) | 2026-08-06 → 2026-08-04 (-2d) |  | 1d → 8d |
| 637 | Nervadura NR-4 | 2026-08-01 → 2026-07-30 (-2d) | 2026-08-06 → 2026-08-04 (-2d) |  | 1d → 8d |
| 638 | Acero de refuerzo en nervios #3 | 2026-08-06 → 2026-08-04 (-2d) | 2026-08-08 → 2026-08-06 (-2d) |  | 1d → 8d |
| 639 | Acero de refuerzo long. #3 | 2026-08-07 → 2026-08-05 (-2d) | 2026-08-11 → 2026-08-08 (-3d) |  | 2d → 9d |
| 640 | Acero de refuerzo long. #4 | 2026-08-07 → 2026-08-05 (-2d) | 2026-08-11 → 2026-08-08 (-3d) |  | 2d → 9d |
| 641 | Malla 66-10/10 losa de compresión | 2026-08-13 → 2026-08-11 (-2d) | 2026-08-17 → 2026-08-13 (-4d) |  | 1d → 8d |
| 642 | Acero de Losa Maciza | 2026-08-06 → 2026-08-04 (-2d) | 2026-08-10 → 2026-08-07 (-3d) |  | 6d → 13d |
| 643 | Caseton de 60x60x20cm | 2026-08-06 → 2026-08-04 (-2d) | 2026-08-08 → 2026-08-06 (-2d) |  | 5d → 12d |
| 644 | Concreto losa de entrepiso f’c=200 | 2026-08-17 → 2026-08-13 (-4d) | 2026-08-18 → 2026-08-14 (-4d) |  | 1d → 8d |
| 645 | Curado de concreto | 2026-08-18 → 2026-08-14 (-4d) | 2026-08-19 → 2026-08-17 (-2d) |  | 1d → 8d |
| 646 | Cimbra losa de azotea | 2026-08-01 → 2026-07-30 (-2d) | 2026-08-07 → 2026-08-05 (-2d) |  | 2d → 9d |
| 647 | Cimbra exterior corta losa | 2026-08-10 → 2026-08-07 (-3d) | 2026-08-13 → 2026-08-11 (-2d) |  | 3d → 10d |
| 648 | Ramaleo poliducto eléctrico entrepiso | 2026-08-08 → 2026-08-06 (-2d) | 2026-08-11 → 2026-08-08 (-3d) |  | 140d → 143d |
| 649 | Ramaleo hidráulico CPVC 3/4" | 2026-08-10 → 2026-08-07 (-3d) | 2026-08-12 → 2026-08-10 (-2d) |  | 1d → 8d |
| 650 | Ramaleo hidráulico CPVC 1/2" | 2026-08-12 → 2026-08-10 (-2d) | 2026-08-13 → 2026-08-11 (-2d) |  | 1d → 8d |
| 651 | Prueba hidráulica | 2026-08-12 → 2026-08-10 (-2d) | 2026-08-13 → 2026-08-11 (-2d) |  | 1d → 8d |
| 652 | Ramaleo sanitario PVC 4" | 2026-08-10 → 2026-08-07 (-3d) | 2026-08-12 → 2026-08-10 (-2d) |  | 1d → 8d |
| 653 | Ramaleo sanitario PVC 2" | 2026-08-12 → 2026-08-10 (-2d) | 2026-08-13 → 2026-08-11 (-2d) |  | 1d → 8d |
| 654 | Prueba sanitaria | 2026-08-12 → 2026-08-10 (-2d) | 2026-08-13 → 2026-08-11 (-2d) |  | 1d → 8d |
| 655 | **MUROS EN PLANTA ALTA, CASTILLOS Y CERRM.** | 2026-08-10 → 2026-08-07 (-3d) | 2026-09-07 → 2026-09-03 (-4d) |  | 2d → 9d |
| 656 | Anclaje de castillos y Columnas PA | 2026-08-10 → 2026-08-07 (-3d) | 2026-08-14 → 2026-08-12 (-2d) |  | 2d → 9d |
| 657 | Castillo K1 | 2026-08-19 → 2026-08-17 (-2d) | 2026-08-24 → 2026-08-21 (-3d) |  | 5d → 12d |
| 658 | Castillo K2 | 2026-08-20 → 2026-08-18 (-2d) | 2026-08-25 → 2026-08-22 (-3d) |  | 4d → 11d |
| 659 | Castillo K4 | 2026-08-24 → 2026-08-21 (-3d) | 2026-08-27 → 2026-08-25 (-2d) |  | 5d → 12d |
| 660 | Castillo K5 | 2026-08-24 → 2026-08-21 (-3d) | 2026-08-27 → 2026-08-25 (-2d) |  | 5d → 12d |
| 661 | Castillo K6 | 2026-08-24 → 2026-08-21 (-3d) | 2026-08-27 → 2026-08-25 (-2d) |  | 5d → 12d |
| 662 | Refuerzo de muro | 2026-08-25 → 2026-08-22 (-3d) | 2026-08-28 → 2026-08-26 (-2d) |  | 4d → 11d |
| 663 | Dala de cerramiento CR-1 | 2026-08-28 → 2026-08-26 (-2d) | 2026-09-02 → 2026-08-31 (-2d) |  | 4d → 11d |
| 664 | Dala de cerramiento CR-2 | 2026-08-28 → 2026-08-26 (-2d) | 2026-09-02 → 2026-08-31 (-2d) |  | 4d → 11d |
| 665 | Cadena block dala | 2026-09-03 → 2026-09-01 (-2d) | 2026-09-07 → 2026-09-03 (-4d) |  | 4d → 11d |
| 666 | Muro de ladrillo aparente | 2026-08-19 → 2026-08-17 (-2d) | 2026-09-07 → 2026-09-03 (-4d) |  | 1d → 8d |
| 667 | Muro de block planta alta | 2026-08-20 → 2026-08-18 (-2d) | 2026-09-07 → 2026-09-03 (-4d) |  | 1d → 8d |
| 668 | Ramaleo electrico en Muros Planta Alta | 2026-08-28 → 2026-08-26 (-2d) | 2026-09-02 → 2026-08-31 (-2d) |  | 12d → 19d |
| 669 | **LOSA AZOTEA** | 2026-09-07 → 2026-09-04 (-3d) | 2026-09-26 → 2026-09-24 (-2d) |  | 1d → 8d |
| 670 | Cortalosa CL-1 | 2026-09-22 → 2026-09-18 (-4d) | 2026-09-24 → 2026-09-22 (-2d) |  | 1d → 8d |
| 671 | Cortalosa CL-2 | 2026-09-22 → 2026-09-18 (-4d) | 2026-09-24 → 2026-09-22 (-2d) |  | 1d → 8d |
| 672 | Vigueta pretensada V11-30 125 | 2026-09-07 → 2026-09-04 (-3d) | 2026-09-12 → 2026-09-10 (-2d) |  | 4d → 11d |
| 673 | Vigueta pretensada V11-30 185 | 2026-09-07 → 2026-09-04 (-3d) | 2026-09-12 → 2026-09-10 (-2d) |  | 4d → 11d |
| 674 | Vigueta pretensada V11-30 190 | 2026-09-07 → 2026-09-04 (-3d) | 2026-09-12 → 2026-09-10 (-2d) |  | 4d → 11d |
| 675 | Vigueta pretensada V11-30 205 | 2026-09-09 → 2026-09-07 (-2d) | 2026-09-15 → 2026-09-12 (-3d) |  | 2d → 9d |
| 676 | Vigueta pretensada V11-30 215 | 2026-09-09 → 2026-09-07 (-2d) | 2026-09-15 → 2026-09-12 (-3d) |  | 2d → 9d |
| 677 | Vigueta pretensada V11-30 260 | 2026-09-10 → 2026-09-08 (-2d) | 2026-09-17 → 2026-09-14 (-3d) |  | 1d → 8d |
| 678 | Vigueta pretensada V11-30 285 | 2026-09-10 → 2026-09-08 (-2d) | 2026-09-17 → 2026-09-14 (-3d) |  | 1d → 8d |
| 679 | Vigueta pretensada V11-40 330 | 2026-09-10 → 2026-09-08 (-2d) | 2026-09-17 → 2026-09-14 (-3d) |  | 1d → 8d |
| 680 | Vigueta pretensada V11-40 335 | 2026-09-10 → 2026-09-08 (-2d) | 2026-09-17 → 2026-09-14 (-3d) |  | 1d → 8d |
| 681 | Vigueta pretensada V11-40 505 | 2026-09-10 → 2026-09-08 (-2d) | 2026-09-17 → 2026-09-14 (-3d) |  | 1d → 8d |
| 682 | Bovedilla poliestireno azotea | 2026-09-17 → 2026-09-14 (-3d) | 2026-09-22 → 2026-09-18 (-4d) |  | 1d → 8d |
| 683 | Malla 66-10/10 losa de compresión | 2026-09-22 → 2026-09-18 (-4d) | 2026-09-24 → 2026-09-22 (-2d) |  | 1d → 8d |
| 684 | Concreto losa de azotea f’c=200 | 2026-09-24 → 2026-09-22 (-2d) | 2026-09-25 → 2026-09-23 (-2d) |  | 1d → 8d |
| 685 | Curado de concreto | 2026-09-25 → 2026-09-23 (-2d) | 2026-09-26 → 2026-09-24 (-2d) |  | 1d → 8d |
| 686 | Cimbra losa de azotea | 2026-09-07 → 2026-09-04 (-3d) | 2026-09-12 → 2026-09-10 (-2d) |  | 9d → 16d |
| 687 | Ramaleo de poliducto para inst. electrica en azotea | 2026-09-22 → 2026-09-18 (-4d) | 2026-09-24 → 2026-09-22 (-2d) |  | 1d → 8d |
| 688 | **PRETIL Y ACABADOS DE AZOTEA** | 2026-09-26 → 2026-09-24 (-2d) | 2026-10-20 → 2026-10-17 (-3d) |  | 1d → 8d |

| ID | Task | Start | Finish | Total float |
| --- | --- | --- | --- | --- |
| 689 | Castillo K1 | 2026-09-29 → 2026-09-26 (-3d) | 2026-10-05 → 2026-10-02 (-3d) | 1d → 8d |
| 690 | Dala de cerramiento en pretil | 2026-10-02 → 2026-09-30 (-2d) | 2026-10-07 → 2026-10-05 (-2d) | 1d → 8d |
| 691 | Muro de block 12x15x40 | 2026-09-26 → 2026-09-24 (-2d) | 2026-10-02 → 2026-09-30 (-2d) | 1d → 8d |
| 692 | Chaflán en azotea | 2026-10-05 → 2026-10-02 (-3d) | 2026-10-09 → 2026-10-07 (-2d) | 1d → 8d |
| 693 | Diamante de entortado | 2026-10-05 → 2026-10-02 (-3d) | 2026-10-09 → 2026-10-07 (-2d) | 1d → 8d |
| 694 | Aplanado exterior Mortermax fino | 2026-10-07 → 2026-10-05 (-2d) | 2026-10-14 → 2026-10-12 (-2d) | 1d → 8d |
| 695 | Entortado de Losa | 2026-10-15 → 2026-10-13 (-2d) | 2026-10-20 → 2026-10-17 (-3d) | 1d → 8d |
| 696 | Curado de concreto | 2026-10-14 → 2026-10-12 (-2d) | 2026-10-15 → 2026-10-13 (-2d) | 1d → 8d |
| 697 | **PRIMERA LIMPIEZA DE OBRA** | 2026-09-26 → 2026-09-24 (-2d) | 2026-10-01 → 2026-09-29 (-2d) | 61d → 64d |
| 698 | Primera limpieza de obra | 2026-09-26 → 2026-09-24 (-2d) | 2026-09-29 → 2026-09-26 (-3d) | 61d → 64d |
| 699 | Primera carga y acarreo de escombro | 2026-09-29 → 2026-09-26 (-3d) | 2026-10-01 → 2026-09-29 (-2d) | 61d → 64d |
| 700 | **IMPERMEABILIZACION** | 2026-10-20 → 2026-10-17 (-3d) | 2026-10-26 → 2026-10-23 (-3d) | 1d → 8d |
| 701 | Impermeabilización de pretil Kover 5 años | 2026-10-20 → 2026-10-17 (-3d) | 2026-10-24 → 2026-10-22 (-2d) | 2d → 9d |
| 702 | Impermeabilización de losa Kover 5 años | 2026-10-20 → 2026-10-17 (-3d) | 2026-10-26 → 2026-10-23 (-3d) | 1d → 8d |
| 703 | **ALBAÑILERIA** | 2026-10-02 → 2026-09-30 (-2d) | 2026-12-19 → 2026-12-17 (-2d) | 20d → 27d |
| 704 | Lavadero de granito | 2026-11-17 → 2026-11-12 (-5d) | 2026-11-21 → 2026-11-19 (-2d) | 60d → 63d |
| 705 | Ranurado y resane general inst. en muros | 2026-10-23 → 2026-10-21 (-2d) | 2026-10-27 → 2026-10-24 (-3d) | 3d → 10d |
| 706 | Ranurado y resane eléctrico 1/2 a 3/4 | 2026-10-23 → 2026-10-21 (-2d) | 2026-10-27 → 2026-10-24 (-3d) | 3d → 10d |
| 707 | Ranurado y resane hidráulico 1/2 a 1 | 2026-10-27 → 2026-10-23 (-4d) | 2026-10-28 → 2026-10-26 (-2d) | 2d → 9d |
| 708 | Resane sanitario tubería 2 | 2026-10-27 → 2026-10-23 (-4d) | 2026-10-28 → 2026-10-26 (-2d) | 2d → 9d |
| 709 | Resane sanitario tubería 4 | 2026-10-27 → 2026-10-23 (-4d) | 2026-10-28 → 2026-10-26 (-2d) | 2d → 9d |
| 710 | Resane minisplit tubería 3 | 2026-10-27 → 2026-10-23 (-4d) | 2026-10-28 → 2026-10-26 (-2d) | 2d → 9d |
| 711 | Ramaleo hidráulico exterior CPVC 1 1/4 | 2026-10-27 → 2026-10-23 (-4d) | 2026-10-29 → 2026-10-27 (-2d) | 1d → 8d |
| 712 | Ramaleo hidráulico exterior CPVC 1 | 2026-10-27 → 2026-10-23 (-4d) | 2026-10-28 → 2026-10-26 (-2d) | 1d → 8d |
| 713 | Ramaleo hidráulico exterior CPVC 3/4 | 2026-10-29 → 2026-10-27 (-2d) | 2026-10-30 → 2026-10-28 (-2d) | 1d → 8d |
| 714 | Ramaleo hidráulico exterior CPVC 1/2 | 2026-10-29 → 2026-10-27 (-2d) | 2026-10-30 → 2026-10-28 (-2d) | 1d → 8d |
| 715 | Prueba hidráulica | 2026-10-31 → 2026-10-29 (-2d) | 2026-11-02 → 2026-10-29 (-4d) | 1d → 8d |
| 716 | Ramaleo sanitario exterior PVC 4 | 2026-10-27 → 2026-10-23 (-4d) | 2026-10-30 → 2026-10-28 (-2d) | 1d → 8d |
| 717 | Ramaleo sanitario exterior PVC 2 | 2026-10-28 → 2026-10-26 (-2d) | 2026-10-30 → 2026-10-28 (-2d) | 1d → 8d |
| 718 | Prueba sanitaria | 2026-10-31 → 2026-10-29 (-2d) | 2026-11-02 → 2026-10-29 (-4d) | 1d → 8d |
| 719 | Centro de carga muros PB | 2026-10-30 → 2026-10-28 (-2d) | 2026-11-04 → 2026-11-02 (-2d) | 3d → 10d |
| 720 | Firme de concreto 8 cm | 2026-11-02 → 2026-10-30 (-3d) | 2026-11-06 → 2026-11-04 (-2d) | 54d → 57d |
| 721 | Curado de concreto | 2026-11-06 → 2026-11-04 (-2d) | 2026-11-07 → 2026-11-05 (-2d) | 54d → 57d |
| 722 | Cisterna 2800 L con instalación | 2026-10-02 → 2026-09-30 (-2d) | 2026-10-24 → 2026-10-22 (-2d) | 60d → 63d |
| 723 | Banqueta y huellas de concreto | 2026-11-09 → 2026-11-06 (-3d) | 2026-11-20 → 2026-11-18 (-2d) | 37d → 40d |
| 724 | Curado de concreto | 2026-11-20 → 2026-11-18 (-2d) | 2026-11-21 → 2026-11-19 (-2d) | 37d → 40d |
| 725 | Número oficial | 2026-12-18 → 2026-12-16 (-2d) | 2026-12-19 → 2026-12-17 (-2d) | 37d → 40d |
| 726 | Detallado de rodapié exterior | 2026-11-04 → 2026-11-02 (-2d) | 2026-11-09 → 2026-11-06 (-3d) | 69d → 72d |
| 727 | Detalle de losas y volados acabado fino | 2026-10-27 → 2026-10-23 (-4d) | 2026-10-30 → 2026-10-28 (-2d) | 5d → 12d |
| 728 | Detalle fino en muros interiores | 2026-10-29 → 2026-10-27 (-2d) | 2026-11-04 → 2026-11-02 (-2d) | 2d → 9d |
| 729 | Jardín interior bajo escalera con pozo de absorción | 2026-10-27 → 2026-10-23 (-4d) | 2026-11-10 → 2026-11-07 (-3d) | 5d → 12d |
| 730 | **ACABADOS EN FACHADA A** | 2026-10-20 → 2026-10-17 (-3d) | 2026-12-18 → 2026-12-16 (-2d) | 37d → 40d |
| 731 | Aplanado grueso fachada | 2026-10-20 → 2026-10-17 (-3d) | 2026-11-04 → 2026-11-02 (-2d) | 43d → 46d |
| 732 | Aplanado fino estuco fachada | 2026-10-29 → 2026-10-27 (-2d) | 2026-11-10 → 2026-11-07 (-3d) | 43d → 46d |
| 733 | Pintura acrílica 1-0102P | 2026-12-07 → 2026-12-03 (-4d) | 2026-12-16 → 2026-12-14 (-2d) | 39d → 42d |
| 734 | Pintura acrílica 1-1404D | 2026-12-07 → 2026-12-03 (-4d) | 2026-12-18 → 2026-12-16 (-2d) | 37d → 40d |
| 735 | Cantera 40x60cm | 2026-11-10 → 2026-11-07 (-3d) | 2026-11-28 → 2026-11-26 (-2d) | 43d → 46d |
| 736 | Lambrin de permabase 1 cara | 2026-11-04 → 2026-11-02 (-2d) | 2026-11-07 → 2026-11-05 (-2d) | 50d → 53d |
| 737 | Enchapado de Permabase | 2026-11-07 → 2026-11-05 (-2d) | 2026-11-12 → 2026-11-10 (-2d) | 50d → 53d |
| 738 | Cubierta de Permabase | 2026-11-12 → 2026-11-10 (-2d) | 2026-11-20 → 2026-11-18 (-2d) | 50d → 53d |
| 739 | **APLANADOS Y PINTURA** | 2026-10-27 → 2026-10-23 (-4d) | 2027-01-19 → 2027-01-16 (-3d) | 3d → 10d |
| 740 | Yeso pulido en muros | 2026-11-05 → 2026-11-03 (-2d) | 2026-11-24 → 2026-11-21 (-3d) | 1d → 8d |
| 741 | Aplanado en muros enjarre grueso | 2026-10-27 → 2026-10-23 (-4d) | 2026-11-02 → 2026-10-29 (-4d) | 4d → 11d |
| 742 | Pintura vinílica OR-W13 SHOELACE | 2027-01-02 → 2026-12-29 (-4d) | 2027-01-19 → 2027-01-16 (-3d) | 1d → 8d |
| 743 | Pintura vinílica PPUI5-13 Creamy M. | 2026-12-23 → 2026-12-21 (-2d) | 2027-01-08 → 2027-01-06 (-2d) | 9d → 16d |
| 744 | Pintura vinílica MD-06 Nano White | 2026-12-23 → 2026-12-21 (-2d) | 2027-01-06 → 2027-01-04 (-2d) | 11d → 18d |
| 745 | Yeso pulido en plafones | 2026-10-27 → 2026-10-23 (-4d) | 2026-11-07 → 2026-11-05 (-2d) | 3d → 10d |
| 746 | Perfilado de puertas y ventanas | 2026-11-10 → 2026-11-07 (-3d) | 2026-11-17 → 2026-11-12 (-5d) | 64d → 67d |
| 747 | **PISOS Y AZULEJOS** | 2026-11-18 → 2026-11-13 (-5d) | 2026-12-17 → 2026-12-15 (-2d) | 1d → 8d |
| 748 | **AREA SOCIAL** | 2026-11-21 → 2026-11-19 (-2d) | 2026-12-10 → 2026-12-08 (-2d) | 1d → 8d |
| 749 | Piso Adhara 44X89 | 2026-11-21 → 2026-11-19 (-2d) | 2026-12-09 → 2026-12-07 (-2d) | 1d → 8d |
| 750 | Zoclo Adhara 44X89 | 2026-12-03 → 2026-12-01 (-2d) | 2026-12-10 → 2026-12-08 (-2d) | 18d → 25d |
| 751 | **RECAMARAS** | 2026-11-18 → 2026-11-13 (-5d) | 2026-11-27 → 2026-11-25 (-2d) | 1d → 8d |
| 752 | Acabado aparente de pisos - pulido | 2026-11-18 → 2026-11-13 (-5d) | 2026-11-27 → 2026-11-25 (-2d) | 1d → 8d |
| 753 | **BAÑOS** | 2026-11-19 → 2026-11-17 (-2d) | 2026-12-10 → 2026-12-08 (-2d) | 12d → 19d |
| 754 | Azulejo Mod. Ornamenta 60x30 | 2026-11-27 → 2026-11-25 (-2d) | 2026-12-03 → 2026-12-01 (-2d) | 12d → 19d |
| 755 | Impermeabilización en regadera | 2026-11-26 → 2026-11-24 (-2d) | 2026-11-28 → 2026-11-26 (-2d) | 12d → 19d |
| 756 | Piso Mod. Valparaiso 20x20 | 2026-12-03 → 2026-12-01 (-2d) | 2026-12-09 → 2026-12-07 (-2d) | 12d → 19d |
| 757 | Zoclo Adhara 44X89 | 2026-12-08 → 2026-12-04 (-4d) | 2026-12-10 → 2026-12-08 (-2d) | 45d → 48d |
| 758 | Piso Adhara 44X89 | 2026-12-03 → 2026-12-01 (-2d) | 2026-12-08 → 2026-12-04 (-4d) | 47d → 50d |

| ID | Task | Start | Finish | Total float |
| --- | --- | --- | --- | --- |
| 759 | Fabricacion de nicho decorativo en baños | 2026-11-19 → 2026-11-17 (-2d) | 2026-11-26 → 2026-11-24 (-2d) | 12d → 19d |
| 760 | Sardinel en regadera | 2026-12-03 → 2026-12-01 (-2d) | 2026-12-09 → 2026-12-07 (-2d) | 46d → 49d |
| 761 | **ESCALERA** | 2026-12-07 → 2026-12-03 (-4d) | 2026-12-17 → 2026-12-15 (-2d) | 1d → 8d |
| 762 | Piso Adhara 44X89 | 2026-12-07 → 2026-12-03 (-4d) | 2026-12-15 → 2026-12-12 (-3d) | 1d → 8d |
| 763 | Zoclo Adhara 44X89 | 2026-12-12 → 2026-12-10 (-2d) | 2026-12-17 → 2026-12-15 (-2d) | 1d → 8d |
| 764 | **EXTERIOR** | 2026-11-02 → 2026-10-30 (-3d) | 2026-11-05 → 2026-11-03 (-2d) | 6d → 13d |
| 765 | Rastrilleo, afine y nivelado de tierra | 2026-11-02 → 2026-10-30 (-3d) | 2026-11-05 → 2026-11-03 (-2d) | 6d → 13d |
| 766 | **SEGUNDA LIMPIEZA DE OBRA** | 2026-12-17 → 2026-12-15 (-2d) | 2026-12-22 → 2026-12-19 (-3d) | 24d → 29d |
| 767 | Segunda limpieza de obra | 2026-12-17 → 2026-12-15 (-2d) | 2026-12-19 → 2026-12-17 (-2d) | 24d → 29d |
| 768 | Segunda carga y acarreo de escombro | 2026-12-21 → 2026-12-17 (-4d) | 2026-12-22 → 2026-12-19 (-3d) | 24d → 29d |
| 769 | **CANCELERIA PUERTAS Y VENTANAS DE ALUMINIO** | 2026-12-07 → 2026-12-03 (-4d) | 2026-12-30 → 2026-12-28 (-2d) | 2d → 9d |
| 770 | Fijo medidas 0.30x4.90m | 2026-12-09 → 2026-12-07 (-2d) | 2026-12-17 → 2026-12-15 (-2d) | 10d → 17d |
| 771 | Ventana Corrediza 1.80x1.60m | 2026-12-07 → 2026-12-03 (-4d) | 2026-12-11 → 2026-12-09 (-2d) | 15d → 22d |
| 772 | Ventana Corrediza 0.60x0.40m | 2026-12-09 → 2026-12-07 (-2d) | 2026-12-14 → 2026-12-11 (-3d) | 13d → 20d |
| 773 | Ventana Corrediza 1.54x0.50m | 2026-12-09 → 2026-12-07 (-2d) | 2026-12-14 → 2026-12-11 (-3d) | 13d → 20d |
| 774 | Fijo medidas 1.40x2.50m | 2026-12-12 → 2026-12-10 (-2d) | 2026-12-17 → 2026-12-15 (-2d) | 4d → 11d |
| 775 | Ventana Corrediza 1.80x1.50m | 2026-12-15 → 2026-12-12 (-3d) | 2026-12-19 → 2026-12-17 (-2d) | 2d → 9d |
| 776 | Ventana Corrediza 1.40x1.60m | 2026-12-15 → 2026-12-12 (-3d) | 2026-12-19 → 2026-12-17 (-2d) | 2d → 9d |
| 777 | Ventana Corrediza 0.95x0.40m | 2026-12-15 → 2026-12-12 (-3d) | 2026-12-19 → 2026-12-17 (-2d) | 2d → 9d |
| 778 | Puerta corrediza 3.85x2.10m | 2026-12-17 → 2026-12-15 (-2d) | 2026-12-28 → 2026-12-22 (-6d) | 4d → 11d |
| 779 | Barandal de Cristal Templado | 2026-12-21 → 2026-12-17 (-4d) | 2026-12-30 → 2026-12-28 (-2d) | 2d → 9d |
| 780 | **CARPINTERIA, PUERTAS EXTERIORES E INTERIORES** | 2026-12-17 → 2026-12-15 (-2d) | 2027-01-02 → 2026-12-29 (-4d) | 1d → 8d |
| 781 | Puerta P-01 de seguridad | 2026-12-17 → 2026-12-15 (-2d) | 2026-12-23 → 2026-12-21 (-2d) | 5d → 12d |
| 782 | Puerta P-01 interior | 2026-12-17 → 2026-12-15 (-2d) | 2026-12-30 → 2026-12-28 (-2d) | 2d → 9d |
| 783 | Puerta P-02 interior | 2026-12-17 → 2026-12-15 (-2d) | 2026-12-30 → 2026-12-28 (-2d) | 2d → 9d |
| 784 | Puerta P-03 interior | 2026-12-26 → 2026-12-22 (-4d) | 2027-01-02 → 2026-12-29 (-4d) | 1d → 8d |
| 785 | Puerta P-04 interior | 2026-12-26 → 2026-12-22 (-4d) | 2027-01-02 → 2026-12-29 (-4d) | 1d → 8d |
| 786 | **VOLADOS, BARANDAL Y ESCALERA** | 2026-11-10 → 2026-11-07 (-3d) | 2026-12-22 → 2026-12-19 (-3d) | 9d → 16d |
| 787 | Barandal de Herreria en escalera | 2026-11-28 → 2026-11-26 (-2d) | 2026-12-03 → 2026-12-01 (-2d) | 24d → 31d |
| 788 | Escalera de herreria | 2026-11-10 → 2026-11-07 (-3d) | 2026-12-03 → 2026-12-01 (-2d) | 9d → 16d |
| 789 | Techumbre en acceso Principal | 2026-11-27 → 2026-11-25 (-2d) | 2026-12-15 → 2026-12-12 (-3d) | 15d → 22d |
| 790 | Techumbre en 1.80x0.50m | 2026-11-27 → 2026-11-25 (-2d) | 2026-12-07 → 2026-12-03 (-4d) | 9d → 16d |
| 791 | Techumbre en 1.40x0.50m | 2026-12-07 → 2026-12-03 (-4d) | 2026-12-15 → 2026-12-12 (-3d) | 9d → 16d |
| 792 | Imper con manto prefabricado | 2026-12-10 → 2026-12-08 (-2d) | 2026-12-16 → 2026-12-14 (-2d) | 9d → 16d |
| 793 | Plafon hoja tablaroca std | 2026-12-16 → 2026-12-14 (-2d) | 2026-12-22 → 2026-12-19 (-3d) | 9d → 16d |
| 794 | Acabado Woodstock en parte inf. Cubierta | 2026-12-16 → 2026-12-14 (-2d) | 2026-12-22 → 2026-12-19 (-3d) | 9d → 16d |
| 795 | **INSTALACION ELECTRICA** | 2026-11-19 → 2026-11-17 (-2d) | 2026-12-09 → 2026-12-07 (-2d) | 30d → 37d |
| 796 | Alimentación eléctrica base a centro de carga | 2026-11-24 → 2026-11-21 (-3d) | 2026-11-30 → 2026-11-27 (-3d) | 34d → 41d |
| 797 | Interruptor termomagnético 1x20 A | 2026-11-30 → 2026-11-27 (-3d) | 2026-12-01 → 2026-11-28 (-3d) | 34d → 41d |
| 798 | Interruptor termomagnético 2x20 A | 2026-11-30 → 2026-11-27 (-3d) | 2026-12-01 → 2026-11-28 (-3d) | 34d → 41d |
| 799 | Salida para apagador 3 vías | 2026-11-19 → 2026-11-17 (-2d) | 2026-11-24 → 2026-11-21 (-3d) | 30d → 37d |
| 800 | Salida para apagador doble | 2026-11-24 → 2026-11-21 (-3d) | 2026-11-27 → 2026-11-25 (-2d) | 32d → 39d |
| 801 | Salida para apagador sencillo | 2026-11-24 → 2026-11-21 (-3d) | 2026-11-27 → 2026-11-25 (-2d) | 32d → 39d |
| 802 | Salida de alumbrado en losa | 2026-11-24 → 2026-11-21 (-3d) | 2026-11-30 → 2026-11-27 (-3d) | 30d → 37d |
| 803 | Salida para contacto exterior doble | 2026-11-24 → 2026-11-21 (-3d) | 2026-11-26 → 2026-11-24 (-2d) | 33d → 40d |
| 804 | Salida para contacto 220 V | 2026-11-26 → 2026-11-24 (-2d) | 2026-11-30 → 2026-11-27 (-3d) | 30d → 37d |
| 805 | Salida para contacto doble | 2026-11-26 → 2026-11-24 (-2d) | 2026-12-02 → 2026-11-30 (-2d) | 33d → 40d |
| 806 | Salida para contacto doble área húmeda | 2026-11-30 → 2026-11-27 (-3d) | 2026-12-02 → 2026-11-30 (-2d) | 33d → 40d |
| 807 | Salida TV / telefonía / intercom | 2026-11-30 → 2026-11-27 (-3d) | 2026-12-04 → 2026-12-02 (-2d) | 31d → 38d |
| 808 | Extractor 4 baño | 2026-11-30 → 2026-11-27 (-3d) | 2026-12-07 → 2026-12-03 (-4d) | 30d → 37d |
| 809 | Prueba eléctrica | 2026-12-07 → 2026-12-03 (-4d) | 2026-12-09 → 2026-12-07 (-2d) | 30d → 37d |
| 810 | **INSTALACIÓN HIDRO-SANITARIA** | 2026-11-02 → 2026-10-30 (-3d) | 2026-11-17 → 2026-11-12 (-5d) | 1d → 8d |
| 811 | Tubería condensados PVC 1 | 2026-11-02 → 2026-10-30 (-3d) | 2026-11-07 → 2026-11-05 (-2d) | 1d → 8d |
| 812 | Tubería sanitaria PVC 4 | 2026-11-02 → 2026-10-30 (-3d) | 2026-11-07 → 2026-11-05 (-2d) | 9d → 16d |
| 813 | Coladera H-444 | 2026-11-07 → 2026-11-05 (-2d) | 2026-11-09 → 2026-11-06 (-3d) | 9d → 16d |
| 814 | Caja PVC para lavadora | 2026-11-02 → 2026-10-30 (-3d) | 2026-11-05 → 2026-11-03 (-2d) | 1d → 8d |
| 815 | Salida para secadora PVC 4 | 2026-11-02 → 2026-10-30 (-3d) | 2026-11-05 → 2026-11-03 (-2d) | 1d → 8d |
| 816 | Salida hidráulica para boiler | 2026-11-02 → 2026-10-30 (-3d) | 2026-11-04 → 2026-11-02 (-2d) | 2d → 9d |
| 817 | Salida hidráulica para llave de jardín | 2026-11-02 → 2026-10-30 (-3d) | 2026-11-05 → 2026-11-03 (-2d) | 1d → 8d |
| 818 | Salida hidráulica para lavabo | 2026-11-02 → 2026-10-30 (-3d) | 2026-11-06 → 2026-11-04 (-2d) | 1d → 8d |
| 819 | Salida hidráulica para purificación | 2026-11-02 → 2026-10-30 (-3d) | 2026-11-06 → 2026-11-04 (-2d) | 1d → 8d |
| 820 | Salida sanitaria para lavabo | 2026-11-04 → 2026-11-02 (-2d) | 2026-11-06 → 2026-11-04 (-2d) | 1d → 8d |
| 821 | Salida hidráulica para lavadero | 2026-11-04 → 2026-11-02 (-2d) | 2026-11-06 → 2026-11-04 (-2d) | 1d → 8d |
| 822 | Salida sanitaria para lavadero | 2026-11-05 → 2026-11-03 (-2d) | 2026-11-07 → 2026-11-05 (-2d) | 1d → 8d |
| 823 | Salida hidráulica para lavadora | 2026-11-05 → 2026-11-03 (-2d) | 2026-11-07 → 2026-11-05 (-2d) | 1d → 8d |
| 824 | Salida sanitaria para lavadora | 2026-11-06 → 2026-11-04 (-2d) | 2026-11-09 → 2026-11-06 (-3d) | 1d → 8d |
| 825 | Salida hidráulica para regadera | 2026-11-06 → 2026-11-04 (-2d) | 2026-11-12 → 2026-11-10 (-2d) | 6d → 13d |
| 826 | Salida sanitaria para regadera | 2026-11-06 → 2026-11-04 (-2d) | 2026-11-11 → 2026-11-09 (-2d) | 7d → 14d |
| 827 | Salida hidráulica para WC | 2026-11-04 → 2026-11-02 (-2d) | 2026-11-06 → 2026-11-04 (-2d) | 1d → 8d |
| 828 | Salida sanitaria para WC | 2026-11-06 → 2026-11-04 (-2d) | 2026-11-11 → 2026-11-09 (-2d) | 1d → 8d |

| ID | Task | Start | Finish | Duration | Complete | Total float | Predecessors |
| --- | --- | --- | --- | --- | --- | --- | --- |
| 829 | Salida hidráulica para zinc | 2026-11-06 → 2026-11-04 (-2d) | 2026-11-11 → 2026-11-09 (-2d) |  |  | 1d → 8d |  |
| 830 | Salida sanitaria para zinc | 2026-11-09 → 2026-11-06 (-3d) | 2026-11-12 → 2026-11-10 (-2d) |  |  | 1d → 8d |  |
| 831 | Tubo para ventila de baño 2 | 2026-11-02 → 2026-10-30 (-3d) | 2026-11-07 → 2026-11-05 (-2d) |  |  | 1d → 8d |  |
| 832 | Tubo para minisplit PVC 3 | 2026-11-07 → 2026-11-05 (-2d) | 2026-11-13 → 2026-11-11 (-2d) |  |  | 1d → 8d |  |
| 833 | Cuadro de medición | 2026-11-05 → 2026-11-03 (-2d) | 2026-11-11 → 2026-11-09 (-2d) |  |  | 6d → 13d |  |
| 834 | Pozo de absorción 0.50x0.50x0.50 | 2026-11-05 → 2026-11-03 (-2d) | 2026-11-09 → 2026-11-06 (-3d) |  |  | 9d → 16d |  |
| 835 | Prueba sanitaria final | 2026-11-13 → 2026-11-11 (-2d) | 2026-11-17 → 2026-11-12 (-5d) |  |  | 5d → 12d |  |
| 836 | Prueba hidrostática final | 2026-11-12 → 2026-11-10 (-2d) | 2026-11-13 → 2026-11-11 (-2d) |  |  | 6d → 13d |  |
| 837 | Salida válvula control 19 mm | 2026-11-11 → 2026-11-09 (-2d) | 2026-11-12 → 2026-11-10 (-2d) |  |  | 6d → 13d |  |
| 838 | Salida válvula control 13 mm | 2026-11-11 → 2026-11-09 (-2d) | 2026-11-12 → 2026-11-10 (-2d) |  |  | 6d → 13d |  |
| 839 | Salida hidráulica para tanque hidroneumático | 2026-11-05 → 2026-11-03 (-2d) | 2026-11-09 → 2026-11-06 (-3d) |  |  | 9d → 16d |  |
| 840 | Salida hidráulica para Active Driver | 2026-11-05 → 2026-11-03 (-2d) | 2026-11-09 → 2026-11-06 (-3d) |  |  | 9d → 16d |  |
| 841 | **INSTALACION DE GAS** | 2026-10-30 → 2026-10-28 (-2d) | 2026-11-09 → 2026-11-06 (-3d) |  |  | 37d → 40d |  |
| 842 | Ramaleo para gas 1/2 | 2026-11-03 → 2026-10-31 (-3d) | 2026-11-09 → 2026-11-06 (-3d) |  |  | 37d → 40d |  |
| 843 | Excavación a mano material tipo B | 2026-10-30 → 2026-10-28 (-2d) | 2026-11-03 → 2026-10-30 (-4d) |  |  | 37d → 40d |  |
| 844 | **MUEBLES SANITARIOS** | 2026-12-09 → 2026-12-07 (-2d) | 2027-01-19 → 2027-01-16 (-3d) |  |  | 13d → 20d |  |
| 845 | WC completo Austral | 2026-12-09 → 2026-12-07 (-2d) | 2026-12-11 → 2026-12-09 (-2d) |  |  | 15d → 22d |  |
| 846 | Lavabo Senna con pedestal | 2026-12-09 → 2026-12-07 (-2d) | 2026-12-14 → 2026-12-11 (-3d) |  |  | 13d → 20d |  |
| 847 | Tarja / lavabo combo Guinea 80x45 | 2026-12-09 → 2026-12-07 (-2d) | 2026-12-11 → 2026-12-09 (-2d) |  |  | 44d → 47d |  |
| 848 | Regadera con monomando | 2026-12-11 → 2026-12-09 (-2d) | 2026-12-15 → 2026-12-12 (-3d) |  |  | 12d → 19d |  |
| 849 | Coladera inserto cerámico | 2026-12-12 → 2026-12-10 (-2d) | 2026-12-15 → 2026-12-12 (-3d) |  |  | 12d → 19d |  |
| 850 | Toallero sencillo | 2027-01-18 → 2027-01-15 (-3d) | 2027-01-19 → 2027-01-16 (-3d) |  |  | 1d → 8d |  |
| 851 | Toallero barra | 2027-01-18 → 2027-01-15 (-3d) | 2027-01-19 → 2027-01-16 (-3d) |  |  | 1d → 8d |  |
| 852 | Portapapel | 2027-01-18 → 2027-01-15 (-3d) | 2027-01-19 → 2027-01-16 (-3d) |  |  | 1d → 8d |  |
| 853 | Gancho baño | 2027-01-18 → 2027-01-15 (-3d) | 2027-01-19 → 2027-01-16 (-3d) |  |  | 1d → 8d |  |
| 854 | **EQUIPAMIENTO** | 2026-10-23 → 2026-10-21 (-2d) | 2026-10-30 → 2026-10-28 (-2d) |  |  | 60d → 67d |  |
| 855 | Electronivel Rotoplas 5 m | 2026-10-26 → 2026-10-22 (-4d) | 2026-10-27 → 2026-10-24 (-3d) |  |  | 63d → 70d |  |
| 856 | Manómetro | 2026-10-26 → 2026-10-22 (-4d) | 2026-10-26 → 2026-10-23 (-3d) |  |  | 64d → 71d |  |
| 857 | Interruptor de presión 30-50 PSI | 2026-10-26 → 2026-10-22 (-4d) | 2026-10-26 → 2026-10-23 (-3d) |  |  | 64d → 71d |  |
| 858 | Tanque hidroneumático FPS-24LX | 2026-10-26 → 2026-10-22 (-4d) | 2026-10-28 → 2026-10-26 (-2d) |  |  | 60d → 67d |  |
| 859 | Bomba sumergible Dominator 1.2 HP | 2026-10-29 → 2026-10-27 (-2d) | 2026-10-30 → 2026-10-28 (-2d) |  |  | 60d → 67d |  |
| 860 | Cisterna prefabricada 2800 L | 2026-10-23 → 2026-10-21 (-2d) | 2026-10-24 → 2026-10-22 (-2d) |  |  | 60d → 67d |  |
| 861 | **LUMINARIAS** | 2026-11-30 → 2026-11-27 (-3d) | 2026-12-07 → 2026-12-03 (-4d) |  |  | 30d → 37d |  |
| 862 | Roseta cerámica | 2026-11-30 → 2026-11-27 (-3d) | 2026-12-03 → 2026-12-01 (-2d) |  |  | 32d → 39d |  |
| 863 | Luminaria lagartijera LED | 2026-11-30 → 2026-11-27 (-3d) | 2026-12-03 → 2026-12-01 (-2d) |  |  | 32d → 39d |  |
| 864 | Spot 6W Tecnolite | 2026-11-30 → 2026-11-27 (-3d) | 2026-12-03 → 2026-12-01 (-2d) |  |  | 32d → 39d |  |
| 865 | Spot 7W Tecnolite | 2026-11-30 → 2026-11-27 (-3d) | 2026-12-03 → 2026-12-01 (-2d) |  |  | 32d → 39d |  |
| 866 | Arbotante exterior | 2026-11-30 → 2026-11-27 (-3d) | 2026-12-02 → 2026-11-30 (-2d) |  |  | 30d → 37d |  |
| 867 | Estaca LED exterior | 2026-12-02 → 2026-11-30 (-2d) | 2026-12-07 → 2026-12-03 (-4d) |  |  | 30d → 37d |  |
| 868 | Tira LED | 2026-12-02 → 2026-11-30 (-2d) | 2026-12-07 → 2026-12-03 (-4d) |  |  | 30d → 37d |  |
| 869 | Spot exterior 50W | 2026-11-30 → 2026-11-27 (-3d) | 2026-12-02 → 2026-11-30 (-2d) |  |  | 33d → 40d |  |
| 870 | **TIMBRE** | 2026-12-01 → 2026-11-28 (-3d) | 2026-12-03 → 2026-12-01 (-2d) |  |  | 32d → 39d |  |
| 871 | Timbre inalámbrico con bocina | 2026-12-01 → 2026-11-28 (-3d) | 2026-12-03 → 2026-12-01 (-2d) |  |  | 32d → 39d |  |
| 872 | **OBRA EXTERIOR - BARDA** | 2026-11-05 → 2026-11-03 (-2d) | 2026-11-28 → 2026-11-26 (-2d) |  |  | 38d → 45d |  |
| 873 | Murete convencional | 2026-11-11 → 2026-11-09 (-2d) | 2026-11-19 → 2026-11-17 (-2d) |  |  | 44d → 51d |  |
| 874 | Barda de block aparente | 2026-11-05 → 2026-11-03 (-2d) | 2026-11-28 → 2026-11-26 (-2d) |  |  | 38d → 45d |  |
| 875 | **TERCER LIMPIEZA DE OBRA** | 2027-01-19 → 2027-01-16 (-3d) | 2027-02-08 → 2027-02-01 (-7d) | 16d → 12d |  | 1d → 8d |  |
| 876 | Limpieza fina para entrega | 2027-01-19 → 2027-01-16 (-3d) | 2027-01-25 → 2027-01-22 (-3d) |  |  | 1d → 8d |  |
| 877 | Tercera limpieza de obra | 2027-01-25 → 2027-01-20 (-5d) | 2027-02-01 → 2027-01-26 (-6d) |  |  | 1d → 8d | 876, 768 → 876FS-2d, 768 |
| 878 | Tercera carga y acarreo de escombro | 2027-02-01 → 2027-01-23 (-9d) | 2027-02-08 → 2027-02-01 (-7d) |  |  | 1d → 8d | 877 → 877FS-2d |
| 879 | **LOTE 22 M-663 CORSAC-B** | 2026-06-10 A → 2026-05-29 A (-12d) | 2027-01-29 → 2027-02-03 (+5d) | 182d → 194d | 2% → 9% | 8d → 6d |  |
| 880 | **HITOS IMPORTANTES DEL LOTE** | 2026-06-10 A → 2026-05-29 A (-12d) | 2027-01-29 → 2027-02-03 (+5d) | 182d → 194d |  | 8d → 6d |  |
| 881 | Inicio del Lote-22 M-663 Corsac-B | 2026-06-10 A → 2026-05-29 A (-12d) | 2026-06-10 A → 2026-05-29 A (-12d) |  |  |  |  |
| 882 | Colado de Losa de Cimentación | 2026-07-10 → 2026-07-15 (+5d) | 2026-07-10 → 2026-07-15 (+5d) |  |  | 165d → 163d |  |
| 883 | Colado de Losa de Entrepiso | 2026-08-19 → 2026-08-22 (+3d) | 2026-08-19 → 2026-08-22 (+3d) |  |  | 134d → 132d |  |
| 884 | Colado de Losa de Azotea | 2026-09-26 → 2026-09-30 (+4d) | 2026-09-26 → 2026-09-30 (+4d) |  |  | 104d → 102d |  |
| 885 | Entrega de vivienda | 2027-01-29 → 2027-02-03 (+5d) | 2027-01-29 → 2027-02-03 (+5d) |  |  | 8d → 6d |  |
| 886 | **TRABAJOS PRELIMINARES** | 2026-06-10 A → 2026-05-29 A (-12d) | 2026-06-12 A → 2026-06-11 A (-1d) | 2d → 10d |  |  |  |
| 887 | Trazo y nivelación | 2026-06-10 A → 2026-05-29 A (-12d) | 2026-06-12 A → 2026-06-11 A (-1d) | 2d → 10d |  |  |  |
| 888 | **EXCAVACIONES** | 2026-06-12 A → 2026-06-11 A (-1d) | 2026-06-26 → 2026-06-25 A (-1d) |  | 73% → 100% | 8d → none |  |
| 889 | Excavación a mano material tipo B | 2026-06-12 A → 2026-06-11 A (-1d) | 2026-06-25 → 2026-06-24 A (-1d) |  | 78% → 100% | 9d → none |  |
| 890 | Acarreo en carretilla 20 m | 2026-06-13 A → 2026-06-12 A (-1d) | 2026-06-26 → 2026-06-25 A (-1d) |  | 68% → 100% | 8d → none |  |
| 891 | **CIMENTACION** | 2026-06-26 → 2026-06-25 A (-1d) | 2026-07-13 → 2026-07-16 (+3d) | 13d → 17d | 0% → 84% | 8d → 162d |  |
| 892 | Cimbra perimetral losa de cimentación | 2026-06-26 → 2026-06-25 A (-1d) | 2026-06-30 → 2026-07-01 A (+1d) | 3d → 5d | 0% → 100% | 8d → none |  |
| 893 | Sistema antitermitas PVC | 2026-06-26 → 2026-06-25 A (-1d) | 2026-06-30 → 2026-07-01 A (+1d) | 3d → 5d | 0% → 100% | 9d → none |  |
| 894 | Hule negro en cimentación | 2026-06-30 → 2026-07-01 A (+1d) | 2026-07-01 → 2026-07-02 A (+1d) |  | 0% → 100% | 9d → none |  |
| 895 | Ramaleo poliducto eléctrico cimentación | 2026-07-01 → 2026-07-02 A (+1d) | 2026-07-03 → 2026-07-04 A (+1d) |  | 0% → 100% | 12d → none |  |
| 896 | Ramaleo eléctrico base-medición a centro de carga | 2026-07-01 → 2026-07-02 A (+1d) | 2026-07-02 → 2026-07-03 A (+1d) |  | 0% → 100% | 13d → none |  |
| 897 | Ramaleo eléctrico exterior | 2026-07-03 → 2026-07-06 A (+3d) | 2026-07-04 → 2026-07-06 A (+2d) |  | 0% → 100% | 12d → none |  |
| 898 | Ramaleo para cable poliducto 3/4 | 2026-07-03 → 2026-07-06 A (+3d) | 2026-07-04 → 2026-07-06 A (+2d) |  | 0% → 100% | 12d → none |  |

| ID | Task | Start | Finish | Duration | Complete | Total float |
| --- | --- | --- | --- | --- | --- | --- |
| 899 | Ramaleo para TV poliducto 3/4 | 2026-07-03 → 2026-07-06 A (+3d) | 2026-07-04 → 2026-07-06 A (+2d) |  | 0% → 100% | 12d → none |
| 900 | Ramaleo hidráulico CPVC 1 cimentación | 2026-07-01 → 2026-07-02 A (+1d) | 2026-07-02 → 2026-07-03 A (+1d) |  | 0% → 100% | 9d → none |
| 901 | Ramaleo hidráulico CPVC 3/4 cimentación | 2026-07-02 → 2026-07-03 A (+1d) | 2026-07-04 → 2026-07-06 A (+2d) |  | 0% → 100% | 9d → none |
| 902 | Ramaleo hidráulico CPVC 1/2 cimentación | 2026-07-06 → 2026-07-07 A (+1d) | 2026-07-07 → 2026-07-08 A (+1d) |  | 0% → 100% | 9d → none |
| 903 | Prueba hidráulica | 2026-07-08 → 2026-07-09 A (+1d) | 2026-07-08 → 2026-07-09 A (+1d) |  | 0% → 100% | 9d → none |
| 904 | Ramaleo sanitario PVC 4 cimentación | 2026-07-02 → 2026-07-03 A (+1d) | 2026-07-04 → 2026-07-06 A (+2d) |  | 0% → 100% | 10d → none |
| 905 | Ramaleo sanitario PVC 2 cimentación | 2026-07-06 → 2026-07-07 A (+1d) | 2026-07-06 → 2026-07-07 A (+1d) |  | 0% → 100% | 10d → none |
| 906 | Prueba sanitaria | 2026-07-07 → 2026-07-08 A (+1d) | 2026-07-07 → 2026-07-08 A (+1d) |  | 0% → 100% | 10d → none |
| 907 | Acero contratrabe CT-1 | 2026-06-30 → 2026-07-01 A (+1d) | 2026-07-04 → 2026-07-08 A (+4d) | 4d → 6d | 0% → 100% | 8d → none |
| 908 | Acero contratrabe CT-2 | 2026-06-30 → 2026-07-01 A (+1d) | 2026-07-04 → 2026-07-08 A (+4d) | 4d → 6d | 0% → 100% | 8d → none |
| 909 | Malla electrosoldada 6-6/8-8 | 2026-07-08 → 2026-07-11 A (+3d) | 2026-07-09 → 2026-07-14 (+5d) |  | 0% → 31% | 8d → 6d |
| 910 | Bastón de refuerzo LS | 2026-07-06 → 2026-07-09 A (+3d) | 2026-07-07 → 2026-07-10 A (+3d) |  | 0% → 100% | 8d → none |
| 911 | Bastón de refuerzo LI | 2026-07-06 → 2026-07-09 A (+3d) | 2026-07-07 → 2026-07-10 A (+3d) |  | 0% → 100% | 8d → none |
| 912 | Colado losa de cimentación f’c=200 | 2026-07-10 → 2026-07-14 (+4d) | 2026-07-10 → 2026-07-15 (+5d) |  |  | 8d → 6d |
| 913 | Curado de concreto | 2026-07-11 → 2026-07-15 (+4d) | 2026-07-13 → 2026-07-16 (+3d) |  |  | 8d → 6d |
| 914 | Acero zapata ZT-1 | 2026-07-06 → 2026-07-09 A (+3d) | 2026-07-09 → 2026-07-14 (+5d) |  | 0% → 66% | 164d → 0.62d |
| 915 | Acero zapata ZT-2 | 2026-07-06 → 2026-07-09 A (+3d) | 2026-07-09 → 2026-07-14 (+5d) |  | 0% → 66% | 164d → 0.62d |
| 916 | Colado zapatas aisladas f’c=200 | 2026-07-11 → 2026-07-15 (+4d) | 2026-07-13 → 2026-07-16 (+3d) |  |  | 164d → 162d |
| 917 | Cimbra frontera zapatas | 2026-07-08 → 2026-07-11 A (+3d) | 2026-07-10 → 2026-07-15 (+5d) |  | 0% → 21% | 164d → 162d |
| 918 | **MUROS, PLANTA BAJA. CASTILLOS Y CERRAMIENTOS** | 2026-07-07 → 2026-07-10 A (+3d) | 2026-07-31 → 2026-08-04 (+4d) |  | 0% → 2% | 13d → 147d |
| 919 | Anclaje de castillos y Columnas PB | 2026-07-07 → 2026-07-10 A (+3d) | 2026-07-13 → 2026-07-16 (+3d) |  | 0% → 33% | 152d → 150d |
| 920 | Castillo K1 | 2026-07-13 → 2026-07-16 (+3d) | 2026-07-17 → 2026-07-21 (+4d) |  |  | 152d → 150d |
| 921 | Castillo K2 | 2026-07-13 → 2026-07-16 (+3d) | 2026-07-17 → 2026-07-21 (+4d) |  |  | 156d → 154d |
| 922 | Castillo K3 | 2026-07-15 → 2026-07-18 (+3d) | 2026-07-18 → 2026-07-22 (+4d) |  |  | 152d → 150d |
| 923 | Castillo K4 | 2026-07-15 → 2026-07-18 (+3d) | 2026-07-18 → 2026-07-22 (+4d) |  |  | 152d → 150d |
| 924 | Castillo K5 | 2026-07-17 → 2026-07-21 (+4d) | 2026-07-21 → 2026-07-24 (+3d) |  |  | 152d → 150d |
| 925 | Refuerzo de muro K6 | 2026-07-18 → 2026-07-22 (+4d) | 2026-07-22 → 2026-07-27 (+5d) |  |  | 152d → 150d |
| 926 | Columna C1 | 2026-07-13 → 2026-07-16 (+3d) | 2026-07-17 → 2026-07-21 (+4d) |  |  | 156d → 154d |
| 927 | Columna C2 | 2026-07-17 → 2026-07-21 (+4d) | 2026-07-22 → 2026-07-27 (+5d) |  |  | 156d → 154d |
| 928 | Dala de cerramiento CR-1 | 2026-07-18 → 2026-07-22 (+4d) | 2026-07-23 → 2026-07-28 (+5d) |  |  | 155d → 153d |
| 929 | Dala de cerramiento CR-2 | 2026-07-18 → 2026-07-22 (+4d) | 2026-07-22 → 2026-07-27 (+5d) |  |  | 156d → 154d |
| 930 | Cadena block dala | 2026-07-22 → 2026-07-27 (+5d) | 2026-07-28 → 2026-07-31 (+3d) |  |  | 152d → 150d |
| 931 | Muro de ladrillo aparente | 2026-07-13 → 2026-07-16 (+3d) | 2026-07-31 → 2026-08-04 (+4d) |  |  | 8d → 6d |
| 932 | Muro de block planta baja | 2026-07-15 → 2026-07-18 (+3d) | 2026-07-31 → 2026-08-04 (+4d) |  |  | 8d → 6d |
| 933 | **ESCALERA** | 2026-08-19 → 2026-08-22 (+3d) | 2026-09-04 → 2026-09-09 (+5d) |  |  | 120d → 118d |
| 934 | Escalera de concreto armado | 2026-08-19 → 2026-08-22 (+3d) | 2026-09-04 → 2026-09-09 (+5d) |  |  | 120d → 118d |
| 935 | **LOSA DE ENTREPISO (viegueta y caseton)** | 2026-07-29 → 2026-08-01 (+3d) | 2026-08-20 → 2026-08-24 (+4d) |  |  | 11d → 9d |
| 936 | Vigueta pretensada 1.40 m | 2026-07-29 → 2026-08-01 (+3d) | 2026-08-01 → 2026-08-05 (+4d) |  |  | 13d → 11d |
| 937 | Vigueta pretensada 1.95 m | 2026-07-30 → 2026-08-03 (+4d) | 2026-08-04 → 2026-08-07 (+3d) |  |  | 11d → 9d |
| 938 | Vigueta pretensada 3.35 m | 2026-07-31 → 2026-08-04 (+4d) | 2026-08-05 → 2026-08-08 (+3d) |  |  | 10d → 8d |
| 939 | Vigueta pretensada 3.50 m | 2026-08-01 → 2026-08-05 (+4d) | 2026-08-06 → 2026-08-10 (+4d) |  |  | 9d → 7d |
| 940 | Vigueta pretensada 3.75 m | 2026-08-01 → 2026-08-05 (+4d) | 2026-08-06 → 2026-08-10 (+4d) |  |  | 9d → 7d |
| 941 | Vigueta pretensada 3.90 m | 2026-08-01 → 2026-08-05 (+4d) | 2026-08-06 → 2026-08-10 (+4d) |  |  | 9d → 7d |
| 942 | Bovedilla poliestireno entrepiso | 2026-08-06 → 2026-08-10 (+4d) | 2026-08-08 → 2026-08-12 (+4d) |  |  | 9d → 7d |
| 943 | Dala de coronamiento | 2026-08-06 → 2026-08-10 (+4d) | 2026-08-10 → 2026-08-13 (+3d) |  |  | 12d → 10d |
| 944 | Nervadura NR-1 | 2026-08-07 → 2026-08-11 (+4d) | 2026-08-11 → 2026-08-14 (+3d) |  |  | 8d → 6d |
| 945 | Nervadura NR-2 | 2026-08-07 → 2026-08-11 (+4d) | 2026-08-11 → 2026-08-14 (+3d) |  |  | 10d → 8d |
| 946 | Trabe TR-1 | 2026-08-07 → 2026-08-11 (+4d) | 2026-08-13 → 2026-08-18 (+5d) |  |  | 8d → 6d |
| 947 | Malla 66-10/10 losa de compresión | 2026-08-13 → 2026-08-18 (+5d) | 2026-08-17 → 2026-08-20 (+3d) |  |  | 9d → 7d |
| 948 | Cimbra losa de azotea | 2026-08-01 → 2026-08-05 (+4d) | 2026-08-07 → 2026-08-11 (+4d) |  |  | 8d → 6d |
| 949 | Concreto losa de entrepiso f’c=200 | 2026-08-18 → 2026-08-21 (+3d) | 2026-08-19 → 2026-08-22 (+3d) |  |  | 8d → 6d |
| 950 | Curado de concreto | 2026-08-19 → 2026-08-22 (+3d) | 2026-08-20 → 2026-08-24 (+4d) |  |  | 8d → 6d |
| 951 | Cimbra exterior corta losa | 2026-08-10 → 2026-08-13 (+3d) | 2026-08-13 → 2026-08-18 (+5d) |  |  | 11d → 9d |
| 952 | Ramaleo poliducto eléctrico entrepiso | 2026-08-08 → 2026-08-12 (+4d) | 2026-08-11 → 2026-08-14 (+3d) |  |  | 12d → 10d |
| 953 | Ramaleo para cable poliducto 3/4 | 2026-08-08 → 2026-08-12 (+4d) | 2026-08-10 → 2026-08-13 (+3d) |  |  | 141d → 139d |
| 954 | Ramaleo para TV poliducto 3/4 | 2026-08-11 → 2026-08-14 (+3d) | 2026-08-12 → 2026-08-17 (+5d) |  |  | 12d → 10d |
| 955 | Ramaleo hidráulico CPVC 3/4 | 2026-08-10 → 2026-08-13 (+3d) | 2026-08-12 → 2026-08-17 (+5d) |  |  | 9d → 7d |
| 956 | Ramaleo hidráulico CPVC 1/2 | 2026-08-12 → 2026-08-17 (+5d) | 2026-08-13 → 2026-08-18 (+5d) |  |  | 9d → 7d |
| 957 | Prueba hidráulica | 2026-08-12 → 2026-08-17 (+5d) | 2026-08-13 → 2026-08-18 (+5d) |  |  | 9d → 7d |
| 958 | Ramaleo sanitario PVC 4 | 2026-08-10 → 2026-08-13 (+3d) | 2026-08-12 → 2026-08-17 (+5d) |  |  | 9d → 7d |
| 959 | Ramaleo sanitario PVC 2 | 2026-08-12 → 2026-08-17 (+5d) | 2026-08-13 → 2026-08-18 (+5d) |  |  | 9d → 7d |
| 960 | Prueba sanitaria | 2026-08-12 → 2026-08-17 (+5d) | 2026-08-13 → 2026-08-18 (+5d) |  |  | 9d → 7d |
| 961 | **MUROS EN PLANTA ALTA, CASTILLOS Y CERRM.** | 2026-08-12 → 2026-08-17 (+5d) | 2026-09-08 → 2026-09-11 (+3d) |  |  | 8d → 6d |
| 962 | Anclaje de castillos y Columnas PA | 2026-08-12 → 2026-08-17 (+5d) | 2026-08-18 → 2026-08-21 (+3d) |  |  | 8d → 6d |
| 963 | Castillo K1 | 2026-08-20 → 2026-08-24 (+4d) | 2026-08-25 → 2026-08-28 (+3d) |  |  | 12d → 10d |
| 964 | Castillo K2 | 2026-08-21 → 2026-08-25 (+4d) | 2026-08-26 → 2026-08-29 (+3d) |  |  | 11d → 9d |
| 965 | Castillo K3 | 2026-08-22 → 2026-08-26 (+4d) | 2026-08-26 → 2026-08-29 (+3d) |  |  | 11d → 9d |
| 966 | Castillo K4 | 2026-08-25 → 2026-08-28 (+3d) | 2026-08-28 → 2026-09-01 (+4d) |  |  | 12d → 10d |
| 967 | Castillo K5 | 2026-08-25 → 2026-08-28 (+3d) | 2026-08-28 → 2026-09-01 (+4d) |  |  | 12d → 10d |
| 968 | Refuerzo de muro K6 | 2026-08-26 → 2026-08-31 (+5d) | 2026-08-29 → 2026-09-02 (+4d) |  |  | 11d → 9d |

| ID | Task | Start | Finish | Total float |
| --- | --- | --- | --- | --- |
| 969 | Dala de cerramiento CR-1 | 2026-08-31 → 2026-09-03 (+3d) | 2026-09-03 → 2026-09-08 (+5d) | 11d → 9d |
| 970 | Cadena block dala | 2026-09-04 → 2026-09-08 (+4d) | 2026-09-08 → 2026-09-11 (+3d) | 11d → 9d |
| 971 | Muro de ladrillo aparente | 2026-08-20 → 2026-08-24 (+4d) | 2026-09-08 → 2026-09-11 (+3d) | 8d → 6d |
| 972 | Muro de block planta alta | 2026-08-21 → 2026-08-25 (+4d) | 2026-09-08 → 2026-09-11 (+3d) | 8d → 6d |
| 973 | **LOSA AZOTEA** | 2026-09-08 → 2026-09-11 (+3d) | 2026-09-28 → 2026-10-01 (+3d) | 8d → 6d |
| 974 | Cortalosa CL-1 | 2026-09-23 → 2026-09-26 (+3d) | 2026-09-25 → 2026-09-29 (+4d) | 8d → 6d |
| 975 | Vigueta pretensada V11-40 390 | 2026-09-08 → 2026-09-11 (+3d) | 2026-09-14 → 2026-09-18 (+4d) | 11d → 9d |
| 976 | Vigueta pretensada V11-30 280 | 2026-09-08 → 2026-09-11 (+3d) | 2026-09-14 → 2026-09-18 (+4d) | 11d → 9d |
| 977 | Vigueta pretensada V11-30 285 | 2026-09-08 → 2026-09-11 (+3d) | 2026-09-14 → 2026-09-18 (+4d) | 11d → 9d |
| 978 | Vigueta pretensada V11-30 220 | 2026-09-10 → 2026-09-14 (+4d) | 2026-09-17 → 2026-09-22 (+5d) | 9d → 7d |
| 979 | Vigueta pretensada V11-40 75 | 2026-09-10 → 2026-09-14 (+4d) | 2026-09-17 → 2026-09-22 (+5d) | 9d → 7d |
| 980 | Vigueta pretensada V11-40 195 | 2026-09-11 → 2026-09-15 (+4d) | 2026-09-18 → 2026-09-23 (+5d) | 8d → 6d |
| 981 | Vigueta pretensada V11-50 450 | 2026-09-11 → 2026-09-15 (+4d) | 2026-09-18 → 2026-09-23 (+5d) | 8d → 6d |
| 982 | Bovedilla poliestireno azotea | 2026-09-18 → 2026-09-23 (+5d) | 2026-09-23 → 2026-09-26 (+3d) | 8d → 6d |
| 983 | Malla 66-10/10 losa de compresión | 2026-09-23 → 2026-09-26 (+3d) | 2026-09-25 → 2026-09-29 (+4d) | 8d → 6d |
| 984 | Concreto losa de azotea f’c=200 | 2026-09-25 → 2026-09-29 (+4d) | 2026-09-26 → 2026-09-30 (+4d) | 8d → 6d |
| 985 | Curado de concreto | 2026-09-26 → 2026-09-30 (+4d) | 2026-09-28 → 2026-10-01 (+3d) | 8d → 6d |
| 986 | Cimbra losa de azotea | 2026-09-08 → 2026-09-11 (+3d) | 2026-09-14 → 2026-09-18 (+4d) | 16d → 14d |
| 987 | Ramaleo de poliducto para inst. electrica en azotea | 2026-09-23 → 2026-09-26 (+3d) | 2026-09-25 → 2026-09-29 (+4d) | 8d → 6d |
| 988 | **PRETIL Y ACABADOS DE AZOTEA** | 2026-09-28 → 2026-10-01 (+3d) | 2026-10-21 → 2026-10-24 (+3d) | 8d → 6d |
| 989 | Castillo K1 | 2026-09-30 → 2026-10-03 (+3d) | 2026-10-06 → 2026-10-09 (+3d) | 8d → 6d |
| 990 | Dala de cerramiento en pretil | 2026-10-03 → 2026-10-07 (+4d) | 2026-10-08 → 2026-10-13 (+5d) | 8d → 6d |
| 991 | Muro de block 12x15x40 | 2026-09-28 → 2026-10-01 (+3d) | 2026-10-03 → 2026-10-07 (+4d) | 8d → 6d |
| 992 | Chaflán en azotea | 2026-10-06 → 2026-10-09 (+3d) | 2026-10-12 → 2026-10-15 (+3d) | 8d → 6d |
| 993 | Aplanado exterior Mortermax fino | 2026-10-08 → 2026-10-13 (+5d) | 2026-10-15 → 2026-10-19 (+4d) | 8d → 6d |
| 994 | Acabado de azotea para impermeabilizar | 2026-10-16 → 2026-10-20 (+4d) | 2026-10-21 → 2026-10-24 (+3d) | 8d → 6d |
| 995 | Curado de concreto | 2026-10-15 → 2026-10-19 (+4d) | 2026-10-16 → 2026-10-20 (+4d) | 8d → 6d |
| 996 | **PRIMERA LIMPIEZA DE OBRA** | 2026-09-28 → 2026-10-01 (+3d) | 2026-10-02 → 2026-10-06 (+4d) | 60d → 58d |
| 997 | Primera limpieza de obra | 2026-09-28 → 2026-10-01 (+3d) | 2026-09-30 → 2026-10-03 (+3d) | 60d → 58d |
| 998 | Primera carga y acarreo de escombro | 2026-09-30 → 2026-10-03 (+3d) | 2026-10-02 → 2026-10-06 (+4d) | 60d → 58d |
| 999 | **IMPERMEABILIZACION** | 2026-10-21 → 2026-10-26 (+5d) | 2026-10-27 → 2026-10-30 (+3d) | 8d → 6d |
| 1000 | Impermeabilización de pretil Kover 5 años | 2026-10-21 → 2026-10-26 (+5d) | 2026-10-26 → 2026-10-29 (+3d) | 9d → 7d |
| 1001 | Impermeabilización de losa Kover 5 años | 2026-10-21 → 2026-10-26 (+5d) | 2026-10-27 → 2026-10-30 (+3d) | 8d → 6d |
| 1002 | **ALBAÑILERIA** | 2026-10-03 → 2026-10-07 (+4d) | 2026-12-21 → 2026-12-28 (+7d) | 27d → 25d |
| 1003 | Lavadero de granito | 2026-11-18 → 2026-11-21 (+3d) | 2026-11-23 → 2026-11-26 (+3d) | 59d → 57d |
| 1004 | Ramaleo hidráulico exterior CPVC 1 1/4 | 2026-10-28 → 2026-10-31 (+3d) | 2026-10-30 → 2026-11-04 (+5d) | 8d → 6d |
| 1005 | Ramaleo hidráulico exterior CPVC 1 | 2026-10-28 → 2026-10-31 (+3d) | 2026-10-29 → 2026-11-03 (+5d) | 8d → 6d |
| 1006 | Ramaleo hidráulico exterior CPVC 3/4 | 2026-10-30 → 2026-11-03 (+4d) | 2026-11-02 → 2026-11-05 (+3d) | 8d → 6d |
| 1007 | Ramaleo hidráulico exterior CPVC 1/2 | 2026-10-30 → 2026-11-03 (+4d) | 2026-11-02 → 2026-11-05 (+3d) | 8d → 6d |
| 1008 | Prueba hidráulica | 2026-11-02 → 2026-11-05 (+3d) | 2026-11-03 → 2026-11-06 (+3d) | 8d → 6d |
| 1009 | Ramaleo sanitario exterior PVC 4 | 2026-10-28 → 2026-10-31 (+3d) | 2026-11-02 → 2026-11-05 (+3d) | 8d → 6d |
| 1010 | Ramaleo sanitario exterior PVC 2 | 2026-10-29 → 2026-11-02 (+4d) | 2026-11-02 → 2026-11-05 (+3d) | 8d → 6d |
| 1011 | Prueba sanitaria | 2026-11-02 → 2026-11-05 (+3d) | 2026-11-03 → 2026-11-06 (+3d) | 8d → 6d |
| 1012 | Centro de carga muros PB | 2026-10-31 → 2026-11-04 (+4d) | 2026-11-05 → 2026-11-09 (+4d) | 10d → 8d |
| 1013 | Firme de concreto 8 cm | 2026-11-03 → 2026-11-06 (+3d) | 2026-11-07 → 2026-11-11 (+4d) | 53d → 51d |
| 1014 | Curado de concreto | 2026-11-07 → 2026-11-11 (+4d) | 2026-11-09 → 2026-11-12 (+3d) | 53d → 51d |
| 1015 | Cisterna 2800 L con instalación | 2026-10-03 → 2026-10-07 (+4d) | 2026-10-26 → 2026-10-29 (+3d) | 59d → 57d |
| 1016 | Banqueta y huellas de concreto | 2026-11-10 → 2026-11-13 (+3d) | 2026-11-21 → 2026-11-25 (+4d) | 36d → 34d |
| 1017 | Curado de concreto | 2026-11-21 → 2026-11-25 (+4d) | 2026-11-23 → 2026-11-26 (+3d) | 36d → 34d |
| 1018 | Número oficial | 2026-12-21 → 2026-12-26 (+5d) | 2026-12-21 → 2026-12-28 (+7d) | 36d → 34d |
| 1019 | Detallado de rodapié exterior | 2026-11-05 → 2026-11-09 (+4d) | 2026-11-10 → 2026-11-13 (+3d) | 68d → 66d |
| 1020 | Detallado de muros interiores | 2026-10-28 → 2026-10-31 (+3d) | 2026-11-02 → 2026-11-05 (+3d) | 12d → 10d |
| 1021 | **ACABADOS EN FACHADA A** | 2026-10-21 → 2026-10-26 (+5d) | 2026-12-19 → 2026-12-23 (+4d) | 37d → 35d |
| 1022 | Aplanado grueso fachada | 2026-10-21 → 2026-10-26 (+5d) | 2026-11-05 → 2026-11-09 (+4d) | 67d → 65d |
| 1023 | Aplanado fino estuco fachada | 2026-10-30 → 2026-11-03 (+4d) | 2026-11-11 → 2026-11-17 (+6d) | 67d → 65d |
| 1024 | Pintura acrílica 1-0102P | 2026-12-08 → 2026-12-11 (+3d) | 2026-12-17 → 2026-12-21 (+4d) | 38d → 36d |
| 1025 | Pintura acrílica 1-1404D | 2026-12-08 → 2026-12-11 (+3d) | 2026-12-19 → 2026-12-23 (+4d) | 36d → 34d |
| 1026 | **APLANADOS Y PINTURA** | 2026-10-28 → 2026-10-31 (+3d) | 2027-01-20 → 2027-01-23 (+3d) | 10d → 8d |
| 1027 | Yeso pulido en muros | 2026-11-06 → 2026-11-10 (+4d) | 2026-11-25 → 2026-11-28 (+3d) | 8d → 6d |
| 1028 | Pintura vinílica 699 Cottage White | 2027-01-04 → 2027-01-07 (+3d) | 2027-01-20 → 2027-01-23 (+3d) | 8d → 6d |
| 1029 | Pintura vinílica 691 Pacific Bungalow | 2026-12-18 → 2026-12-23 (+5d) | 2027-01-05 → 2027-01-08 (+3d) | 28d → 26d |
| 1030 | Yeso pulido en plafones | 2026-10-28 → 2026-10-31 (+3d) | 2026-11-09 → 2026-11-12 (+3d) | 10d → 8d |
| 1031 | Pintura vinílica Nano White | 2026-12-23 → 2026-12-29 (+6d) | 2027-01-05 → 2027-01-08 (+3d) | 28d → 26d |
| 1032 | Perfilado de puertas y ventanas | 2026-11-11 → 2026-11-17 (+6d) | 2026-11-18 → 2026-11-21 (+3d) | 63d → 61d |
| 1033 | **PISOS Y AZULEJOS** | 2026-11-20 → 2026-11-24 (+4d) | 2026-12-18 → 2026-12-22 (+4d) | 10d → 8d |
| 1034 | **AREA SOCIAL** | 2026-11-23 → 2026-11-26 (+3d) | 2026-12-11 → 2026-12-15 (+4d) | 8d → 6d |
| 1035 | Piso Moonside Crema 60x60 | 2026-11-23 → 2026-11-26 (+3d) | 2026-12-10 → 2026-12-14 (+4d) | 8d → 6d |
| 1036 | Zoclo piso 60x60 Moonside Crema | 2026-12-04 → 2026-12-09 (+5d) | 2026-12-11 → 2026-12-15 (+4d) | 25d → 23d |
| 1037 | **BAÑOS** | 2026-11-20 → 2026-11-24 (+4d) | 2026-12-11 → 2026-12-15 (+4d) | 19d → 17d |
| 1038 | Piso Moonside Crema 60x60 | 2026-12-04 → 2026-12-09 (+5d) | 2026-12-10 → 2026-12-14 (+4d) | 19d → 17d |

| ID | Task | Start | Finish | Total float |
| --- | --- | --- | --- | --- |
| 1039 | Zoclo piso 60x60 Moonside Crema | 2026-12-09 → 2026-12-12 (+3d) | 2026-12-11 → 2026-12-15 (+4d) | 44d → 42d |
| 1040 | Piso porcelánico Acali 20x20 beige | 2026-12-04 → 2026-12-09 (+5d) | 2026-12-09 → 2026-12-12 (+3d) | 46d → 44d |
| 1041 | Impermeabilización en regadera | 2026-11-27 → 2026-12-01 (+4d) | 2026-11-30 → 2026-12-03 (+3d) | 19d → 17d |
| 1042 | Azulejo Moonside Crema 60x60 | 2026-11-28 → 2026-12-02 (+4d) | 2026-12-04 → 2026-12-09 (+5d) | 19d → 17d |
| 1043 | Fabricacion de nicho decorativo en baños | 2026-11-20 → 2026-11-24 (+4d) | 2026-11-27 → 2026-12-01 (+4d) | 19d → 17d |
| 1044 | Sardinel en regadera | 2026-12-04 → 2026-12-09 (+5d) | 2026-12-10 → 2026-12-14 (+4d) | 45d → 43d |
| 1045 | **ESCALERA** | 2026-12-08 → 2026-12-11 (+3d) | 2026-12-18 → 2026-12-22 (+4d) | 8d → 6d |
| 1046 | Piso Moonside Crema 60x60 | 2026-12-08 → 2026-12-11 (+3d) | 2026-12-16 → 2026-12-19 (+3d) | 8d → 6d |
| 1047 | Zoclo piso 60x60 Moonside Crema | 2026-12-14 → 2026-12-17 (+3d) | 2026-12-18 → 2026-12-22 (+4d) | 8d → 6d |
| 1048 | **EXTERIOR** | 2026-11-03 → 2026-11-06 (+3d) | 2026-11-06 → 2026-11-10 (+4d) | 14d → 12d |
| 1049 | Rastrilleo, afine y nivelado de tierra | 2026-11-03 → 2026-11-06 (+3d) | 2026-11-06 → 2026-11-10 (+4d) | 14d → 12d |
| 1050 | **SEGUNDA LIMPIEZA DE OBRA** | 2026-12-18 → 2026-12-23 (+5d) | 2026-12-23 → 2026-12-30 (+7d) | 26d → 24d |
| 1051 | Segunda limpieza de obra | 2026-12-18 → 2026-12-23 (+5d) | 2026-12-21 → 2026-12-28 (+7d) | 26d → 24d |
| 1052 | Segunda carga y acarreo de escombro | 2026-12-22 → 2026-12-28 (+6d) | 2026-12-23 → 2026-12-30 (+7d) | 26d → 24d |
| 1053 | **CANCELERIA PUERTAS Y VENTANAS DE ALUMINIO** | 2026-12-08 → 2026-12-11 (+3d) | 2026-12-23 → 2026-12-30 (+7d) | 13d → 11d |
| 1054 | Puerta ventana P-05 corrediza | 2026-12-10 → 2026-12-14 (+4d) | 2026-12-18 → 2026-12-22 (+4d) | 17d → 15d |
| 1055 | Ventana corrediza V-01 | 2026-12-08 → 2026-12-11 (+3d) | 2026-12-12 → 2026-12-16 (+4d) | 22d → 20d |
| 1056 | Ventana corrediza V-03 | 2026-12-10 → 2026-12-14 (+4d) | 2026-12-15 → 2026-12-18 (+3d) | 20d → 18d |
| 1057 | Ventana corrediza V-05 | 2026-12-10 → 2026-12-14 (+4d) | 2026-12-15 → 2026-12-18 (+3d) | 20d → 18d |
| 1058 | Ventana corrediza tipo XO | 2026-12-14 → 2026-12-17 (+3d) | 2026-12-18 → 2026-12-22 (+4d) | 17d → 15d |
| 1059 | Ventana fija escalera | 2026-12-16 → 2026-12-21 (+5d) | 2026-12-23 → 2026-12-30 (+7d) | 13d → 11d |
| 1060 | **CARPINTERIA, PUERTAS EXTERIORES E INTERIORES** | 2026-12-18 → 2026-12-23 (+5d) | 2027-01-04 → 2027-01-07 (+3d) | 8d → 6d |
| 1061 | Puerta P-01 de seguridad | 2026-12-18 → 2026-12-23 (+5d) | 2026-12-28 → 2027-01-02 (+5d) | 12d → 10d |
| 1062 | Puerta P-03 interior | 2026-12-18 → 2026-12-23 (+5d) | 2027-01-02 → 2027-01-06 (+4d) | 9d → 7d |
| 1063 | Puerta P-02 interior | 2026-12-18 → 2026-12-23 (+5d) | 2027-01-02 → 2027-01-06 (+4d) | 9d → 7d |
| 1064 | Puerta exterior lavandería | 2026-12-28 → 2027-01-02 (+5d) | 2027-01-04 → 2027-01-07 (+3d) | 8d → 6d |
| 1065 | **INSTALACION ELECTRICA** | 2026-11-17 → 2026-11-20 (+3d) | 2026-12-10 → 2026-12-14 (+4d) | 37d → 35d |
| 1066 | Alimentación eléctrica base a centro de carga | 2026-11-25 → 2026-11-28 (+3d) | 2026-12-01 → 2026-12-04 (+3d) | 41d → 39d |
| 1067 | Interruptor termomagnético 1x15 A | 2026-12-01 → 2026-12-04 (+3d) | 2026-12-02 → 2026-12-07 (+5d) | 41d → 39d |
| 1068 | Interruptor termomagnético 1x20 A | 2026-12-01 → 2026-12-04 (+3d) | 2026-12-02 → 2026-12-07 (+5d) | 41d → 39d |
| 1069 | Interruptor termomagnético 2x20 A | 2026-12-01 → 2026-12-04 (+3d) | 2026-12-02 → 2026-12-07 (+5d) | 41d → 39d |
| 1070 | Salida para apagador 3 vías | 2026-11-20 → 2026-11-24 (+4d) | 2026-11-25 → 2026-11-28 (+3d) | 37d → 35d |
| 1071 | Salida para apagador triple | 2026-11-25 → 2026-11-28 (+3d) | 2026-11-28 → 2026-12-02 (+4d) | 41d → 39d |
| 1072 | Salida para apagador doble | 2026-11-28 → 2026-12-02 (+4d) | 2026-12-02 → 2026-12-07 (+5d) | 41d → 39d |
| 1073 | Salida para apagador sencillo | 2026-11-25 → 2026-11-28 (+3d) | 2026-11-28 → 2026-12-02 (+4d) | 44d → 42d |
| 1074 | Salida de alumbrado en losa | 2026-11-25 → 2026-11-28 (+3d) | 2026-12-01 → 2026-12-04 (+3d) | 39d → 37d |
| 1075 | Salida de alumbrado en muro | 2026-11-25 → 2026-11-28 (+3d) | 2026-11-30 → 2026-12-03 (+3d) | 43d → 41d |
| 1076 | Salida para contacto 220 V | 2026-11-27 → 2026-12-01 (+4d) | 2026-12-01 → 2026-12-04 (+3d) | 37d → 35d |
| 1077 | Salida para contacto doble | 2026-11-27 → 2026-12-01 (+4d) | 2026-12-03 → 2026-12-08 (+5d) | 40d → 38d |
| 1078 | Salida para contacto doble área húmeda | 2026-12-01 → 2026-12-04 (+3d) | 2026-12-03 → 2026-12-08 (+5d) | 40d → 38d |
| 1079 | Salida TV / telefonía / intercom | 2026-12-01 → 2026-12-04 (+3d) | 2026-12-07 → 2026-12-10 (+3d) | 38d → 36d |
| 1080 | Extractor 4 baño | 2026-12-01 → 2026-12-04 (+3d) | 2026-12-08 → 2026-12-11 (+3d) | 37d → 35d |
| 1081 | Prueba eléctrica | 2026-12-08 → 2026-12-11 (+3d) | 2026-12-10 → 2026-12-14 (+4d) | 37d → 35d |
| 1082 | Murete convencional | 2026-11-17 → 2026-11-20 (+3d) | 2026-11-21 → 2026-11-25 (+4d) | 50d → 48d |
| 1083 | **INSTALACIÓN HIDRO-SANITARIA** | 2026-11-03 → 2026-11-06 (+3d) | 2026-11-18 → 2026-11-21 (+3d) | 8d → 6d |
| 1084 | Tubo PVC 3/4 red de condensados | 2026-11-03 → 2026-11-06 (+3d) | 2026-11-09 → 2026-11-12 (+3d) | 8d → 6d |
| 1085 | Caja PVC para lavadora | 2026-11-03 → 2026-11-06 (+3d) | 2026-11-06 → 2026-11-10 (+4d) | 8d → 6d |
| 1086 | Salida para secadora PVC 4 | 2026-11-03 → 2026-11-06 (+3d) | 2026-11-06 → 2026-11-10 (+4d) | 8d → 6d |
| 1087 | Salida hidráulica para boiler | 2026-11-03 → 2026-11-06 (+3d) | 2026-11-05 → 2026-11-09 (+4d) | 9d → 7d |
| 1088 | Salida hidráulica para llave de jardín | 2026-11-03 → 2026-11-06 (+3d) | 2026-11-06 → 2026-11-10 (+4d) | 8d → 6d |
| 1089 | Salida hidráulica para lavabo | 2026-11-03 → 2026-11-06 (+3d) | 2026-11-07 → 2026-11-11 (+4d) | 8d → 6d |
| 1090 | Salida hidráulica para purificación | 2026-11-03 → 2026-11-06 (+3d) | 2026-11-07 → 2026-11-11 (+4d) | 8d → 6d |
| 1091 | Salida sanitaria para lavabo | 2026-11-05 → 2026-11-09 (+4d) | 2026-11-07 → 2026-11-11 (+4d) | 8d → 6d |
| 1092 | Salida hidráulica para lavadero | 2026-11-05 → 2026-11-09 (+4d) | 2026-11-07 → 2026-11-11 (+4d) | 8d → 6d |
| 1093 | Salida sanitaria para lavadero | 2026-11-06 → 2026-11-10 (+4d) | 2026-11-09 → 2026-11-12 (+3d) | 8d → 6d |
| 1094 | Salida hidráulica para lavadora | 2026-11-06 → 2026-11-10 (+4d) | 2026-11-09 → 2026-11-12 (+3d) | 8d → 6d |
| 1095 | Salida sanitaria para lavadora | 2026-11-07 → 2026-11-11 (+4d) | 2026-11-10 → 2026-11-13 (+3d) | 8d → 6d |
| 1096 | Salida hidráulica para regadera | 2026-11-07 → 2026-11-11 (+4d) | 2026-11-13 → 2026-11-19 (+6d) | 13d → 11d |
| 1097 | Salida sanitaria para regadera | 2026-11-07 → 2026-11-11 (+4d) | 2026-11-12 → 2026-11-18 (+6d) | 14d → 12d |
| 1098 | Salida hidráulica para WC | 2026-11-05 → 2026-11-09 (+4d) | 2026-11-07 → 2026-11-11 (+4d) | 8d → 6d |
| 1099 | Salida sanitaria para WC | 2026-11-07 → 2026-11-11 (+4d) | 2026-11-12 → 2026-11-18 (+6d) | 8d → 6d |
| 1100 | Salida hidráulica para zinc | 2026-11-07 → 2026-11-11 (+4d) | 2026-11-12 → 2026-11-18 (+6d) | 8d → 6d |
| 1101 | Salida sanitaria para zinc | 2026-11-10 → 2026-11-13 (+3d) | 2026-11-13 → 2026-11-19 (+6d) | 8d → 6d |
| 1102 | Tubo para ventila de baño 2 | 2026-11-03 → 2026-11-06 (+3d) | 2026-11-09 → 2026-11-12 (+3d) | 8d → 6d |
| 1103 | Tubo para minisplit PVC 3 | 2026-11-09 → 2026-11-12 (+3d) | 2026-11-17 → 2026-11-20 (+3d) | 8d → 6d |
| 1104 | Cuadro de medición | 2026-11-06 → 2026-11-10 (+4d) | 2026-11-12 → 2026-11-18 (+6d) | 14d → 12d |
| 1105 | Prueba sanitaria | 2026-11-17 → 2026-11-20 (+3d) | 2026-11-18 → 2026-11-21 (+3d) | 12d → 10d |
| 1106 | Prueba hidráulica | 2026-11-13 → 2026-11-19 (+6d) | 2026-11-17 → 2026-11-20 (+3d) | 13d → 11d |
| 1107 | Salida hidráulica para tanque hidroneumático | 2026-11-06 → 2026-11-10 (+4d) | 2026-11-10 → 2026-11-13 (+3d) | 16d → 14d |
| 1108 | Salida hidráulica para Active Driver | 2026-11-06 → 2026-11-10 (+4d) | 2026-11-10 → 2026-11-13 (+3d) | 16d → 14d |

| ID | Task | Start | Finish | Duration | Complete | Total float | Predecessors |
| --- | --- | --- | --- | --- | --- | --- | --- |
| 1109 | **INSTALACION DE GAS** | 2026-10-31 → 2026-11-04 (+4d) | 2026-11-10 → 2026-11-13 (+3d) |  |  | 36d → 34d |  |
| 1110 | Ramaleo para gas 1/2 | 2026-11-04 → 2026-11-07 (+3d) | 2026-11-10 → 2026-11-13 (+3d) |  |  | 36d → 34d |  |
| 1111 | Excavación a mano material tipo B | 2026-10-31 → 2026-11-04 (+4d) | 2026-11-04 → 2026-11-07 (+3d) |  |  | 36d → 34d |  |
| 1112 | **MUEBLES SANITARIOS** | 2026-12-10 → 2026-12-14 (+4d) | 2027-01-20 → 2027-01-23 (+3d) |  |  | 8d → 6d |  |
| 1113 | WC one piece Smart Corona | 2026-12-10 → 2026-12-14 (+4d) | 2026-12-12 → 2026-12-16 (+4d) |  |  | 22d → 20d |  |
| 1114 | Lavabo Tarento Vanity | 2026-12-10 → 2026-12-14 (+4d) | 2026-12-15 → 2026-12-18 (+3d) |  |  | 20d → 18d |  |
| 1115 | Regadera y monomando Thames | 2026-12-12 → 2026-12-16 (+4d) | 2026-12-16 → 2026-12-19 (+3d) |  |  | 19d → 17d |  |
| 1116 | Coladera cuadrada para inserto cerámico | 2026-12-14 → 2026-12-17 (+3d) | 2026-12-16 → 2026-12-19 (+3d) |  |  | 19d → 17d |  |
| 1117 | Toallero argolla Thames | 2027-01-19 → 2027-01-22 (+3d) | 2027-01-20 → 2027-01-23 (+3d) |  |  | 8d → 6d |  |
| 1118 | Toallero barra Thames | 2027-01-19 → 2027-01-22 (+3d) | 2027-01-20 → 2027-01-23 (+3d) |  |  | 8d → 6d |  |
| 1119 | Portapapel Thames | 2027-01-19 → 2027-01-22 (+3d) | 2027-01-20 → 2027-01-23 (+3d) |  |  | 8d → 6d |  |
| 1120 | Gancho percha Thames | 2027-01-19 → 2027-01-22 (+3d) | 2027-01-20 → 2027-01-23 (+3d) |  |  | 8d → 6d |  |
| 1121 | **EQUIPAMIENTO** | 2026-10-26 → 2026-10-29 (+3d) | 2026-11-02 → 2026-11-05 (+3d) |  |  | 67d → 65d |  |
| 1122 | Electronivel Rotoplas 5 m | 2026-10-27 → 2026-10-30 (+3d) | 2026-10-28 → 2026-11-02 (+5d) |  |  | 70d → 68d |  |
| 1123 | Manómetro | 2026-10-27 → 2026-10-30 (+3d) | 2026-10-27 → 2026-10-30 (+3d) |  |  | 71d → 69d |  |
| 1124 | Interruptor de presión 30-50 PSI | 2026-10-27 → 2026-10-30 (+3d) | 2026-10-27 → 2026-10-30 (+3d) |  |  | 71d → 69d |  |
| 1125 | Tanque hidroneumático FPS-24LX | 2026-10-27 → 2026-10-30 (+3d) | 2026-10-29 → 2026-11-03 (+5d) |  |  | 67d → 65d |  |
| 1126 | Bomba sumergible Dominator 1.2 HP | 2026-10-30 → 2026-11-03 (+4d) | 2026-11-02 → 2026-11-05 (+3d) |  |  | 67d → 65d |  |
| 1127 | Cisterna prefabricada 2800 L | 2026-10-26 → 2026-10-29 (+3d) | 2026-10-26 → 2026-10-29 (+3d) |  |  | 67d → 65d |  |
| 1128 | **LUMINARIAS** | 2026-12-01 → 2026-12-04 (+3d) | 2026-12-04 → 2026-12-09 (+5d) |  |  | 39d → 37d |  |
| 1129 | Roseta de cerámica para luminaria | 2026-12-01 → 2026-12-04 (+3d) | 2026-12-04 → 2026-12-09 (+5d) |  |  | 39d → 37d |  |
| 1130 | Spot Brighton | 2026-12-01 → 2026-12-04 (+3d) | 2026-12-04 → 2026-12-09 (+5d) |  |  | 39d → 37d |  |
| 1131 | Arbotante bidireccional 12W | 2026-12-01 → 2026-12-04 (+3d) | 2026-12-03 → 2026-12-08 (+5d) |  |  | 40d → 38d |  |
| 1132 | **TERCER LIMPIEZA DE OBRA** | 2027-01-20 → 2027-01-23 (+3d) | 2027-01-29 → 2027-02-03 (+5d) |  |  | 8d → 6d |  |
| 1133 | Limpieza fina para entrega | 2027-01-20 → 2027-01-23 (+3d) | 2027-01-26 → 2027-01-29 (+3d) |  |  | 8d → 6d |  |
| 1134 | Tercera limpieza de obra | 2027-01-22 → 2027-01-26 (+4d) | 2027-01-27 → 2027-02-01 (+5d) |  |  | 8d → 6d |  |
| 1135 | Tercera carga y acarreo de escombro | 2027-01-25 → 2027-01-28 (+3d) | 2027-01-29 → 2027-02-03 (+5d) |  |  | 8d → 6d |  |
| 1136 | **OBRA EXTERIOR - BARDA** | 2026-11-06 → 2026-11-10 (+4d) | 2026-11-30 → 2026-12-03 (+3d) |  |  | 45d → 43d |  |
| 1137 | Barda de block aparente | 2026-11-06 → 2026-11-10 (+4d) | 2026-11-30 → 2026-12-03 (+3d) |  |  | 45d → 43d |  |
| 1138 | **LOTE 21 M-663 CORSAC-A** | 2026-05-29 A → 2026-06-10 A (+12d) |  | 199d → 190d | 1% → 4% | 0d → 1d |  |
| 1139 | **HITOS IMPORTANTES DEL LOTE** | 2026-05-29 A → 2026-06-10 A (+12d) |  | 199d → 190d |  | 0d → 1d |  |
| 1140 | Inicio del Lote-21 M-663 Corsac-A | 2026-05-29 A → 2026-06-10 A (+12d) | 2026-05-29 A → 2026-06-10 A (+12d) |  |  |  |  |
| 1141 | Colado de Losa de Cimentación | 2026-07-13 → 2026-07-22 (+9d) | 2026-07-13 → 2026-07-22 (+9d) |  |  | 164d → 157d |  |
| 1142 | Colado de Losa de Entrepiso | 2026-08-19 → 2026-08-28 (+9d) | 2026-08-19 → 2026-08-28 (+9d) |  |  | 134d → 127d |  |
| 1143 | Colado de Losa de Azotea | 2026-09-26 → 2026-10-06 (+10d) | 2026-09-26 → 2026-10-06 (+10d) |  |  | 104d → 97d |  |
| 1145 | **TRABAJOS PRELIMINARES** | 2026-05-29 A → 2026-06-10 A (+12d) | 2026-06-05 A → 2026-06-16 A (+11d) |  |  |  |  |
| 1146 | Trazo y nivelación | 2026-05-29 A → 2026-06-10 A (+12d) | 2026-06-05 A → 2026-06-16 A (+11d) |  |  |  |  |
| 1147 | **EXCAVACIONES** | 2026-06-05 A → 2026-06-16 A (+11d) | 2026-06-09 A → 2026-06-30 A (+21d) | 3d → 11d |  |  |  |
| 1148 | Excavación a mano material tipo B | 2026-06-05 A → 2026-06-16 A (+11d) | 2026-06-09 A → 2026-06-29 A (+20d) | 3d → 10d |  |  |  |
| 1149 | Acarreo en carretilla 20 m | 2026-06-06 A → 2026-06-17 A (+11d) | 2026-06-09 A → 2026-06-30 A (+21d) | 2d → 10d |  |  |  |
| 1150 | **CIMENTACION** | 2026-06-27 → 2026-07-07 A (+10d) | 2026-07-14 → 2026-07-23 (+9d) | 13d → 14d | 0% → 39% | 0d → 1d |  |
| 1151 | Cimbra perimetral losa de cimentación | 2026-06-27 → 2026-07-08 A (+11d) | 2026-07-01 → 2026-07-10 A (+9d) |  | 0% → 100% | 0d → none | 1148FS+15d, 1149 → 1148FS+7d, 1149 |
| 1152 | Sistema antitermitas PVC | 2026-06-27 → 2026-07-08 A (+11d) | 2026-07-01 → 2026-07-10 A (+9d) |  | 0% → 100% | 1d → none | 1148FS+15d, 1149 → 1148FS+7d, 1149 |
| 1153 | Hule negro en cimentación | 2026-07-01 → 2026-07-11 A (+10d) | 2026-07-02 → 2026-07-13 (+11d) |  | 0% → 63% |  |  |
| 1154 | Ramaleo poliducto eléctrico cimentación | 2026-07-02 → 2026-07-07 A (+5d) | 2026-07-04 → 2026-07-08 A (+4d) |  | 0% → 100% | 4d → none | 1153 → 1153FS-5d |
| 1155 | Ramaleo eléctrico base-medición a centro de carga | 2026-07-02 → 2026-07-07 A (+5d) | 2026-07-03 → 2026-07-07 A (+4d) |  | 0% → 100% | 5d → none | 1153 → 1153FS-5d |
| 1156 | Ramaleo eléctrico exterior | 2026-07-06 → 2026-07-09 A (+3d) | 2026-07-06 → 2026-07-09 A (+3d) |  | 0% → 100% | 4d → none |  |
| 1157 | Ramaleo para cable poliducto 3/4 | 2026-07-06 → 2026-07-09 A (+3d) | 2026-07-06 → 2026-07-09 A (+3d) |  | 0% → 100% | 4d → none |  |
| 1158 | Ramaleo para TV poliducto 3/4 | 2026-07-06 → 2026-07-09 A (+3d) | 2026-07-06 → 2026-07-09 A (+3d) |  | 0% → 100% | 4d → none |  |
| 1159 | Ramaleo hidráulico CPVC 1-1/4" cimentación | 2026-07-02 → 2026-07-08 A (+6d) | 2026-07-03 → 2026-07-08 A (+5d) |  | 0% → 100% | 1d → none | 1153 → 1153FS-4d |
| 1160 | Ramaleo hidráulico CPVC 1 cimentación | 2026-07-02 → 2026-07-08 A (+6d) | 2026-07-03 → 2026-07-08 A (+5d) |  | 0% → 100% | 1d → none | 1153, 1159SS → 1153FS-4d, 1159SS |
| 1161 | Ramaleo hidráulico CPVC 3/4 cimentación | 2026-07-03 → 2026-07-09 A (+6d) | 2026-07-06 → 2026-07-10 A (+4d) |  | 0% → 100% | 1d → none |  |
| 1162 | Ramaleo hidráulico CPVC 1/2 cimentación | 2026-07-07 → 2026-07-11 A (+4d) | 2026-07-08 → 2026-07-14 (+6d) |  | 0% → 31% | 1d → 6d |  |
| 1163 | Prueba hidráulica | 2026-07-09 → 2026-07-14 (+5d) | 2026-07-09 → 2026-07-15 (+6d) |  |  | 1d → 6d |  |
| 1164 | Ramaleo sanitario PVC 4 cimentación | 2026-07-03 → 2026-07-14 (+11d) | 2026-07-06 → 2026-07-16 (+10d) |  |  | 2d → 3d |  |
| 1165 | Ramaleo sanitario PVC 2 cimentación | 2026-07-07 → 2026-07-16 (+9d) | 2026-07-07 → 2026-07-17 (+10d) |  |  | 2d → 3d |  |
| 1166 | Prueba sanitaria | 2026-07-08 → 2026-07-17 (+9d) | 2026-07-08 → 2026-07-18 (+10d) |  |  | 2d → 3d |  |
| 1167 | Acero contratrabe CT-1 | 2026-07-01 → 2026-07-11 A (+10d) | 2026-07-06 → 2026-07-16 (+10d) |  | 0% → 16% | 0d → 1d |  |
| 1168 | Acero contratrabe CT-2 | 2026-07-01 → 2026-07-11 A (+10d) | 2026-07-06 → 2026-07-16 (+10d) |  | 0% → 16% | 0d → 1d |  |
| 1169 | Malla electrosoldada 6-6/8-8 | 2026-07-09 → 2026-07-18 (+9d) | 2026-07-10 → 2026-07-21 (+11d) |  |  | 0d → 1d |  |
| 1170 | Bastón de refuerzo LS | 2026-07-07 → 2026-07-16 (+9d) | 2026-07-08 → 2026-07-18 (+10d) |  |  | 0d → 1d |  |
| 1171 | Bastón de refuerzo LI | 2026-07-07 → 2026-07-16 (+9d) | 2026-07-08 → 2026-07-18 (+10d) |  |  | 0d → 1d |  |
| 1172 | Colado losa de cimentación f’c=200 | 2026-07-11 → 2026-07-21 (+10d) | 2026-07-13 → 2026-07-22 (+9d) |  |  | 0d → 1d |  |
| 1173 | Curado de concreto | 2026-07-13 → 2026-07-22 (+9d) | 2026-07-14 → 2026-07-23 (+9d) |  |  | 0d → 1d |  |
| 1174 | Acero zapata ZT-1 | 2026-07-07 → 2026-07-16 (+9d) | 2026-07-10 → 2026-07-21 (+11d) |  |  | 0d → 1d |  |
| 1175 | Acero zapata ZT-2 | 2026-07-07 → 2026-07-16 (+9d) | 2026-07-10 → 2026-07-21 (+11d) |  |  | 0d → 1d |  |
| 1176 | **MUROS, PLANTA BAJA. CASTILLOS Y CERRAMIENTOS** | 2026-07-08 → 2026-07-17 (+9d) | 2026-08-01 → 2026-08-11 (+10d) |  |  | 5d → 6d |  |
| 1177 | Anclaje de castillos y Columnas PB | 2026-07-08 → 2026-07-17 (+9d) | 2026-07-14 → 2026-07-23 (+9d) |  |  | 151d → 144d |  |
| 1178 | Castillo K1 | 2026-07-14 → 2026-07-23 (+9d) | 2026-07-18 → 2026-07-29 (+11d) |  |  | 151d → 144d |  |
| 1179 | Castillo K3 | 2026-07-16 → 2026-07-27 (+11d) | 2026-07-20 → 2026-07-30 (+10d) |  |  | 151d → 144d |  |

| ID | Task | Start | Finish | Total float |
| --- | --- | --- | --- | --- |
| 1180 | Castillo K4 | 2026-07-16 → 2026-07-27 (+11d) | 2026-07-20 → 2026-07-30 (+10d) | 151d → 144d |
| 1181 | Castillo K5 | 2026-07-18 → 2026-07-29 (+11d) | 2026-07-22 → 2026-08-01 (+10d) | 151d → 144d |
| 1182 | Refuerzo de muro K6 | 2026-07-20 → 2026-07-30 (+10d) | 2026-07-23 → 2026-08-03 (+11d) | 151d → 144d |
| 1183 | Dala de cerramiento CR-1 | 2026-07-20 → 2026-07-30 (+10d) | 2026-07-24 → 2026-08-04 (+11d) | 154d → 147d |
| 1184 | Dala de cerramiento CR-2 | 2026-07-20 → 2026-07-30 (+10d) | 2026-07-23 → 2026-08-03 (+11d) | 155d → 148d |
| 1185 | Cadena block dala | 2026-07-23 → 2026-08-03 (+11d) | 2026-07-29 → 2026-08-07 (+9d) | 151d → 144d |
| 1186 | Muro de ladrillo aparente | 2026-07-14 → 2026-07-23 (+9d) | 2026-08-01 → 2026-08-11 (+10d) | 0d → 1d |
| 1187 | Muro de block planta baja | 2026-07-16 → 2026-07-27 (+11d) | 2026-08-01 → 2026-08-11 (+10d) | 0d → 1d |
| 1188 | Ramaleo electrico en Muros Planta Baja | 2026-07-20 → 2026-07-30 (+10d) | 2026-07-24 → 2026-08-04 (+11d) | 3d → 4d |
| 1189 | Ramaleo para cable poliducto 3/4 | 2026-07-24 → 2026-08-04 (+11d) | 2026-07-28 → 2026-08-06 (+9d) | 3d → 4d |
| 1190 | Ramaleo para TV poliducto 3/4 | 2026-07-28 → 2026-08-06 (+9d) | 2026-07-31 → 2026-08-10 (+10d) | 3d → 4d |
| 1191 | **ESCALERA** | 2026-08-19 → 2026-08-28 (+9d) | 2026-08-31 → 2026-09-10 (+10d) | 77d → 78d |
| 1192 | Escalera de concreto armado | 2026-08-19 → 2026-08-28 (+9d) | 2026-08-31 → 2026-09-10 (+10d) | 77d → 78d |
| 1193 | **LOSA DE ENTREPISO (viegueta y caseton)** | 2026-07-30 → 2026-08-08 (+9d) | 2026-08-20 → 2026-08-29 (+9d) | 3d → 4d |
| 1194 | Dala de coronamiento 10cm | 2026-08-07 → 2026-08-18 (+11d) | 2026-08-11 → 2026-08-21 (+10d) | 3d → 4d |
| 1195 | Dala de coronamiento 12cm | 2026-08-08 → 2026-08-19 (+11d) | 2026-08-12 → 2026-08-22 (+10d) | 2d → 3d |
| 1196 | Trabe TR-1 | 2026-07-30 → 2026-08-08 (+9d) | 2026-08-03 → 2026-08-12 (+9d) | 4d → 5d |
| 1197 | Trabe TR-2 | 2026-07-31 → 2026-08-10 (+10d) | 2026-08-05 → 2026-08-14 (+9d) | 2d → 3d |
| 1198 | Nervadura NR-1 | 2026-08-01 → 2026-08-11 (+10d) | 2026-08-06 → 2026-08-17 (+11d) | 1d → 2d |
| 1199 | Nervadura NR-2 | 2026-08-03 → 2026-08-12 (+9d) | 2026-08-07 → 2026-08-18 (+11d) | 0d → 1d |
| 1200 | Nervadura NR-3 | 2026-08-03 → 2026-08-12 (+9d) | 2026-08-07 → 2026-08-18 (+11d) | 0d → 1d |
| 1201 | Nervadura NR-4 | 2026-08-03 → 2026-08-12 (+9d) | 2026-08-07 → 2026-08-18 (+11d) | 0d → 1d |
| 1202 | Acero de refuerzo en nervios #3 | 2026-08-07 → 2026-08-18 (+11d) | 2026-08-10 → 2026-08-20 (+10d) | 0d → 1d |
| 1203 | Acero de refuerzo long. #3 | 2026-08-08 → 2026-08-19 (+11d) | 2026-08-12 → 2026-08-22 (+10d) | 1d → 2d |
| 1204 | Acero de refuerzo long. #4 | 2026-08-08 → 2026-08-19 (+11d) | 2026-08-12 → 2026-08-22 (+10d) | 1d → 2d |
| 1205 | Malla 66-10/10 losa de compresión | 2026-08-14 → 2026-08-25 (+11d) | 2026-08-18 → 2026-08-27 (+9d) | 0d → 1d |
| 1206 | Acero de Losa Maciza | 2026-08-07 → 2026-08-18 (+11d) | 2026-08-11 → 2026-08-21 (+10d) | 5d → 6d |
| 1207 | Caseton de 60x60x20cm | 2026-08-07 → 2026-08-18 (+11d) | 2026-08-10 → 2026-08-20 (+10d) | 4d → 5d |
| 1208 | Concreto losa de entrepiso f’c=200 | 2026-08-18 → 2026-08-27 (+9d) | 2026-08-19 → 2026-08-28 (+9d) | 0d → 1d |
| 1209 | Curado de concreto | 2026-08-19 → 2026-08-28 (+9d) | 2026-08-20 → 2026-08-29 (+9d) | 0d → 1d |
| 1210 | Cimbra losa de azotea | 2026-08-03 → 2026-08-12 (+9d) | 2026-08-08 → 2026-08-19 (+11d) | 1d → 2d |
| 1211 | Cimbra exterior corta losa | 2026-08-11 → 2026-08-21 (+10d) | 2026-08-14 → 2026-08-25 (+11d) | 2d → 3d |
| 1212 | Ramaleo poliducto eléctrico entrepiso | 2026-08-10 → 2026-08-20 (+10d) | 2026-08-12 → 2026-08-22 (+10d) | 139d → 132d |
| 1213 | Ramaleo hidráulico CPVC 3/4" | 2026-08-11 → 2026-08-21 (+10d) | 2026-08-13 → 2026-08-24 (+11d) | 0d → 1d |
| 1214 | Ramaleo hidráulico CPVC 1/2" | 2026-08-13 → 2026-08-24 (+11d) | 2026-08-14 → 2026-08-25 (+11d) | 0d → 1d |
| 1215 | Prueba hidráulica | 2026-08-13 → 2026-08-24 (+11d) | 2026-08-14 → 2026-08-25 (+11d) | 0d → 1d |
| 1216 | Ramaleo sanitario PVC 4" | 2026-08-11 → 2026-08-21 (+10d) | 2026-08-13 → 2026-08-24 (+11d) | 0d → 1d |
| 1217 | Ramaleo sanitario PVC 2" | 2026-08-13 → 2026-08-24 (+11d) | 2026-08-14 → 2026-08-25 (+11d) | 0d → 1d |
| 1218 | Prueba sanitaria | 2026-08-13 → 2026-08-24 (+11d) | 2026-08-14 → 2026-08-25 (+11d) | 0d → 1d |
| 1219 | **MUROS EN PLANTA ALTA, CASTILLOS Y CERRM.** | 2026-08-11 → 2026-08-21 (+10d) | 2026-09-08 → 2026-09-18 (+10d) | 1d → 2d |
| 1220 | Anclaje de castillos y Columnas PA | 2026-08-11 → 2026-08-21 (+10d) | 2026-08-17 → 2026-08-26 (+9d) | 1d → 2d |
| 1221 | Castillo K1 | 2026-08-20 → 2026-08-31 (+11d) | 2026-08-25 → 2026-09-03 (+9d) | 4d → 5d |
| 1222 | Castillo K2 | 2026-08-21 → 2026-09-01 (+11d) | 2026-08-26 → 2026-09-04 (+9d) | 3d → 4d |
| 1223 | Castillo K4 | 2026-08-25 → 2026-09-04 (+10d) | 2026-08-28 → 2026-09-08 (+11d) | 4d → 5d |
| 1224 | Castillo K5 | 2026-08-25 → 2026-09-04 (+10d) | 2026-08-28 → 2026-09-08 (+11d) | 4d → 5d |
| 1225 | Castillo K6 | 2026-08-25 → 2026-09-04 (+10d) | 2026-08-28 → 2026-09-08 (+11d) | 4d → 5d |
| 1226 | Refuerzo de muro | 2026-08-26 → 2026-09-05 (+10d) | 2026-08-29 → 2026-09-09 (+11d) | 3d → 4d |
| 1227 | Dala de cerramiento CR-1 | 2026-08-31 → 2026-09-09 (+9d) | 2026-09-03 → 2026-09-14 (+11d) | 3d → 4d |
| 1228 | Dala de cerramiento CR-2 | 2026-08-31 → 2026-09-09 (+9d) | 2026-09-03 → 2026-09-14 (+11d) | 3d → 4d |
| 1229 | Cadena block dala | 2026-09-04 → 2026-09-14 (+10d) | 2026-09-08 → 2026-09-18 (+10d) | 3d → 4d |
| 1230 | Muro de ladrillo aparente | 2026-08-20 → 2026-08-31 (+11d) | 2026-09-08 → 2026-09-18 (+10d) | 0d → 1d |
| 1231 | Muro de block planta alta | 2026-08-21 → 2026-09-01 (+11d) | 2026-09-08 → 2026-09-18 (+10d) | 0d → 1d |
| 1232 | Ramaleo electrico en Muros Planta Alta | 2026-08-31 → 2026-09-09 (+9d) | 2026-09-03 → 2026-09-14 (+11d) | 11d → 12d |
| 1233 | **LOSA AZOTEA** | 2026-09-08 → 2026-09-18 (+10d) | 2026-09-28 → 2026-10-07 (+9d) | 0d → 1d |
| 1234 | Cortalosa CL-1 | 2026-09-23 → 2026-10-02 (+9d) | 2026-09-25 → 2026-10-05 (+10d) | 0d → 1d |
| 1235 | Cortalosa CL-2 | 2026-09-23 → 2026-10-02 (+9d) | 2026-09-25 → 2026-10-05 (+10d) | 0d → 1d |
| 1236 | Vigueta pretensada V11-30 125 | 2026-09-08 → 2026-09-18 (+10d) | 2026-09-14 → 2026-09-25 (+11d) | 3d → 4d |
| 1237 | Vigueta pretensada V11-30 185 | 2026-09-08 → 2026-09-18 (+10d) | 2026-09-14 → 2026-09-25 (+11d) | 3d → 4d |
| 1238 | Vigueta pretensada V11-30 190 | 2026-09-08 → 2026-09-18 (+10d) | 2026-09-14 → 2026-09-25 (+11d) | 3d → 4d |
| 1239 | Vigueta pretensada V11-30 205 | 2026-09-10 → 2026-09-22 (+12d) | 2026-09-17 → 2026-09-28 (+11d) | 1d → 2d |
| 1240 | Vigueta pretensada V11-30 215 | 2026-09-10 → 2026-09-22 (+12d) | 2026-09-17 → 2026-09-28 (+11d) | 1d → 2d |
| 1241 | Vigueta pretensada V11-30 260 | 2026-09-11 → 2026-09-23 (+12d) | 2026-09-18 → 2026-09-29 (+11d) | 0d → 1d |
| 1242 | Vigueta pretensada V11-30 285 | 2026-09-11 → 2026-09-23 (+12d) | 2026-09-18 → 2026-09-29 (+11d) | 0d → 1d |
| 1243 | Vigueta pretensada V11-40 330 | 2026-09-11 → 2026-09-23 (+12d) | 2026-09-18 → 2026-09-29 (+11d) | 0d → 1d |
| 1244 | Vigueta pretensada V11-40 335 | 2026-09-11 → 2026-09-23 (+12d) | 2026-09-18 → 2026-09-29 (+11d) | 0d → 1d |
| 1245 | Vigueta pretensada V11-40 505 | 2026-09-11 → 2026-09-23 (+12d) | 2026-09-18 → 2026-09-29 (+11d) | 0d → 1d |
| 1246 | Bovedilla poliestireno azotea | 2026-09-18 → 2026-09-29 (+11d) | 2026-09-23 → 2026-10-02 (+9d) | 0d → 1d |
| 1247 | Malla 66-10/10 losa de compresión | 2026-09-23 → 2026-10-02 (+9d) | 2026-09-25 → 2026-10-05 (+10d) | 0d → 1d |
| 1248 | Concreto losa de azotea f’c=200 | 2026-09-25 → 2026-10-05 (+10d) | 2026-09-26 → 2026-10-06 (+10d) | 0d → 1d |
| 1249 | Curado de concreto | 2026-09-26 → 2026-10-06 (+10d) | 2026-09-28 → 2026-10-07 (+9d) | 0d → 1d |

| ID | Task | Start | Finish | Total float |
| --- | --- | --- | --- | --- |
| 1250 | Cimbra losa de azotea | 2026-09-08 → 2026-09-18 (+10d) | 2026-09-14 → 2026-09-25 (+11d) | 8d → 9d |
| 1251 | Ramaleo de poliducto para inst. electrica en azotea | 2026-09-23 → 2026-10-02 (+9d) | 2026-09-25 → 2026-10-05 (+10d) | 0d → 1d |
| 1252 | **PRETIL Y ACABADOS DE AZOTEA** | 2026-09-28 → 2026-10-07 (+9d) | 2026-10-21 → 2026-10-30 (+9d) | 0d → 1d |
| 1253 | Castillo K1 | 2026-09-30 → 2026-10-09 (+9d) | 2026-10-06 → 2026-10-16 (+10d) | 0d → 1d |
| 1254 | Dala de cerramiento en pretil | 2026-10-03 → 2026-10-14 (+11d) | 2026-10-08 → 2026-10-19 (+11d) | 0d → 1d |
| 1255 | Muro de block 12x15x40 | 2026-09-28 → 2026-10-07 (+9d) | 2026-10-03 → 2026-10-14 (+11d) | 0d → 1d |
| 1256 | Chaflán en azotea | 2026-10-06 → 2026-10-16 (+10d) | 2026-10-12 → 2026-10-21 (+9d) | 0d → 1d |
| 1257 | Diamante de entortado | 2026-10-06 → 2026-10-16 (+10d) | 2026-10-12 → 2026-10-21 (+9d) | 0d → 1d |
| 1258 | Aplanado exterior Mortermax fino | 2026-10-08 → 2026-10-19 (+11d) | 2026-10-15 → 2026-10-24 (+9d) | 0d → 1d |
| 1259 | Entortado de Losa | 2026-10-16 → 2026-10-27 (+11d) | 2026-10-21 → 2026-10-30 (+9d) | 0d → 1d |
| 1260 | Curado de concreto | 2026-10-15 → 2026-10-26 (+11d) | 2026-10-16 → 2026-10-26 (+10d) | 0d → 1d |
| 1261 | **PRIMERA LIMPIEZA DE OBRA** | 2026-09-28 → 2026-10-07 (+9d) | 2026-10-02 → 2026-10-13 (+11d) | 60d → 53d |
| 1262 | Primera limpieza de obra | 2026-09-28 → 2026-10-07 (+9d) | 2026-09-30 → 2026-10-09 (+9d) | 60d → 53d |
| 1263 | Primera carga y acarreo de escombro | 2026-09-30 → 2026-10-09 (+9d) | 2026-10-02 → 2026-10-13 (+11d) | 60d → 53d |
| 1264 | **IMPERMEABILIZACION** | 2026-10-21 → 2026-10-31 (+10d) | 2026-10-27 → 2026-11-06 (+10d) | 0d → 1d |
| 1265 | Impermeabilización de pretil Kover 5 años | 2026-10-21 → 2026-10-31 (+10d) | 2026-10-26 → 2026-11-05 (+10d) | 1d → 2d |
| 1266 | Impermeabilización de losa Kover 5 años | 2026-10-21 → 2026-10-31 (+10d) | 2026-10-27 → 2026-11-06 (+10d) | 0d → 1d |
| 1267 | **ALBAÑILERIA** | 2026-10-03 → 2026-10-14 (+11d) | 2026-12-21 → 2027-01-05 (+15d) | 19d → 20d |
| 1268 | Lavadero de granito | 2026-11-18 → 2026-11-27 (+9d) | 2026-11-23 → 2026-12-02 (+9d) | 59d → 52d |
| 1269 | Ranurado y resane general inst. en muros | 2026-10-26 → 2026-11-04 (+9d) | 2026-10-28 → 2026-11-07 (+10d) | 2d → 3d |
| 1270 | Ranurado y resane eléctrico 1/2 a 3/4 | 2026-10-26 → 2026-11-04 (+9d) | 2026-10-28 → 2026-11-07 (+10d) | 2d → 3d |
| 1271 | Ranurado y resane hidráulico 1/2 a 1 | 2026-10-28 → 2026-11-06 (+9d) | 2026-10-29 → 2026-11-09 (+11d) | 1d → 2d |
| 1272 | Resane sanitario tubería 2 | 2026-10-28 → 2026-11-06 (+9d) | 2026-10-29 → 2026-11-09 (+11d) | 1d → 2d |
| 1273 | Resane sanitario tubería 4 | 2026-10-28 → 2026-11-06 (+9d) | 2026-10-29 → 2026-11-09 (+11d) | 1d → 2d |
| 1274 | Resane minisplit tubería 3 | 2026-10-28 → 2026-11-06 (+9d) | 2026-10-29 → 2026-11-09 (+11d) | 1d → 2d |
| 1275 | Ramaleo hidráulico exterior CPVC 1 1/4 | 2026-10-28 → 2026-11-06 (+9d) | 2026-10-30 → 2026-11-10 (+11d) | 0d → 1d |
| 1276 | Ramaleo hidráulico exterior CPVC 1 | 2026-10-28 → 2026-11-06 (+9d) | 2026-10-29 → 2026-11-09 (+11d) | 0d → 1d |
| 1277 | Ramaleo hidráulico exterior CPVC 3/4 | 2026-10-30 → 2026-11-09 (+10d) | 2026-11-02 → 2026-11-11 (+9d) | 0d → 1d |
| 1278 | Ramaleo hidráulico exterior CPVC 1/2 | 2026-10-30 → 2026-11-09 (+10d) | 2026-11-02 → 2026-11-11 (+9d) | 0d → 1d |
| 1279 | Prueba hidráulica | 2026-11-02 → 2026-11-11 (+9d) | 2026-11-03 → 2026-11-12 (+9d) | 0d → 1d |
| 1280 | Ramaleo sanitario exterior PVC 4 | 2026-10-28 → 2026-11-06 (+9d) | 2026-11-02 → 2026-11-11 (+9d) | 0d → 1d |
| 1281 | Ramaleo sanitario exterior PVC 2 | 2026-10-29 → 2026-11-07 (+9d) | 2026-11-02 → 2026-11-11 (+9d) | 0d → 1d |
| 1282 | Prueba sanitaria | 2026-11-02 → 2026-11-11 (+9d) | 2026-11-03 → 2026-11-12 (+9d) | 0d → 1d |
| 1283 | Centro de carga muros PB | 2026-10-31 → 2026-11-10 (+10d) | 2026-11-05 → 2026-11-17 (+12d) | 2d → 3d |
| 1284 | Firme de concreto 8 cm | 2026-11-03 → 2026-11-12 (+9d) | 2026-11-07 → 2026-11-19 (+12d) | 53d → 46d |
| 1285 | Curado de concreto | 2026-11-07 → 2026-11-19 (+12d) | 2026-11-09 → 2026-11-20 (+11d) | 53d → 46d |
| 1286 | Cisterna 2800 L con instalación | 2026-10-03 → 2026-10-14 (+11d) | 2026-10-26 → 2026-11-05 (+10d) | 59d → 52d |
| 1287 | Banqueta y huellas de concreto | 2026-11-10 → 2026-11-21 (+11d) | 2026-11-21 → 2026-12-01 (+10d) | 36d → 29d |
| 1288 | Curado de concreto | 2026-11-21 → 2026-12-01 (+10d) | 2026-11-23 → 2026-12-02 (+9d) | 36d → 29d |
| 1289 | Número oficial | 2026-12-21 → 2027-01-04 (+14d) | 2026-12-21 → 2027-01-05 (+15d) | 36d → 29d |
| 1290 | Detallado de rodapié exterior | 2026-11-05 → 2026-11-17 (+12d) | 2026-11-10 → 2026-11-21 (+11d) | 68d → 61d |
| 1291 | Detalle de losas y volados acabado fino | 2026-10-28 → 2026-11-06 (+9d) | 2026-11-02 → 2026-11-11 (+9d) | 4d → 5d |
| 1292 | Detalle fino en muros interiores | 2026-10-30 → 2026-11-09 (+10d) | 2026-11-05 → 2026-11-17 (+12d) | 1d → 2d |
| 1293 | Jardín interior bajo escalera con pozo de absorción | 2026-10-28 → 2026-11-06 (+9d) | 2026-11-11 → 2026-11-23 (+12d) | 4d → 5d |
| 1294 | **ACABADOS EN FACHADA A** | 2026-10-21 → 2026-10-31 (+10d) | 2026-12-19 → 2027-01-04 (+16d) | 36d → 29d |
| 1295 | Aplanado grueso fachada | 2026-10-21 → 2026-10-31 (+10d) | 2026-11-05 → 2026-11-17 (+12d) | 42d → 35d |
| 1296 | Aplanado fino estuco fachada | 2026-10-30 → 2026-11-09 (+10d) | 2026-11-11 → 2026-11-23 (+12d) | 42d → 35d |
| 1297 | Pintura acrílica 1-0102P | 2026-12-08 → 2026-12-17 (+9d) | 2026-12-17 → 2026-12-30 (+13d) | 38d → 31d |
| 1298 | Pintura acrílica 1-1404D | 2026-12-08 → 2026-12-17 (+9d) | 2026-12-19 → 2027-01-04 (+16d) | 36d → 29d |
| 1299 | Cantera 40x60cm | 2026-11-11 → 2026-11-23 (+12d) | 2026-11-30 → 2026-12-10 (+10d) | 42d → 35d |
| 1300 | Lambrin de permabase 1 cara | 2026-11-05 → 2026-11-17 (+12d) | 2026-11-09 → 2026-11-20 (+11d) | 49d → 42d |
| 1301 | Enchapado de Permabase | 2026-11-09 → 2026-11-20 (+11d) | 2026-11-13 → 2026-11-25 (+12d) | 49d → 42d |
| 1302 | Cubierta de Permabase | 2026-11-13 → 2026-11-25 (+12d) | 2026-11-21 → 2026-12-01 (+10d) | 49d → 42d |
| 1303 | **APLANADOS Y PINTURA** | 2026-10-28 → 2026-11-06 (+9d) | 2027-01-20 → 2027-01-29 (+9d) | 2d → 3d |
| 1304 | Yeso pulido en muros | 2026-11-06 → 2026-11-18 (+12d) | 2026-11-25 → 2026-12-04 (+9d) | 0d → 1d |
| 1305 | Aplanado en muros enjarre grueso | 2026-10-28 → 2026-11-06 (+9d) | 2026-11-03 → 2026-11-12 (+9d) | 3d → 4d |
| 1306 | Pintura vinílica OR-W13 SHOELACE | 2027-01-04 → 2027-01-14 (+10d) | 2027-01-20 → 2027-01-29 (+9d) | 0d → 1d |
| 1307 | Pintura vinílica PPUI5-13 Creamy M. | 2026-12-26 → 2027-01-07 (+12d) | 2027-01-11 → 2027-01-20 (+9d) | 8d → 9d |
| 1308 | Pintura vinílica MD-06 Nano White | 2026-12-26 → 2027-01-07 (+12d) | 2027-01-07 → 2027-01-18 (+11d) | 10d → 11d |
| 1309 | Yeso pulido en plafones | 2026-10-28 → 2026-11-06 (+9d) | 2026-11-09 → 2026-11-20 (+11d) | 2d → 3d |
| 1310 | Perfilado de puertas y ventanas | 2026-11-11 → 2026-11-23 (+12d) | 2026-11-18 → 2026-11-27 (+9d) | 63d → 56d |
| 1311 | **PISOS Y AZULEJOS** | 2026-11-19 → 2026-11-28 (+9d) | 2026-12-18 → 2027-01-02 (+15d) | 0d → 1d |
| 1312 | **AREA SOCIAL** | 2026-11-23 → 2026-12-02 (+9d) | 2026-12-11 → 2026-12-21 (+10d) | 0d → 1d |
| 1313 | Piso Adhara 44X89 | 2026-11-23 → 2026-12-02 (+9d) | 2026-12-10 → 2026-12-19 (+9d) | 0d → 1d |
| 1314 | Zoclo Adhara 44X89 | 2026-12-04 → 2026-12-15 (+11d) | 2026-12-11 → 2026-12-21 (+10d) | 17d → 18d |
| 1315 | **RECAMARAS** | 2026-11-19 → 2026-11-28 (+9d) | 2026-11-28 → 2026-12-09 (+11d) | 0d → 1d |
| 1316 | Acabado aparente de pisos - pulido | 2026-11-19 → 2026-11-28 (+9d) | 2026-11-28 → 2026-12-09 (+11d) | 0d → 1d |
| 1317 | **BAÑOS** | 2026-11-20 → 2026-11-30 (+10d) | 2026-12-11 → 2026-12-21 (+10d) | 11d → 12d |
| 1318 | Azulejo Mod. Ornamenta 60x30 | 2026-11-28 → 2026-12-09 (+11d) | 2026-12-04 → 2026-12-15 (+11d) | 11d → 12d |
| 1319 | Impermeabilización en regadera | 2026-11-27 → 2026-12-08 (+11d) | 2026-11-30 → 2026-12-10 (+10d) | 11d → 12d |

| ID | Task | Start | Finish | Total float |
| --- | --- | --- | --- | --- |
| 1320 | Piso Mod. Valparaiso 20x20 | 2026-12-04 → 2026-12-15 (+11d) | 2026-12-10 → 2026-12-19 (+9d) | 11d → 12d |
| 1321 | Zoclo Adhara 44X89 | 2026-12-09 → 2026-12-18 (+9d) | 2026-12-11 → 2026-12-21 (+10d) | 44d → 37d |
| 1322 | Piso Adhara 44X89 | 2026-12-04 → 2026-12-15 (+11d) | 2026-12-09 → 2026-12-18 (+9d) | 46d → 39d |
| 1323 | Fabricacion de nicho decorativo en baños | 2026-11-20 → 2026-11-30 (+10d) | 2026-11-27 → 2026-12-08 (+11d) | 11d → 12d |
| 1324 | Sardinel en regadera | 2026-12-04 → 2026-12-15 (+11d) | 2026-12-10 → 2026-12-19 (+9d) | 45d → 38d |
| 1325 | **ESCALERA** | 2026-12-08 → 2026-12-17 (+9d) | 2026-12-18 → 2027-01-02 (+15d) | 0d → 1d |
| 1326 | Piso Adhara 44X89 | 2026-12-08 → 2026-12-17 (+9d) | 2026-12-16 → 2026-12-29 (+13d) | 0d → 1d |
| 1327 | Zoclo Adhara 44X89 | 2026-12-14 → 2026-12-26 (+12d) | 2026-12-18 → 2027-01-02 (+15d) | 0d → 1d |
| 1328 | **EXTERIOR** | 2026-11-03 → 2026-11-12 (+9d) | 2026-11-06 → 2026-11-18 (+12d) | 5d → 6d |
| 1329 | Rastrilleo, afine y nivelado de tierra | 2026-11-03 → 2026-11-12 (+9d) | 2026-11-06 → 2026-11-18 (+12d) | 5d → 6d |
| 1330 | **SEGUNDA LIMPIEZA DE OBRA** | 2026-12-18 → 2027-01-02 (+15d) | 2026-12-23 → 2027-01-07 (+15d) | 23d → 22d |
| 1331 | Segunda limpieza de obra | 2026-12-18 → 2027-01-02 (+15d) | 2026-12-21 → 2027-01-05 (+15d) | 23d → 22d |
| 1332 | Segunda carga y acarreo de escombro | 2026-12-22 → 2027-01-05 (+14d) | 2026-12-23 → 2027-01-07 (+15d) | 23d → 22d |
| 1333 | **CANCELERIA PUERTAS Y VENTANAS DE ALUMINIO** | 2026-12-08 → 2026-12-17 (+9d) | 2027-01-02 → 2027-01-13 (+11d) | 1d → 2d |
| 1334 | Fijo medidas 0.30x4.90m | 2026-12-10 → 2026-12-21 (+11d) | 2026-12-18 → 2027-01-02 (+15d) | 9d → 10d |
| 1335 | Ventana Corrediza 1.80x1.60m | 2026-12-08 → 2026-12-17 (+9d) | 2026-12-12 → 2026-12-22 (+10d) | 14d → 15d |
| 1336 | Ventana Corrediza 0.60x0.40m | 2026-12-10 → 2026-12-21 (+11d) | 2026-12-15 → 2026-12-28 (+13d) | 12d → 13d |
| 1337 | Ventana Corrediza 1.54x0.50m | 2026-12-10 → 2026-12-21 (+11d) | 2026-12-15 → 2026-12-28 (+13d) | 12d → 13d |
| 1338 | Fijo medidas 1.40x2.50m | 2026-12-14 → 2026-12-26 (+12d) | 2026-12-18 → 2027-01-02 (+15d) | 3d → 4d |
| 1339 | Ventana Corrediza 1.80x1.50m | 2026-12-16 → 2026-12-29 (+13d) | 2026-12-21 → 2027-01-05 (+15d) | 1d → 2d |
| 1340 | Ventana Corrediza 1.40x1.60m | 2026-12-16 → 2026-12-29 (+13d) | 2026-12-21 → 2027-01-05 (+15d) | 1d → 2d |
| 1341 | Ventana Corrediza 0.95x0.40m | 2026-12-16 → 2026-12-29 (+13d) | 2026-12-21 → 2027-01-05 (+15d) | 1d → 2d |
| 1342 | Puerta corrediza 3.85x2.10m | 2026-12-18 → 2027-01-02 (+15d) | 2026-12-29 → 2027-01-11 (+13d) | 3d → 4d |
| 1343 | Barandal de Cristal Templado | 2026-12-22 → 2027-01-05 (+14d) | 2027-01-02 → 2027-01-13 (+11d) | 1d → 2d |
| 1344 | **CARPINTERIA, PUERTAS EXTERIORES E INTERIORES** | 2026-12-18 → 2027-01-02 (+15d) | 2027-01-04 → 2027-01-14 (+10d) | 0d → 1d |
| 1345 | Puerta P-01 de seguridad | 2026-12-18 → 2027-01-02 (+15d) | 2026-12-28 → 2027-01-08 (+11d) | 4d → 5d |
| 1346 | Puerta P-01 interior | 2026-12-18 → 2027-01-02 (+15d) | 2027-01-02 → 2027-01-13 (+11d) | 1d → 2d |
| 1347 | Puerta P-02 interior | 2026-12-18 → 2027-01-02 (+15d) | 2027-01-02 → 2027-01-13 (+11d) | 1d → 2d |
| 1348 | Puerta P-03 interior | 2026-12-28 → 2027-01-08 (+11d) | 2027-01-04 → 2027-01-14 (+10d) | 0d → 1d |
| 1349 | Puerta P-04 interior | 2026-12-28 → 2027-01-08 (+11d) | 2027-01-04 → 2027-01-14 (+10d) | 0d → 1d |
| 1350 | **VOLADOS, BARANDAL Y ESCALERA** | 2026-11-11 → 2026-11-23 (+12d) | 2026-12-23 → 2027-01-07 (+15d) | 8d → 9d |
| 1351 | Barandal de Herreria en escalera | 2026-11-30 → 2026-12-10 (+10d) | 2026-12-04 → 2026-12-15 (+11d) | 23d → 24d |
| 1352 | Escalera de herreria | 2026-11-11 → 2026-11-23 (+12d) | 2026-12-04 → 2026-12-15 (+11d) | 8d → 9d |
| 1353 | Techumbre en acceso Principal | 2026-11-28 → 2026-12-09 (+11d) | 2026-12-16 → 2026-12-29 (+13d) | 14d → 15d |
| 1354 | Techumbre en 1.80x0.50m | 2026-11-28 → 2026-12-09 (+11d) | 2026-12-08 → 2026-12-17 (+9d) | 8d → 9d |
| 1355 | Techumbre en 1.40x0.50m | 2026-12-08 → 2026-12-17 (+9d) | 2026-12-16 → 2026-12-29 (+13d) | 8d → 9d |
| 1356 | Imper con manto prefabricado | 2026-12-11 → 2026-12-22 (+11d) | 2026-12-17 → 2026-12-30 (+13d) | 8d → 9d |
| 1357 | Plafon hoja tablaroca std | 2026-12-17 → 2026-12-30 (+13d) | 2026-12-23 → 2027-01-07 (+15d) | 8d → 9d |
| 1358 | Acabado Woodstock en parte inf. Cubierta | 2026-12-17 → 2026-12-30 (+13d) | 2026-12-23 → 2027-01-07 (+15d) | 8d → 9d |
| 1359 | **INSTALACION ELECTRICA** | 2026-11-20 → 2026-11-30 (+10d) | 2026-12-10 → 2026-12-19 (+9d) | 29d → 30d |
| 1360 | Alimentación eléctrica base a centro de carga | 2026-11-25 → 2026-12-04 (+9d) | 2026-12-01 → 2026-12-11 (+10d) | 33d → 34d |
| 1361 | Interruptor termomagnético 1x20 A | 2026-12-01 → 2026-12-11 (+10d) | 2026-12-02 → 2026-12-12 (+10d) | 33d → 34d |
| 1362 | Interruptor termomagnético 2x20 A | 2026-12-01 → 2026-12-11 (+10d) | 2026-12-02 → 2026-12-12 (+10d) | 33d → 34d |
| 1363 | Salida para apagador 3 vías | 2026-11-20 → 2026-11-30 (+10d) | 2026-11-25 → 2026-12-04 (+9d) | 29d → 30d |
| 1364 | Salida para apagador doble | 2026-11-25 → 2026-12-04 (+9d) | 2026-11-28 → 2026-12-09 (+11d) | 31d → 32d |
| 1365 | Salida para apagador sencillo | 2026-11-25 → 2026-12-04 (+9d) | 2026-11-28 → 2026-12-09 (+11d) | 31d → 32d |
| 1366 | Salida de alumbrado en losa | 2026-11-25 → 2026-12-04 (+9d) | 2026-12-01 → 2026-12-11 (+10d) | 29d → 30d |
| 1367 | Salida para contacto exterior doble | 2026-11-25 → 2026-12-04 (+9d) | 2026-11-27 → 2026-12-08 (+11d) | 32d → 33d |
| 1368 | Salida para contacto 220 V | 2026-11-27 → 2026-12-08 (+11d) | 2026-12-01 → 2026-12-11 (+10d) | 29d → 30d |
| 1369 | Salida para contacto doble | 2026-11-27 → 2026-12-08 (+11d) | 2026-12-03 → 2026-12-14 (+11d) | 32d → 33d |
| 1370 | Salida para contacto doble área húmeda | 2026-12-01 → 2026-12-11 (+10d) | 2026-12-03 → 2026-12-14 (+11d) | 32d → 33d |
| 1371 | Salida TV / telefonía / intercom | 2026-12-01 → 2026-12-11 (+10d) | 2026-12-07 → 2026-12-16 (+9d) | 30d → 31d |
| 1372 | Extractor 4 baño | 2026-12-01 → 2026-12-11 (+10d) | 2026-12-08 → 2026-12-17 (+9d) | 29d → 30d |
| 1373 | Prueba eléctrica | 2026-12-08 → 2026-12-17 (+9d) | 2026-12-10 → 2026-12-19 (+9d) | 29d → 30d |
| 1374 | **INSTALACIÓN HIDRO-SANITARIA** | 2026-11-03 → 2026-11-12 (+9d) | 2026-11-18 → 2026-11-27 (+9d) | 0d → 1d |
| 1375 | Tubería condensados PVC 1 | 2026-11-03 → 2026-11-12 (+9d) | 2026-11-09 → 2026-11-20 (+11d) | 0d → 1d |
| 1376 | Tubería sanitaria PVC 4 | 2026-11-03 → 2026-11-12 (+9d) | 2026-11-09 → 2026-11-20 (+11d) | 8d → 9d |
| 1377 | Coladera H-444 | 2026-11-09 → 2026-11-20 (+11d) | 2026-11-10 → 2026-11-21 (+11d) | 8d → 9d |
| 1378 | Caja PVC para lavadora | 2026-11-03 → 2026-11-12 (+9d) | 2026-11-06 → 2026-11-18 (+12d) | 0d → 1d |
| 1379 | Salida para secadora PVC 4 | 2026-11-03 → 2026-11-12 (+9d) | 2026-11-06 → 2026-11-18 (+12d) | 0d → 1d |
| 1380 | Salida hidráulica para boiler | 2026-11-03 → 2026-11-12 (+9d) | 2026-11-05 → 2026-11-17 (+12d) | 1d → 2d |
| 1381 | Salida hidráulica para llave de jardín | 2026-11-03 → 2026-11-12 (+9d) | 2026-11-06 → 2026-11-18 (+12d) | 0d → 1d |
| 1382 | Salida hidráulica para lavabo | 2026-11-03 → 2026-11-12 (+9d) | 2026-11-07 → 2026-11-19 (+12d) | 0d → 1d |
| 1383 | Salida hidráulica para purificación | 2026-11-03 → 2026-11-12 (+9d) | 2026-11-07 → 2026-11-19 (+12d) | 0d → 1d |
| 1384 | Salida sanitaria para lavabo | 2026-11-05 → 2026-11-17 (+12d) | 2026-11-07 → 2026-11-19 (+12d) | 0d → 1d |
| 1385 | Salida hidráulica para lavadero | 2026-11-05 → 2026-11-17 (+12d) | 2026-11-07 → 2026-11-19 (+12d) | 0d → 1d |
| 1386 | Salida sanitaria para lavadero | 2026-11-06 → 2026-11-18 (+12d) | 2026-11-09 → 2026-11-20 (+11d) | 0d → 1d |
| 1387 | Salida hidráulica para lavadora | 2026-11-06 → 2026-11-18 (+12d) | 2026-11-09 → 2026-11-20 (+11d) | 0d → 1d |
| 1388 | Salida sanitaria para lavadora | 2026-11-07 → 2026-11-19 (+12d) | 2026-11-10 → 2026-11-21 (+11d) | 0d → 1d |
| 1389 | Salida hidráulica para regadera | 2026-11-07 → 2026-11-19 (+12d) | 2026-11-13 → 2026-11-25 (+12d) | 5d → 6d |

| ID | Task | Start | Finish | Duration | Complete | Total float | Predecessors |
| --- | --- | --- | --- | --- | --- | --- | --- |
| 1390 | Salida sanitaria para regadera | 2026-11-07 → 2026-11-19 (+12d) | 2026-11-12 → 2026-11-24 (+12d) |  |  | 6d → 7d |  |
| 1391 | Salida hidráulica para WC | 2026-11-05 → 2026-11-17 (+12d) | 2026-11-07 → 2026-11-19 (+12d) |  |  | 0d → 1d |  |
| 1392 | Salida sanitaria para WC | 2026-11-07 → 2026-11-19 (+12d) | 2026-11-12 → 2026-11-24 (+12d) |  |  | 0d → 1d |  |
| 1393 | Salida hidráulica para zinc | 2026-11-07 → 2026-11-19 (+12d) | 2026-11-12 → 2026-11-24 (+12d) |  |  | 0d → 1d |  |
| 1394 | Salida sanitaria para zinc | 2026-11-10 → 2026-11-21 (+11d) | 2026-11-13 → 2026-11-25 (+12d) |  |  | 0d → 1d |  |
| 1395 | Tubo para ventila de baño 2 | 2026-11-03 → 2026-11-12 (+9d) | 2026-11-09 → 2026-11-20 (+11d) |  |  | 0d → 1d |  |
| 1396 | Tubo para minisplit PVC 3 | 2026-11-09 → 2026-11-20 (+11d) | 2026-11-17 → 2026-11-26 (+9d) |  |  | 0d → 1d |  |
| 1397 | Cuadro de medición | 2026-11-06 → 2026-11-18 (+12d) | 2026-11-12 → 2026-11-24 (+12d) |  |  | 5d → 6d |  |
| 1398 | Pozo de absorción 0.50x0.50x0.50 | 2026-11-06 → 2026-11-18 (+12d) | 2026-11-10 → 2026-11-21 (+11d) |  |  | 8d → 9d |  |
| 1399 | Prueba sanitaria final | 2026-11-17 → 2026-11-26 (+9d) | 2026-11-18 → 2026-11-27 (+9d) |  |  | 4d → 5d |  |
| 1400 | Prueba hidrostática final | 2026-11-13 → 2026-11-25 (+12d) | 2026-11-17 → 2026-11-26 (+9d) |  |  | 5d → 6d |  |
| 1401 | Salida válvula control 19 mm | 2026-11-12 → 2026-11-24 (+12d) | 2026-11-13 → 2026-11-25 (+12d) |  |  | 5d → 6d |  |
| 1402 | Salida válvula control 13 mm | 2026-11-12 → 2026-11-24 (+12d) | 2026-11-13 → 2026-11-25 (+12d) |  |  | 5d → 6d |  |
| 1403 | Salida hidráulica para tanque hidroneumático | 2026-11-06 → 2026-11-18 (+12d) | 2026-11-10 → 2026-11-21 (+11d) |  |  | 8d → 9d |  |
| 1404 | Salida hidráulica para Active Driver | 2026-11-06 → 2026-11-18 (+12d) | 2026-11-10 → 2026-11-21 (+11d) |  |  | 8d → 9d |  |
| 1405 | **INSTALACION DE GAS** | 2026-10-31 → 2026-11-10 (+10d) | 2026-11-10 → 2026-11-21 (+11d) |  |  | 36d → 29d |  |
| 1406 | Ramaleo para gas 1/2 | 2026-11-04 → 2026-11-13 (+9d) | 2026-11-10 → 2026-11-21 (+11d) |  |  | 36d → 29d |  |
| 1407 | Excavación a mano material tipo B | 2026-10-31 → 2026-11-10 (+10d) | 2026-11-04 → 2026-11-13 (+9d) |  |  | 36d → 29d |  |
| 1408 | **MUEBLES SANITARIOS** | 2026-12-10 → 2026-12-21 (+11d) | 2027-01-20 → 2027-01-29 (+9d) |  |  | 12d → 9d |  |
| 1409 | WC completo Austral | 2026-12-10 → 2026-12-21 (+11d) | 2026-12-12 → 2026-12-22 (+10d) |  |  | 14d → 15d |  |
| 1410 | Lavabo Senna con pedestal | 2026-12-10 → 2026-12-21 (+11d) | 2026-12-15 → 2026-12-28 (+13d) |  |  | 12d → 13d |  |
| 1411 | Tarja / lavabo combo Guinea 80x45 | 2026-12-10 → 2026-12-21 (+11d) | 2026-12-12 → 2026-12-22 (+10d) |  |  | 43d → 36d |  |
| 1412 | Regadera con monomando | 2026-12-12 → 2026-12-23 (+11d) | 2026-12-16 → 2026-12-29 (+13d) |  |  | 11d → 12d |  |
| 1413 | Coladera inserto cerámico | 2026-12-14 → 2026-12-26 (+12d) | 2026-12-16 → 2026-12-29 (+13d) |  |  | 11d → 12d |  |
| 1414 | Toallero sencillo | 2027-01-19 → 2027-01-28 (+9d) | 2027-01-20 → 2027-01-29 (+9d) |  |  | 0d → 1d |  |
| 1415 | Toallero barra | 2027-01-19 → 2027-01-28 (+9d) | 2027-01-20 → 2027-01-29 (+9d) |  |  | 0d → 1d |  |
| 1416 | Portapapel | 2027-01-19 → 2027-01-28 (+9d) | 2027-01-20 → 2027-01-29 (+9d) |  |  | 0d → 1d |  |
| 1417 | Gancho baño | 2027-01-19 → 2027-01-28 (+9d) | 2027-01-20 → 2027-01-29 (+9d) |  |  | 0d → 1d |  |
| 1418 | **EQUIPAMIENTO** | 2026-10-26 → 2026-11-04 (+9d) | 2026-11-02 → 2026-11-11 (+9d) |  |  | 59d → 60d |  |
| 1419 | Electronivel Rotoplas 5 m | 2026-10-27 → 2026-11-05 (+9d) | 2026-10-28 → 2026-11-07 (+10d) |  |  | 62d → 63d |  |
| 1420 | Manómetro | 2026-10-27 → 2026-11-05 (+9d) | 2026-10-27 → 2026-11-06 (+10d) |  |  | 63d → 64d |  |
| 1421 | Interruptor de presión 30-50 PSI | 2026-10-27 → 2026-11-05 (+9d) | 2026-10-27 → 2026-11-06 (+10d) |  |  | 63d → 64d |  |
| 1422 | Tanque hidroneumático FPS-24LX | 2026-10-27 → 2026-11-05 (+9d) | 2026-10-29 → 2026-11-09 (+11d) |  |  | 59d → 60d |  |
| 1423 | Bomba sumergible Dominator 1.2 HP | 2026-10-30 → 2026-11-09 (+10d) | 2026-11-02 → 2026-11-11 (+9d) |  |  | 59d → 60d |  |
| 1424 | Cisterna prefabricada 2800 L | 2026-10-26 → 2026-11-04 (+9d) | 2026-10-26 → 2026-11-05 (+10d) |  |  | 59d → 60d |  |
| 1425 | **LUMINARIAS** | 2026-12-01 → 2026-12-11 (+10d) | 2026-12-08 → 2026-12-17 (+9d) |  |  | 29d → 30d |  |
| 1426 | Roseta cerámica | 2026-12-01 → 2026-12-11 (+10d) | 2026-12-04 → 2026-12-15 (+11d) |  |  | 31d → 32d |  |
| 1427 | Luminaria lagartijera LED | 2026-12-01 → 2026-12-11 (+10d) | 2026-12-04 → 2026-12-15 (+11d) |  |  | 31d → 32d |  |
| 1428 | Spot 6W Tecnolite | 2026-12-01 → 2026-12-11 (+10d) | 2026-12-04 → 2026-12-15 (+11d) |  |  | 31d → 32d |  |
| 1429 | Spot 7W Tecnolite | 2026-12-01 → 2026-12-11 (+10d) | 2026-12-04 → 2026-12-15 (+11d) |  |  | 31d → 32d |  |
| 1430 | Arbotante exterior | 2026-12-01 → 2026-12-11 (+10d) | 2026-12-03 → 2026-12-14 (+11d) |  |  | 29d → 30d |  |
| 1431 | Estaca LED exterior | 2026-12-03 → 2026-12-14 (+11d) | 2026-12-08 → 2026-12-17 (+9d) |  |  | 29d → 30d |  |
| 1432 | Tira LED | 2026-12-03 → 2026-12-14 (+11d) | 2026-12-08 → 2026-12-17 (+9d) |  |  | 29d → 30d |  |
| 1433 | Spot exterior 50W | 2026-12-01 → 2026-12-11 (+10d) | 2026-12-03 → 2026-12-14 (+11d) |  |  | 32d → 33d |  |
| 1434 | **TIMBRE** | 2026-12-02 → 2026-12-12 (+10d) | 2026-12-04 → 2026-12-15 (+11d) |  |  | 31d → 32d |  |
| 1435 | Timbre inalámbrico con bocina | 2026-12-02 → 2026-12-12 (+10d) | 2026-12-04 → 2026-12-15 (+11d) |  |  | 31d → 32d |  |
| 1436 | **OBRA EXTERIOR - BARDA** | 2026-11-06 → 2026-11-18 (+12d) | 2026-11-30 → 2026-12-10 (+10d) |  |  | 37d → 38d |  |
| 1437 | Murete convencional | 2026-11-12 → 2026-11-24 (+12d) | 2026-11-20 → 2026-11-30 (+10d) |  |  | 43d → 44d |  |
| 1438 | Barda de block aparente | 2026-11-06 → 2026-11-18 (+12d) | 2026-11-30 → 2026-12-10 (+10d) |  |  | 37d → 38d |  |
| 1439 | **TERCER LIMPIEZA DE OBRA** | 2027-01-20 → 2027-01-29 (+9d) |  | 16d → 8d |  | 0d → 1d |  |
| 1440 | Limpieza fina para entrega | 2027-01-20 → 2027-01-29 (+9d) | 2027-01-26 → 2027-02-03 (+8d) | 5d → 3d |  | 0d → 1d |  |
| 1441 | Tercera limpieza de obra | 2027-01-26 → 2027-02-01 (+6d) | 2027-02-02 → 2027-02-05 (+3d) | 5d → 4d |  | 0d → 1d | 1332, 1440 → 1332FS-2d, 1440FS-2d |
| 1442 | Tercera carga y acarreo de escombro | 2027-02-02 → 2027-02-03 (+1d) |  | 6d → 5d |  | 0d → 1d | 1441 → 1441FS-2d |
| 1443 | **LOTE 20 M-663 ARTICO-A** | 2026-05-29 A → 2026-06-10 A (+12d) | 2027-02-03 → 2027-02-10 (+7d) | 194d → 191d | 1% → 3% | 5d → 0d |  |
| 1444 | **HITOS IMPORTANTES DEL LOTE** | 2026-05-29 A → 2026-06-10 A (+12d) | 2027-02-03 → 2027-02-10 (+7d) | 194d → 191d |  | 5d → 0d |  |
| 1445 | Inicio del Lote-20 M-663 -Artico-A | 2026-05-29 A → 2026-06-10 A (+12d) | 2026-05-29 A → 2026-06-10 A (+12d) |  |  |  |  |
| 1446 | Colado de Losa de Cimentación | 2026-07-06 → 2026-07-22 (+16d) | 2026-07-06 → 2026-07-22 (+16d) |  |  | 169d → 157d |  |
| 1447 | Colado de Losa de Entrepiso | 2026-08-12 → 2026-08-28 (+16d) | 2026-08-12 → 2026-08-28 (+16d) |  |  | 139d → 127d |  |
| 1448 | Colado de Losa de Azotea | 2026-09-21 → 2026-10-06 (+15d) | 2026-09-21 → 2026-10-06 (+15d) |  |  | 109d → 97d |  |
| 1449 | Entrega de vivienda | 2027-02-03 → 2027-02-10 (+7d) | 2027-02-03 → 2027-02-10 (+7d) |  |  | 5d → 0d |  |
| 1450 | **TRABAJOS PRELIMINARES** | 2026-05-29 A → 2026-06-10 A (+12d) | 2026-06-05 A → 2026-06-16 A (+11d) |  |  |  |  |
| 1451 | Trazo y nivelación | 2026-05-29 A → 2026-06-10 A (+12d) | 2026-06-05 A → 2026-06-16 A (+11d) |  |  |  |  |
| 1452 | **EXCAVACIONES** | 2026-06-05 A → 2026-06-16 A (+11d) | 2026-06-09 A → 2026-06-30 A (+21d) | 3d → 11d |  |  |  |
| 1453 | Excavación a mano material tipo B | 2026-06-05 A → 2026-06-16 A (+11d) | 2026-06-09 A → 2026-06-29 A (+20d) | 3d → 10d |  |  |  |
| 1454 | Acarreo en carretilla 20 m | 2026-06-06 A → 2026-06-17 A (+11d) | 2026-06-09 A → 2026-06-30 A (+21d) | 2d → 10d |  |  |  |
| 1455 | **CIMENTACION** | 2026-06-22 A → 2026-07-08 A (+16d) | 2026-07-07 → 2026-07-23 (+16d) |  | 3% → 16% | 5d → 0d |  |
| 1456 | Cimbra perimetral losa de cimentación | 2026-06-22 A → 2026-07-08 A (+16d) | 2026-06-25 → 2026-07-10 A (+15d) |  | 25% → 100% | 5d → none | 1453FS+10d, 1454 → 1453FS+7d, 1454 |
| 1457 | Sistema antitermitas PVC | 2026-06-22 A → 2026-07-08 A (+16d) | 2026-06-25 → 2026-07-10 A (+15d) |  | 25% → 100% | 6d → none | 1453FS+10d, 1454 → 1453FS+7d, 1454 |
| 1458 | Hule negro en cimentación | 2026-06-25 → 2026-07-11 A (+16d) | 2026-06-26 → 2026-07-13 (+17d) |  | 0% → 63% | 6d → 1d |  |
| 1459 | Ramaleo poliducto eléctrico cimentación | 2026-06-26 → 2026-07-13 (+17d) | 2026-06-29 → 2026-07-15 (+16d) |  |  | 9d → 4d |  |

| ID | Task | Start | Finish | Complete | Total float |
| --- | --- | --- | --- | --- | --- |
| 1460 | Ramaleo eléctrico base-medición a centro de carga | 2026-06-26 → 2026-07-13 (+17d) | 2026-06-27 → 2026-07-14 (+17d) |  | 10d → 5d |
| 1461 | Ramaleo eléctrico exterior | 2026-06-29 → 2026-07-15 (+16d) | 2026-06-30 → 2026-07-16 (+16d) |  | 9d → 4d |
| 1462 | Ramaleo para cable poliducto 3/4 | 2026-06-29 → 2026-07-15 (+16d) | 2026-06-30 → 2026-07-16 (+16d) |  | 9d → 4d |
| 1463 | Ramaleo para TV poliducto 3/4 | 2026-06-29 → 2026-07-15 (+16d) | 2026-06-30 → 2026-07-16 (+16d) |  | 9d → 4d |
| 1464 | Ramaleo hidráulico CPVC 1-1/4" cimentación | 2026-06-26 → 2026-07-13 (+17d) | 2026-06-27 → 2026-07-14 (+17d) |  | 6d → 1d |
| 1465 | Ramaleo hidráulico CPVC 1 cimentación | 2026-06-26 → 2026-07-13 (+17d) | 2026-06-27 → 2026-07-14 (+17d) |  | 6d → 1d |
| 1466 | Ramaleo hidráulico CPVC 3/4 cimentación | 2026-06-27 → 2026-07-14 (+17d) | 2026-06-30 → 2026-07-16 (+16d) |  | 6d → 1d |
| 1467 | Ramaleo hidráulico CPVC 1/2 cimentación | 2026-06-30 → 2026-07-16 (+16d) | 2026-07-02 → 2026-07-18 (+16d) |  | 6d → 1d |
| 1468 | Prueba hidráulica | 2026-07-02 → 2026-07-18 (+16d) | 2026-07-03 → 2026-07-20 (+17d) |  | 6d → 1d |
| 1469 | Ramaleo sanitario PVC 4 cimentación | 2026-06-27 → 2026-07-14 (+17d) | 2026-06-30 → 2026-07-16 (+16d) |  | 7d → 2d |
| 1470 | Ramaleo sanitario PVC 2 cimentación | 2026-06-30 → 2026-07-16 (+16d) | 2026-07-01 → 2026-07-17 (+16d) |  | 7d → 2d |
| 1471 | Prueba sanitaria | 2026-07-01 → 2026-07-17 (+16d) | 2026-07-02 → 2026-07-18 (+16d) |  | 7d → 2d |
| 1472 | Acero contratrabe CT-1 | 2026-06-25 → 2026-07-11 A (+16d) | 2026-06-30 → 2026-07-16 (+16d) | 0% → 16% | 5d → 0d |
| 1473 | Acero contratrabe CT-2 | 2026-06-25 → 2026-07-11 A (+16d) | 2026-06-30 → 2026-07-16 (+16d) | 0% → 16% | 5d → 0d |
| 1474 | Malla electrosoldada 6-6/8-8 | 2026-07-02 → 2026-07-18 (+16d) | 2026-07-04 → 2026-07-21 (+17d) |  | 5d → 0d |
| 1475 | Bastón de refuerzo LS | 2026-06-30 → 2026-07-16 (+16d) | 2026-07-02 → 2026-07-18 (+16d) |  | 5d → 0d |
| 1476 | Bastón de refuerzo LI | 2026-06-30 → 2026-07-16 (+16d) | 2026-07-02 → 2026-07-18 (+16d) |  | 5d → 0d |
| 1477 | Colado losa de cimentación f’c=200 | 2026-07-06 → 2026-07-21 (+15d) | 2026-07-06 → 2026-07-22 (+16d) |  | 5d → 0d |
| 1478 | Curado de concreto | 2026-07-07 → 2026-07-22 (+15d) | 2026-07-07 → 2026-07-23 (+16d) |  | 5d → 0d |
| 1479 | Acero zapata ZT-1 | 2026-06-30 → 2026-07-16 (+16d) | 2026-07-04 → 2026-07-21 (+17d) |  | 5d → 0d |
| 1480 | Acero zapata ZT-2 | 2026-06-30 → 2026-07-16 (+16d) | 2026-07-04 → 2026-07-21 (+17d) |  | 5d → 0d |
| 1481 | **MUROS, PLANTA BAJA. CASTILLOS Y CERRAMIENTOS** | 2026-07-01 → 2026-07-17 (+16d) | 2026-07-27 → 2026-08-11 (+15d) |  | 10d → 5d |
| 1482 | Anclaje de castillos y Columnas PB | 2026-07-01 → 2026-07-17 (+16d) | 2026-07-07 → 2026-07-23 (+16d) |  | 156d → 144d |
| 1483 | Castillo K1 | 2026-07-08 → 2026-07-23 (+15d) | 2026-07-13 → 2026-07-29 (+16d) |  | 156d → 144d |
| 1484 | Castillo K3 | 2026-07-10 → 2026-07-27 (+17d) | 2026-07-14 → 2026-07-30 (+16d) |  | 156d → 144d |
| 1485 | Castillo K4 | 2026-07-10 → 2026-07-27 (+17d) | 2026-07-14 → 2026-07-30 (+16d) |  | 156d → 144d |
| 1486 | Castillo K5 | 2026-07-13 → 2026-07-29 (+16d) | 2026-07-16 → 2026-08-01 (+16d) |  | 156d → 144d |
| 1487 | Refuerzo de muro K6 | 2026-07-14 → 2026-07-30 (+16d) | 2026-07-17 → 2026-08-03 (+17d) |  | 156d → 144d |
| 1488 | Dala de cerramiento CR-1 | 2026-07-14 → 2026-07-30 (+16d) | 2026-07-18 → 2026-08-04 (+17d) |  | 159d → 147d |
| 1489 | Dala de cerramiento CR-2 | 2026-07-14 → 2026-07-30 (+16d) | 2026-07-17 → 2026-08-03 (+17d) |  | 160d → 148d |
| 1490 | Cadena block dala | 2026-07-17 → 2026-08-03 (+17d) | 2026-07-22 → 2026-08-07 (+16d) |  | 156d → 144d |
| 1491 | Muro de ladrillo aparente | 2026-07-08 → 2026-07-23 (+15d) | 2026-07-27 → 2026-08-11 (+15d) |  | 5d → 0d |
| 1492 | Muro de block planta baja | 2026-07-10 → 2026-07-27 (+17d) | 2026-07-27 → 2026-08-11 (+15d) |  | 5d → 0d |
| 1493 | Ramaleo electrico en Muros Planta Baja | 2026-07-14 → 2026-07-30 (+16d) | 2026-07-18 → 2026-08-04 (+17d) |  | 8d → 3d |
| 1494 | Ramaleo para cable poliducto 3/4 | 2026-07-18 → 2026-08-04 (+17d) | 2026-07-21 → 2026-08-06 (+16d) |  | 8d → 3d |
| 1495 | Ramaleo para TV poliducto 3/4 | 2026-07-21 → 2026-08-06 (+16d) | 2026-07-24 → 2026-08-10 (+17d) |  | 8d → 3d |
| 1496 | **ESCALERA** | 2026-08-12 → 2026-08-28 (+16d) | 2026-08-25 → 2026-09-10 (+16d) |  | 82d → 77d |
| 1497 | Escalera de concreto armado | 2026-08-12 → 2026-08-28 (+16d) | 2026-08-25 → 2026-09-10 (+16d) |  | 82d → 77d |
| 1498 | **LOSA DE ENTREPISO (viegueta y caseton)** | 2026-07-23 → 2026-08-08 (+16d) | 2026-08-13 → 2026-08-29 (+16d) |  | 8d → 3d |
| 1499 | Dala de coronamiento 10cm | 2026-08-01 → 2026-08-18 (+17d) | 2026-08-05 → 2026-08-21 (+16d) |  | 8d → 3d |
| 1500 | Dala de coronamiento 12cm | 2026-08-03 → 2026-08-19 (+16d) | 2026-08-06 → 2026-08-22 (+16d) |  | 7d → 2d |
| 1501 | Trabe TR-1 | 2026-07-23 → 2026-08-08 (+16d) | 2026-07-28 → 2026-08-12 (+15d) |  | 9d → 4d |
| 1502 | Trabe TR-2 | 2026-07-24 → 2026-08-10 (+17d) | 2026-07-30 → 2026-08-14 (+15d) |  | 7d → 2d |
| 1503 | Nervadura NR-1 | 2026-07-27 → 2026-08-11 (+15d) | 2026-07-31 → 2026-08-17 (+17d) |  | 6d → 1d |
| 1504 | Nervadura NR-2 | 2026-07-28 → 2026-08-12 (+15d) | 2026-08-01 → 2026-08-18 (+17d) |  | 5d → 0d |
| 1505 | Nervadura NR-3 | 2026-07-28 → 2026-08-12 (+15d) | 2026-08-01 → 2026-08-18 (+17d) |  | 5d → 0d |
| 1506 | Nervadura NR-4 | 2026-07-28 → 2026-08-12 (+15d) | 2026-08-01 → 2026-08-18 (+17d) |  | 5d → 0d |
| 1507 | Acero de refuerzo en nervios #3 | 2026-08-01 → 2026-08-18 (+17d) | 2026-08-04 → 2026-08-20 (+16d) |  | 5d → 0d |
| 1508 | Acero de refuerzo long. #3 | 2026-08-03 → 2026-08-19 (+16d) | 2026-08-06 → 2026-08-22 (+16d) |  | 6d → 1d |
| 1509 | Acero de refuerzo long. #4 | 2026-08-03 → 2026-08-19 (+16d) | 2026-08-06 → 2026-08-22 (+16d) |  | 6d → 1d |
| 1510 | Malla 66-10/10 losa de compresión | 2026-08-08 → 2026-08-25 (+17d) | 2026-08-11 → 2026-08-27 (+16d) |  | 5d → 0d |
| 1511 | Acero de Losa Maciza | 2026-08-01 → 2026-08-18 (+17d) | 2026-08-05 → 2026-08-21 (+16d) |  | 10d → 5d |
| 1512 | Caseton de 60x60x20cm | 2026-08-01 → 2026-08-18 (+17d) | 2026-08-04 → 2026-08-20 (+16d) |  | 9d → 4d |
| 1513 | Concreto losa de entrepiso f’c=200 | 2026-08-11 → 2026-08-27 (+16d) | 2026-08-12 → 2026-08-28 (+16d) |  | 5d → 0d |
| 1514 | Curado de concreto | 2026-08-12 → 2026-08-28 (+16d) | 2026-08-13 → 2026-08-29 (+16d) |  | 5d → 0d |
| 1515 | Cimbra losa de azotea | 2026-07-28 → 2026-08-12 (+15d) | 2026-08-03 → 2026-08-19 (+16d) |  | 6d → 1d |
| 1516 | Cimbra exterior corta losa | 2026-08-05 → 2026-08-21 (+16d) | 2026-08-08 → 2026-08-25 (+17d) |  | 7d → 2d |
| 1517 | Ramaleo poliducto eléctrico entrepiso | 2026-08-04 → 2026-08-20 (+16d) | 2026-08-06 → 2026-08-22 (+16d) |  | 144d → 132d |
| 1518 | Ramaleo hidráulico CPVC 3/4" | 2026-08-05 → 2026-08-21 (+16d) | 2026-08-07 → 2026-08-24 (+17d) |  | 5d → 0d |
| 1519 | Ramaleo hidráulico CPVC 1/2" | 2026-08-07 → 2026-08-24 (+17d) | 2026-08-08 → 2026-08-25 (+17d) |  | 5d → 0d |
| 1520 | Prueba hidráulica | 2026-08-07 → 2026-08-24 (+17d) | 2026-08-08 → 2026-08-25 (+17d) |  | 5d → 0d |
| 1521 | Ramaleo sanitario PVC 4" | 2026-08-05 → 2026-08-21 (+16d) | 2026-08-07 → 2026-08-24 (+17d) |  | 5d → 0d |
| 1522 | Ramaleo sanitario PVC 2" | 2026-08-07 → 2026-08-24 (+17d) | 2026-08-08 → 2026-08-25 (+17d) |  | 5d → 0d |
| 1523 | Prueba sanitaria | 2026-08-07 → 2026-08-24 (+17d) | 2026-08-08 → 2026-08-25 (+17d) |  | 5d → 0d |
| 1524 | **MUROS EN PLANTA ALTA, CASTILLOS Y CERRM.** | 2026-08-05 → 2026-08-21 (+16d) | 2026-09-01 → 2026-09-18 (+17d) |  | 6d → 1d |
| 1525 | Anclaje de castillos y Columnas PA | 2026-08-05 → 2026-08-21 (+16d) | 2026-08-10 → 2026-08-26 (+16d) |  | 6d → 1d |
| 1526 | Castillo K1 | 2026-08-13 → 2026-08-31 (+18d) | 2026-08-19 → 2026-09-03 (+15d) |  | 9d → 4d |
| 1527 | Castillo K2 | 2026-08-14 → 2026-09-01 (+18d) | 2026-08-20 → 2026-09-04 (+15d) |  | 8d → 3d |
| 1528 | Castillo K4 | 2026-08-19 → 2026-09-04 (+16d) | 2026-08-22 → 2026-09-08 (+17d) |  | 9d → 4d |
| 1529 | Castillo K5 | 2026-08-19 → 2026-09-04 (+16d) | 2026-08-22 → 2026-09-08 (+17d) |  | 9d → 4d |

| ID | Task | Start | Finish | Total float |
| --- | --- | --- | --- | --- |
| 1530 | Castillo K6 | 2026-08-19 → 2026-09-04 (+16d) | 2026-08-22 → 2026-09-08 (+17d) | 9d → 4d |
| 1531 | Refuerzo de muro | 2026-08-20 → 2026-09-05 (+16d) | 2026-08-24 → 2026-09-09 (+16d) | 8d → 3d |
| 1532 | Dala de cerramiento CR-1 | 2026-08-24 → 2026-09-09 (+16d) | 2026-08-28 → 2026-09-14 (+17d) | 8d → 3d |
| 1533 | Dala de cerramiento CR-2 | 2026-08-24 → 2026-09-09 (+16d) | 2026-08-28 → 2026-09-14 (+17d) | 8d → 3d |
| 1534 | Cadena block dala | 2026-08-28 → 2026-09-14 (+17d) | 2026-09-01 → 2026-09-18 (+17d) | 8d → 3d |
| 1535 | Muro de ladrillo aparente | 2026-08-13 → 2026-08-31 (+18d) | 2026-09-01 → 2026-09-18 (+17d) | 5d → 0d |
| 1536 | Muro de block planta alta | 2026-08-14 → 2026-09-01 (+18d) | 2026-09-01 → 2026-09-18 (+17d) | 5d → 0d |
| 1537 | Ramaleo electrico en Muros Planta Alta | 2026-08-24 → 2026-09-09 (+16d) | 2026-08-28 → 2026-09-14 (+17d) | 16d → 11d |
| 1538 | **LOSA AZOTEA** | 2026-09-02 → 2026-09-18 (+16d) | 2026-09-22 → 2026-10-07 (+15d) | 5d → 0d |
| 1539 | Cortalosa CL-1 | 2026-09-15 → 2026-10-02 (+17d) | 2026-09-18 → 2026-10-05 (+17d) | 5d → 0d |
| 1540 | Cortalosa CL-2 | 2026-09-15 → 2026-10-02 (+17d) | 2026-09-18 → 2026-10-05 (+17d) | 5d → 0d |
| 1541 | Vigueta pretensada V11-30 125 | 2026-09-02 → 2026-09-18 (+16d) | 2026-09-08 → 2026-09-25 (+17d) | 8d → 3d |
| 1542 | Vigueta pretensada V11-30 185 | 2026-09-02 → 2026-09-18 (+16d) | 2026-09-08 → 2026-09-25 (+17d) | 8d → 3d |
| 1543 | Vigueta pretensada V11-30 190 | 2026-09-02 → 2026-09-18 (+16d) | 2026-09-08 → 2026-09-25 (+17d) | 8d → 3d |
| 1544 | Vigueta pretensada V11-30 205 | 2026-09-04 → 2026-09-22 (+18d) | 2026-09-10 → 2026-09-28 (+18d) | 6d → 1d |
| 1545 | Vigueta pretensada V11-30 215 | 2026-09-04 → 2026-09-22 (+18d) | 2026-09-10 → 2026-09-28 (+18d) | 6d → 1d |
| 1546 | Vigueta pretensada V11-30 260 | 2026-09-05 → 2026-09-23 (+18d) | 2026-09-11 → 2026-09-29 (+18d) | 5d → 0d |
| 1547 | Vigueta pretensada V11-30 285 | 2026-09-05 → 2026-09-23 (+18d) | 2026-09-11 → 2026-09-29 (+18d) | 5d → 0d |
| 1548 | Vigueta pretensada V11-40 330 | 2026-09-05 → 2026-09-23 (+18d) | 2026-09-11 → 2026-09-29 (+18d) | 5d → 0d |
| 1549 | Vigueta pretensada V11-40 335 | 2026-09-05 → 2026-09-23 (+18d) | 2026-09-11 → 2026-09-29 (+18d) | 5d → 0d |
| 1550 | Vigueta pretensada V11-40 505 | 2026-09-05 → 2026-09-23 (+18d) | 2026-09-11 → 2026-09-29 (+18d) | 5d → 0d |
| 1551 | Bovedilla poliestireno azotea | 2026-09-11 → 2026-09-29 (+18d) | 2026-09-15 → 2026-10-02 (+17d) | 5d → 0d |
| 1552 | Malla 66-10/10 losa de compresión | 2026-09-15 → 2026-10-02 (+17d) | 2026-09-18 → 2026-10-05 (+17d) | 5d → 0d |
| 1553 | Concreto losa de azotea f’c=200 | 2026-09-18 → 2026-10-05 (+17d) | 2026-09-21 → 2026-10-06 (+15d) | 5d → 0d |
| 1554 | Curado de concreto | 2026-09-21 → 2026-10-06 (+15d) | 2026-09-22 → 2026-10-07 (+15d) | 5d → 0d |
| 1555 | Cimbra losa de azotea | 2026-09-02 → 2026-09-18 (+16d) | 2026-09-08 → 2026-09-25 (+17d) | 13d → 8d |
| 1556 | Ramaleo de poliducto para inst. electrica en azotea | 2026-09-15 → 2026-10-02 (+17d) | 2026-09-18 → 2026-10-05 (+17d) | 5d → 0d |
| 1557 | **PRETIL Y ACABADOS DE AZOTEA** | 2026-09-22 → 2026-10-07 (+15d) | 2026-10-15 → 2026-10-30 (+15d) | 5d → 0d |
| 1558 | Castillo K1 | 2026-09-24 → 2026-10-09 (+15d) | 2026-09-30 → 2026-10-16 (+16d) | 5d → 0d |
| 1559 | Dala de cerramiento en pretil | 2026-09-28 → 2026-10-14 (+16d) | 2026-10-02 → 2026-10-19 (+17d) | 5d → 0d |
| 1560 | Muro de block 12x15x40 | 2026-09-22 → 2026-10-07 (+15d) | 2026-09-28 → 2026-10-14 (+16d) | 5d → 0d |
| 1561 | Chaflán en azotea | 2026-09-30 → 2026-10-16 (+16d) | 2026-10-05 → 2026-10-21 (+16d) | 5d → 0d |
| 1562 | Diamante de entortado | 2026-09-30 → 2026-10-16 (+16d) | 2026-10-05 → 2026-10-21 (+16d) | 5d → 0d |
| 1563 | Aplanado exterior Mortermax fino | 2026-10-02 → 2026-10-19 (+17d) | 2026-10-08 → 2026-10-24 (+16d) | 5d → 0d |
| 1564 | Entortado de Losa | 2026-10-09 → 2026-10-27 (+18d) | 2026-10-15 → 2026-10-30 (+15d) | 5d → 0d |
| 1565 | Curado de concreto | 2026-10-08 → 2026-10-26 (+18d) | 2026-10-09 → 2026-10-26 (+17d) | 5d → 0d |
| 1566 | **PRIMERA LIMPIEZA DE OBRA** | 2026-09-22 → 2026-10-07 (+15d) | 2026-09-26 → 2026-10-13 (+17d) | 65d → 53d |
| 1567 | Primera limpieza de obra | 2026-09-22 → 2026-10-07 (+15d) | 2026-09-24 → 2026-10-09 (+15d) | 65d → 53d |
| 1568 | Primera carga y acarreo de escombro | 2026-09-24 → 2026-10-09 (+15d) | 2026-09-26 → 2026-10-13 (+17d) | 65d → 53d |
| 1569 | **IMPERMEABILIZACION** | 2026-10-15 → 2026-10-31 (+16d) | 2026-10-21 → 2026-11-06 (+16d) | 5d → 0d |
| 1570 | Impermeabilización de pretil Kover 5 años | 2026-10-15 → 2026-10-31 (+16d) | 2026-10-20 → 2026-11-05 (+16d) | 6d → 1d |
| 1571 | Impermeabilización de losa Kover 5 años | 2026-10-15 → 2026-10-31 (+16d) | 2026-10-21 → 2026-11-06 (+16d) | 5d → 0d |
| 1572 | **ALBAÑILERIA** | 2026-09-28 → 2026-10-14 (+16d) | 2026-12-15 → 2027-01-05 (+21d) | 24d → 19d |
| 1573 | Lavadero de granito | 2026-11-10 → 2026-11-27 (+17d) | 2026-11-17 → 2026-12-02 (+15d) | 64d → 52d |
| 1574 | Ranurado y resane general inst. en muros | 2026-10-19 → 2026-11-04 (+16d) | 2026-10-22 → 2026-11-07 (+16d) | 7d → 2d |
| 1575 | Ranurado y resane eléctrico 1/2 a 3/4 | 2026-10-19 → 2026-11-04 (+16d) | 2026-10-22 → 2026-11-07 (+16d) | 7d → 2d |
| 1576 | Ranurado y resane hidráulico 1/2 a 1 | 2026-10-21 → 2026-11-06 (+16d) | 2026-10-23 → 2026-11-09 (+17d) | 6d → 1d |
| 1577 | Resane sanitario tubería 2 | 2026-10-21 → 2026-11-06 (+16d) | 2026-10-23 → 2026-11-09 (+17d) | 6d → 1d |
| 1578 | Resane sanitario tubería 4 | 2026-10-21 → 2026-11-06 (+16d) | 2026-10-23 → 2026-11-09 (+17d) | 6d → 1d |
| 1579 | Resane minisplit tubería 3 | 2026-10-21 → 2026-11-06 (+16d) | 2026-10-23 → 2026-11-09 (+17d) | 6d → 1d |
| 1580 | Ramaleo hidráulico exterior CPVC 1 1/4 | 2026-10-21 → 2026-11-06 (+16d) | 2026-10-24 → 2026-11-10 (+17d) | 5d → 0d |
| 1581 | Ramaleo hidráulico exterior CPVC 1 | 2026-10-21 → 2026-11-06 (+16d) | 2026-10-23 → 2026-11-09 (+17d) | 5d → 0d |
| 1582 | Ramaleo hidráulico exterior CPVC 3/4 | 2026-10-23 → 2026-11-09 (+17d) | 2026-10-26 → 2026-11-11 (+16d) | 5d → 0d |
| 1583 | Ramaleo hidráulico exterior CPVC 1/2 | 2026-10-23 → 2026-11-09 (+17d) | 2026-10-26 → 2026-11-11 (+16d) | 5d → 0d |
| 1584 | Prueba hidráulica | 2026-10-27 → 2026-11-11 (+15d) | 2026-10-27 → 2026-11-12 (+16d) | 5d → 0d |
| 1585 | Ramaleo sanitario exterior PVC 4 | 2026-10-21 → 2026-11-06 (+16d) | 2026-10-26 → 2026-11-11 (+16d) | 5d → 0d |
| 1586 | Ramaleo sanitario exterior PVC 2 | 2026-10-22 → 2026-11-07 (+16d) | 2026-10-26 → 2026-11-11 (+16d) | 5d → 0d |
| 1587 | Prueba sanitaria | 2026-10-27 → 2026-11-11 (+15d) | 2026-10-27 → 2026-11-12 (+16d) | 5d → 0d |
| 1588 | Centro de carga muros PB | 2026-10-26 → 2026-11-10 (+15d) | 2026-10-29 → 2026-11-17 (+19d) | 7d → 2d |
| 1589 | Firme de concreto 8 cm | 2026-10-28 → 2026-11-12 (+15d) | 2026-11-02 → 2026-11-19 (+17d) | 58d → 46d |
| 1590 | Curado de concreto | 2026-11-02 → 2026-11-19 (+17d) | 2026-11-03 → 2026-11-20 (+17d) | 58d → 46d |
| 1591 | Cisterna 2800 L con instalación | 2026-09-28 → 2026-10-14 (+16d) | 2026-10-20 → 2026-11-05 (+16d) | 64d → 52d |
| 1592 | Banqueta y huellas de concreto | 2026-11-04 → 2026-11-21 (+17d) | 2026-11-13 → 2026-12-01 (+18d) | 41d → 29d |
| 1593 | Curado de concreto | 2026-11-13 → 2026-12-01 (+18d) | 2026-11-17 → 2026-12-02 (+15d) | 41d → 29d |
| 1594 | Número oficial | 2026-12-14 → 2027-01-04 (+21d) | 2026-12-15 → 2027-01-05 (+21d) | 41d → 29d |
| 1595 | Detallado de rodapié exterior | 2026-10-30 → 2026-11-17 (+18d) | 2026-11-04 → 2026-11-21 (+17d) | 73d → 61d |
| 1596 | Detalle de losas y volados acabado fino | 2026-10-21 → 2026-11-06 (+16d) | 2026-10-26 → 2026-11-11 (+16d) | 9d → 4d |
| 1597 | Detalle fino en muros interiores | 2026-10-23 → 2026-11-09 (+17d) | 2026-10-29 → 2026-11-17 (+19d) | 6d → 1d |
| 1598 | Jardín interior bajo escalera con pozo de absorción | 2026-10-21 → 2026-11-06 (+16d) | 2026-11-05 → 2026-11-23 (+18d) | 9d → 4d |
| 1599 | **ACABADOS EN FACHADA A** | 2026-10-15 → 2026-10-31 (+16d) | 2026-12-14 → 2027-01-04 (+21d) | 41d → 29d |

| ID | Task | Start | Finish | Duration | Total float |
| --- | --- | --- | --- | --- | --- |
| 1600 | Aplanado grueso fachada | 2026-10-15 → 2026-10-31 (+16d) | 2026-10-29 → 2026-11-17 (+19d) |  | 47d → 35d |
| 1601 | Aplanado fino estuco fachada | 2026-10-23 → 2026-11-09 (+17d) | 2026-11-05 → 2026-11-23 (+18d) |  | 47d → 35d |
| 1602 | Pintura acrílica 1-0102P | 2026-12-01 → 2026-12-17 (+16d) | 2026-12-11 → 2026-12-30 (+19d) |  | 43d → 31d |
| 1603 | Pintura acrílica 1-1404D | 2026-12-01 → 2026-12-17 (+16d) | 2026-12-14 → 2027-01-04 (+21d) |  | 41d → 29d |
| 1604 | Cantera 40x60cm | 2026-11-05 → 2026-11-23 (+18d) | 2026-11-24 → 2026-12-10 (+16d) |  | 47d → 35d |
| 1605 | Lambrin de permabase 1 cara | 2026-10-30 → 2026-11-17 (+18d) | 2026-11-03 → 2026-11-20 (+17d) |  | 54d → 42d |
| 1606 | Enchapado de Permabase | 2026-11-03 → 2026-11-20 (+17d) | 2026-11-07 → 2026-11-25 (+18d) |  | 54d → 42d |
| 1607 | Cubierta de Permabase | 2026-11-07 → 2026-11-25 (+18d) | 2026-11-13 → 2026-12-01 (+18d) |  | 54d → 42d |
| 1608 | **APLANADOS Y PINTURA** | 2026-10-21 → 2026-11-06 (+16d) | 2027-01-14 → 2027-01-26 (+12d) | 63d → 60d | 7d → 2d |
| 1609 | Yeso pulido en muros | 2026-10-31 → 2026-11-18 (+18d) | 2026-11-19 → 2026-12-04 (+15d) |  | 5d → 0d |
| 1610 | Aplanado en muros enjarre grueso | 2026-10-21 → 2026-11-06 (+16d) | 2026-10-27 → 2026-11-12 (+16d) |  | 8d → 3d |
| 1611 | Pintura vinílica OR-W13 SHOELACE | 2026-12-26 → 2027-01-14 (+19d) | 2027-01-14 → 2027-01-26 (+12d) | 13d → 10d | 5d → 0d |
| 1612 | Pintura vinílica PPUI5-13 Creamy M. | 2026-12-17 → 2027-01-07 (+21d) | 2027-01-04 → 2027-01-20 (+16d) |  | 13d → 5d |
| 1613 | Pintura vinílica MD-06 Nano White | 2026-12-17 → 2027-01-07 (+21d) | 2026-12-30 → 2027-01-18 (+19d) |  | 15d → 7d |
| 1614 | Yeso pulido en plafones | 2026-10-21 → 2026-11-06 (+16d) | 2026-11-03 → 2026-11-20 (+17d) |  | 7d → 2d |
| 1615 | Perfilado de puertas y ventanas | 2026-11-05 → 2026-11-23 (+18d) | 2026-11-10 → 2026-11-27 (+17d) |  | 68d → 56d |
| 1616 | **PISOS Y AZULEJOS** | 2026-11-11 → 2026-11-28 (+17d) | 2026-12-12 → 2027-01-02 (+21d) |  | 5d → 0d |
| 1617 | **AREA SOCIAL** | 2026-11-17 → 2026-12-02 (+15d) | 2026-12-04 → 2026-12-21 (+17d) |  | 5d → 0d |
| 1618 | Piso Adhara 44X89 | 2026-11-17 → 2026-12-02 (+15d) | 2026-12-03 → 2026-12-19 (+16d) |  | 5d → 0d |
| 1619 | Zoclo Adhara 44X89 | 2026-11-28 → 2026-12-15 (+17d) | 2026-12-04 → 2026-12-21 (+17d) |  | 22d → 15d |
| 1620 | **RECAMARAS** | 2026-11-11 → 2026-11-28 (+17d) | 2026-11-23 → 2026-12-09 (+16d) |  | 5d → 0d |
| 1621 | Acabado aparente de pisos - pulido | 2026-11-11 → 2026-11-28 (+17d) | 2026-11-23 → 2026-12-09 (+16d) |  | 5d → 0d |
| 1622 | **BAÑOS** | 2026-11-12 → 2026-11-30 (+18d) | 2026-12-04 → 2026-12-21 (+17d) |  | 16d → 11d |
| 1623 | Azulejo Mod. Ornamenta 60x30 | 2026-11-23 → 2026-12-09 (+16d) | 2026-11-28 → 2026-12-15 (+17d) |  | 16d → 11d |
| 1624 | Impermeabilización en regadera | 2026-11-21 → 2026-12-08 (+17d) | 2026-11-24 → 2026-12-10 (+16d) |  | 16d → 11d |
| 1625 | Piso Mod. Valparaiso 20x20 | 2026-11-28 → 2026-12-15 (+17d) | 2026-12-03 → 2026-12-19 (+16d) |  | 16d → 11d |
| 1626 | Zoclo Adhara 44X89 | 2026-12-02 → 2026-12-18 (+16d) | 2026-12-04 → 2026-12-21 (+17d) |  | 49d → 37d |
| 1627 | Piso Adhara 44X89 | 2026-11-28 → 2026-12-15 (+17d) | 2026-12-02 → 2026-12-18 (+16d) |  | 51d → 39d |
| 1628 | Fabricacion de nicho decorativo en baños | 2026-11-12 → 2026-11-30 (+18d) | 2026-11-21 → 2026-12-08 (+17d) |  | 16d → 11d |
| 1629 | Sardinel en regadera | 2026-11-28 → 2026-12-15 (+17d) | 2026-12-03 → 2026-12-19 (+16d) |  | 50d → 38d |
| 1630 | **ESCALERA** | 2026-12-01 → 2026-12-17 (+16d) | 2026-12-12 → 2027-01-02 (+21d) |  | 5d → 0d |
| 1631 | Piso Adhara 44X89 | 2026-12-01 → 2026-12-17 (+16d) | 2026-12-10 → 2026-12-29 (+19d) |  | 5d → 0d |
| 1632 | Zoclo Adhara 44X89 | 2026-12-08 → 2026-12-26 (+18d) | 2026-12-12 → 2027-01-02 (+21d) |  | 5d → 0d |
| 1633 | **EXTERIOR** | 2026-10-28 → 2026-11-12 (+15d) | 2026-10-30 → 2026-11-18 (+19d) |  | 10d → 5d |
| 1634 | Rastrilleo, afine y nivelado de tierra | 2026-10-28 → 2026-11-12 (+15d) | 2026-10-30 → 2026-11-18 (+19d) |  | 10d → 5d |
| 1635 | **SEGUNDA LIMPIEZA DE OBRA** | 2026-12-12 → 2027-01-02 (+21d) | 2026-12-17 → 2027-01-07 (+21d) |  | 28d → 20d |
| 1636 | Segunda limpieza de obra | 2026-12-12 → 2027-01-02 (+21d) | 2026-12-15 → 2027-01-05 (+21d) |  | 28d → 20d |
| 1637 | Segunda carga y acarreo de escombro | 2026-12-15 → 2027-01-05 (+21d) | 2026-12-17 → 2027-01-07 (+21d) |  | 28d → 20d |
| 1638 | **CANCELERIA PUERTAS Y VENTANAS DE ALUMINIO** | 2026-12-01 → 2026-12-17 (+16d) | 2026-12-22 → 2027-01-13 (+22d) |  | 6d → 1d |
| 1639 | Fijo medidas 0.30x4.90m | 2026-12-03 → 2026-12-21 (+18d) | 2026-12-12 → 2027-01-02 (+21d) |  | 14d → 9d |
| 1640 | Ventana Corrediza 1.80x1.60m | 2026-12-01 → 2026-12-17 (+16d) | 2026-12-07 → 2026-12-22 (+15d) |  | 19d → 14d |
| 1641 | Ventana Corrediza 0.60x0.40m | 2026-12-03 → 2026-12-21 (+18d) | 2026-12-09 → 2026-12-28 (+19d) |  | 17d → 12d |
| 1642 | Ventana Corrediza 1.54x0.50m | 2026-12-03 → 2026-12-21 (+18d) | 2026-12-09 → 2026-12-28 (+19d) |  | 17d → 12d |
| 1643 | Fijo medidas 1.40x2.50m | 2026-12-08 → 2026-12-26 (+18d) | 2026-12-12 → 2027-01-02 (+21d) |  | 8d → 3d |
| 1644 | Ventana Corrediza 1.80x1.50m | 2026-12-10 → 2026-12-29 (+19d) | 2026-12-15 → 2027-01-05 (+21d) |  | 6d → 1d |
| 1645 | Ventana Corrediza 1.40x1.60m | 2026-12-10 → 2026-12-29 (+19d) | 2026-12-15 → 2027-01-05 (+21d) |  | 6d → 1d |
| 1646 | Ventana Corrediza 0.95x0.40m | 2026-12-10 → 2026-12-29 (+19d) | 2026-12-15 → 2027-01-05 (+21d) |  | 6d → 1d |
| 1647 | Puerta corrediza 3.85x2.10m | 2026-12-12 → 2027-01-02 (+21d) | 2026-12-19 → 2027-01-11 (+23d) |  | 8d → 3d |
| 1648 | Barandal de Cristal Templado | 2026-12-15 → 2027-01-05 (+21d) | 2026-12-22 → 2027-01-13 (+22d) |  | 6d → 1d |
| 1649 | **CARPINTERIA, PUERTAS EXTERIORES E INTERIORES** | 2026-12-12 → 2027-01-02 (+21d) | 2026-12-23 → 2027-01-14 (+22d) |  | 5d → 0d |
| 1650 | Puerta P-01 de seguridad | 2026-12-12 → 2027-01-02 (+21d) | 2026-12-18 → 2027-01-08 (+21d) |  | 9d → 4d |
| 1651 | Puerta P-01 interior | 2026-12-12 → 2027-01-02 (+21d) | 2026-12-22 → 2027-01-13 (+22d) |  | 6d → 1d |
| 1652 | Puerta P-02 interior | 2026-12-12 → 2027-01-02 (+21d) | 2026-12-22 → 2027-01-13 (+22d) |  | 6d → 1d |
| 1653 | Puerta P-03 interior | 2026-12-18 → 2027-01-08 (+21d) | 2026-12-23 → 2027-01-14 (+22d) |  | 5d → 0d |
| 1654 | Puerta P-04 interior | 2026-12-18 → 2027-01-08 (+21d) | 2026-12-23 → 2027-01-14 (+22d) |  | 5d → 0d |
| 1655 | **VOLADOS, BARANDAL Y ESCALERA** | 2026-11-05 → 2026-11-23 (+18d) | 2026-12-17 → 2027-01-07 (+21d) |  | 13d → 5d |
| 1656 | Barandal de Herreria en escalera | 2026-11-24 → 2026-12-10 (+16d) | 2026-11-28 → 2026-12-15 (+17d) |  | 28d → 20d |
| 1657 | Escalera de herreria | 2026-11-05 → 2026-11-23 (+18d) | 2026-11-28 → 2026-12-15 (+17d) |  | 13d → 5d |
| 1658 | Techumbre en acceso Principal | 2026-11-23 → 2026-12-09 (+16d) | 2026-12-10 → 2026-12-29 (+19d) |  | 19d → 11d |
| 1659 | Techumbre en 1.80x0.50m | 2026-11-23 → 2026-12-09 (+16d) | 2026-12-01 → 2026-12-17 (+16d) |  | 13d → 5d |
| 1660 | Techumbre en 1.40x0.50m | 2026-12-01 → 2026-12-17 (+16d) | 2026-12-10 → 2026-12-29 (+19d) |  | 13d → 5d |
| 1661 | Imper con manto prefabricado | 2026-12-04 → 2026-12-22 (+18d) | 2026-12-11 → 2026-12-30 (+19d) |  | 13d → 5d |
| 1662 | Plafon hoja tablaroca std | 2026-12-11 → 2026-12-30 (+19d) | 2026-12-17 → 2027-01-07 (+21d) |  | 13d → 5d |
| 1663 | Acabado Woodstock en parte inf. Cubierta | 2026-12-11 → 2026-12-30 (+19d) | 2026-12-17 → 2027-01-07 (+21d) |  | 13d → 5d |
| 1664 | **INSTALACION ELECTRICA** | 2026-11-12 → 2026-11-30 (+18d) | 2026-12-03 → 2026-12-19 (+16d) |  | 34d → 26d |
| 1665 | Alimentación eléctrica base a centro de carga | 2026-11-19 → 2026-12-04 (+15d) | 2026-11-25 → 2026-12-11 (+16d) |  | 38d → 30d |
| 1666 | Interruptor termomagnético 1x20 A | 2026-11-25 → 2026-12-11 (+16d) | 2026-11-26 → 2026-12-12 (+16d) |  | 38d → 30d |
| 1667 | Interruptor termomagnético 2x20 A | 2026-11-25 → 2026-12-11 (+16d) | 2026-11-26 → 2026-12-12 (+16d) |  | 38d → 30d |
| 1668 | Salida para apagador 3 vías | 2026-11-12 → 2026-11-30 (+18d) | 2026-11-19 → 2026-12-04 (+15d) |  | 34d → 26d |
| 1669 | Salida para apagador doble | 2026-11-19 → 2026-12-04 (+15d) | 2026-11-23 → 2026-12-09 (+16d) |  | 36d → 28d |

| ID | Task | Start | Finish | Duration | Total float |
| --- | --- | --- | --- | --- | --- |
| 1670 | Salida para apagador sencillo | 2026-11-19 → 2026-12-04 (+15d) | 2026-11-23 → 2026-12-09 (+16d) |  | 36d → 28d |
| 1671 | Salida de alumbrado en losa | 2026-11-19 → 2026-12-04 (+15d) | 2026-11-25 → 2026-12-11 (+16d) |  | 34d → 26d |
| 1672 | Salida para contacto exterior doble | 2026-11-19 → 2026-12-04 (+15d) | 2026-11-21 → 2026-12-08 (+17d) |  | 37d → 29d |
| 1673 | Salida para contacto 220 V | 2026-11-21 → 2026-12-08 (+17d) | 2026-11-25 → 2026-12-11 (+16d) |  | 34d → 26d |
| 1674 | Salida para contacto doble | 2026-11-21 → 2026-12-08 (+17d) | 2026-11-27 → 2026-12-14 (+17d) |  | 37d → 29d |
| 1675 | Salida para contacto doble área húmeda | 2026-11-25 → 2026-12-11 (+16d) | 2026-11-27 → 2026-12-14 (+17d) |  | 37d → 29d |
| 1676 | Salida TV / telefonía / intercom | 2026-11-25 → 2026-12-11 (+16d) | 2026-11-30 → 2026-12-16 (+16d) |  | 35d → 27d |
| 1677 | Extractor 4 baño | 2026-11-25 → 2026-12-11 (+16d) | 2026-12-01 → 2026-12-17 (+16d) |  | 34d → 26d |
| 1678 | Prueba eléctrica | 2026-12-01 → 2026-12-17 (+16d) | 2026-12-03 → 2026-12-19 (+16d) |  | 34d → 26d |
| 1679 | **INSTALACIÓN HIDRO-SANITARIA** | 2026-10-28 → 2026-11-12 (+15d) | 2026-11-10 → 2026-11-27 (+17d) |  | 5d → 0d |
| 1680 | Tubería condensados PVC 1 | 2026-10-28 → 2026-11-12 (+15d) | 2026-11-03 → 2026-11-20 (+17d) |  | 5d → 0d |
| 1681 | Tubería sanitaria PVC 4 | 2026-10-28 → 2026-11-12 (+15d) | 2026-11-03 → 2026-11-20 (+17d) |  | 13d → 8d |
| 1682 | Coladera H-444 | 2026-11-03 → 2026-11-20 (+17d) | 2026-11-04 → 2026-11-21 (+17d) |  | 13d → 8d |
| 1683 | Caja PVC para lavadora | 2026-10-28 → 2026-11-12 (+15d) | 2026-10-30 → 2026-11-18 (+19d) |  | 5d → 0d |
| 1684 | Salida para secadora PVC 4 | 2026-10-28 → 2026-11-12 (+15d) | 2026-10-30 → 2026-11-18 (+19d) |  | 5d → 0d |
| 1685 | Salida hidráulica para boiler | 2026-10-28 → 2026-11-12 (+15d) | 2026-10-29 → 2026-11-17 (+19d) |  | 6d → 1d |
| 1686 | Salida hidráulica para llave de jardín | 2026-10-28 → 2026-11-12 (+15d) | 2026-10-30 → 2026-11-18 (+19d) |  | 5d → 0d |
| 1687 | Salida hidráulica para lavabo | 2026-10-28 → 2026-11-12 (+15d) | 2026-11-02 → 2026-11-19 (+17d) |  | 5d → 0d |
| 1688 | Salida hidráulica para purificación | 2026-10-28 → 2026-11-12 (+15d) | 2026-11-02 → 2026-11-19 (+17d) |  | 5d → 0d |
| 1689 | Salida sanitaria para lavabo | 2026-10-30 → 2026-11-17 (+18d) | 2026-11-02 → 2026-11-19 (+17d) |  | 5d → 0d |
| 1690 | Salida hidráulica para lavadero | 2026-10-30 → 2026-11-17 (+18d) | 2026-11-02 → 2026-11-19 (+17d) |  | 5d → 0d |
| 1691 | Salida sanitaria para lavadero | 2026-10-31 → 2026-11-18 (+18d) | 2026-11-03 → 2026-11-20 (+17d) |  | 5d → 0d |
| 1692 | Salida hidráulica para lavadora | 2026-10-31 → 2026-11-18 (+18d) | 2026-11-03 → 2026-11-20 (+17d) |  | 5d → 0d |
| 1693 | Salida sanitaria para lavadora | 2026-11-02 → 2026-11-19 (+17d) | 2026-11-04 → 2026-11-21 (+17d) |  | 5d → 0d |
| 1694 | Salida hidráulica para regadera | 2026-11-02 → 2026-11-19 (+17d) | 2026-11-07 → 2026-11-25 (+18d) |  | 10d → 5d |
| 1695 | Salida sanitaria para regadera | 2026-11-02 → 2026-11-19 (+17d) | 2026-11-06 → 2026-11-24 (+18d) |  | 11d → 6d |
| 1696 | Salida hidráulica para WC | 2026-10-30 → 2026-11-17 (+18d) | 2026-11-02 → 2026-11-19 (+17d) |  | 5d → 0d |
| 1697 | Salida sanitaria para WC | 2026-11-02 → 2026-11-19 (+17d) | 2026-11-06 → 2026-11-24 (+18d) |  | 5d → 0d |
| 1698 | Salida hidráulica para zinc | 2026-11-02 → 2026-11-19 (+17d) | 2026-11-06 → 2026-11-24 (+18d) |  | 5d → 0d |
| 1699 | Salida sanitaria para zinc | 2026-11-04 → 2026-11-21 (+17d) | 2026-11-07 → 2026-11-25 (+18d) |  | 5d → 0d |
| 1700 | Tubo para ventila de baño 2 | 2026-10-28 → 2026-11-12 (+15d) | 2026-11-03 → 2026-11-20 (+17d) |  | 5d → 0d |
| 1701 | Tubo para minisplit PVC 3 | 2026-11-03 → 2026-11-20 (+17d) | 2026-11-09 → 2026-11-26 (+17d) |  | 5d → 0d |
| 1702 | Cuadro de medición | 2026-10-31 → 2026-11-18 (+18d) | 2026-11-06 → 2026-11-24 (+18d) |  | 10d → 5d |
| 1703 | Pozo de absorción 0.50x0.50x0.50 | 2026-10-31 → 2026-11-18 (+18d) | 2026-11-04 → 2026-11-21 (+17d) |  | 13d → 8d |
| 1704 | Prueba sanitaria final | 2026-11-09 → 2026-11-26 (+17d) | 2026-11-10 → 2026-11-27 (+17d) |  | 9d → 4d |
| 1705 | Prueba hidrostática final | 2026-11-07 → 2026-11-25 (+18d) | 2026-11-09 → 2026-11-26 (+17d) |  | 10d → 5d |
| 1706 | Salida válvula control 19 mm | 2026-11-06 → 2026-11-24 (+18d) | 2026-11-07 → 2026-11-25 (+18d) |  | 10d → 5d |
| 1707 | Salida válvula control 13 mm | 2026-11-06 → 2026-11-24 (+18d) | 2026-11-07 → 2026-11-25 (+18d) |  | 10d → 5d |
| 1708 | Salida hidráulica para tanque hidroneumático | 2026-10-31 → 2026-11-18 (+18d) | 2026-11-04 → 2026-11-21 (+17d) |  | 13d → 8d |
| 1709 | Salida hidráulica para Active Driver | 2026-10-31 → 2026-11-18 (+18d) | 2026-11-04 → 2026-11-21 (+17d) |  | 13d → 8d |
| 1710 | **INSTALACION DE GAS** | 2026-10-26 → 2026-11-10 (+15d) | 2026-11-04 → 2026-11-21 (+17d) |  | 41d → 29d |
| 1711 | Ramaleo para gas 1/2 | 2026-10-29 → 2026-11-13 (+15d) | 2026-11-04 → 2026-11-21 (+17d) |  | 41d → 29d |
| 1712 | Excavación a mano material tipo B | 2026-10-26 → 2026-11-10 (+15d) | 2026-10-28 → 2026-11-13 (+16d) |  | 41d → 29d |
| 1713 | **MUEBLES SANITARIOS** | 2026-12-03 → 2026-12-21 (+18d) | 2027-01-14 → 2027-01-26 (+12d) | 29d → 26d | 17d → 12d |
| 1714 | WC completo Austral | 2026-12-03 → 2026-12-21 (+18d) | 2026-12-07 → 2026-12-22 (+15d) |  | 19d → 14d |
| 1715 | Lavabo Senna con pedestal | 2026-12-03 → 2026-12-21 (+18d) | 2026-12-09 → 2026-12-28 (+19d) |  | 17d → 12d |
| 1716 | Tarja / lavabo combo Guinea 80x45 | 2026-12-03 → 2026-12-21 (+18d) | 2026-12-07 → 2026-12-22 (+15d) |  | 48d → 36d |
| 1717 | Regadera con monomando | 2026-12-07 → 2026-12-23 (+16d) | 2026-12-10 → 2026-12-29 (+19d) |  | 16d → 11d |
| 1718 | Coladera inserto cerámico | 2026-12-08 → 2026-12-26 (+18d) | 2026-12-10 → 2026-12-29 (+19d) |  | 16d → 11d |
| 1719 | Toallero sencillo | 2027-01-13 → 2027-01-25 (+12d) | 2027-01-14 → 2027-01-26 (+12d) |  | 5d → 0d |
| 1720 | Toallero barra | 2027-01-13 → 2027-01-25 (+12d) | 2027-01-14 → 2027-01-26 (+12d) |  | 5d → 0d |
| 1721 | Portapapel | 2027-01-13 → 2027-01-25 (+12d) | 2027-01-14 → 2027-01-26 (+12d) |  | 5d → 0d |
| 1722 | Gancho baño | 2027-01-13 → 2027-01-25 (+12d) | 2027-01-14 → 2027-01-26 (+12d) |  | 5d → 0d |
| 1723 | **EQUIPAMIENTO** | 2026-10-19 → 2026-11-04 (+16d) | 2026-10-26 → 2026-11-11 (+16d) |  | 64d → 56d |
| 1724 | Electronivel Rotoplas 5 m | 2026-10-20 → 2026-11-05 (+16d) | 2026-10-22 → 2026-11-07 (+16d) |  | 67d → 59d |
| 1725 | Manómetro | 2026-10-20 → 2026-11-05 (+16d) | 2026-10-21 → 2026-11-06 (+16d) |  | 68d → 60d |
| 1726 | Interruptor de presión 30-50 PSI | 2026-10-20 → 2026-11-05 (+16d) | 2026-10-21 → 2026-11-06 (+16d) |  | 68d → 60d |
| 1727 | Tanque hidroneumático FPS-24LX | 2026-10-20 → 2026-11-05 (+16d) | 2026-10-23 → 2026-11-09 (+17d) |  | 64d → 56d |
| 1728 | Bomba sumergible Dominator 1.2 HP | 2026-10-23 → 2026-11-09 (+17d) | 2026-10-26 → 2026-11-11 (+16d) |  | 64d → 56d |
| 1729 | Cisterna prefabricada 2800 L | 2026-10-19 → 2026-11-04 (+16d) | 2026-10-20 → 2026-11-05 (+16d) |  | 64d → 56d |
| 1730 | **LUMINARIAS** | 2026-11-25 → 2026-12-11 (+16d) | 2026-12-01 → 2026-12-17 (+16d) |  | 34d → 26d |
| 1731 | Roseta cerámica | 2026-11-25 → 2026-12-11 (+16d) | 2026-11-28 → 2026-12-15 (+17d) |  | 36d → 28d |
| 1732 | Luminaria lagartijera LED | 2026-11-25 → 2026-12-11 (+16d) | 2026-11-28 → 2026-12-15 (+17d) |  | 36d → 28d |
| 1733 | Spot 6W Tecnolite | 2026-11-25 → 2026-12-11 (+16d) | 2026-11-28 → 2026-12-15 (+17d) |  | 36d → 28d |
| 1734 | Spot 7W Tecnolite | 2026-11-25 → 2026-12-11 (+16d) | 2026-11-28 → 2026-12-15 (+17d) |  | 36d → 28d |
| 1735 | Arbotante exterior | 2026-11-25 → 2026-12-11 (+16d) | 2026-11-27 → 2026-12-14 (+17d) |  | 34d → 26d |
| 1736 | Estaca LED exterior | 2026-11-27 → 2026-12-14 (+17d) | 2026-12-01 → 2026-12-17 (+16d) |  | 34d → 26d |
| 1737 | Tira LED | 2026-11-27 → 2026-12-14 (+17d) | 2026-12-01 → 2026-12-17 (+16d) |  | 34d → 26d |
| 1738 | Spot exterior 50W | 2026-11-25 → 2026-12-11 (+16d) | 2026-11-27 → 2026-12-14 (+17d) |  | 37d → 29d |
| 1739 | **TIMBRE** | 2026-11-26 → 2026-12-12 (+16d) | 2026-11-28 → 2026-12-15 (+17d) |  | 36d → 28d |

| ID | Task | Start | Finish | Duration | Total float | Predecessors |
| --- | --- | --- | --- | --- | --- | --- |
| 1740 | Timbre inalámbrico con bocina | 2026-11-26 → 2026-12-12 (+16d) | 2026-11-28 → 2026-12-15 (+17d) |  | 36d → 28d |  |
| 1741 | **OBRA EXTERIOR - BARDA** | 2026-10-31 → 2026-11-18 (+18d) | 2026-11-24 → 2026-12-10 (+16d) |  | 42d → 34d |  |
| 1742 | Murete convencional | 2026-11-06 → 2026-11-24 (+18d) | 2026-11-12 → 2026-11-30 (+18d) |  | 48d → 40d |  |
| 1743 | Barda de block aparente | 2026-10-31 → 2026-11-18 (+18d) | 2026-11-24 → 2026-12-10 (+16d) |  | 42d → 34d |  |
| 1744 | **TERCER LIMPIEZA DE OBRA** | 2027-01-14 → 2027-01-26 (+12d) | 2027-02-03 → 2027-02-10 (+7d) | 16d → 12d | 5d → 0d |  |
| 1745 | Limpieza fina para entrega | 2027-01-14 → 2027-01-26 (+12d) | 2027-01-20 → 2027-02-02 (+13d) |  | 5d → 0d |  |
| 1746 | Tercera limpieza de obra | 2027-01-20 → 2027-01-29 (+9d) | 2027-01-26 → 2027-02-05 (+10d) |  | 5d → 0d | 1637, 1745 → 1637FS-2d, 1745FS-2d |
| 1747 | Tercera carga y acarreo de escombro | 2027-01-26 → 2027-02-03 (+8d) | 2027-02-03 → 2027-02-10 (+7d) |  | 5d → 0d | 1746 → 1746FS-2d |
